# OS 054 - ANTEPROJETO CIDADE DA SEGURANÇA

Schedule from MS Project, 2026-01-12 to 2026-08-26, status date 2026-08-11, A marks actual dates.

## Calendars

- Calendário 1: Mon-Fri 09:00-12:00, 13:00-18:00; Sat-Sun off. Exceptions (off unless hours are given): 2026-02-16 to 2026-02-18 (Carnaval 2026), 2026-04-03 (Feriado Sexta-Feira Santa), 2026-04-21 (Feriado Tiradentes), 2026-05-01 (Feriado Dia do Trabalho), 2026-06-04 (Feriado Corpus Christi).

## Resources

| Resource | Group |
| --- | --- |
| SMI Engenharia | SMI |
| Rui Raoli BIM |  |
| Tecra Engenharia | Tecra |
| Dorothea Heirichs | Dorothea |
| Yuka Ogawa | Yuka |
| Jurídico Quanta |  |
| Priscila Abreu EST |  |
| Leomar Delgado | Leomar |
| Limonge de Almeida | Limonge |
| AeB Engenharia | AeB engenharia |
| Fernanda Garruti EST |  |
| Rodrigo Goes EST |  |
| Nous Engenharia (Wanessa) | Nous Engenharia |
| Abel Lopes HID |  |
| Matheus Ferreira HID |  |
| Kayke Cheli PROJ |  |
| João Gabriel PROJ |  |
| Alan Albuquerque ELE |  |
| Leo Ferrari ELE |  |
| Marcelo Ricardo ELE |  |
| Gabriel Caurim | Gcaurin |
| MOB Eng | MOB |
| Heitor Rubio ELE |  |
| Paulo G. ELE |  |
| Thaíza Rodrig. ELE |  |
| Rafael Menna ENE |  |
| Lucas Pacheco ENE |  |
| Lucas Silva ENE Estag |  |
| Amanda W. HID |  |
| Neemias PCI/GAS |  |
| Anderson F. HVAC |  |
| Alexandre Blumel |  |
| Vanessa Maia ORC |  |
| Bruno Souza ORC |  |
| Romulo Santos ORC |  |
| Diego Bieger | Diego Bieger |
| Tiago Carlos TER |  |
| Raquel Morano |  |
| Guilherme ECO |  |
| Setor Jurídico |  |
| Vinicius Delgado |  |
| Morena Braga |  |
| P/ TERCEIRIZAR |  |
| MAFRA | MAFRA |
| BLR | BLR |
| COTRAL | COTRAL |
| Prime | PRIME |
| CODEMAR | Cliente |
| SEMED | Cliente |
| Carlos Alberto (Casoba) |  |
| Cezar Augusto ELE |  |
| Carlos Santos TER |  |
| Maíra Rocha |  |
| Jairo Diniz |  |
| Eloá Honaiser |  |
| Erick Lima |  |
| Tarcísio Marques CPT |  |
| Igor Freire DADOS |  |
| Hagata Oliveira DADOS |  |
| Marcel Silva CNF |  |
| Gustavo Oliveira CNF |  |
| Letícia Gonç. CNF |  |
| Equipe Energia |  |
| Petras |  |
| Pilotis |  |
| Rodofer |  |
| TMSilva |  |
| STCGEO |  |
| Vitor Sales GEO |  |
| Prossema | Prossema |
| Proseng | Prosseng |
| Pamplona | Pamplona |
| PeX | PeX |
| Eoliver | Eoliver |
| Aleff Moura |  |
| S&A Engenharia |  |
| Matheus Barboza MOBILIDADE |  |
| Neemias Eloy PCI/GAS |  |
| TecTON |  |
| Anderson F. HVAC |  |
| Gabriela Gama ARQ |  |
| Bruno Almeida ARQ |  |
| Richard Marx ARQ |  |
| Lorena ARQ |  |
| Camila ARQ |  |
| Mariana ARQ |  |
| Érica ARQ |  |
| Maria Lis ARQ |  |
| Antônio Alves ARQ |  |
| Juliana ARQ |  |
| Caio Ary ARQ |  |
| Roberto Mattos ARQ |  |
| Camilla Bessa CNF |  |
| Alex Matoso SUP |  |
| Aline Bonsanto CPT |  |
| Pavanello |  |
| AKKERMAN |  |
| RiO RAMP |  |

## Schedule

| ID | WBS | Task | Type | Duration | Start | Finish | Predecessors | Complete | Baseline start | Baseline finish | Baseline duration | Constraint |
| --- | --- | --- | --- | --- | --- | --- | --- | --- | --- | --- | --- | --- |
| 1 | 1 | **P0 - Estudos Iniciais/Plano de Trabalho** |  | 81d | 2026-03-02 A | 2026-06-26 A |  | 100% | 2026-03-02 | 2026-06-08 | 67d |  |
| 2 | 1.1 | Marco de Abertura de OS |  | 1d | 2026-03-02 A | 2026-03-02 A |  | 100% | 2026-03-02 | 2026-03-02 | 1d | start no earlier than 2026-03-02 |
| 3 | 1.2 | Recebimento de dados da contratante |  | 1d | 2026-03-02 A | 2026-03-02 A |  | 100% | 2026-03-02 | 2026-03-02 | 1d | start no earlier than 2026-03-02 |
| 4 | 1.3 | Recebimento de dados do projeto |  | 1d | 2026-03-02 A | 2026-03-02 A |  | 100% | 2026-03-02 | 2026-03-02 | 1d | start no earlier than 2026-03-02 |
| 5 | 1.4 | **Definições do projeto** |  | 0d | 2026-05-11 A | 2026-05-11 A |  | 100% | 2026-05-11 | 2026-05-11 | 0d |  |
| 6 | 1.4.1 | Definição de escopo | milestone | 0d | 2026-05-11 A | 2026-05-11 A |  | 100% | 2026-05-11 | 2026-05-11 | 0d | start no earlier than 2026-05-11 |
| 7 | 1.4.2 | Aprovação do escopo (contrato) | milestone | 0d | 2026-05-11 A | 2026-05-11 A |  | 100% | 2026-05-11 | 2026-05-11 | 0d | start no earlier than 2026-05-11 |
| 8 | 1.4.3 | Definição de responsabilidades | milestone | 0d | 2026-05-11 A | 2026-05-11 A |  | 100% | 2026-05-11 | 2026-05-11 | 0d | start no earlier than 2026-05-11 |
| 9 | 1.4.4 | Definição de comunicação | milestone | 0d | 2026-05-11 A | 2026-05-11 A |  | 100% | 2026-05-11 | 2026-05-11 | 0d | start no earlier than 2026-05-11 |
| 10 | 1.4.5 | Forma de gerenciamento do escopo | milestone | 0d | 2026-05-11 A | 2026-05-11 A |  | 100% | 2026-05-11 | 2026-05-11 | 0d | start no earlier than 2026-05-11 |
| 11 | 1.4.6 | Requisitos de qualidade | milestone | 0d | 2026-05-11 A | 2026-05-11 A |  | 100% | 2026-05-11 | 2026-05-11 | 0d | start no earlier than 2026-05-11 |
| 12 | 1.4.7 | Forma de gerenciamento da qualidade | milestone | 0d | 2026-05-11 A | 2026-05-11 A |  | 100% | 2026-05-11 | 2026-05-11 | 0d | start no earlier than 2026-05-11 |
| 13 | 1.5 | **Definição de Subcontratadas necessárias** |  | 8d | 2026-05-27 A | 2026-06-08 A |  | 100% | 2026-05-27 | 2026-06-08 | 8d |  |
| 14 | 1.5.1 | Definir quais diciplinas e edificações devem ser cotadas externamente |  | 2d | 2026-05-27 A | 2026-05-28 A |  | 100% | 2026-05-27 | 2026-05-28 | 2d | start no earlier than 2026-05-27 |
| 15 | 1.5.2 | Envio e Resposta dos fornecedores |  | 2d | 2026-05-29 A | 2026-06-01 A | 14 | 100% | 2026-05-29 | 2026-06-01 | 2d |  |
| 16 | 1.5.3 | Seleção das subcontratações |  | 2d | 2026-06-02 A | 2026-06-03 A | 15 | 100% | 2026-06-02 | 2026-06-03 | 2d |  |
| 17 | 1.5.4 | Reunião Kickoff - Subcontratadas |  | 2d | 2026-06-05 A | 2026-06-08 A | 16 | 100% | 2026-06-05 | 2026-06-08 | 2d |  |
| 18 | 1.6 | **Elaborar/Ajustar Cronograma - compatível com o escopo do projeto** |  | 34d | 2026-05-11 A | 2026-06-26 A |  | 100% | 2026-05-11 | 2026-06-08 | 20d |  |
| 19 | 1.6.1 | Estruturação da EAP |  | 5d | 2026-05-11 A | 2026-05-15 A |  | 100% | 2026-05-11 | 2026-05-15 | 5d | start no earlier than 2026-05-11 |
| 20 | 1.6.2 | Ajuste de prazos |  | 25d | 2026-05-18 A | 2026-06-22 A | 19 | 100% | 2026-05-18 | 2026-05-27 | 8d |  |
| 21 | 1.6.3 | Inclusão de recursos |  | 4d | 2026-06-23 A | 2026-06-26 A | 20 | 100% | 2026-05-28 | 2026-06-08 | 7d |  |
| 22 | 2 | **P0 - Serviços de campo** |  | 2d | 2026-03-02 A | 2026-03-03 A |  | 100% | 2026-03-02 | 2026-03-03 | 2d |  |
| 23 | 2.1 | Sondagem |  | 2d | 2026-03-02 A | 2026-03-03 A |  | 100% | 2026-03-02 | 2026-03-03 | 2d | start no earlier than 2026-03-02 |
| 24 | 2.2 | **Topografia** |  | 2d | 2026-03-02 A | 2026-03-03 A |  | 100% | 2026-03-02 | 2026-03-03 | 2d |  |
| 25 | 2.2.1 | Levantamento topográfico |  | 2d | 2026-03-02 A | 2026-03-03 A |  | 100% | 2026-03-02 | 2026-03-03 | 2d | start no earlier than 2026-03-02 |
| 26 | 2.2.2 | Processamento |  | 2d | 2026-03-02 A | 2026-03-03 A |  | 100% | 2026-03-02 | 2026-03-03 | 2d | start no earlier than 2026-03-02 |
| 27 | 2.2.3 | Finalização do projeto topográfico |  | 2d | 2026-03-02 A | 2026-03-03 A |  | 100% | 2026-03-02 | 2026-03-03 | 2d | start no earlier than 2026-03-02 |
| 28 | 2.2.4 | Levantamento de Dados e Visita de Campo (arquitetônico, scanner, legislação, entrevistas...) |  | 2d | 2026-03-02 A | 2026-03-03 A |  | 100% | 2026-03-02 | 2026-03-03 | 2d | start no earlier than 2026-03-02 |
| 29 | 2.3 | Estudos/Laudo Ambiental |  | 1d | 2026-03-03 A | 2026-03-03 A |  | 100% | 2026-03-03 | 2026-03-03 | 1d | start no earlier than 2026-03-03 |

| ID | WBS | Task | Type | Duration | Start | Finish | Complete | Remaining | Baseline start | Baseline finish | Baseline duration | Total slack | Constraint |
| --- | --- | --- | --- | --- | --- | --- | --- | --- | --- | --- | --- | --- | --- |
| 30 | 3 | **P1 - Anteprojeto** |  | 153d | 2026-01-12 A | 2026-08-21 | 94% | 8.56d | 2026-01-12 | 2026-07-27 | 134d | 1d |  |
| 31 | 3.1 | **Fase de Preparação** |  | 90d | 2026-01-12 A | 2026-05-25 A | 100% |  | 2026-01-12 | 2026-05-25 | 90d |  |  |
| 32 | 3.1.1 | **Serviços de Campo** |  | 86d | 2026-01-16 A | 2026-05-25 A | 100% |  | 2026-01-16 | 2026-05-25 | 86d |  |  |
| 33 | 3.1.1.1 | Recebimento da Topografia | milestone | 0d | 2026-03-03 A | 2026-03-03 A | 100% |  | 2026-03-03 | 2026-03-03 | 0d |  | start no earlier than 2026-03-03 |
| 34 | 3.1.1.2 | Recebimento da Sondagem | milestone | 0d | 2026-05-25 A | 2026-05-25 A | 100% |  | 2026-05-25 | 2026-05-25 | 0d |  | start no earlier than 2026-05-25 |
| 35 | 3.1.1.3 | Levantamento de Dados (ambientais locais, urbanísticos, legislativos, plantas cadastrais da vizinhança etc.) |  | 1d | 2026-01-16 A | 2026-01-16 A | 100% |  | 2026-01-16 | 2026-01-16 | 1d |  | start no earlier than 2026-01-16 |
| 36 | 3.1.1.4 | Visita de Campo |  | 1d | 2026-05-25 A | 2026-05-25 A | 100% |  | 2026-05-25 | 2026-05-25 | 1d |  | start no earlier than 2026-05-25 |
| 37 | 3.1.1.5 | Relatório/Memorial de Compatibilização |  | 1d | 2026-04-16 A | 2026-04-16 A | 100% |  | 2026-04-16 | 2026-04-16 | 1d |  | start no earlier than 2026-04-16 |
| 38 | 3.1.2 | **Produção de Subsídios ao Projeto** |  | 8d | 2026-01-12 A | 2026-01-21 A | 100% |  | 2026-01-12 | 2026-01-21 | 8d |  |  |
| 39 | 3.1.2.1 | Elaboração do Programa de Necessidades (relação dos ambientes, áreas, mobiliários, fluxos pretendidos, organograma funcional, descrição dos usuários e atividades etc.) |  | 4d | 2026-01-12 A | 2026-01-15 A | 100% |  | 2026-01-12 | 2026-01-15 | 4d |  | finish no earlier than 2026-01-15 |
| 40 | 3.1.2.2 | Elaboração de Benchmark (reconhecimento do território, referências projetuais e premissas de projeto) |  | 4d | 2026-01-16 A | 2026-01-21 A | 100% |  | 2026-01-16 | 2026-01-21 | 4d |  | finish no earlier than 2026-01-21 |
| 41 | 3.2 | **LOD 100 - PROJETO CONCEITUAL** |  | 51d | 2026-03-06 A | 2026-05-20 A | 100% |  | 2026-03-06 | 2026-05-20 | 51d |  |  |
| 42 | 3.2.1 | Benchmarking (pesquisa e relatório de referências de tipologias semelhantes para entendimento de fluxos, implantação etc. e de outras tipologias para buscar referências estéticas e de materialidade) |  | 1d | 2026-03-25 A | 2026-03-25 A | 100% |  | 2026-03-25 | 2026-03-25 | 1d |  | start no earlier than 2026-03-25 |
| 43 | 3.2.2 | **Elaboração de Masterplan** |  | 29d | 2026-03-06 A | 2026-04-16 A | 100% |  | 2026-03-06 | 2026-04-16 | 29d |  |  |
| 44 | 3.2.2.1 | Revisão do Masterplan - R01 |  | 29d | 2026-03-06 A | 2026-04-16 A | 100% |  | 2026-03-06 | 2026-04-16 | 29d |  | start no earlier than 2026-03-06 |
| 45 | 3.2.2.2 | Revisão do Masterplan - R02 |  | 29d | 2026-03-06 A | 2026-04-16 A | 100% |  | 2026-03-06 | 2026-04-16 | 29d |  | start no earlier than 2026-03-06 |
| 46 | 3.2.2.3 | Relatório/Memorial de Compatibilização |  | 29d | 2026-03-06 A | 2026-04-16 A | 100% |  | 2026-03-06 | 2026-04-16 | 29d |  | start no earlier than 2026-03-06 |
| 47 | 3.2.3 | **Estudo da Forma - CICC** |  | 23d | 2026-03-25 A | 2026-04-28 A | 100% |  | 2026-03-25 | 2026-04-28 | 23d |  |  |
| 48 | 3.2.3.1 | Processo de Criação (atelier, discussão, início de plantas, ideias de fachada) |  | 1d | 2026-04-16 A | 2026-04-16 A | 100% |  | 2026-04-16 | 2026-04-16 | 1d |  | start no earlier than 2026-04-16 |
| 49 | 3.2.3.2 | Setorização e Fluxogramas |  | 1d | 2026-04-16 A | 2026-04-16 A | 100% |  | 2026-04-16 | 2026-04-16 | 1d |  | start no earlier than 2026-04-16 |
| 50 | 3.2.3.3 | Plano de Massas (situação/implantação/zoneamento) |  | 1d | 2026-04-16 A | 2026-04-16 A | 100% |  | 2026-04-16 | 2026-04-16 | 1d |  | start no earlier than 2026-04-16 |
| 51 | 3.2.3.4 | Estudo de Fachadas |  | 1d | 2026-04-28 A | 2026-04-28 A | 100% |  | 2026-04-28 | 2026-04-28 | 1d |  | start no earlier than 2026-04-28 |
| 52 | 3.2.3.5 | Relatório/Memorial Justificativo de Projeto Conceitual |  | 1d | 2026-03-25 A | 2026-03-25 A | 100% |  | 2026-03-25 | 2026-03-25 | 1d |  | start no earlier than 2026-03-25 |
| 53 | 3.2.4 | **Estudo da Forma - SESEG** |  | 32d | 2026-03-25 A | 2026-05-12 A | 100% |  | 2026-03-25 | 2026-05-12 | 32d |  |  |
| 54 | 3.2.4.1 | Processo de Criação (atelier, discussão, início de plantas, ideias de fachada) |  | 17d | 2026-04-16 A | 2026-05-12 A | 100% |  | 2026-04-16 | 2026-05-12 | 17d |  | start no earlier than 2026-04-16 |
| 55 | 3.2.4.2 | Setorização e Fluxogramas |  | 17d | 2026-04-16 A | 2026-05-12 A | 100% |  | 2026-04-16 | 2026-05-12 | 17d |  | start no earlier than 2026-04-16 |
| 56 | 3.2.4.3 | Plano de Massas (situação/implantação/zoneamento) |  | 4d | 2026-04-13 A | 2026-04-16 A | 100% |  | 2026-04-13 | 2026-04-16 | 4d |  | start no earlier than 2026-04-13 |
| 57 | 3.2.4.4 | Estudo de Fachadas |  | 10d | 2026-04-28 A | 2026-05-12 A | 100% |  | 2026-04-28 | 2026-05-12 | 10d |  | start no earlier than 2026-04-28 |
| 58 | 3.2.4.5 | Relatório/Memorial Justificativo de Projeto Conceitual |  | 1d | 2026-03-25 A | 2026-03-25 A | 100% |  | 2026-03-25 | 2026-03-25 | 1d |  | start no earlier than 2026-03-25 |

| ID | WBS | Task | Duration | Start | Finish | Predecessors | Complete | Remaining | Baseline start | Baseline finish | Baseline duration | Total slack | Constraint |
| --- | --- | --- | --- | --- | --- | --- | --- | --- | --- | --- | --- | --- | --- |
| 59 | 3.2.5 | **Estudo da Forma - AGM** | 32d | 2026-03-25 A | 2026-05-12 A |  | 100% |  | 2026-03-25 | 2026-05-12 | 32d |  |  |
| 60 | 3.2.5.1 | Processo de Criação (atelier, discussão, início de plantas, ideias de fachada) | 1d | 2026-04-16 A | 2026-04-16 A |  | 100% |  | 2026-04-16 | 2026-04-16 | 1d |  | start no earlier than 2026-04-16 |
| 61 | 3.2.5.2 | Setorização e Fluxogramas | 17d | 2026-04-16 A | 2026-05-12 A |  | 100% |  | 2026-04-16 | 2026-05-12 | 17d |  | start no earlier than 2026-04-16 |
| 62 | 3.2.5.3 | Plano de Massas (situação/implantação/zoneamento) | 1d | 2026-04-16 A | 2026-04-16 A |  | 100% |  | 2026-04-16 | 2026-04-16 | 1d |  | start no earlier than 2026-04-16 |
| 63 | 3.2.5.4 | Estudo de Fachadas | 1d | 2026-04-28 A | 2026-04-28 A |  | 100% |  | 2026-04-28 | 2026-04-28 | 1d |  | start no earlier than 2026-04-28 |
| 64 | 3.2.5.5 | Relatório/Memorial Justificativo de Projeto Conceitual | 1d | 2026-03-25 A | 2026-03-25 A |  | 100% |  | 2026-03-25 | 2026-03-25 | 1d |  | start no earlier than 2026-03-25 |
| 65 | 3.2.6 | **Estudo da Forma - PROEIS** | 19d | 2026-04-23 A | 2026-05-20 A |  | 100% |  | 2026-04-23 | 2026-05-20 | 19d |  |  |
| 66 | 3.2.6.1 | Processo de Criação (atelier, discussão, início de plantas, ideias de fachada) | 1d | 2026-05-04 A | 2026-05-04 A |  | 100% |  | 2026-05-04 | 2026-05-04 | 1d |  |  |
| 67 | 3.2.6.2 | Setorização e Fluxogramas | 1d | 2026-05-04 A | 2026-05-04 A |  | 100% |  | 2026-05-04 | 2026-05-04 | 1d |  |  |
| 68 | 3.2.6.3 | Plano de Massas (situação/implantação/zoneamento) | 1d | 2026-05-04 A | 2026-05-04 A |  | 100% |  | 2026-05-04 | 2026-05-04 | 1d |  |  |
| 69 | 3.2.6.4 | Estudo de Fachadas | 1d | 2026-04-23 A | 2026-04-23 A |  | 100% |  | 2026-04-23 | 2026-04-23 | 1d |  |  |
| 70 | 3.2.6.5 | Relatório/Memorial Justificativo de Projeto Conceitual | 1d | 2026-05-20 A | 2026-05-20 A |  | 100% |  | 2026-05-20 | 2026-05-20 | 1d |  |  |
| 71 | 3.2.7 | **Estudo da Forma - GM** | 19d | 2026-04-23 A | 2026-05-20 A |  | 100% |  | 2026-04-23 | 2026-05-20 | 19d |  |  |
| 72 | 3.2.7.1 | Processo de Criação (atelier, discussão, início de plantas, ideias de fachada) | 1d | 2026-05-15 A | 2026-05-15 A |  | 100% |  | 2026-05-15 | 2026-05-15 | 1d |  |  |
| 73 | 3.2.7.2 | Setorização e Fluxogramas | 1d | 2026-05-15 A | 2026-05-15 A |  | 100% |  | 2026-05-15 | 2026-05-15 | 1d |  |  |
| 74 | 3.2.7.3 | Plano de Massas (situação/implantação/zoneamento) | 1d | 2026-05-20 A | 2026-05-20 A |  | 100% |  | 2026-05-20 | 2026-05-20 | 1d |  |  |
| 75 | 3.2.7.4 | Estudo de Fachadas | 1d | 2026-04-23 A | 2026-04-23 A |  | 100% |  | 2026-04-23 | 2026-04-23 | 1d |  |  |
| 76 | 3.2.7.5 | Relatório/Memorial Justificativo de Projeto Conceitual | 1d | 2026-05-20 A | 2026-05-20 A |  | 100% |  | 2026-05-20 | 2026-05-20 | 1d |  |  |
| 77 | 3.3 | **Implantação** | 116d | 2026-03-03 A | 2026-08-17 |  | 96% | 4.31d | 2026-03-03 | 2026-07-24 | 100d | 5d |  |
| 78 | 3.3.1 | **LOD 200 - ESTUDO PRELIMINAR** | 16d | 2026-05-21 A | 2026-06-12 A |  | 100% |  | 2026-05-21 | 2026-06-12 | 16d |  |  |
| 79 | 3.3.1.1 | Indicação de Norte | 16d | 2026-05-21 A | 2026-06-12 A | 41 | 100% |  | 2026-05-21 | 2026-06-12 | 16d |  |  |
| 80 | 3.3.1.2 | Indicação de escala | 16d | 2026-05-21 A | 2026-06-12 A | 41 | 100% |  | 2026-05-21 | 2026-06-12 | 16d |  |  |
| 81 | 3.3.1.3 | Vias de acesso | 16d | 2026-05-21 A | 2026-06-12 A | 41 | 100% |  | 2026-05-21 | 2026-06-12 | 16d |  |  |
| 82 | 3.3.1.4 | Acesso principal ao objeto arquitetônico | 16d | 2026-05-21 A | 2026-06-12 A | 41 | 100% |  | 2026-05-21 | 2026-06-12 | 16d |  |  |
| 83 | 3.3.1.5 | Platôs e taludes principais | 16d | 2026-05-21 A | 2026-06-12 A | 41 | 100% |  | 2026-05-21 | 2026-06-12 | 16d |  |  |
| 84 | 3.3.1.6 | Perímetro do terreno | 16d | 2026-05-21 A | 2026-06-12 A | 41 | 100% |  | 2026-05-21 | 2026-06-12 | 16d |  |  |
| 85 | 3.3.1.7 | Recuos e afastamentos | 16d | 2026-05-21 A | 2026-06-12 A | 41 | 100% |  | 2026-05-21 | 2026-06-12 | 16d |  |  |
| 86 | 3.3.1.8 | Denominação das edificações | 16d | 2026-05-21 A | 2026-06-12 A | 41 | 100% |  | 2026-05-21 | 2026-06-12 | 16d |  |  |
| 87 | 3.3.1.9 | Indicação de áreas cobertas e estacionamentos | 16d | 2026-05-21 A | 2026-06-12 A | 41 | 100% |  | 2026-05-21 | 2026-06-12 | 16d |  |  |
| 88 | 3.3.1.10 | Cotas gerais | 16d | 2026-05-21 A | 2026-06-12 A | 41 | 100% |  | 2026-05-21 | 2026-06-12 | 16d |  |  |
| 89 | 3.3.1.11 | Cotas de nível principais | 16d | 2026-05-21 A | 2026-06-12 A | 41 | 100% |  | 2026-05-21 | 2026-06-12 | 16d |  |  |
| 90 | 3.3.1.12 | Projeção das coberturas | 16d | 2026-05-21 A | 2026-06-12 A | 41 | 100% |  | 2026-05-21 | 2026-06-12 | 16d |  |  |
| 91 | 3.3.1.13 | Áreas permeáveis e impermeáveis | 16d | 2026-05-21 A | 2026-06-12 A | 41 | 100% |  | 2026-05-21 | 2026-06-12 | 16d |  |  |
| 92 | 3.3.1.14 | Relatório/Memorial Justificativo de Projeto Preliminar | 16d | 2026-05-21 A | 2026-06-12 A | 41 | 100% |  | 2026-05-21 | 2026-06-12 | 16d |  |  |

| ID | WBS | Task | Duration | Start | Finish | Predecessors | Complete | Remaining | Baseline start | Baseline finish | Baseline duration | Total slack | Constraint | Text3 |
| --- | --- | --- | --- | --- | --- | --- | --- | --- | --- | --- | --- | --- | --- | --- |
| 93 | 3.3.2 | **LOD 300 - ANTEPROJETO** | 20d | 2026-06-15 A | 2026-07-10 A |  | 100% |  | 2026-06-15 | 2026-07-10 | 20d |  |  |  |
| 94 | 3.3.2.1 | Indicar simbologias de representação gráfica, conforme NBR 6492:2021; | 20d | 2026-06-15 A | 2026-07-10 A | 91 | 100% |  | 2026-06-15 | 2026-07-10 | 20d |  |  |  |
| 95 | 3.3.2.2 | Compatibilização (verificar se está tudo conforme as normas e alinhar com o restante das disciplinas de engenharia) | 20d | 2026-06-15 A | 2026-07-10 A | 91 | 100% |  | 2026-06-15 | 2026-07-10 | 20d |  |  |  |
| 96 | 3.3.2.3 | Compatibilização (deixar tudo conforme padrão Quanta) | 20d | 2026-06-15 A | 2026-07-10 A | 91 | 100% |  | 2026-06-15 | 2026-07-10 | 20d |  |  |  |
| 97 | 3.3.2.4 | Indicação de Norte; | 20d | 2026-06-15 A | 2026-07-10 A | 91 | 100% |  | 2026-06-15 | 2026-07-10 | 20d |  |  |  |
| 98 | 3.3.2.5 | Indicação de Escala; | 20d | 2026-06-15 A | 2026-07-10 A | 91 | 100% |  | 2026-06-15 | 2026-07-10 | 20d |  |  |  |
| 99 | 3.3.2.6 | Vias de acesso e calçadas; | 20d | 2026-06-15 A | 2026-07-10 A | 91 | 100% |  | 2026-06-15 | 2026-07-10 | 20d |  |  |  |
| 100 | 3.3.2.7 | Definição dos Percursos e caminhos | 20d | 2026-06-15 A | 2026-07-10 A | 91 | 100% |  | 2026-06-15 | 2026-07-10 | 20d |  |  |  |
| 101 | 3.3.2.8 | Definição de desenhos de canteiros | 20d | 2026-06-15 A | 2026-07-10 A | 91 | 100% |  | 2026-06-15 | 2026-07-10 | 20d |  |  |  |
| 102 | 3.3.2.9 | Localização de Mobiliário | 20d | 2026-06-15 A | 2026-07-10 A | 91 | 100% |  | 2026-06-15 | 2026-07-10 | 20d |  |  |  |
| 103 | 3.3.2.10 | Acesso principal do objeto arquitetônico; | 20d | 2026-06-15 A | 2026-07-10 A | 91 | 100% |  | 2026-06-15 | 2026-07-10 | 20d |  |  |  |
| 104 | 3.3.2.11 | Definição de localização de rampas e escadarias | 20d | 2026-06-15 A | 2026-07-10 A | 91 | 100% |  | 2026-06-15 | 2026-07-10 | 20d |  |  |  |
| 105 | 3.3.2.12 | Platôs e taludes; | 20d | 2026-06-15 A | 2026-07-10 A | 91 | 100% |  | 2026-06-15 | 2026-07-10 | 20d |  |  |  |
| 106 | 3.3.2.13 | Perímetro do terreno, recuos e afastamentos; | 20d | 2026-06-15 A | 2026-07-10 A | 91 | 100% |  | 2026-06-15 | 2026-07-10 | 20d |  |  |  |
| 107 | 3.3.2.14 | Eixos do projeto com respectivo ponto de referência; | 20d | 2026-06-15 A | 2026-07-10 A | 91 | 100% |  | 2026-06-15 | 2026-07-10 | 20d |  |  |  |
| 108 | 3.3.2.15 | Denominação das edificações, blocos ou espaços; | 20d | 2026-06-15 A | 2026-07-10 A | 91 | 100% |  | 2026-06-15 | 2026-07-10 | 20d |  |  |  |
| 109 | 3.3.2.16 | Indicação de áreas cobertas e estacionamentos; | 20d | 2026-06-15 A | 2026-07-10 A | 91 | 100% |  | 2026-06-15 | 2026-07-10 | 20d |  |  |  |
| 110 | 3.3.2.17 | Cotas gerais | 20d | 2026-06-15 A | 2026-07-10 A | 91 | 100% |  | 2026-06-15 | 2026-07-10 | 20d |  |  |  |
| 111 | 3.3.2.18 | Cotas de nível principais | 20d | 2026-06-15 A | 2026-07-10 A | 91 | 100% |  | 2026-06-15 | 2026-07-10 | 20d |  |  |  |
| 112 | 3.3.2.19 | Quadro de áreas | 20d | 2026-06-15 A | 2026-07-10 A | 91 | 100% |  | 2026-06-15 | 2026-07-10 | 20d |  |  |  |
| 113 | 3.3.2.20 | Relatório | 20d | 2026-06-15 A | 2026-07-10 A | 91 | 100% |  | 2026-06-15 | 2026-07-10 | 20d |  |  |  |
| 114 | 3.3.2.21 | Aprovação de Conformidade | 3d | 2026-07-08 A | 2026-07-10 A | 113FF | 100% |  | 2026-07-08 | 2026-07-10 | 0d |  |  |  |
| 115 | 3.3.2.22 | Material para entrega ao contrato | 3d | 2026-07-08 A | 2026-07-10 A | 113FF | 100% |  | 2026-07-08 | 2026-07-10 | 0d |  |  |  |
| 116 | 3.3.3 | **Terraplanagem / Pavimentação** | 100d | 2026-03-03 A | 2026-07-24 |  | 97% | 2.68d | 2026-03-03 | 2026-04-29 | 40d | 21d |  |  |
| 117 | 3.3.3.1 | **LOD 100 — Premissas, diretrizes e interfaces** | 10d | 2026-03-03 A | 2026-03-16 A |  | 100% |  | 2026-03-03 | 2026-03-16 | 10d |  |  | ܁$ |
| 118 | 3.3.3.1.1 | Avaliação geral de interferências e topografia local. | 5d | 2026-03-03 A | 2026-03-09 A |  | 100% |  | 2026-03-03 | 2026-03-09 | 5d |  | start no earlier than 2026-03-03 |  |
| 119 | 3.3.3.1.2 | Curvas de nível preliminares (quando disponíveis). | 5d | 2026-03-03 A | 2026-03-09 A | 118SS | 100% |  | 2026-03-03 | 2026-03-09 | 5d |  |  |  |
| 120 | 3.3.3.1.3 | Levantamento topográfico inicial com representação genérica da área. | 5d | 2026-03-03 A | 2026-03-09 A | 118SS | 100% |  | 2026-03-03 | 2026-03-09 | 5d |  |  |  |
| 121 | 3.3.3.1.4 | Análise estimativa de movimentação de terra. | 5d | 2026-03-10 A | 2026-03-16 A | 119 | 100% |  | 2026-03-10 | 2026-03-16 | 5d |  |  |  |
| 122 | 3.3.3.1.5 | Estudos de viabilidade | 5d | 2026-03-10 A | 2026-03-16 A | 119 | 100% |  | 2026-03-10 | 2026-03-16 | 5d |  |  |  |
| 123 | 3.3.3.1.6 | Elementos representados de forma simbólica sem georreferenciamento preciso. | 5d | 2026-03-10 A | 2026-03-16 A | 120 | 100% |  | 2026-03-10 | 2026-03-16 | 5d |  |  |  |
| 124 | 3.3.3.1.7 | Superfície genérica do terreno. | 5d | 2026-03-10 A | 2026-03-16 A | 120 | 100% |  | 2026-03-10 | 2026-03-16 | 5d |  |  |  |

| ID | WBS | Task | Duration | Start | Finish | Predecessors | Complete | Remaining | Baseline start | Baseline finish | Baseline duration | Total slack | Free slack | Text3 |
| --- | --- | --- | --- | --- | --- | --- | --- | --- | --- | --- | --- | --- | --- | --- |
| 125 | 3.3.3.2 | **LOD 200 — Validação interdisciplinar e solução preliminar** | 20d | 2026-03-17 A | 2026-04-14 A |  | 100% |  | 2026-03-17 | 2026-04-14 | 20d |  |  | ܁$ |
| 126 | 3.3.3.2.1 | Avaliação técnica detalhada. | 20d | 2026-03-17 A | 2026-04-14 A | 124 | 100% |  | 2026-03-17 | 2026-04-14 | 20d |  |  |  |
| 127 | 3.3.3.2.2 | Compatibilização inicial com drenagem, fundações e geometria. | 20d | 2026-03-17 A | 2026-04-14 A | 124 | 100% |  | 2026-03-17 | 2026-04-14 | 20d |  |  |  |
| 128 | 3.3.3.2.3 | Indicação dos pontos de sondagem em planta georreferenciada. | 20d | 2026-03-17 A | 2026-04-14 A | 124 | 100% |  | 2026-03-17 | 2026-04-14 | 20d |  |  |  |
| 129 | 3.3.3.2.4 | Sondagens geotécnicas: Cronograma de execução com áreas e quantidade de perfurações; Boletins informativos com planta de localização dos furos, profundidades e descrição estratigráfica (solo). | 20d | 2026-03-17 A | 2026-04-14 A | 124 | 100% |  | 2026-03-17 | 2026-04-14 | 20d |  |  |  |
| 130 | 3.3.3.2.5 | Levantamento topográfico: Arquivo em formato.dwg, com coordenadas georreferenciadas (latitude/longitude), curvas de nível, ortofoto e base planimétrica. | 20d | 2026-03-17 A | 2026-04-14 A | 124 | 100% |  | 2026-03-17 | 2026-04-14 | 20d |  |  |  |
| 131 | 3.3.3.2.6 | Planta topográfica com triangulação real (MDT). | 20d | 2026-03-17 A | 2026-04-14 A | 124 | 100% |  | 2026-03-17 | 2026-04-14 | 20d |  |  |  |
| 132 | 3.3.3.3 | **LOD 300 - Consolidação e documentação de entrega** | 20d | 2026-06-29 A | 2026-07-24 |  | 93% | 1.32d | 2026-05-15 | 2026-06-12 | 10d | 21d |  | ܁$ |
| 133 | 3.3.3.3.1 | Alinhamentos de estaqueamento longitudinal e transversal. | 20d | 2026-06-29 A | 2026-07-24 | 131FS+50d | 99% | 0.2d | 2026-05-15 | 2026-06-12 | 5d | 21d |  |  |
| 134 | 3.3.3.3.2 | Análise integrada dos dados topográficos e de sondagem. | 20d | 2026-06-29 A | 2026-07-24 | 131FS+50d | 99% | 0.2d | 2026-05-15 | 2026-06-12 | 5d | 21d |  |  |
| 135 | 3.3.3.3.3 | Planta baixa georreferenciada com projeção de cortes e aterros. | 20d | 2026-06-29 A | 2026-07-24 | 131FS+50d | 99% | 0.2d | 2026-05-15 | 2026-06-12 | 10d | 21d |  |  |
| 136 | 3.3.3.3.4 | Perfis longitudinais e transversais do terreno na situação atual e projetada. | 20d | 2026-06-29 A | 2026-07-24 | 131FS+50d | 99% | 0.2d | 2026-05-15 | 2026-06-12 | 5d | 21d |  |  |
| 137 | 3.3.3.3.5 | Tabelas com variações altimétricas de corte e aterro. | 20d | 2026-06-29 A | 2026-07-24 | 131FS+50d | 99% | 0.2d | 2026-05-15 | 2026-06-12 | 5d | 21d | 0d |  |
| 138 | 3.3.3.3.6 | Aprovação de Conformidade | 3d | 2026-07-22 | 2026-07-24 | 137FF |  |  | 2026-06-10 | 2026-06-12 | 0d | 21d |  |  |
| 139 | 3.3.3.3.7 | Material para entrega ao contrato | 3d | 2026-07-22 | 2026-07-24 | 137FF |  |  | 2026-06-10 | 2026-06-12 | 0d | 21d |  |  |
| 140 | 3.3.4 | **Drenagem** | 39d | 2026-06-01 A | 2026-07-24 |  | 80% | 7.8d | 2026-06-01 | 2026-07-24 | 39d | 21d |  |  |
| 141 | 3.3.4.1 | **LOD 100 — Premissas, diretrizes e interfaces** | 5d | 2026-06-01 A | 2026-06-08 A |  | 100% |  | 2026-06-01 | 2026-06-08 | 5d |  |  |  |
| 142 | 3.3.4.1.1 | Diretrizes de espaço | 5d | 2026-06-01 A | 2026-06-08 A | 124FS+51d | 100% |  | 2026-06-01 | 2026-06-08 | 5d |  |  |  |
| 143 | 3.3.4.1.2 | Memorial preliminar | 5d | 2026-06-01 A | 2026-06-08 A | 124FS+51d | 100% |  | 2026-06-01 | 2026-06-08 | 5d |  |  |  |
| 144 | 3.3.4.1.3 | Análise climatológica | 5d | 2026-06-01 A | 2026-06-08 A | 124FS+51d | 100% |  | 2026-06-01 | 2026-06-08 | 5d |  |  |  |
| 145 | 3.3.4.1.4 | Delimitação de área de contribuição | 5d | 2026-06-01 A | 2026-06-08 A | 124FS+51d | 100% |  | 2026-06-01 | 2026-06-08 | 5d |  |  |  |
| 146 | 3.3.4.1.5 | Levantamento de elementos especiais dentre outras disciplinas de Engenharia e Arquitetura | 5d | 2026-06-01 A | 2026-06-08 A | 124FS+51d | 100% |  | 2026-06-01 | 2026-06-08 | 5d |  |  |  |
| 147 | 3.3.4.1.6 | Indicação de áreas técnicas | 5d | 2026-06-01 A | 2026-06-08 A | 124FS+51d | 100% |  | 2026-06-01 | 2026-06-08 | 5d |  |  |  |
| 148 | 3.3.4.1.7 | Planta baixa com traçado conceitual | 5d | 2026-06-01 A | 2026-06-08 A | 124FS+51d | 100% |  | 2026-06-01 | 2026-06-08 | 5d |  |  |  |
| 149 | 3.3.4.1.8 | Traçado geral de descidas pluviais | 5d | 2026-06-01 A | 2026-06-08 A | 124FS+51d | 100% |  | 2026-06-01 | 2026-06-08 | 5d |  |  |  |

| ID | WBS | Task | Duration | Start | Finish | Predecessors | Complete | Remaining | Baseline start | Baseline finish | Baseline duration | Total slack | Free slack | Constraint |
| --- | --- | --- | --- | --- | --- | --- | --- | --- | --- | --- | --- | --- | --- | --- |
| 150 | 3.3.4.2 | **LOD 200 — Validação interdisciplinar e solução preliminar** | 20d | 2026-06-09 A | 2026-07-06 A |  | 100% |  | 2026-06-09 | 2026-07-06 | 20d |  |  |  |
| 151 | 3.3.4.2.1 | Critérios normativos adotados (ABNT, concessionárias, etc.) | 10d | 2026-06-09 A | 2026-06-22 A | 149 | 100% |  | 2026-06-09 | 2026-06-22 | 10d |  |  |  |
| 152 | 3.3.4.2.2 | Lista preliminar de sistemas e interfaces envolvidos | 10d | 2026-06-09 A | 2026-06-22 A | 149 | 100% |  | 2026-06-09 | 2026-06-22 | 10d |  |  |  |
| 153 | 3.3.4.2.3 | Planta baixa e cortes estimada contendo: - Traçado preliminar de condutores verticais e horizontais - Dimensionamento inicial de calhas e condutores - Localização de elementos ou redes de drenagem existente - Indicação de áreas técnicas | 10d | 2026-06-09 A | 2026-06-22 A | 149 | 100% |  | 2026-06-09 | 2026-06-22 | 10d |  |  |  |
| 154 | 3.3.4.2.4 | Sondagem (permeabilidade ou percolação) | 10d | 2026-06-23 A | 2026-07-06 A | 151, 153 | 100% |  | 2026-06-23 | 2026-07-06 | 10d |  |  |  |
| 155 | 3.3.4.2.5 | Estudo de viabilidade técnica, econômica e ambiental | 10d | 2026-06-23 A | 2026-07-06 A | 151, 153 | 100% |  | 2026-06-23 | 2026-07-06 | 10d |  |  |  |
| 156 | 3.3.4.2.6 | Levantamento topográfico da área de contribuição e elementos existentes | 10d | 2026-06-23 A | 2026-07-06 A | 151, 153 | 100% |  | 2026-06-23 | 2026-07-06 | 10d |  |  |  |
| 157 | 3.3.4.3 | **LOD 300 - Consolidação e documentação de entrega** | 14d | 2026-07-07 | 2026-07-24 |  |  |  | 2026-07-07 | 2026-07-24 | 14d | 21d |  |  |
| 158 | 3.3.4.3.1 | Memorial descritivo | 5d | 2026-07-07 | 2026-07-13 | 155 |  |  | 2026-07-07 | 2026-07-13 | 5d | 21d | 0d |  |
| 159 | 3.3.4.3.2 | Memória de cálculo | 5d | 2026-07-07 | 2026-07-13 | 154, 155 |  |  | 2026-07-07 | 2026-07-13 | 5d | 21d | 0d |  |
| 160 | 3.3.4.3.3 | Planta, corte e detalhe isométrico contendo: - Detalhamento dos condutores com diâmetros, cotas e inclinações definitivas (condutores pluviais) - Calhas, bocas de lobo, dissipadores de energia e demais elementos/equipamentos definitivos | 5d | 2026-07-14 | 2026-07-20 | 158, 159 |  |  | 2026-07-14 | 2026-07-20 | 5d | 21d | 0d |  |
| 161 | 3.3.4.3.4 | Quantitativos e especificação técnica dos materiais | 4d | 2026-07-21 | 2026-07-24 | 160 |  |  | 2026-07-21 | 2026-07-24 | 4d | 21d | 0d |  |
| 162 | 3.3.4.3.5 | Aprovação de Conformidade | 3d | 2026-07-22 | 2026-07-24 | 161FF |  |  | 2026-07-22 | 2026-07-24 | 0d | 21d |  |  |
| 163 | 3.3.4.3.6 | Material para entrega ao contrato | 3d | 2026-07-22 | 2026-07-24 | 161FF |  |  | 2026-07-22 | 2026-07-24 | 0d | 21d |  |  |
| 164 | 3.3.5 | Esgoto | 6d | 2026-08-10 | 2026-08-17 |  |  |  | 2026-08-10 | 2026-08-17 | 0d | 5d |  | start no earlier than 2026-08-10 |
| 165 | 3.4 | **002 - CICC – Centro Integrado de Comando e Controle** | 69d | 2026-05-12 A | 2026-08-17 |  | 95% | 3.3d | 2026-05-12 | 2026-07-27 | 54d | 5d |  |  |
| 166 | 3.4.1 | **Arquitetura** | 28d | 2026-05-12 A | 2026-06-19 A |  | 100% |  | 2026-05-12 | 2026-07-27 | 54d |  |  |  |
| 167 | 3.4.1.1 | **LOD 200 - ESTUDO PRELIMINAR** | 20d | 2026-05-12 A | 2026-06-09 A |  | 100% |  | 2026-05-12 | 2026-07-03 | 38d |  |  |  |
| 168 | 3.4.1.1.1 | Modelagem das paredes | 20d | 2026-05-12 A | 2026-06-09 A | 51FS+8d | 100% |  | 2026-05-12 | 2026-07-03 | 38d |  |  |  |
| 169 | 3.4.1.1.2 | Modelagem dos pisos | 20d | 2026-05-12 A | 2026-06-09 A | 51FS+8d | 100% |  | 2026-05-12 | 2026-07-03 | 38d |  |  |  |
| 170 | 3.4.1.1.3 | Modelagem das lajes | 20d | 2026-05-12 A | 2026-06-09 A | 51FS+8d | 100% |  | 2026-05-12 | 2026-07-03 | 38d |  |  |  |
| 171 | 3.4.1.1.4 | Inserção de portas | 20d | 2026-05-12 A | 2026-06-09 A | 51FS+8d | 100% |  | 2026-05-12 | 2026-07-03 | 38d |  |  |  |
| 172 | 3.4.1.1.5 | Inserção de janelas | 20d | 2026-05-12 A | 2026-06-09 A | 51FS+8d | 100% |  | 2026-05-12 | 2026-07-03 | 38d |  |  |  |
| 173 | 3.4.1.1.6 | Inserção de escada(s) | 20d | 2026-05-12 A | 2026-06-09 A | 51FS+8d | 100% |  | 2026-05-12 | 2026-07-03 | 38d |  |  |  |
| 174 | 3.4.1.1.7 | Inserção de elevador(es) | 20d | 2026-05-12 A | 2026-06-09 A | 51FS+8d | 100% |  | 2026-05-12 | 2026-07-03 | 38d |  |  |  |
| 175 | 3.4.1.1.8 | Inserção de rampa(s) | 20d | 2026-05-12 A | 2026-06-09 A | 51FS+8d | 100% |  | 2026-05-12 | 2026-07-03 | 38d |  |  |  |
| 176 | 3.4.1.1.9 | Inserção de layout | 20d | 2026-05-12 A | 2026-06-09 A | 51FS+8d | 100% |  | 2026-05-12 | 2026-07-03 | 38d |  |  |  |
| 177 | 3.4.1.1.10 | Identificação dos ambientes | 20d | 2026-05-12 A | 2026-06-09 A | 51FS+8d | 100% |  | 2026-05-12 | 2026-07-03 | 38d |  |  |  |
| 178 | 3.4.1.1.11 | Espaços de circulação | 20d | 2026-05-12 A | 2026-06-09 A | 51FS+8d | 100% |  | 2026-05-12 | 2026-07-03 | 38d |  |  |  |
| 179 | 3.4.1.1.12 | Áreas de serviços, funcionais e técnicas | 20d | 2026-05-12 A | 2026-06-09 A | 51FS+8d | 100% |  | 2026-05-12 | 2026-07-03 | 38d |  |  |  |
| 180 | 3.4.1.1.13 | Projeção de níveis superiores e da cobertura | 20d | 2026-05-12 A | 2026-06-09 A | 51FS+8d | 100% |  | 2026-05-12 | 2026-07-03 | 38d |  |  |  |
| 181 | 3.4.1.1.14 | Cotas de nível principais | 20d | 2026-05-12 A | 2026-06-09 A | 51FS+8d | 100% |  | 2026-05-12 | 2026-07-03 | 38d |  |  |  |
| 182 | 3.4.1.1.15 | Relatório/Memorial de Projeto Preliminar | 5d | 2026-05-26 A | 2026-06-01 A | 181FF-5d | 100% |  | 2026-06-22 | 2026-06-26 | 5d |  |  |  |

| ID | WBS | Task | Duration | Start | Finish | Predecessors | Complete | Baseline start | Baseline finish | Baseline duration |
| --- | --- | --- | --- | --- | --- | --- | --- | --- | --- | --- |
| 183 | 3.4.1.2 | **LOD 300 - ANTEPROJETO** | 8d | 2026-06-10 A | 2026-06-19 A |  | 100% | 2026-07-06 | 2026-07-27 | 16d |
| 184 | 3.4.1.2.1 | **Situação** | 1d | 2026-06-10 A | 2026-06-10 A |  | 100% | 2026-07-06 | 2026-07-07 | 2d |
| 185 | 3.4.1.2.1.1 | Indicar simbologias de representação gráfica, conforme NBR 6492:2021; | 1d | 2026-06-10 A | 2026-06-10 A | 181 | 100% | 2026-07-06 | 2026-07-07 | 2d |
| 186 | 3.4.1.2.1.2 | Indicação Norte | 1d | 2026-06-10 A | 2026-06-10 A | 181 | 100% | 2026-07-06 | 2026-07-07 | 2d |
| 187 | 3.4.1.2.1.3 | Analisar, adicionar e fechar - Curvas de nível existentes e projetadas (conforme projetos de topografia e sondagem recebidos); | 1d | 2026-06-10 A | 2026-06-10 A | 181 | 100% | 2026-07-06 | 2026-07-07 | 2d |
| 188 | 3.4.1.2.1.4 | Indicação de Escala; | 1d | 2026-06-10 A | 2026-06-10 A | 181 | 100% | 2026-07-06 | 2026-07-07 | 2d |
| 189 | 3.4.1.2.1.5 | Vias de acesso ao conjunto, arruamento, logradouros adjacentes e calçadas com os respectivos equipamentos urbanos; | 1d | 2026-06-10 A | 2026-06-10 A | 181 | 100% | 2026-07-06 | 2026-07-07 | 2d |
| 190 | 3.4.1.2.1.6 | Platôs e taludes principais; | 1d | 2026-06-10 A | 2026-06-10 A | 181 | 100% | 2026-07-06 | 2026-07-07 | 2d |
| 191 | 3.4.1.2.1.7 | Perímetro do terreno, recuos e afastamentos; | 1d | 2026-06-10 A | 2026-06-10 A | 181 | 100% | 2026-07-06 | 2026-07-07 | 2d |
| 192 | 3.4.1.2.1.8 | Indicação das áreas a serem edificadas com o contorno da cobertura das edificações, estacionamentos e áreas permeáveis/impermeáveis; | 1d | 2026-06-10 A | 2026-06-10 A | 181 | 100% | 2026-07-06 | 2026-07-07 | 2d |
| 193 | 3.4.1.2.1.9 | Denominação das edificações, blocos ou espaços; | 1d | 2026-06-10 A | 2026-06-10 A | 181 | 100% | 2026-07-06 | 2026-07-07 | 2d |
| 194 | 3.4.1.2.1.10 | Cotas gerais | 1d | 2026-06-10 A | 2026-06-10 A | 181 | 100% | 2026-07-06 | 2026-07-07 | 2d |
| 195 | 3.4.1.2.1.11 | Cotas de nível principal. | 1d | 2026-06-10 A | 2026-06-10 A | 181 | 100% | 2026-07-06 | 2026-07-07 | 2d |
| 196 | 3.4.1.2.1.12 | Quadros de áreas | 1d | 2026-06-10 A | 2026-06-10 A | 181 | 100% | 2026-07-06 | 2026-07-07 | 2d |
| 197 | 3.4.1.2.1.13 | Relatório | 1d | 2026-06-10 A | 2026-06-10 A | 181 | 100% | 2026-07-06 | 2026-07-07 | 2d |
| 198 | 3.4.1.2.2 | Planta com as cotas de nível projetadas e existentes | 1d | 2026-06-11 A | 2026-06-11 A | 197 | 100% | 2026-07-08 | 2026-07-09 | 2d |
| 199 | 3.4.1.2.3 | **Plantas baixas (se tiver mais de um pavimento, duplicar bloco)** | 1d | 2026-06-12 A | 2026-06-12 A |  | 100% | 2026-07-10 | 2026-07-13 | 2d |
| 200 | 3.4.1.2.3.1 | Indicar simbologias de representação gráfica, conforme NBR 6492:2021; | 1d | 2026-06-12 A | 2026-06-12 A | 198 | 100% | 2026-07-10 | 2026-07-13 | 2d |
| 201 | 3.4.1.2.3.2 | Compatibilização (verificar se está tudo conforme as normas e alinhar com o restante das disciplinas de engenharia) | 1d | 2026-06-12 A | 2026-06-12 A | 198 | 100% | 2026-07-10 | 2026-07-13 | 2d |
| 202 | 3.4.1.2.3.3 | Compatibilização (deixar tudo conforme padrão Quanta) | 1d | 2026-06-12 A | 2026-06-12 A | 198 | 100% | 2026-07-10 | 2026-07-13 | 2d |
| 203 | 3.4.1.2.3.4 | Indicação de Norte; | 1d | 2026-06-12 A | 2026-06-12 A | 198 | 100% | 2026-07-10 | 2026-07-13 | 2d |
| 204 | 3.4.1.2.3.5 | Indicação de Escala; | 1d | 2026-06-12 A | 2026-06-12 A | 198 | 100% | 2026-07-10 | 2026-07-13 | 2d |
| 205 | 3.4.1.2.3.6 | Indicação de Acessos; | 1d | 2026-06-12 A | 2026-06-12 A | 198 | 100% | 2026-07-10 | 2026-07-13 | 2d |
| 206 | 3.4.1.2.3.7 | Elementos de vedação internos e externos; | 1d | 2026-06-12 A | 2026-06-12 A | 198 | 100% | 2026-07-10 | 2026-07-13 | 2d |
| 207 | 3.4.1.2.3.8 | Esquadrias; | 1d | 2026-06-12 A | 2026-06-12 A | 198 | 100% | 2026-07-10 | 2026-07-13 | 2d |
| 208 | 3.4.1.2.3.9 | Elementos estruturais principais; | 1d | 2026-06-12 A | 2026-06-12 A | 198 | 100% | 2026-07-10 | 2026-07-13 | 2d |
| 209 | 3.4.1.2.3.10 | Identificação dos ambientes e espaços (internos e externos); | 1d | 2026-06-12 A | 2026-06-12 A | 198 | 100% | 2026-07-10 | 2026-07-13 | 2d |
| 210 | 3.4.1.2.3.11 | Espaços de circulação internos e externos; | 1d | 2026-06-12 A | 2026-06-12 A | 198 | 100% | 2026-07-10 | 2026-07-13 | 2d |
| 211 | 3.4.1.2.3.12 | Áreas de serviço, funcionais e técnicas (internos e externos); | 1d | 2026-06-12 A | 2026-06-12 A | 198 | 100% | 2026-07-10 | 2026-07-13 | 2d |
| 212 | 3.4.1.2.3.13 | Projeções de níveis superiores; | 1d | 2026-06-12 A | 2026-06-12 A | 198 | 100% | 2026-07-10 | 2026-07-13 | 2d |
| 213 | 3.4.1.2.3.14 | Cotas gerais | 1d | 2026-06-12 A | 2026-06-12 A | 198 | 100% | 2026-07-10 | 2026-07-13 | 2d |
| 214 | 3.4.1.2.3.15 | Cotas de nível principal. | 1d | 2026-06-12 A | 2026-06-12 A | 198 | 100% | 2026-07-10 | 2026-07-13 | 2d |
| 215 | 3.4.1.2.3.16 | Tabelas de paredes, pisos, esquadrias e plantas | 1d | 2026-06-12 A | 2026-06-12 A | 198 | 100% | 2026-07-10 | 2026-07-13 | 2d |
| 216 | 3.4.1.2.3.17 | Quadro de áreas | 1d | 2026-06-12 A | 2026-06-12 A | 198 | 100% | 2026-07-10 | 2026-07-13 | 2d |
| 217 | 3.4.1.2.3.18 | Relatório | 1d | 2026-06-12 A | 2026-06-12 A | 198 | 100% | 2026-07-10 | 2026-07-13 | 2d |

| ID | WBS | Task | Duration | Start | Finish | Predecessors | Complete | Baseline start | Baseline finish | Baseline duration |
| --- | --- | --- | --- | --- | --- | --- | --- | --- | --- | --- |
| 218 | 3.4.1.2.4 | **Planta das coberturas** | 1d | 2026-06-15 A | 2026-06-15 A |  | 100% | 2026-07-14 | 2026-07-15 | 2d |
| 219 | 3.4.1.2.4.1 | Indicação do Norte | 1d | 2026-06-15 A | 2026-06-15 A | 216 | 100% | 2026-07-14 | 2026-07-15 | 2d |
| 220 | 3.4.1.2.4.2 | Indicação de escala | 1d | 2026-06-15 A | 2026-06-15 A | 216 | 100% | 2026-07-14 | 2026-07-15 | 2d |
| 221 | 3.4.1.2.4.3 | Curvas de nível | 1d | 2026-06-15 A | 2026-06-15 A | 216 | 100% | 2026-07-14 | 2026-07-15 | 2d |
| 222 | 3.4.1.2.4.4 | Indicação de Acessos; | 1d | 2026-06-15 A | 2026-06-15 A | 216 | 100% | 2026-07-14 | 2026-07-15 | 2d |
| 223 | 3.4.1.2.4.5 | Estacionamento e áreas cobertas | 1d | 2026-06-15 A | 2026-06-15 A | 216 | 100% | 2026-07-14 | 2026-07-15 | 2d |
| 224 | 3.4.1.2.4.6 | Cobertura das edificações | 1d | 2026-06-15 A | 2026-06-15 A | 216 | 100% | 2026-07-14 | 2026-07-15 | 2d |
| 225 | 3.4.1.2.4.7 | Sentido de escoamento das águas pluviais e inclinação | 1d | 2026-06-15 A | 2026-06-15 A | 216 | 100% | 2026-07-14 | 2026-07-15 | 2d |
| 226 | 3.4.1.2.4.8 | Cotas gerais | 1d | 2026-06-15 A | 2026-06-15 A | 216 | 100% | 2026-07-14 | 2026-07-15 | 2d |
| 227 | 3.4.1.2.4.9 | Cotas de nível principal | 1d | 2026-06-15 A | 2026-06-15 A | 216 | 100% | 2026-07-14 | 2026-07-15 | 2d |
| 228 | 3.4.1.2.4.10 | Relatório | 1d | 2026-06-15 A | 2026-06-15 A | 216 | 100% | 2026-07-14 | 2026-07-15 | 2d |
| 229 | 3.4.1.2.5 | **Cortes longitudinais** | 1d | 2026-06-16 A | 2026-06-16 A |  | 100% | 2026-07-16 | 2026-07-17 | 2d |
| 230 | 3.4.1.2.5.1 | Indicar simbologias de representação gráfica, conforme NBR 6492:2021; | 1d | 2026-06-16 A | 2026-06-16 A | 227 | 100% | 2026-07-16 | 2026-07-17 | 2d |
| 231 | 3.4.1.2.5.2 | Indicação de Escala; | 1d | 2026-06-16 A | 2026-06-16 A | 227 | 100% | 2026-07-16 | 2026-07-17 | 2d |
| 232 | 3.4.1.2.5.3 | Elementos estruturais principais; | 1d | 2026-06-16 A | 2026-06-16 A | 227 | 100% | 2026-07-16 | 2026-07-17 | 2d |
| 233 | 3.4.1.2.5.4 | Elementos de vedação internos e externos; | 1d | 2026-06-16 A | 2026-06-16 A | 227 | 100% | 2026-07-16 | 2026-07-17 | 2d |
| 234 | 3.4.1.2.5.5 | Esquadrias; | 1d | 2026-06-16 A | 2026-06-16 A | 227 | 100% | 2026-07-16 | 2026-07-17 | 2d |
| 235 | 3.4.1.2.5.6 | Identificação dos ambientes; | 1d | 2026-06-16 A | 2026-06-16 A | 227 | 100% | 2026-07-16 | 2026-07-17 | 2d |
| 236 | 3.4.1.2.5.7 | Cobertura com indicação da respectiva inclinação; | 1d | 2026-06-16 A | 2026-06-16 A | 227 | 100% | 2026-07-16 | 2026-07-17 | 2d |
| 237 | 3.4.1.2.5.8 | Cotas gerais; | 1d | 2026-06-16 A | 2026-06-16 A | 227 | 100% | 2026-07-16 | 2026-07-17 | 2d |
| 238 | 3.4.1.2.5.9 | Cotas de nível principal; | 1d | 2026-06-16 A | 2026-06-16 A | 227 | 100% | 2026-07-16 | 2026-07-17 | 2d |
| 239 | 3.4.1.2.5.10 | Eixos do projeto; | 1d | 2026-06-16 A | 2026-06-16 A | 227 | 100% | 2026-07-16 | 2026-07-17 | 2d |
| 240 | 3.4.1.2.5.11 | Relevo construído; | 1d | 2026-06-16 A | 2026-06-16 A | 227 | 100% | 2026-07-16 | 2026-07-17 | 2d |
| 241 | 3.4.1.2.5.12 | Projeção da topografia natural. | 1d | 2026-06-16 A | 2026-06-16 A | 227 | 100% | 2026-07-16 | 2026-07-17 | 2d |
| 242 | 3.4.1.2.5.13 | Relatório | 1d | 2026-06-16 A | 2026-06-16 A | 227 | 100% | 2026-07-16 | 2026-07-17 | 2d |

| ID | WBS | Task | Duration | Start | Finish | Predecessors | Complete | Baseline start | Baseline finish | Baseline duration |
| --- | --- | --- | --- | --- | --- | --- | --- | --- | --- | --- |
| 243 | 3.4.1.2.6 | **Cortes transversais** | 1d | 2026-06-17 A | 2026-06-17 A |  | 100% | 2026-07-20 | 2026-07-21 | 2d |
| 244 | 3.4.1.2.6.1 | Indicar simbologias de representação gráfica, conforme NBR 6492:2021; | 1d | 2026-06-17 A | 2026-06-17 A | 241 | 100% | 2026-07-20 | 2026-07-21 | 2d |
| 245 | 3.4.1.2.6.2 | Indicação de Escala; | 1d | 2026-06-17 A | 2026-06-17 A | 241 | 100% | 2026-07-20 | 2026-07-21 | 2d |
| 246 | 3.4.1.2.6.3 | Elementos estruturais principais; | 1d | 2026-06-17 A | 2026-06-17 A | 241 | 100% | 2026-07-20 | 2026-07-21 | 2d |
| 247 | 3.4.1.2.6.4 | Elementos de vedação internos e externos; | 1d | 2026-06-17 A | 2026-06-17 A | 241 | 100% | 2026-07-20 | 2026-07-21 | 2d |
| 248 | 3.4.1.2.6.5 | Esquadrias; | 1d | 2026-06-17 A | 2026-06-17 A | 241 | 100% | 2026-07-20 | 2026-07-21 | 2d |
| 249 | 3.4.1.2.6.6 | Identificação dos ambientes; | 1d | 2026-06-17 A | 2026-06-17 A | 241 | 100% | 2026-07-20 | 2026-07-21 | 2d |
| 250 | 3.4.1.2.6.7 | Cobertura com indicação da respectiva inclinação; | 1d | 2026-06-17 A | 2026-06-17 A | 241 | 100% | 2026-07-20 | 2026-07-21 | 2d |
| 251 | 3.4.1.2.6.8 | Cotas gerais; | 1d | 2026-06-17 A | 2026-06-17 A | 241 | 100% | 2026-07-20 | 2026-07-21 | 2d |
| 252 | 3.4.1.2.6.9 | Cotas de nível principal; | 1d | 2026-06-17 A | 2026-06-17 A | 241 | 100% | 2026-07-20 | 2026-07-21 | 2d |
| 253 | 3.4.1.2.6.10 | Eixos do projeto; | 1d | 2026-06-17 A | 2026-06-17 A | 241 | 100% | 2026-07-20 | 2026-07-21 | 2d |
| 254 | 3.4.1.2.6.11 | Relevo construído; | 1d | 2026-06-17 A | 2026-06-17 A | 241 | 100% | 2026-07-20 | 2026-07-21 | 2d |
| 255 | 3.4.1.2.6.12 | Projeção da topografia natural | 1d | 2026-06-17 A | 2026-06-17 A | 241 | 100% | 2026-07-20 | 2026-07-21 | 2d |
| 256 | 3.4.1.2.6.13 | Relatório | 1d | 2026-06-17 A | 2026-06-17 A | 241 | 100% | 2026-07-20 | 2026-07-21 | 2d |
| 257 | 3.4.1.2.7 | **Elevações** | 1d | 2026-06-18 A | 2026-06-18 A |  | 100% | 2026-07-22 | 2026-07-23 | 2d |
| 258 | 3.4.1.2.7.1 | Indicar simbologias de representação gráfica, conforme NBR 6492:2021; | 1d | 2026-06-18 A | 2026-06-18 A | 255 | 100% | 2026-07-22 | 2026-07-23 | 2d |
| 259 | 3.4.1.2.7.2 | Indicação de Escala; | 1d | 2026-06-18 A | 2026-06-18 A | 255 | 100% | 2026-07-22 | 2026-07-23 | 2d |
| 260 | 3.4.1.2.7.3 | Elementos estruturais principais; | 1d | 2026-06-18 A | 2026-06-18 A | 255 | 100% | 2026-07-22 | 2026-07-23 | 2d |
| 261 | 3.4.1.2.7.4 | Elementos de vedação internos e externos; | 1d | 2026-06-18 A | 2026-06-18 A | 255 | 100% | 2026-07-22 | 2026-07-23 | 2d |
| 262 | 3.4.1.2.7.5 | Esquadrias; | 1d | 2026-06-18 A | 2026-06-18 A | 255 | 100% | 2026-07-22 | 2026-07-23 | 2d |
| 263 | 3.4.1.2.7.6 | Relevo construído; | 1d | 2026-06-18 A | 2026-06-18 A | 255 | 100% | 2026-07-22 | 2026-07-23 | 2d |
| 264 | 3.4.1.2.7.7 | Cotas gerais; | 1d | 2026-06-18 A | 2026-06-18 A | 255 | 100% | 2026-07-22 | 2026-07-23 | 2d |
| 265 | 3.4.1.2.7.8 | Cotas de nível principais; | 1d | 2026-06-18 A | 2026-06-18 A | 255 | 100% | 2026-07-22 | 2026-07-23 | 2d |
| 266 | 3.4.1.2.7.9 | Cobertura (quando aparente). | 1d | 2026-06-18 A | 2026-06-18 A | 255 | 100% | 2026-07-22 | 2026-07-23 | 2d |

| ID | WBS | Task | Duration | Start | Finish | Predecessors | Complete | Remaining | Baseline start | Baseline finish | Baseline duration | Total slack |
| --- | --- | --- | --- | --- | --- | --- | --- | --- | --- | --- | --- | --- |
| 267 | 3.4.1.2.8 | **Memorial Descritivo** | 1d | 2026-06-19 A | 2026-06-19 A |  | 100% |  | 2026-07-24 | 2026-07-27 | 2d |  |
| 268 | 3.4.1.2.8.1 | Descrição dos elementos da edificação | 1d | 2026-06-19 A | 2026-06-19 A | 266 | 100% |  | 2026-07-24 | 2026-07-27 | 2d |  |
| 269 | 3.4.1.2.8.2 | Descrição dos componentes construtivos e materiais de construção | 1d | 2026-06-19 A | 2026-06-19 A | 266 | 100% |  | 2026-07-24 | 2026-07-27 | 2d |  |
| 270 | 3.4.1.2.8.3 | Lista de pranchas anexas e documentos | 1d | 2026-06-19 A | 2026-06-19 A | 266 | 100% |  | 2026-07-24 | 2026-07-27 | 2d |  |
| 271 | 3.4.2 | **Engenharia** | 36d | 2026-06-29 A | 2026-08-17 |  | 93% | 2.42d | 2026-06-01 | 2026-07-24 | 39d | 5d |
| 272 | 3.4.2.1 | **Estrutura** | 36d | 2026-06-29 A | 2026-08-17 |  | 83% | 6.15d | 2026-06-01 | 2026-07-20 | 35d | 5d |
| 273 | 3.4.2.1.1 | **LOD 100 — Premissas, diretrizes e interfaces** | 7d | 2026-06-29 A | 2026-07-07 A |  | 100% |  | 2026-06-01 | 2026-06-10 | 7d |  |
| 274 | 3.4.2.1.1.1 | Levantamento de tipos de cargas globais estimadas (permanentes, acidentais, vento e especiais). | 2d | 2026-06-29 A | 2026-06-30 A | 181SS+33d | 100% |  | 2026-06-01 | 2026-06-02 | 2d |  |
| 275 | 3.4.2.1.1.2 | Estudo volumétrico com modulação inicial de pilares, vigas e lajes. Entendendo vãos e desafios | 5d | 2026-06-29 A | 2026-07-03 A | 181SS+33d | 100% |  | 2026-06-01 | 2026-06-08 | 5d |  |
| 276 | 3.4.2.1.1.3 | Localização aproximada de elementos estruturais principais. Avaliando vãos e estudando posições | 2d | 2026-06-29 A | 2026-06-30 A | 181SS+33d | 100% |  | 2026-06-01 | 2026-06-02 | 2d |  |
| 277 | 3.4.2.1.1.4 | Estudo de viabilidade técnica e construtiva. | 3d | 2026-07-01 A | 2026-07-03 A | 276 | 100% |  | 2026-06-03 | 2026-06-08 | 3d |  |
| 278 | 3.4.2.1.1.5 | Definição preliminar do sistema estrutural (concreto armado, metálica ou mista). | 3d | 2026-07-01 A | 2026-07-03 A | 276 | 100% |  | 2026-06-03 | 2026-06-08 | 3d |  |
| 279 | 3.4.2.1.1.6 | Estimativa preliminar de tipologias de fundações (sapatas, blocos, estacas). | 2d | 2026-07-06 A | 2026-07-07 A | 277 | 100% |  | 2026-06-09 | 2026-06-10 | 2d |  |
| 280 | 3.4.2.1.1.7 | Previsão de áreas técnicas, casas de máquinas, reservatórios elevados e estrutura de cobertura. | 2d | 2026-07-06 A | 2026-07-07 A | 277 | 100% |  | 2026-06-09 | 2026-06-10 | 2d |  |
| 281 | 3.4.2.1.2 | **LOD 200 — Validação interdisciplinar e solução preliminar** | 13d | 2026-07-08 A | 2026-07-24 A |  | 100% |  | 2026-06-11 | 2026-07-08 | 20d |  |
| 282 | 3.4.2.1.2.1 | Lista preliminar de cargas e ações para dimensionamento. | 2d | 2026-07-08 A | 2026-07-09 A | 280 | 100% |  | 2026-06-11 | 2026-06-17 | 5d |  |
| 283 | 3.4.2.1.2.2 | Definição preliminar de alturas de pavimentos e níveis de fundação. | 2d | 2026-07-08 A | 2026-07-09 A | 280 | 100% |  | 2026-06-11 | 2026-06-17 | 5d |  |
| 284 | 3.4.2.1.2.3 | Indicação aproximada do sistema de cobertura (tesouras, treliças, vigamento metálico ou concreto). | 2d | 2026-07-08 A | 2026-07-09 A | 280 | 100% |  | 2026-06-11 | 2026-06-17 | 5d |  |
| 285 | 3.4.2.1.2.4 | Modelagem genérica de pilares, vigas, lajes e fundações. | 2d | 2026-07-15 A | 2026-07-16 A | 282 | 100% |  | 2026-06-18 | 2026-06-24 | 5d |  |
| 286 | 3.4.2.1.2.5 | Traçado preliminar de elementos especiais (escadas, rampas estruturais, reservatórios). | 2d | 2026-07-15 A | 2026-07-16 A | 282 | 100% |  | 2026-06-18 | 2026-06-24 | 5d |  |
| 287 | 3.4.2.1.2.6 | Arquivo IFC, plantas de forma e planta de locação | 2d | 2026-07-15 A | 2026-07-16 A | 282 | 100% |  | 2026-06-18 | 2026-06-24 | 5d |  |
| 288 | 3.4.2.1.2.7 | Inserção de fundações com tipologia e dimensões preliminares. | 3d | 2026-07-22 A | 2026-07-24 A | 286 | 100% |  | 2026-06-25 | 2026-07-01 | 5d |  |
| 289 | 3.4.2.1.2.8 | Compatibilização inicial com arquitetura e demais disciplinas. | 3d | 2026-07-22 A | 2026-07-24 A | 287 | 100% |  | 2026-06-25 | 2026-07-01 | 5d |  |
| 290 | 3.4.2.1.2.9 | Indicação de passagens de infraestrutura (shafts, aberturas em lajes e vigas). | 3d | 2026-07-22 A | 2026-07-24 A | 287 | 100% |  | 2026-06-25 | 2026-07-01 | 5d |  |
| 291 | 3.4.2.1.2.10 | Modelagem assertiva de elementos principais com dimensões aproximadas (largura, altura, espessura). | 3d | 2026-07-22 A | 2026-07-24 A | 287 | 100% |  | 2026-06-25 | 2026-07-08 | 10d |  |
| 292 | 3.4.2.1.2.11 | Modelagem estimada de armaduras principais (em nível de concepção). | 3d | 2026-07-22 A | 2026-07-24 A | 287 | 100% |  | 2026-06-25 | 2026-07-01 | 5d |  |

| ID | WBS | Task | Duration | Start | Finish | Predecessors | Complete | Remaining | Baseline start | Baseline finish | Baseline duration | Total slack | Free slack |
| --- | --- | --- | --- | --- | --- | --- | --- | --- | --- | --- | --- | --- | --- |
| 293 | 3.4.2.1.3 | **LOD 300 - Consolidação e documentação de entrega** | 16d | 2026-07-27 A | 2026-08-17 |  | 76% | 3.86d | 2026-07-09 | 2026-07-20 | 8d | 5d |  |
| 294 | 3.4.2.1.3.1 | Indicação de níveis e cotas exatas. | 10d | 2026-07-27 A | 2026-08-07 A | 291, 292 | 100% |  | 2026-07-09 | 2026-07-20 | 8d |  |  |
| 295 | 3.4.2.1.3.2 | Quadro de cargas atualizado. | 10d | 2026-07-27 A | 2026-08-07 A | 291, 292 | 100% |  | 2026-07-09 | 2026-07-20 | 8d |  |  |
| 296 | 3.4.2.1.3.3 | Dimensionamento final de fundações conforme sondagem e cálculo estrutural. | 10d | 2026-07-27 A | 2026-08-07 A | 291, 292 | 100% |  | 2026-07-09 | 2026-07-20 | 8d |  |  |
| 297 | 3.4.2.1.3.4 | Definição final dos elementos da cobertura (treliças, vigas, chapas, purlins). | 10d | 2026-07-27 A | 2026-08-07 A | 291, 292 | 100% |  | 2026-07-09 | 2026-07-20 | 8d |  |  |
| 298 | 3.4.2.1.3.5 | Compatibilização final com arquitetura e instalações (aberturas, embutidos e passagens). | 10d | 2026-07-27 A | 2026-08-07 A | 291, 292 | 100% |  | 2026-07-09 | 2026-07-20 | 8d |  |  |
| 299 | 3.4.2.1.3.6 | Modelagem definitiva de pilares, vigas, lajes, blocos, sapatas e estacas. | 10d | 2026-07-27 A | 2026-08-07 A | 291, 292 | 100% |  | 2026-07-09 | 2026-07-20 | 8d |  |  |
| 300 | 3.4.2.1.3.7 | Planta estrutural com todos os elementos identificados. | 10d | 2026-07-27 A | 2026-08-07 A | 291, 292 | 100% |  | 2026-07-09 | 2026-07-20 | 8d |  |  |
| 301 | 3.4.2.1.3.8 | Memorial descritivo contendo: objetivos, justificativa, descrição do sistema, concepção de fundações/cobertura, especificações e quadro de cargas. | 16d | 2026-07-27 A | 2026-08-17 | 291, 292 | 31% | 11d | 2026-07-09 | 2026-07-20 | 8d | 5d |  |
| 302 | 3.4.2.1.3.9 | Normas técnicas utilizadas (NBR 6118, 6120, 6122, 8800, etc.). | 10d | 2026-07-27 A | 2026-08-07 | 291, 292 | 50% | 5d | 2026-07-09 | 2026-07-20 | 8d | 11d |  |
| 303 | 3.4.2.1.3.10 | Consolidar documentação de entrega e emissão formal da disciplina | 16d | 2026-07-27 A | 2026-08-17 | 291, 292 | 31% | 11d | 2026-07-09 | 2026-07-20 | 8d | 5d |  |
| 304 | 3.4.2.2 | **Hidrossanitário** | 36d | 2026-06-29 A | 2026-08-17 |  | 92% | 2.83d | 2026-06-01 | 2026-07-24 | 39d | 5d |  |
| 305 | 3.4.2.2.1 | **LOD 100 — Premissas, diretrizes e interfaces** | 11d | 2026-06-29 A | 2026-07-13 A |  | 100% |  | 2026-06-01 | 2026-06-16 | 11d |  |  |
| 306 | 3.4.2.2.1.1 | Memorial preliminar | 10d | 2026-06-29 A | 2026-07-10 A | 181SS+33d | 100% |  | 2026-06-01 | 2026-06-15 | 10d |  |  |
| 307 | 3.4.2.2.1.2 | Indicação de áreas técnicas | 6d | 2026-06-29 A | 2026-07-06 A | 181SS+33d | 100% |  | 2026-06-09 | 2026-06-16 | 6d |  |  |
| 308 | 3.4.2.2.1.3 | Planta baixa com traçado conceitual | 6d | 2026-07-06 A | 2026-07-13 A | 275 | 100% |  | 2026-06-09 | 2026-06-16 | 6d |  |  |
| 309 | 3.4.2.2.1.4 | Pontos de consumo principais e coletas sanitárias | 6d | 2026-07-06 A | 2026-07-13 A | 275 | 100% |  | 2026-06-09 | 2026-06-16 | 6d |  |  |
| 310 | 3.4.2.2.1.5 | Classificação de uso | 10d | 2026-06-30 A | 2026-07-13 A | 309FF | 100% |  | 2026-06-02 | 2026-06-16 | 10d |  |  |
| 311 | 3.4.2.2.1.6 | Diretrizes de espaço | 10d | 2026-06-30 A | 2026-07-13 A | 309FF | 100% |  | 2026-06-02 | 2026-06-16 | 10d |  |  |
| 312 | 3.4.2.2.1.7 | Estimativa de demanda ou população de uso | 10d | 2026-06-30 A | 2026-07-13 A | 309FF | 100% |  | 2026-06-02 | 2026-06-16 | 10d |  |  |
| 313 | 3.4.2.2.1.8 | Levantamento de elementos especiais dentre outras disciplinas de Engenharia e Arquitetura | 10d | 2026-06-30 A | 2026-07-13 A | 309FF | 100% |  | 2026-06-02 | 2026-06-16 | 10d |  |  |
| 314 | 3.4.2.2.2 | **LOD 200 — Validação interdisciplinar e solução preliminar** | 12d | 2026-07-14 A | 2026-07-29 |  | 87% | 1.53d | 2026-06-17 | 2026-07-14 | 20d | 18d |  |
| 315 | 3.4.2.2.2.1 | Critérios normativos adotados (ABNT, concessionárias, etc.) | 12d | 2026-07-14 A | 2026-07-29 | 313 | 87% | 1.53d | 2026-06-17 | 2026-07-14 | 20d | 18d | 0d |
| 316 | 3.4.2.2.2.2 | Informações de demanda na concessionária (DPE ou AVT Aviso de Viabilidade Técnica) | 12d | 2026-07-14 A | 2026-07-29 | 23, 27, 315SS | 87% | 1.53d | 2026-06-17 | 2026-07-14 | 20d | 18d |  |
| 317 | 3.4.2.2.2.3 | Recebimento e Análise de Sondagem (permeabilidade ou percolação) | 12d | 2026-07-14 A | 2026-07-29 | 23, 27, 315SS | 87% | 1.53d | 2026-06-17 | 2026-07-14 | 20d | 18d |  |
| 318 | 3.4.2.2.2.4 | Recebimento e Análise de Topografia | 12d | 2026-07-14 A | 2026-07-29 | 23, 27, 315SS | 87% | 1.53d | 2026-06-17 | 2026-07-14 | 20d | 18d |  |
| 319 | 3.4.2.2.2.5 | Estudo de viabilidade técnica, econômica e ambiental | 12d | 2026-07-14 A | 2026-07-29 | 315SS | 87% | 1.53d | 2026-06-17 | 2026-07-14 | 20d | 18d |  |
| 320 | 3.4.2.2.2.6 | Lista preliminar de sistemas envolvidos. | 12d | 2026-07-14 A | 2026-07-29 | 313 | 87% | 1.53d | 2026-06-17 | 2026-07-14 | 20d | 18d |  |
| 321 | 3.4.2.2.2.7 | Planta baixa e cortes estimada contendo: - Traçado preliminar de barrilete, ramais, colunas - Diâmetros estimados - Localização aproximada das bombas e unidades de tratamento e reúso - Localização do ramal predial de água e esgoto - Localização aproximada | 12d | 2026-07-14 A | 2026-07-29 | 313 | 87% | 1.53d | 2026-06-17 | 2026-07-14 | 20d | 10.8d | 0d |

| ID | WBS | Task | Duration | Start | Finish | Predecessors | Complete | Remaining | Baseline start | Baseline finish | Baseline duration | Total slack | Free slack | Constraint | Text3 |
| --- | --- | --- | --- | --- | --- | --- | --- | --- | --- | --- | --- | --- | --- | --- | --- |
| 322 | 3.4.2.2.3 | **LOD 300 - Consolidação e documentação de entrega** | 14d | 2026-07-29 A | 2026-08-17 |  | 85% | 2.14d | 2026-07-15 | 2026-07-24 | 8d | 5d |  |  |  |
| 323 | 3.4.2.2.3.1 | Planta, corte e detalhe isométrico contendo: - Modelagem detalhada com diâmetros, cotas e inclinações definitivas (barriletes, colunas, ramais) - Quantitativos e especificação técnica dos materiais (tubos, conexões, reservatórios, registros e válvulas com | 13d | 2026-07-30 A | 2026-08-17 | 321 | 83% | 2.2d | 2026-07-15 | 2026-07-24 | 8d | 5d | 0d |  |  |
| 324 | 3.4.2.2.3.2 | Memorial descritivo | 2d | 2026-07-29 A | 2026-08-17 | 323FF | 90% | 0.2d | 2026-07-22 | 2026-07-24 | 3d | 5d |  |  |  |
| 325 | 3.4.2.2.3.3 | Memória de cálculo (pressão, vazão, diâmetros, perda de carga). | 2d | 2026-07-30 A | 2026-08-17 | 321, 323FF | 90% | 0.2d | 2026-07-22 | 2026-07-24 | 3d | 5d |  |  |  |
| 326 | 3.4.2.3 | **AVAC** | 35d | 2026-06-29 A | 2026-08-14 |  | 97% | 1.06d | 2026-06-01 | 2026-07-24 | 39d | 6d |  |  |  |
| 327 | 3.4.2.3.1 | **LOD 100 — Premissas, diretrizes e interfaces** | 20d | 2026-06-29 A | 2026-07-24 A |  | 100% |  | 2026-06-01 | 2026-06-29 | 20d |  |  |  |  |
| 328 | 3.4.2.3.1.1 | Estimativa de carga térmica por ambiente. | 10d | 2026-06-29 A | 2026-07-10 A | 181SS+33d | 100% |  | 2026-06-01 | 2026-06-15 | 10d |  |  |  |  |
| 329 | 3.4.2.3.1.2 | Localização preliminar de unidades de tratamento de ar, condensadoras e exaustores. | 10d | 2026-06-29 A | 2026-07-10 A | 181SS+33d | 100% |  | 2026-06-01 | 2026-06-15 | 10d |  |  |  |  |
| 330 | 3.4.2.3.1.3 | Pontos locação para seus elementos no projeto arquitetônico. | 10d | 2026-06-29 A | 2026-07-10 A | 181SS+33d | 100% |  | 2026-06-01 | 2026-06-15 | 10d |  |  |  |  |
| 331 | 3.4.2.3.1.4 | Estudo de viabilidade e rotas principais de distribuição de ar. | 10d | 2026-06-29 A | 2026-07-10 A | 181SS+33d | 100% |  | 2026-06-01 | 2026-06-15 | 10d |  |  |  |  |
| 332 | 3.4.2.3.1.5 | Reserva de espaços técnicos e shafts. | 10d | 2026-06-29 A | 2026-07-10 A | 181SS+33d | 100% |  | 2026-06-01 | 2026-06-15 | 10d |  |  |  |  |
| 333 | 3.4.2.3.1.6 | Levantamento de cargas especiais provenientes de outras disciplinas. | 10d | 2026-07-13 A | 2026-07-24 A | 181SS+33d, 352, 362 | 100% |  | 2026-06-16 | 2026-06-29 | 10d |  |  |  |  |
| 334 | 3.4.2.3.2 | **LOD 200 — Validação interdisciplinar e solução preliminar** | 25d | 2026-07-13 A | 2026-08-14 A |  | 100% |  | 2026-06-16 | 2026-07-24 | 29d |  |  |  |  |
| 335 | 3.4.2.3.2.1 | Lista preliminar de sistemas HVAC envolvidos (expansão direta, VRF, chillers, ventilação, exaustão). | 25d | 2026-07-13 A | 2026-08-14 A | 332 | 100% |  | 2026-06-16 | 2026-07-24 | 29d |  |  |  |  |
| 336 | 3.4.2.3.2.2 | Planta baixa estimada contendo: pontos de insuflamento e retorno. | 25d | 2026-07-13 A | 2026-08-14 A | 332 | 100% |  | 2026-06-16 | 2026-07-24 | 29d |  |  |  |  |
| 337 | 3.4.2.3.2.3 | Rotas iniciais de dutos, tubulações e drenos. | 25d | 2026-07-13 A | 2026-08-14 A | 332 | 100% |  | 2026-06-16 | 2026-07-24 | 29d |  |  |  |  |
| 338 | 3.4.2.3.2.4 | Planta baixa estimada contendo: unidades internas e externas com posição preliminar. | 25d | 2026-07-13 A | 2026-08-14 A | 332 | 100% |  | 2026-06-16 | 2026-07-24 | 29d |  |  |  |  |
| 339 | 3.4.2.3.3 | Desenhos conforme IBRAOP | 5d | 2026-08-10 | 2026-08-14 |  |  |  | 2026-07-27 | 2026-07-27 | 0d | 6d |  | start no earlier than 2026-08-10 |  |
| 340 | 3.4.2.4 | **PCI (Incêndio)** | 20d | 2026-07-20 A | 2026-08-14 A |  | 100% |  | 2026-06-01 | 2026-06-29 | 20d |  |  |  |  |
| 341 | 3.4.2.4.1 | **LOD 100 — Premissas, diretrizes e interfaces** | 10d | 2026-07-20 A | 2026-07-31 A |  | 100% |  | 2026-06-01 | 2026-06-15 | 10d |  |  |  | ܁# |
| 342 | 3.4.2.4.1.1 | Estudo e avaliação da arquitetura atendendo as normas competentes de PCI | 10d | 2026-07-20 A | 2026-07-31 A | 181SS+48d | 100% |  | 2026-06-01 | 2026-06-15 | 10d |  |  |  |  |
| 343 | 3.4.2.4.1.2 | Avaliação do espaço para CMI e Central de Gás. | 10d | 2026-07-20 A | 2026-07-31 A | 181SS+48d | 100% |  | 2026-06-01 | 2026-06-15 | 10d |  |  |  |  |
| 344 | 3.4.2.4.1.3 | Pontos locação para seus elementos no projeto arquitetônico | 10d | 2026-07-20 A | 2026-07-31 A | 181SS+48d | 100% |  | 2026-06-01 | 2026-06-15 | 10d |  |  |  |  |
| 345 | 3.4.2.4.2 | **LOD 200 — Validação interdisciplinar e solução preliminar** | 10d | 2026-08-03 A | 2026-08-14 A |  | 100% |  | 2026-06-16 | 2026-06-29 | 10d |  |  |  | ܁# |
| 346 | 3.4.2.4.2.1 | Definição da classificação da edificação e o risco de incêndio | 10d | 2026-08-03 A | 2026-08-14 A | 344 | 100% |  | 2026-06-16 | 2026-06-29 | 10d |  |  |  |  |
| 347 | 3.4.2.4.2.2 | Cálculos pré-dimensionados dos extintores, hidrantes e bomba. | 10d | 2026-08-03 A | 2026-08-14 A | 344 | 100% |  | 2026-06-16 | 2026-06-29 | 10d |  |  |  |  |
| 348 | 3.4.2.4.2.3 | Avaliação das rotas de fuga, ventilação de CMI e outros elementos de importância para as normas de PCI | 10d | 2026-08-03 A | 2026-08-14 A | 344 | 100% |  | 2026-06-16 | 2026-06-29 | 10d |  |  |  |  |

| ID | WBS | Task | Duration | Start | Finish | Predecessors | Complete | Remaining | Baseline start | Baseline finish | Baseline duration | Total slack |
| --- | --- | --- | --- | --- | --- | --- | --- | --- | --- | --- | --- | --- |
| 349 | 3.4.2.5 | **Elétrica Baixa Tensão** | 35d | 2026-06-29 A | 2026-08-14 |  | 96% | 1.33d | 2026-06-01 | 2026-07-24 | 39d | 6d |
| 350 | 3.4.2.5.1 | **LOD 100 — Concepção** | 13d | 2026-06-29 A | 2026-07-15 A |  | 100% |  | 2026-06-01 | 2026-06-23 | 16d |  |
| 351 | 3.4.2.5.1.1 | Avaliação e Diretrizes Técnicas para Arquitetura | 6d | 2026-06-29 A | 2026-07-06 A | 181SS+33d | 100% |  | 2026-06-01 | 2026-06-09 | 6d |  |
| 352 | 3.4.2.5.1.2 | Estimativa de Cargas e Demanda | 10d | 2026-06-29 A | 2026-07-10 A | 181SS+33d | 100% |  | 2026-06-01 | 2026-06-15 | 10d |  |
| 353 | 3.4.2.5.1.3 | Levantamento de Equipamentos de Outras Disciplinas | 3d | 2026-07-13 A | 2026-07-15 A | 330 | 100% |  | 2026-06-16 | 2026-06-23 | 6d |  |
| 354 | 3.4.2.5.2 | **LOD 200 — Anteprojeto** | 19d | 2026-07-16 A | 2026-08-11 A |  | 100% |  | 2026-06-24 | 2026-07-20 | 19d |  |
| 355 | 3.4.2.5.2.1 | TUGs Estimados | 19d | 2026-07-16 A | 2026-08-11 A | 352, 353 | 100% |  | 2026-06-24 | 2026-07-20 | 19d |  |
| 356 | 3.4.2.5.2.2 | Pontos de Luz Estimados | 19d | 2026-07-16 A | 2026-08-11 A | 352, 353 | 100% |  | 2026-06-24 | 2026-07-20 | 19d |  |
| 357 | 3.4.2.5.2.3 | TUEs e Quadros Estimados | 19d | 2026-07-16 A | 2026-08-11 A | 352, 353 | 100% |  | 2026-06-24 | 2026-07-20 | 19d |  |
| 358 | 3.4.2.5.3 | LOD 300 - Consolidação e documentação de entrega | 3d | 2026-08-12 | 2026-08-14 | 354 |  |  | 2026-07-21 | 2026-07-24 | 4d | 6d |
| 359 | 3.4.2.6 | **Telecom** | 35d | 2026-06-29 A | 2026-08-14 |  | 94% | 2.15d | 2026-06-01 | 2026-07-17 | 34d | 6d |
| 360 | 3.4.2.6.1 | **LOD 100 — Concepção** | 10d | 2026-06-29 A | 2026-07-10 A |  | 100% |  | 2026-06-01 | 2026-06-15 | 10d |  |
| 361 | 3.4.2.6.1.1 | Avaliação e Diretrizes Técnicas para Arquitetura | 10d | 2026-06-29 A | 2026-07-10 A | 181SS+33d | 100% |  | 2026-06-01 | 2026-06-15 | 10d |  |
| 362 | 3.4.2.6.1.2 | Estimativa de Demanda de Telecomunicações | 10d | 2026-06-29 A | 2026-07-10 A | 181SS+33d | 100% |  | 2026-06-01 | 2026-06-15 | 10d |  |
| 363 | 3.4.2.6.1.3 | Levantamento de Equipamentos e Interfaces com Outras Disciplinas | 10d | 2026-06-29 A | 2026-07-10 A | 181SS+33d | 100% |  | 2026-06-01 | 2026-06-15 | 10d |  |
| 364 | 3.4.2.6.2 | **LOD 200 — Anteprojeto** | 21d | 2026-07-13 A | 2026-08-10 A |  | 100% |  | 2026-06-16 | 2026-07-13 | 20d |  |
| 365 | 3.4.2.6.2.1 | Pontos de Telecomunicações Estimados (Rede, Voz, CFTV e Demais Sistemas) | 10d | 2026-07-13 A | 2026-07-24 A | 363 | 100% |  | 2026-06-16 | 2026-06-29 | 10d |  |
| 366 | 3.4.2.6.2.2 | Racks Estimados | 10d | 2026-07-13 A | 2026-07-24 A | 363 | 100% |  | 2026-06-16 | 2026-06-29 | 10d |  |
| 367 | 3.4.2.6.2.3 | Infraestrutura de Telecomunicações Preliminar | 11d | 2026-07-27 A | 2026-08-10 A | 366, 365 | 100% |  | 2026-06-30 | 2026-07-13 | 10d |  |
| 368 | 3.4.2.6.3 | LOD 300 - Consolidação e documentação de entrega | 4d | 2026-08-11 | 2026-08-14 | 364 |  |  | 2026-07-14 | 2026-07-17 | 4d | 6d |
| 369 | 3.4.2.7 | **Subestação** | 35d | 2026-06-29 A | 2026-08-14 |  | 93% | 2.41d | 2026-06-01 | 2026-07-24 | 39d | 6d |
| 370 | 3.4.2.7.1 | **LOD 100 — Concepção** | 5d | 2026-06-29 A | 2026-07-03 A |  | 100% |  | 2026-06-01 | 2026-06-08 | 5d |  |
| 371 | 3.4.2.7.1.1 | Avaliação e Diretrizes Técnicas para Arquitetura | 5d | 2026-06-29 A | 2026-07-03 A | 181SS+33d | 100% |  | 2026-06-01 | 2026-06-08 | 5d |  |
| 372 | 3.4.2.7.1.2 | Levantamento de Demanda, Perfil de Consumo e Ponto de Entrega | 5d | 2026-06-29 A | 2026-07-03 A | 181SS+33d | 100% |  | 2026-06-01 | 2026-06-08 | 5d |  |
| 373 | 3.4.2.7.1.3 | Estudo de Viabilidade Técnica e Atendimento ao Padrão da Concessionária | 5d | 2026-06-29 A | 2026-07-03 A | 181SS+33d | 100% |  | 2026-06-01 | 2026-06-08 | 5d |  |

| ID | WBS | Task | Duration | Start | Finish | Predecessors | Complete | Remaining | Baseline start | Baseline finish | Baseline duration | Total slack |
| --- | --- | --- | --- | --- | --- | --- | --- | --- | --- | --- | --- | --- |
| 374 | 3.4.2.7.2 | **LOD 200 — Anteprojeto** | 26d | 2026-07-06 A | 2026-08-10 A |  | 100% |  | 2026-06-09 | 2026-07-20 | 30d |  |
| 375 | 3.4.2.7.2.1 | Definição do Tipo de Subestação e Arranjo Físico Preliminar | 13d | 2026-07-06 A | 2026-07-22 A | 373 | 100% |  | 2026-06-09 | 2026-06-29 | 15d |  |
| 376 | 3.4.2.7.2.2 | Dimensionamento Preliminar do Transformador e Equipamentos Principais | 13d | 2026-07-23 A | 2026-08-10 A | 375 | 100% |  | 2026-06-30 | 2026-07-20 | 15d |  |
| 377 | 3.4.2.7.2.3 | Diretrizes Preliminares de Aterramento | 13d | 2026-07-23 A | 2026-08-10 A | 375 | 100% |  | 2026-06-30 | 2026-07-20 | 15d |  |
| 378 | 3.4.2.7.3 | LOD 300 - Consolidação e documentação de entrega | 4d | 2026-08-11 | 2026-08-14 | 374 |  |  | 2026-07-21 | 2026-07-24 | 4d | 6d |
| 379 | 3.4.2.8 | **SPDA** | 35d | 2026-06-29 A | 2026-08-14 |  | 91% | 3.11d | 2026-06-01 | 2026-07-24 | 39d | 6d |
| 380 | 3.4.2.8.1 | **LOD 100 — Concepção** | 5d | 2026-06-29 A | 2026-07-03 A |  | 100% |  | 2026-06-01 | 2026-06-08 | 5d |  |
| 381 | 3.4.2.8.1.1 | Avaliação e Diretrizes Técnicas para Arquitetura | 5d | 2026-06-29 A | 2026-07-03 A | 181SS+33d | 100% |  | 2026-06-01 | 2026-06-08 | 5d |  |
| 382 | 3.4.2.8.1.2 | Coleta de Informações da Edificação e Análise de Risco (ABNT NBR 5419-2) | 5d | 2026-06-29 A | 2026-07-03 A | 181SS+33d | 100% |  | 2026-06-01 | 2026-06-08 | 5d |  |
| 383 | 3.4.2.8.1.3 | Estudo Preliminar de Necessidade e Nível de Proteção do SPDA | 5d | 2026-06-29 A | 2026-07-03 A | 181SS+33d | 100% |  | 2026-06-01 | 2026-06-08 | 5d |  |
| 384 | 3.4.2.8.2 | **LOD 200 — Anteprojeto** | 26d | 2026-07-06 A | 2026-08-10 A |  | 100% |  | 2026-06-09 | 2026-07-20 | 30d |  |
| 385 | 3.4.2.8.2.1 | Definição da Estratégia de Proteção e Soluções Técnicas | 12d | 2026-07-06 A | 2026-07-21 A | 383 | 100% |  | 2026-06-09 | 2026-06-22 | 10d |  |
| 386 | 3.4.2.8.2.2 | Zoneamento de Captação, Descida e Traçados Preliminares | 12d | 2026-07-22 A | 2026-08-06 A | 385 | 100% |  | 2026-06-23 | 2026-07-06 | 10d |  |
| 387 | 3.4.2.8.2.3 | Estudo de Interferências, Compatibilização e Métodos Construtivos | 2d | 2026-08-07 A | 2026-08-10 A | 386 | 100% |  | 2026-07-07 | 2026-07-20 | 10d |  |
| 388 | 3.4.2.8.3 | LOD 300 - Consolidação e documentação de entrega | 4d | 2026-08-11 | 2026-08-14 | 387 |  |  | 2026-07-21 | 2026-07-24 | 4d | 6d |
| 389 | 3.4.2.9 | **Energia Renovável** | 35d | 2026-06-29 A | 2026-08-14 A |  | 100% |  | 2026-06-01 | 2026-07-17 | 34d |  |
| 390 | 3.4.2.9.1 | **LOD 100 — Concepção** | 10d | 2026-06-29 A | 2026-07-10 A |  | 100% |  | 2026-06-01 | 2026-06-15 | 10d |  |
| 391 | 3.4.2.9.1.1 | Viabilidade e Premissas de Geração | 10d | 2026-06-29 A | 2026-07-10 A | 181SS+33d | 100% |  | 2026-06-01 | 2026-06-15 | 10d |  |
| 392 | 3.4.2.9.1.2 | Levantamento Preliminar de Áreas e Sombreamento | 10d | 2026-06-29 A | 2026-07-10 A | 181SS+33d | 100% |  | 2026-06-01 | 2026-06-15 | 10d |  |
| 393 | 3.4.2.9.1.3 | Avaliação e Diretrizes Técnicas para Arquitetônico | 10d | 2026-06-29 A | 2026-07-10 A | 181SS+33d | 100% |  | 2026-06-01 | 2026-06-15 | 10d |  |
| 394 | 3.4.2.9.2 | **LOD 200 — Anteprojeto** | 21d | 2026-07-13 A | 2026-08-10 A |  | 100% |  | 2026-06-16 | 2026-07-13 | 20d |  |
| 395 | 3.4.2.9.2.1 | Layout Preliminar de Módulos, Inversores e String Boxes | 21d | 2026-07-13 A | 2026-08-10 A | 392 | 100% |  | 2026-06-16 | 2026-07-13 | 20d |  |
| 396 | 3.4.2.9.2.2 | Infraestrutura e Rotas Técnicas Preliminares (DC/AC e Aterramento) | 21d | 2026-07-13 A | 2026-08-10 A | 392 | 100% |  | 2026-06-16 | 2026-07-13 | 20d |  |
| 397 | 3.4.2.9.2.3 | Critérios Preliminares de Proteção e Estimativa de Quantitativos | 21d | 2026-07-13 A | 2026-08-10 A | 392 | 100% |  | 2026-06-16 | 2026-07-13 | 20d |  |
| 398 | 3.4.2.9.3 | LOD 300 - Consolidação e documentação de entrega | 4d | 2026-08-11 A | 2026-08-14 A | 394 | 100% |  | 2026-07-14 | 2026-07-17 | 4d |  |

| ID | WBS | Task | Duration | Start | Finish | Predecessors | Complete | Remaining | Baseline start | Baseline finish | Baseline duration | Total slack |
| --- | --- | --- | --- | --- | --- | --- | --- | --- | --- | --- | --- | --- |
| 399 | 3.5 | **003 - SESEG – Secretaria de Segurança** | 69d | 2026-05-12 A | 2026-08-17 |  | 96% | 2.45d | 2026-05-12 | 2026-07-27 | 54d | 5d |
| 400 | 3.5.1 | **Arquitetura** | 28d | 2026-05-12 A | 2026-06-19 A |  | 100% |  | 2026-05-12 | 2026-07-27 | 54d |  |
| 401 | 3.5.1.1 | **LOD 200 - ESTUDO PRELIMINAR** | 20d | 2026-05-12 A | 2026-06-09 A |  | 100% |  | 2026-05-12 | 2026-07-03 | 38d |  |
| 402 | 3.5.1.1.1 | Modelagem das paredes | 20d | 2026-05-12 A | 2026-06-09 A | 57FS-1d | 100% |  | 2026-05-12 | 2026-07-03 | 38d |  |
| 403 | 3.5.1.1.2 | Modelagem dos pisos | 20d | 2026-05-12 A | 2026-06-09 A | 57FS-1d | 100% |  | 2026-05-12 | 2026-07-03 | 38d |  |
| 404 | 3.5.1.1.3 | Modelagem das lajes | 20d | 2026-05-12 A | 2026-06-09 A | 57FS-1d | 100% |  | 2026-05-12 | 2026-07-03 | 0d |  |
| 405 | 3.5.1.1.4 | Inserção de portas | 20d | 2026-05-12 A | 2026-06-09 A | 57FS-1d | 100% |  | 2026-05-12 | 2026-07-03 | 38d |  |
| 406 | 3.5.1.1.5 | Inserção de janelas | 20d | 2026-05-12 A | 2026-06-09 A | 57FS-1d | 100% |  | 2026-05-12 | 2026-07-03 | 38d |  |
| 407 | 3.5.1.1.6 | Inserção de escada(s) | 20d | 2026-05-12 A | 2026-06-09 A | 57FS-1d | 100% |  | 2026-05-12 | 2026-07-03 | 38d |  |
| 408 | 3.5.1.1.7 | Inserção de elevador(es) | 20d | 2026-05-12 A | 2026-06-09 A | 57FS-1d | 100% |  | 2026-05-12 | 2026-07-03 | 38d |  |
| 409 | 3.5.1.1.8 | Inserção de rampa(s) | 20d | 2026-05-12 A | 2026-06-09 A | 57FS-1d | 100% |  | 2026-05-12 | 2026-07-03 | 0d |  |
| 410 | 3.5.1.1.9 | Inserção de layout | 20d | 2026-05-12 A | 2026-06-09 A | 57FS-1d | 100% |  | 2026-05-12 | 2026-07-03 | 38d |  |
| 411 | 3.5.1.1.10 | Identificação dos ambientes | 20d | 2026-05-12 A | 2026-06-09 A | 57FS-1d | 100% |  | 2026-05-12 | 2026-07-03 | 38d |  |
| 412 | 3.5.1.1.11 | Espaços de circulação | 20d | 2026-05-12 A | 2026-06-09 A | 57FS-1d | 100% |  | 2026-05-12 | 2026-07-03 | 38d |  |
| 413 | 3.5.1.1.12 | Áreas de serviços, funcionais e técnicas | 20d | 2026-05-12 A | 2026-06-09 A | 57FS-1d | 100% |  | 2026-05-12 | 2026-07-03 | 38d |  |
| 414 | 3.5.1.1.13 | Projeção de níveis superiores e da cobertura | 20d | 2026-05-12 A | 2026-06-09 A | 57FS-1d | 100% |  | 2026-05-12 | 2026-07-03 | 38d |  |
| 415 | 3.5.1.1.14 | Cotas de nível principais | 20d | 2026-05-12 A | 2026-06-09 A | 57FS-1d | 100% |  | 2026-05-12 | 2026-07-03 | 38d |  |
| 416 | 3.5.1.1.15 | Relatório/Memorial de Projeto Preliminar | 5d | 2026-06-02 A | 2026-06-09 A | 415FF | 100% |  | 2026-06-22 | 2026-07-03 | 10d |  |
| 417 | 3.5.1.2 | **LOD 300 - ANTEPROJETO** | 8d | 2026-06-10 A | 2026-06-19 A |  | 100% |  | 2026-07-06 | 2026-07-27 | 16d |  |
| 418 | 3.5.1.2.1 | **Situação** | 1d | 2026-06-10 A | 2026-06-10 A |  | 100% |  | 2026-07-06 | 2026-07-07 | 2d |  |
| 419 | 3.5.1.2.1.1 | Indicar simbologias de representação gráfica, conforme NBR 6492:2021; | 1d | 2026-06-10 A | 2026-06-10 A | 415 | 100% |  | 2026-07-06 | 2026-07-07 | 2d |  |
| 420 | 3.5.1.2.1.2 | Indicação Norte | 1d | 2026-06-10 A | 2026-06-10 A | 415 | 100% |  | 2026-07-06 | 2026-07-07 | 2d |  |
| 421 | 3.5.1.2.1.3 | Analisar, adicionar e fechar - Curvas de nível existentes e projetadas (conforme projetos de topografia e sondagem recebidos); | 1d | 2026-06-10 A | 2026-06-10 A | 415 | 100% |  | 2026-07-06 | 2026-07-07 | 2d |  |
| 422 | 3.5.1.2.1.4 | Indicação de Escala; | 1d | 2026-06-10 A | 2026-06-10 A | 415 | 100% |  | 2026-07-06 | 2026-07-07 | 2d |  |
| 423 | 3.5.1.2.1.5 | Vias de acesso ao conjunto, arruamento, logradouros adjacentes e calçadas com os respectivos equipamentos urbanos; | 1d | 2026-06-10 A | 2026-06-10 A | 415 | 100% |  | 2026-07-06 | 2026-07-07 | 2d |  |
| 424 | 3.5.1.2.1.6 | Platôs e taludes principais; | 1d | 2026-06-10 A | 2026-06-10 A | 415 | 100% |  | 2026-07-06 | 2026-07-07 | 2d |  |
| 425 | 3.5.1.2.1.7 | Perímetro do terreno, recuos e afastamentos; | 1d | 2026-06-10 A | 2026-06-10 A | 415 | 100% |  | 2026-07-06 | 2026-07-07 | 2d |  |
| 426 | 3.5.1.2.1.8 | Indicação das áreas a serem edificadas com o contorno da cobertura das edificações, estacionamentos e áreas permeáveis/impermeáveis; | 1d | 2026-06-10 A | 2026-06-10 A | 415 | 100% |  | 2026-07-06 | 2026-07-07 | 2d |  |
| 427 | 3.5.1.2.1.9 | Denominação das edificações, blocos ou espaços; | 1d | 2026-06-10 A | 2026-06-10 A | 415 | 100% |  | 2026-07-06 | 2026-07-07 | 2d |  |
| 428 | 3.5.1.2.1.10 | Cotas gerais | 1d | 2026-06-10 A | 2026-06-10 A | 415 | 100% |  | 2026-07-06 | 2026-07-07 | 2d |  |
| 429 | 3.5.1.2.1.11 | Cotas de nível principal. | 1d | 2026-06-10 A | 2026-06-10 A | 415 | 100% |  | 2026-07-06 | 2026-07-07 | 2d |  |
| 430 | 3.5.1.2.1.12 | Quadros de áreas | 1d | 2026-06-10 A | 2026-06-10 A | 415 | 100% |  | 2026-07-06 | 2026-07-07 | 2d |  |
| 431 | 3.5.1.2.1.13 | Relatório | 1d | 2026-06-10 A | 2026-06-10 A | 415 | 100% |  | 2026-07-06 | 2026-07-07 | 2d |  |
| 432 | 3.5.1.2.2 | Planta com as cotas de nível projetadas e existentes | 1d | 2026-06-11 A | 2026-06-11 A | 431 | 100% |  | 2026-07-08 | 2026-07-09 | 2d |  |

| ID | WBS | Task | Duration | Start | Finish | Predecessors | Complete | Baseline start | Baseline finish | Baseline duration |
| --- | --- | --- | --- | --- | --- | --- | --- | --- | --- | --- |
| 433 | 3.5.1.2.3 | **Plantas baixas (se tiver mais de um pavimento, duplicar bloco)** | 1d | 2026-06-12 A | 2026-06-12 A |  | 100% | 2026-07-10 | 2026-07-13 | 2d |
| 434 | 3.5.1.2.3.1 | Indicar simbologias de representação gráfica, conforme NBR 6492:2021; | 1d | 2026-06-12 A | 2026-06-12 A | 432 | 100% | 2026-07-10 | 2026-07-13 | 2d |
| 435 | 3.5.1.2.3.2 | Compatibilização (verificar se está tudo conforme as normas e alinhar com o restante das disciplinas de engenharia) | 1d | 2026-06-12 A | 2026-06-12 A | 432 | 100% | 2026-07-10 | 2026-07-13 | 2d |
| 436 | 3.5.1.2.3.3 | Compatibilização (deixar tudo conforme padrão Quanta) | 1d | 2026-06-12 A | 2026-06-12 A | 432 | 100% | 2026-07-10 | 2026-07-13 | 2d |
| 437 | 3.5.1.2.3.4 | Indicação de Norte; | 1d | 2026-06-12 A | 2026-06-12 A | 432 | 100% | 2026-07-10 | 2026-07-13 | 2d |
| 438 | 3.5.1.2.3.5 | Indicação de Escala; | 1d | 2026-06-12 A | 2026-06-12 A | 432 | 100% | 2026-07-10 | 2026-07-13 | 2d |
| 439 | 3.5.1.2.3.6 | Indicação de Acessos; | 1d | 2026-06-12 A | 2026-06-12 A | 432 | 100% | 2026-07-10 | 2026-07-13 | 2d |
| 440 | 3.5.1.2.3.7 | Elementos de vedação internos e externos; | 1d | 2026-06-12 A | 2026-06-12 A | 432 | 100% | 2026-07-10 | 2026-07-13 | 2d |
| 441 | 3.5.1.2.3.8 | Esquadrias; | 1d | 2026-06-12 A | 2026-06-12 A | 432 | 100% | 2026-07-10 | 2026-07-13 | 2d |
| 442 | 3.5.1.2.3.9 | Elementos estruturais principais; | 1d | 2026-06-12 A | 2026-06-12 A | 432 | 100% | 2026-07-10 | 2026-07-13 | 2d |
| 443 | 3.5.1.2.3.10 | Identificação dos ambientes e espaços (internos e externos); | 1d | 2026-06-12 A | 2026-06-12 A | 432 | 100% | 2026-07-10 | 2026-07-13 | 2d |
| 444 | 3.5.1.2.3.11 | Espaços de circulação internos e externos; | 1d | 2026-06-12 A | 2026-06-12 A | 432 | 100% | 2026-07-10 | 2026-07-13 | 2d |
| 445 | 3.5.1.2.3.12 | Áreas de serviço, funcionais e técnicas (internos e externos); | 1d | 2026-06-12 A | 2026-06-12 A | 432 | 100% | 2026-07-10 | 2026-07-13 | 2d |
| 446 | 3.5.1.2.3.13 | Projeções de níveis superiores; | 1d | 2026-06-12 A | 2026-06-12 A | 432 | 100% | 2026-07-10 | 2026-07-13 | 2d |
| 447 | 3.5.1.2.3.14 | Cotas gerais | 1d | 2026-06-12 A | 2026-06-12 A | 432 | 100% | 2026-07-10 | 2026-07-13 | 2d |
| 448 | 3.5.1.2.3.15 | Cotas de nível principal. | 1d | 2026-06-12 A | 2026-06-12 A | 432 | 100% | 2026-07-10 | 2026-07-13 | 2d |
| 449 | 3.5.1.2.3.16 | Tabelas de paredes, pisos, esquadrias e plantas | 1d | 2026-06-12 A | 2026-06-12 A | 432 | 100% | 2026-07-10 | 2026-07-13 | 2d |
| 450 | 3.5.1.2.3.17 | Quadro de áreas | 1d | 2026-06-12 A | 2026-06-12 A | 432 | 100% | 2026-07-10 | 2026-07-13 | 2d |
| 451 | 3.5.1.2.3.18 | Relatório | 1d | 2026-06-12 A | 2026-06-12 A | 432 | 100% | 2026-07-10 | 2026-07-13 | 2d |
| 452 | 3.5.1.2.4 | **Planta das coberturas** | 1d | 2026-06-15 A | 2026-06-15 A |  | 100% | 2026-07-14 | 2026-07-15 | 2d |
| 453 | 3.5.1.2.4.1 | Indicação do Norte | 1d | 2026-06-15 A | 2026-06-15 A | 450 | 100% | 2026-07-14 | 2026-07-15 | 2d |
| 454 | 3.5.1.2.4.2 | Indicação de escala | 1d | 2026-06-15 A | 2026-06-15 A | 450 | 100% | 2026-07-14 | 2026-07-15 | 2d |
| 455 | 3.5.1.2.4.3 | Curvas de nível | 1d | 2026-06-15 A | 2026-06-15 A | 450 | 100% | 2026-07-14 | 2026-07-15 | 2d |
| 456 | 3.5.1.2.4.4 | Indicação de Acessos; | 1d | 2026-06-15 A | 2026-06-15 A | 450 | 100% | 2026-07-14 | 2026-07-15 | 2d |
| 457 | 3.5.1.2.4.5 | Estacionamento e áreas cobertas | 1d | 2026-06-15 A | 2026-06-15 A | 450 | 100% | 2026-07-14 | 2026-07-15 | 2d |
| 458 | 3.5.1.2.4.6 | Cobertura das edificações | 1d | 2026-06-15 A | 2026-06-15 A | 450 | 100% | 2026-07-14 | 2026-07-15 | 2d |
| 459 | 3.5.1.2.4.7 | Sentido de escoamento das águas pluviais e inclinação | 1d | 2026-06-15 A | 2026-06-15 A | 450 | 100% | 2026-07-14 | 2026-07-15 | 2d |
| 460 | 3.5.1.2.4.8 | Cotas gerais | 1d | 2026-06-15 A | 2026-06-15 A | 450 | 100% | 2026-07-14 | 2026-07-15 | 2d |
| 461 | 3.5.1.2.4.9 | Cotas de nível principal | 1d | 2026-06-15 A | 2026-06-15 A | 450 | 100% | 2026-07-14 | 2026-07-15 | 2d |
| 462 | 3.5.1.2.4.10 | Relatório | 1d | 2026-06-15 A | 2026-06-15 A | 450 | 100% | 2026-07-14 | 2026-07-15 | 2d |

| ID | WBS | Task | Duration | Start | Finish | Predecessors | Complete | Baseline start | Baseline finish | Baseline duration |
| --- | --- | --- | --- | --- | --- | --- | --- | --- | --- | --- |
| 463 | 3.5.1.2.5 | **Cortes longitudinais** | 1d | 2026-06-16 A | 2026-06-16 A |  | 100% | 2026-07-16 | 2026-07-17 | 2d |
| 464 | 3.5.1.2.5.1 | Indicar simbologias de representação gráfica, conforme NBR 6492:2021; | 1d | 2026-06-16 A | 2026-06-16 A | 461 | 100% | 2026-07-16 | 2026-07-17 | 2d |
| 465 | 3.5.1.2.5.2 | Indicação de Escala; | 1d | 2026-06-16 A | 2026-06-16 A | 461 | 100% | 2026-07-16 | 2026-07-17 | 2d |
| 466 | 3.5.1.2.5.3 | Elementos estruturais principais; | 1d | 2026-06-16 A | 2026-06-16 A | 461 | 100% | 2026-07-16 | 2026-07-17 | 2d |
| 467 | 3.5.1.2.5.4 | Elementos de vedação internos e externos; | 1d | 2026-06-16 A | 2026-06-16 A | 461 | 100% | 2026-07-16 | 2026-07-17 | 2d |
| 468 | 3.5.1.2.5.5 | Esquadrias; | 1d | 2026-06-16 A | 2026-06-16 A | 461 | 100% | 2026-07-16 | 2026-07-17 | 2d |
| 469 | 3.5.1.2.5.6 | Identificação dos ambientes; | 1d | 2026-06-16 A | 2026-06-16 A | 461 | 100% | 2026-07-16 | 2026-07-17 | 2d |
| 470 | 3.5.1.2.5.7 | Cobertura com indicação da respectiva inclinação; | 1d | 2026-06-16 A | 2026-06-16 A | 461 | 100% | 2026-07-16 | 2026-07-17 | 2d |
| 471 | 3.5.1.2.5.8 | Cotas gerais; | 1d | 2026-06-16 A | 2026-06-16 A | 461 | 100% | 2026-07-16 | 2026-07-17 | 2d |
| 472 | 3.5.1.2.5.9 | Cotas de nível principal; | 1d | 2026-06-16 A | 2026-06-16 A | 461 | 100% | 2026-07-16 | 2026-07-17 | 2d |
| 473 | 3.5.1.2.5.10 | Eixos do projeto; | 1d | 2026-06-16 A | 2026-06-16 A | 461 | 100% | 2026-07-16 | 2026-07-17 | 2d |
| 474 | 3.5.1.2.5.11 | Relevo construído; | 1d | 2026-06-16 A | 2026-06-16 A | 461 | 100% | 2026-07-16 | 2026-07-17 | 2d |
| 475 | 3.5.1.2.5.12 | Projeção da topografia natural. | 1d | 2026-06-16 A | 2026-06-16 A | 461 | 100% | 2026-07-16 | 2026-07-17 | 2d |
| 476 | 3.5.1.2.5.13 | Relatório | 1d | 2026-06-16 A | 2026-06-16 A | 461 | 100% | 2026-07-16 | 2026-07-17 | 2d |
| 477 | 3.5.1.2.6 | **Cortes transversais** | 1d | 2026-06-17 A | 2026-06-17 A |  | 100% | 2026-07-20 | 2026-07-21 | 2d |
| 478 | 3.5.1.2.6.1 | Indicar simbologias de representação gráfica, conforme NBR 6492:2021; | 1d | 2026-06-17 A | 2026-06-17 A | 475 | 100% | 2026-07-20 | 2026-07-21 | 2d |
| 479 | 3.5.1.2.6.2 | Indicação de Escala; | 1d | 2026-06-17 A | 2026-06-17 A | 475 | 100% | 2026-07-20 | 2026-07-21 | 2d |
| 480 | 3.5.1.2.6.3 | Elementos estruturais principais; | 1d | 2026-06-17 A | 2026-06-17 A | 475 | 100% | 2026-07-20 | 2026-07-21 | 2d |
| 481 | 3.5.1.2.6.4 | Elementos de vedação internos e externos; | 1d | 2026-06-17 A | 2026-06-17 A | 475 | 100% | 2026-07-20 | 2026-07-21 | 2d |
| 482 | 3.5.1.2.6.5 | Esquadrias; | 1d | 2026-06-17 A | 2026-06-17 A | 475 | 100% | 2026-07-20 | 2026-07-21 | 2d |
| 483 | 3.5.1.2.6.6 | Identificação dos ambientes; | 1d | 2026-06-17 A | 2026-06-17 A | 475 | 100% | 2026-07-20 | 2026-07-21 | 2d |
| 484 | 3.5.1.2.6.7 | Cobertura com indicação da respectiva inclinação; | 1d | 2026-06-17 A | 2026-06-17 A | 475 | 100% | 2026-07-20 | 2026-07-21 | 2d |
| 485 | 3.5.1.2.6.8 | Cotas gerais; | 1d | 2026-06-17 A | 2026-06-17 A | 475 | 100% | 2026-07-20 | 2026-07-21 | 2d |
| 486 | 3.5.1.2.6.9 | Cotas de nível principal; | 1d | 2026-06-17 A | 2026-06-17 A | 475 | 100% | 2026-07-20 | 2026-07-21 | 2d |
| 487 | 3.5.1.2.6.10 | Eixos do projeto; | 1d | 2026-06-17 A | 2026-06-17 A | 475 | 100% | 2026-07-20 | 2026-07-21 | 2d |
| 488 | 3.5.1.2.6.11 | Relevo construído; | 1d | 2026-06-17 A | 2026-06-17 A | 475 | 100% | 2026-07-20 | 2026-07-21 | 2d |
| 489 | 3.5.1.2.6.12 | Projeção da topografia natural | 1d | 2026-06-17 A | 2026-06-17 A | 475 | 100% | 2026-07-20 | 2026-07-21 | 2d |
| 490 | 3.5.1.2.6.13 | Relatório | 1d | 2026-06-17 A | 2026-06-17 A | 475 | 100% | 2026-07-20 | 2026-07-21 | 2d |

| ID | WBS | Task | Duration | Start | Finish | Predecessors | Complete | Remaining | Baseline start | Baseline finish | Baseline duration | Total slack |
| --- | --- | --- | --- | --- | --- | --- | --- | --- | --- | --- | --- | --- |
| 491 | 3.5.1.2.7 | **Elevações** | 1d | 2026-06-18 A | 2026-06-18 A |  | 100% |  | 2026-07-22 | 2026-07-23 | 2d |  |
| 492 | 3.5.1.2.7.1 | Indicar simbologias de representação gráfica, conforme NBR 6492:2021; | 1d | 2026-06-18 A | 2026-06-18 A | 489 | 100% |  | 2026-07-22 | 2026-07-23 | 2d |  |
| 493 | 3.5.1.2.7.2 | Indicação de Escala; | 1d | 2026-06-18 A | 2026-06-18 A | 489 | 100% |  | 2026-07-22 | 2026-07-23 | 2d |  |
| 494 | 3.5.1.2.7.3 | Elementos estruturais principais; | 1d | 2026-06-18 A | 2026-06-18 A | 489 | 100% |  | 2026-07-22 | 2026-07-23 | 2d |  |
| 495 | 3.5.1.2.7.4 | Elementos de vedação internos e externos; | 1d | 2026-06-18 A | 2026-06-18 A | 489 | 100% |  | 2026-07-22 | 2026-07-23 | 2d |  |
| 496 | 3.5.1.2.7.5 | Esquadrias; | 1d | 2026-06-18 A | 2026-06-18 A | 489 | 100% |  | 2026-07-22 | 2026-07-23 | 2d |  |
| 497 | 3.5.1.2.7.6 | Relevo construído; | 1d | 2026-06-18 A | 2026-06-18 A | 489 | 100% |  | 2026-07-22 | 2026-07-23 | 2d |  |
| 498 | 3.5.1.2.7.7 | Cotas gerais; | 1d | 2026-06-18 A | 2026-06-18 A | 489 | 100% |  | 2026-07-22 | 2026-07-23 | 2d |  |
| 499 | 3.5.1.2.7.8 | Cotas de nível principais; | 1d | 2026-06-18 A | 2026-06-18 A | 489 | 100% |  | 2026-07-22 | 2026-07-23 | 2d |  |
| 500 | 3.5.1.2.7.9 | Cobertura (quando aparente). | 1d | 2026-06-18 A | 2026-06-18 A | 489 | 100% |  | 2026-07-22 | 2026-07-23 | 2d |  |
| 501 | 3.5.1.2.8 | **Memorial Descritivo** | 1d | 2026-06-19 A | 2026-06-19 A |  | 100% |  | 2026-07-24 | 2026-07-27 | 2d |  |
| 502 | 3.5.1.2.8.1 | Descrição dos elementos da edificação | 1d | 2026-06-19 A | 2026-06-19 A | 500 | 100% |  | 2026-07-24 | 2026-07-27 | 2d |  |
| 503 | 3.5.1.2.8.2 | Descrição dos componentes construtivos e materiais de construção | 1d | 2026-06-19 A | 2026-06-19 A | 500 | 100% |  | 2026-07-24 | 2026-07-27 | 2d |  |
| 504 | 3.5.1.2.8.3 | Lista de pranchas anexas e documentos | 1d | 2026-06-19 A | 2026-06-19 A | 500 | 100% |  | 2026-07-24 | 2026-07-27 | 2d |  |
| 505 | 3.5.2 | **Engenharia** | 36d | 2026-06-29 A | 2026-08-17 |  | 95% | 1.82d | 2026-06-01 | 2026-07-24 | 39d | 5d |
| 506 | 3.5.2.1 | **Estrutura** | 36d | 2026-06-29 A | 2026-08-17 |  | 89% | 4.12d | 2026-06-01 | 2026-07-20 | 35d | 5d |
| 507 | 3.5.2.1.1 | **LOD 100 — Premissas, diretrizes e interfaces** | 7d | 2026-06-29 A | 2026-07-07 A |  | 100% |  | 2026-06-01 | 2026-06-10 | 7d |  |
| 508 | 3.5.2.1.1.1 | Levantamento de tipos de cargas globais estimadas (permanentes, acidentais, vento e especiais). | 2d | 2026-06-29 A | 2026-06-30 A | 415SS+33d | 100% |  | 2026-06-01 | 2026-06-02 | 2d |  |
| 509 | 3.5.2.1.1.2 | Estudo volumétrico com modulação inicial de pilares, vigas e lajes. Entendendo vãos e desafios | 5d | 2026-06-29 A | 2026-07-03 A | 415SS+33d | 100% |  | 2026-06-01 | 2026-06-08 | 5d |  |
| 510 | 3.5.2.1.1.3 | Localização aproximada de elementos estruturais principais. Avaliando vãos e estudando posições | 2d | 2026-06-29 A | 2026-06-30 A | 415SS+33d | 100% |  | 2026-06-01 | 2026-06-02 | 2d |  |
| 511 | 3.5.2.1.1.4 | Estudo de viabilidade técnica e construtiva. | 3d | 2026-07-01 A | 2026-07-03 A | 510 | 100% |  | 2026-06-03 | 2026-06-08 | 3d |  |
| 512 | 3.5.2.1.1.5 | Definição preliminar do sistema estrutural (concreto armado, metálica ou mista). | 3d | 2026-07-01 A | 2026-07-03 A | 510 | 100% |  | 2026-06-03 | 2026-06-08 | 3d |  |
| 513 | 3.5.2.1.1.6 | Estimativa preliminar de tipologias de fundações (sapatas, blocos, estacas). | 2d | 2026-07-06 A | 2026-07-07 A | 511 | 100% |  | 2026-06-09 | 2026-06-10 | 2d |  |
| 514 | 3.5.2.1.1.7 | Previsão de áreas técnicas, casas de máquinas, reservatórios elevados e estrutura de cobertura. | 2d | 2026-07-06 A | 2026-07-07 A | 511 | 100% |  | 2026-06-09 | 2026-06-10 | 2d |  |

| ID | WBS | Task | Duration | Start | Finish | Predecessors | Complete | Remaining | Baseline start | Baseline finish | Baseline duration | Total slack |
| --- | --- | --- | --- | --- | --- | --- | --- | --- | --- | --- | --- | --- |
| 515 | 3.5.2.1.2 | **LOD 200 — Validação interdisciplinar e solução preliminar** | 20d | 2026-07-08 A | 2026-08-04 A |  | 100% |  | 2026-06-11 | 2026-07-08 | 20d |  |
| 516 | 3.5.2.1.2.1 | Lista preliminar de cargas e ações para dimensionamento. | 5d | 2026-07-08 A | 2026-07-14 A | 514 | 100% |  | 2026-06-11 | 2026-06-17 | 5d |  |
| 517 | 3.5.2.1.2.2 | Definição preliminar de alturas de pavimentos e níveis de fundação. | 5d | 2026-07-08 A | 2026-07-14 A | 514 | 100% |  | 2026-06-11 | 2026-06-17 | 5d |  |
| 518 | 3.5.2.1.2.3 | Indicação aproximada do sistema de cobertura (tesouras, treliças, vigamento metálico ou concreto). | 5d | 2026-07-08 A | 2026-07-14 A | 514 | 100% |  | 2026-06-11 | 2026-06-17 | 5d |  |
| 519 | 3.5.2.1.2.4 | Modelagem genérica de pilares, vigas, lajes e fundações. | 5d | 2026-07-15 A | 2026-07-21 A | 516 | 100% |  | 2026-06-18 | 2026-06-24 | 5d |  |
| 520 | 3.5.2.1.2.5 | Traçado preliminar de elementos especiais (escadas, rampas estruturais, reservatórios). | 5d | 2026-07-15 A | 2026-07-21 A | 516 | 100% |  | 2026-06-18 | 2026-06-24 | 5d |  |
| 521 | 3.5.2.1.2.6 | Arquivo IFC, plantas de forma e planta de locação | 5d | 2026-07-15 A | 2026-07-21 A | 516 | 100% |  | 2026-06-18 | 2026-06-24 | 5d |  |
| 522 | 3.5.2.1.2.7 | Inserção de fundações com tipologia e dimensões preliminares. | 5d | 2026-07-22 A | 2026-07-28 A | 520 | 100% |  | 2026-06-25 | 2026-07-01 | 5d |  |
| 523 | 3.5.2.1.2.8 | Compatibilização inicial com arquitetura e demais disciplinas. | 5d | 2026-07-22 A | 2026-07-28 A | 521 | 100% |  | 2026-06-25 | 2026-07-01 | 5d |  |
| 524 | 3.5.2.1.2.9 | Indicação de passagens de infraestrutura (shafts, aberturas em lajes e vigas). | 5d | 2026-07-22 A | 2026-07-28 A | 521 | 100% |  | 2026-06-25 | 2026-07-01 | 5d |  |
| 525 | 3.5.2.1.2.10 | Modelagem assertiva de elementos principais com dimensões aproximadas (largura, altura, espessura). | 10d | 2026-07-22 A | 2026-08-04 A | 521 | 100% |  | 2026-06-25 | 2026-07-08 | 10d |  |
| 526 | 3.5.2.1.2.11 | Modelagem estimada de armaduras principais (em nível de concepção). | 5d | 2026-07-22 A | 2026-07-28 A | 521 | 100% |  | 2026-06-25 | 2026-07-01 | 5d |  |
| 527 | 3.5.2.1.3 | **LOD 300 - Consolidação e documentação de entrega** | 9d | 2026-08-05 A | 2026-08-17 |  | 67% | 3.01d | 2026-07-09 | 2026-07-20 | 8d | 5d |
| 528 | 3.5.2.1.3.1 | Indicação de níveis e cotas exatas. | 3d | 2026-08-05 A | 2026-08-07 A | 525, 526 | 100% |  | 2026-07-09 | 2026-07-20 | 8d |  |
| 529 | 3.5.2.1.3.2 | Quadro de cargas atualizado. | 3d | 2026-08-05 A | 2026-08-07 A | 525, 526 | 100% |  | 2026-07-09 | 2026-07-20 | 8d |  |
| 530 | 3.5.2.1.3.3 | Dimensionamento final de fundações conforme sondagem e cálculo estrutural. | 3d | 2026-08-05 A | 2026-08-07 A | 525, 526 | 100% |  | 2026-07-09 | 2026-07-20 | 8d |  |
| 531 | 3.5.2.1.3.4 | Definição final dos elementos da cobertura (treliças, vigas, chapas, purlins). | 3d | 2026-08-05 A | 2026-08-07 A | 525, 526 | 100% |  | 2026-07-09 | 2026-07-20 | 8d |  |
| 532 | 3.5.2.1.3.5 | Compatibilização final com arquitetura e instalações (aberturas, embutidos e passagens). | 3d | 2026-08-05 A | 2026-08-07 A | 525, 526 | 100% |  | 2026-07-09 | 2026-07-20 | 8d |  |
| 533 | 3.5.2.1.3.6 | Modelagem definitiva de pilares, vigas, lajes, blocos, sapatas e estacas. | 3d | 2026-08-05 A | 2026-08-07 A | 525, 526 | 100% |  | 2026-07-09 | 2026-07-20 | 8d |  |
| 534 | 3.5.2.1.3.7 | Planta estrutural com todos os elementos identificados. | 3d | 2026-08-05 A | 2026-08-07 A | 525, 526 | 100% |  | 2026-07-09 | 2026-07-20 | 8d |  |
| 535 | 3.5.2.1.3.8 | Memorial descritivo contendo: objetivos, justificativa, descrição do sistema, concepção de fundações/cobertura, especificações e quadro de cargas. | 9d | 2026-08-05 A | 2026-08-17 | 525, 526 | 18% | 7.36d | 2026-07-09 | 2026-07-20 | 8d | 5d |
| 536 | 3.5.2.1.3.9 | Normas técnicas utilizadas (NBR 6118, 6120, 6122, 8800, etc.). | 3d | 2026-08-05 A | 2026-08-07 A | 525, 526 | 100% |  | 2026-07-09 | 2026-07-20 | 8d |  |
| 537 | 3.5.2.1.3.10 | Consolidar documentação de entrega e emissão formal da disciplina | 8d | 2026-08-05 A | 2026-08-14 | 525, 526 | 21% | 6.36d | 2026-07-09 | 2026-07-20 | 8d | 6d |
| 538 | 3.5.2.2 | **Hidrossanitário** | 36d | 2026-06-29 A | 2026-08-17 |  | 94% | 2.04d | 2026-06-01 | 2026-07-24 | 39d | 5d |
| 539 | 3.5.2.2.1 | **LOD 100 — Premissas, diretrizes e interfaces** | 11d | 2026-06-29 A | 2026-07-13 A |  | 100% |  | 2026-06-01 | 2026-06-16 | 11d |  |
| 540 | 3.5.2.2.1.1 | Memorial preliminar | 10d | 2026-06-29 A | 2026-07-10 A | 415SS+33d | 100% |  | 2026-06-01 | 2026-06-15 | 10d |  |
| 541 | 3.5.2.2.1.2 | Indicação de áreas técnicas | 6d | 2026-07-06 A | 2026-07-13 A | 509, 415SS+33d | 100% |  | 2026-06-09 | 2026-06-16 | 6d |  |
| 542 | 3.5.2.2.1.3 | Planta baixa com traçado conceitual | 6d | 2026-07-06 A | 2026-07-13 A | 509 | 100% |  | 2026-06-09 | 2026-06-16 | 6d |  |
| 543 | 3.5.2.2.1.4 | Pontos de consumo principais e coletas sanitárias | 6d | 2026-07-06 A | 2026-07-13 A | 509 | 100% |  | 2026-06-09 | 2026-06-16 | 6d |  |
| 544 | 3.5.2.2.1.5 | Classificação de uso | 10d | 2026-06-30 A | 2026-07-13 A | 543FF | 100% |  | 2026-06-02 | 2026-06-16 | 10d |  |
| 545 | 3.5.2.2.1.6 | Diretrizes de espaço | 10d | 2026-06-30 A | 2026-07-13 A | 543FF | 100% |  | 2026-06-02 | 2026-06-16 | 10d |  |
| 546 | 3.5.2.2.1.7 | Estimativa de demanda ou população de uso | 10d | 2026-06-30 A | 2026-07-13 A | 543FF | 100% |  | 2026-06-02 | 2026-06-16 | 10d |  |
| 547 | 3.5.2.2.1.8 | Levantamento de elementos especiais dentre outras disciplinas de Engenharia e Arquitetura | 10d | 2026-06-30 A | 2026-07-13 A | 543FF | 100% |  | 2026-06-02 | 2026-06-16 | 10d |  |

| ID | WBS | Task | Duration | Start | Finish | Predecessors | Complete | Remaining | Baseline start | Baseline finish | Baseline duration | Total slack | Free slack | Constraint |
| --- | --- | --- | --- | --- | --- | --- | --- | --- | --- | --- | --- | --- | --- | --- |
| 548 | 3.5.2.2.2 | **LOD 200 — Validação interdisciplinar e solução preliminar** | 12d | 2026-07-14 A | 2026-07-29 |  | 92% | 1.01d | 2026-06-17 | 2026-07-14 | 20d | 18d |  |  |
| 549 | 3.5.2.2.2.1 | Critérios normativos adotados (ABNT, concessionárias, etc.) | 12d | 2026-07-14 A | 2026-07-29 | 547 | 92% | 1.01d | 2026-06-17 | 2026-07-14 | 20d | 18d | 0d |  |
| 550 | 3.5.2.2.2.2 | Informações de demanda na concessionária (DPE ou AVT Aviso de Viabilidade Técnica) | 12d | 2026-07-14 A | 2026-07-29 | 549SS, 23, 27 | 92% | 1.01d | 2026-06-17 | 2026-07-14 | 20d | 18d |  |  |
| 551 | 3.5.2.2.2.3 | Recebimento e Análise de Sondagem (permeabilidade ou percolação) | 12d | 2026-07-14 A | 2026-07-29 | 549SS, 23, 27 | 92% | 1.01d | 2026-06-17 | 2026-07-14 | 20d | 18d |  |  |
| 552 | 3.5.2.2.2.4 | Recebimento e Análise de Topografia | 12d | 2026-07-14 A | 2026-07-29 | 549SS, 23, 27 | 92% | 1.01d | 2026-06-17 | 2026-07-14 | 20d | 18d |  |  |
| 553 | 3.5.2.2.2.5 | Estudo de viabilidade técnica, econômica e ambiental | 12d | 2026-07-14 A | 2026-07-29 | 549SS | 92% | 1.01d | 2026-06-17 | 2026-07-14 | 20d | 18d |  |  |
| 554 | 3.5.2.2.2.6 | Lista preliminar de sistemas envolvidos. | 12d | 2026-07-14 A | 2026-07-29 | 547 | 92% | 1.01d | 2026-06-17 | 2026-07-14 | 20d | 18d |  |  |
| 555 | 3.5.2.2.2.7 | Planta baixa e cortes estimada contendo: - Traçado preliminar de barrilete, ramais, colunas - Diâmetros estimados - Localização aproximada das bombas e unidades de tratamento e reúso - Localização do ramal predial de água e esgoto - Localização aproximada | 12d | 2026-07-14 A | 2026-07-29 | 547 | 92% | 1.01d | 2026-06-17 | 2026-07-14 | 20d | 12.6d | 0d |  |
| 556 | 3.5.2.2.3 | **LOD 300 - Consolidação e documentação de entrega** | 14d | 2026-07-29 A | 2026-08-17 |  | 87% | 1.87d | 2026-07-15 | 2026-07-24 | 8d | 5d |  |  |
| 557 | 3.5.2.2.3.1 | Planta, corte e detalhe isométrico contendo: - Modelagem detalhada com diâmetros, cotas e inclinações definitivas (barriletes, colunas, ramais) - Quantitativos e especificação técnica dos materiais (tubos, conexões, reservatórios, registros e válvulas com | 14d | 2026-07-29 A | 2026-08-17 | 555FS-1d | 90% | 1.4d | 2026-07-15 | 2026-07-24 | 8d | 5d | 0d |  |
| 558 | 3.5.2.2.3.2 | Memorial descritivo | 3d | 2026-08-12 A | 2026-08-17 | 557FF | 79% | 0.63d | 2026-07-22 | 2026-07-24 | 3d | 5d |  |  |
| 559 | 3.5.2.2.3.3 | Memória de cálculo (pressão, vazão, diâmetros, perda de carga). | 3d | 2026-08-12 A | 2026-08-17 | 557FF | 79% | 0.63d | 2026-07-22 | 2026-07-24 | 3d | 5d |  |  |
| 560 | 3.5.2.3 | **AVAC** | 35d | 2026-06-29 A | 2026-08-14 |  | 97% | 1.06d | 2026-06-01 | 2026-07-24 | 39d | 6d |  |  |
| 561 | 3.5.2.3.1 | **LOD 100 — Premissas, diretrizes e interfaces** | 20d | 2026-06-29 A | 2026-07-24 A |  | 100% |  | 2026-06-01 | 2026-06-29 | 20d |  |  |  |
| 562 | 3.5.2.3.1.1 | Estimativa de carga térmica por ambiente. | 10d | 2026-06-29 A | 2026-07-10 A | 415SS+33d | 100% |  | 2026-06-01 | 2026-06-15 | 10d |  |  |  |
| 563 | 3.5.2.3.1.2 | Localização preliminar de unidades de tratamento de ar, condensadoras e exaustores. | 10d | 2026-06-29 A | 2026-07-10 A | 415SS+33d | 100% |  | 2026-06-01 | 2026-06-15 | 10d |  |  |  |
| 564 | 3.5.2.3.1.3 | Pontos locação para seus elementos no projeto arquitetônico. | 10d | 2026-06-29 A | 2026-07-10 A | 415SS+33d | 100% |  | 2026-06-01 | 2026-06-15 | 10d |  |  |  |
| 565 | 3.5.2.3.1.4 | Estudo de viabilidade e rotas principais de distribuição de ar. | 10d | 2026-06-29 A | 2026-07-10 A | 415SS+33d | 100% |  | 2026-06-01 | 2026-06-15 | 10d |  |  |  |
| 566 | 3.5.2.3.1.5 | Reserva de espaços técnicos e shafts. | 10d | 2026-06-29 A | 2026-07-10 A | 415SS+33d | 100% |  | 2026-06-01 | 2026-06-15 | 10d |  |  |  |
| 567 | 3.5.2.3.1.6 | Levantamento de cargas especiais provenientes de outras disciplinas. | 10d | 2026-07-13 A | 2026-07-24 A | 586, 596, 415SS+33d | 100% |  | 2026-06-16 | 2026-06-29 | 10d |  |  |  |
| 568 | 3.5.2.3.2 | **LOD 200 — Validação interdisciplinar e solução preliminar** | 25d | 2026-07-13 A | 2026-08-14 A |  | 100% |  | 2026-06-16 | 2026-07-24 | 29d |  |  |  |
| 569 | 3.5.2.3.2.1 | Lista preliminar de sistemas HVAC envolvidos (expansão direta, VRF, chillers, ventilação, exaustão). | 25d | 2026-07-13 A | 2026-08-14 A | 566 | 100% |  | 2026-06-16 | 2026-07-24 | 29d |  |  |  |
| 570 | 3.5.2.3.2.2 | Planta baixa estimada contendo: pontos de insuflamento e retorno. | 25d | 2026-07-13 A | 2026-08-14 A | 566 | 100% |  | 2026-06-16 | 2026-07-24 | 29d |  |  |  |
| 571 | 3.5.2.3.2.3 | Rotas iniciais de dutos, tubulações e drenos. | 25d | 2026-07-13 A | 2026-08-14 A | 566 | 100% |  | 2026-06-16 | 2026-07-24 | 29d |  |  |  |
| 572 | 3.5.2.3.2.4 | Planta baixa estimada contendo: unidades internas e externas com posição preliminar. | 25d | 2026-07-13 A | 2026-08-14 A | 566 | 100% |  | 2026-06-16 | 2026-07-24 | 29d |  |  |  |
| 573 | 3.5.2.3.3 | Desenhos conforme IBRAOP | 5d | 2026-08-10 | 2026-08-14 |  |  |  | 2026-07-27 | 2026-07-27 | 0d | 6d |  | start no earlier than 2026-08-10 |

| ID | WBS | Task | Duration | Start | Finish | Predecessors | Complete | Remaining | Baseline start | Baseline finish | Baseline duration | Total slack | Text3 |
| --- | --- | --- | --- | --- | --- | --- | --- | --- | --- | --- | --- | --- | --- |
| 574 | 3.5.2.4 | **PCI (Incêndio)** | 20d | 2026-07-20 A | 2026-08-14 A |  | 100% |  | 2026-06-01 | 2026-06-29 | 20d |  |  |
| 575 | 3.5.2.4.1 | **LOD 100 — Premissas, diretrizes e interfaces** | 10d | 2026-07-20 A | 2026-07-31 A |  | 100% |  | 2026-06-01 | 2026-06-15 | 10d |  | ܁# |
| 576 | 3.5.2.4.1.1 | Estudo e avaliação da arquitetura atendendo as normas competentes de PCI | 10d | 2026-07-20 A | 2026-07-31 A | 415SS+48d | 100% |  | 2026-06-01 | 2026-06-15 | 10d |  |  |
| 577 | 3.5.2.4.1.2 | Avaliação do espaço para CMI e Central de Gás. | 10d | 2026-07-20 A | 2026-07-31 A | 415SS+48d | 100% |  | 2026-06-01 | 2026-06-15 | 10d |  |  |
| 578 | 3.5.2.4.1.3 | Pontos locação para seus elementos no projeto arquitetônico | 10d | 2026-07-20 A | 2026-07-31 A | 415SS+48d | 100% |  | 2026-06-01 | 2026-06-15 | 10d |  |  |
| 579 | 3.5.2.4.2 | **LOD 200 — Validação interdisciplinar e solução preliminar** | 10d | 2026-08-03 A | 2026-08-14 A |  | 100% |  | 2026-06-16 | 2026-06-29 | 10d |  | ܁# |
| 580 | 3.5.2.4.2.1 | Definição da classificação da edificação e o risco de incêndio | 10d | 2026-08-03 A | 2026-08-14 A | 578 | 100% |  | 2026-06-16 | 2026-06-29 | 10d |  |  |
| 581 | 3.5.2.4.2.2 | Cálculos pré-dimensionados dos extintores, hidrantes e bomba. | 10d | 2026-08-03 A | 2026-08-14 A | 578 | 100% |  | 2026-06-16 | 2026-06-29 | 10d |  |  |
| 582 | 3.5.2.4.2.3 | Avaliação das rotas de fuga, ventilação de CMI e outros elementos de importância para as normas de PCI | 10d | 2026-08-03 A | 2026-08-14 A | 578 | 100% |  | 2026-06-16 | 2026-06-29 | 10d |  |  |
| 583 | 3.5.2.5 | **Elétrica Baixa Tensão** | 35d | 2026-06-29 A | 2026-08-14 |  | 96% | 1.33d | 2026-06-01 | 2026-07-24 | 39d | 6d |  |
| 584 | 3.5.2.5.1 | **LOD 100 — Concepção** | 13d | 2026-06-29 A | 2026-07-15 A |  | 100% |  | 2026-06-01 | 2026-06-23 | 16d |  |  |
| 585 | 3.5.2.5.1.1 | Avaliação e Diretrizes Técnicas para Arquitetura | 6d | 2026-06-29 A | 2026-07-06 A | 415SS+33d | 100% |  | 2026-06-01 | 2026-06-09 | 6d |  |  |
| 586 | 3.5.2.5.1.2 | Estimativa de Cargas e Demanda | 10d | 2026-06-29 A | 2026-07-10 A | 415SS+33d | 100% |  | 2026-06-01 | 2026-06-15 | 10d |  |  |
| 587 | 3.5.2.5.1.3 | Levantamento de Equipamentos de Outras Disciplinas | 3d | 2026-07-13 A | 2026-07-15 A | 564 | 100% |  | 2026-06-16 | 2026-06-23 | 6d |  |  |
| 588 | 3.5.2.5.2 | **LOD 200 — Anteprojeto** | 19d | 2026-07-16 A | 2026-08-11 A |  | 100% |  | 2026-06-24 | 2026-07-20 | 19d |  |  |
| 589 | 3.5.2.5.2.1 | TUGs Estimados | 19d | 2026-07-16 A | 2026-08-11 A | 586, 587 | 100% |  | 2026-06-24 | 2026-07-20 | 19d |  |  |
| 590 | 3.5.2.5.2.2 | Pontos de Luz Estimados | 19d | 2026-07-16 A | 2026-08-11 A | 586, 587 | 100% |  | 2026-06-24 | 2026-07-20 | 19d |  |  |
| 591 | 3.5.2.5.2.3 | TUEs e Quadros Estimados | 19d | 2026-07-16 A | 2026-08-11 A | 586, 587 | 100% |  | 2026-06-24 | 2026-07-20 | 19d |  |  |
| 592 | 3.5.2.5.3 | LOD 300 - Consolidação e documentação de entrega | 3d | 2026-08-12 | 2026-08-14 | 588 |  |  | 2026-07-21 | 2026-07-24 | 4d | 6d |  |
| 593 | 3.5.2.6 | **Telecom** | 35d | 2026-06-29 A | 2026-08-14 |  | 94% | 2.15d | 2026-06-01 | 2026-07-17 | 34d | 6d |  |
| 594 | 3.5.2.6.1 | **LOD 100 — Concepção** | 10d | 2026-06-29 A | 2026-07-10 A |  | 100% |  | 2026-06-01 | 2026-06-15 | 10d |  |  |
| 595 | 3.5.2.6.1.1 | Avaliação e Diretrizes Técnicas para Arquitetura | 10d | 2026-06-29 A | 2026-07-10 A | 415SS+33d | 100% |  | 2026-06-01 | 2026-06-15 | 10d |  |  |
| 596 | 3.5.2.6.1.2 | Estimativa de Demanda de Telecomunicações | 10d | 2026-06-29 A | 2026-07-10 A | 415SS+33d | 100% |  | 2026-06-01 | 2026-06-15 | 10d |  |  |
| 597 | 3.5.2.6.1.3 | Levantamento de Equipamentos e Interfaces com Outras Disciplinas | 10d | 2026-06-29 A | 2026-07-10 A | 415SS+33d | 100% |  | 2026-06-01 | 2026-06-15 | 10d |  |  |

| ID | WBS | Task | Duration | Start | Finish | Predecessors | Complete | Remaining | Baseline start | Baseline finish | Baseline duration | Total slack |
| --- | --- | --- | --- | --- | --- | --- | --- | --- | --- | --- | --- | --- |
| 598 | 3.5.2.6.2 | **LOD 200 — Anteprojeto** | 21d | 2026-07-13 A | 2026-08-10 A |  | 100% |  | 2026-06-16 | 2026-07-13 | 20d |  |
| 599 | 3.5.2.6.2.1 | Pontos de Telecomunicações Estimados (Rede, Voz, CFTV e Demais Sistemas) | 10d | 2026-07-13 A | 2026-07-24 A | 597 | 100% |  | 2026-06-16 | 2026-06-29 | 10d |  |
| 600 | 3.5.2.6.2.2 | Racks Estimados | 10d | 2026-07-13 A | 2026-07-24 A | 597 | 100% |  | 2026-06-16 | 2026-06-29 | 10d |  |
| 601 | 3.5.2.6.2.3 | Infraestrutura de Telecomunicações Preliminar | 11d | 2026-07-27 A | 2026-08-10 A | 599, 600 | 100% |  | 2026-06-30 | 2026-07-13 | 10d |  |
| 602 | 3.5.2.6.3 | LOD 300 - Consolidação e documentação de entrega | 4d | 2026-08-11 | 2026-08-14 | 598 |  |  | 2026-07-14 | 2026-07-17 | 4d | 6d |
| 603 | 3.5.2.7 | **Subestação** | 35d | 2026-06-29 A | 2026-08-14 |  | 93% | 2.41d | 2026-06-01 | 2026-07-24 | 39d | 6d |
| 604 | 3.5.2.7.1 | **LOD 100 — Concepção** | 5d | 2026-06-29 A | 2026-07-03 A |  | 100% |  | 2026-06-01 | 2026-06-08 | 5d |  |
| 605 | 3.5.2.7.1.1 | Avaliação e Diretrizes Técnicas para Arquitetura | 5d | 2026-06-29 A | 2026-07-03 A | 415SS+33d | 100% |  | 2026-06-01 | 2026-06-08 | 5d |  |
| 606 | 3.5.2.7.1.2 | Levantamento de Demanda, Perfil de Consumo e Ponto de Entrega | 5d | 2026-06-29 A | 2026-07-03 A | 415SS+33d | 100% |  | 2026-06-01 | 2026-06-08 | 5d |  |
| 607 | 3.5.2.7.1.3 | Estudo de Viabilidade Técnica e Atendimento ao Padrão da Concessionária | 5d | 2026-06-29 A | 2026-07-03 A | 415SS+33d | 100% |  | 2026-06-01 | 2026-06-08 | 5d |  |
| 608 | 3.5.2.7.2 | **LOD 200 — Anteprojeto** | 26d | 2026-07-06 A | 2026-08-10 A |  | 100% |  | 2026-06-09 | 2026-07-20 | 30d |  |
| 609 | 3.5.2.7.2.1 | Definição do Tipo de Subestação e Arranjo Físico Preliminar | 13d | 2026-07-06 A | 2026-07-22 A | 607 | 100% |  | 2026-06-09 | 2026-06-29 | 15d |  |
| 610 | 3.5.2.7.2.2 | Dimensionamento Preliminar do Transformador e Equipamentos Principais | 13d | 2026-07-23 A | 2026-08-10 A | 609 | 100% |  | 2026-06-30 | 2026-07-20 | 15d |  |
| 611 | 3.5.2.7.2.3 | Diretrizes Preliminares de Aterramento | 13d | 2026-07-23 A | 2026-08-10 A | 609 | 100% |  | 2026-06-30 | 2026-07-20 | 15d |  |
| 612 | 3.5.2.7.3 | LOD 300 - Consolidação e documentação de entrega | 4d | 2026-08-11 | 2026-08-14 | 608 |  |  | 2026-07-21 | 2026-07-24 | 4d | 6d |
| 613 | 3.5.2.8 | **SPDA** | 35d | 2026-06-29 A | 2026-08-14 |  | 91% | 3.11d | 2026-06-01 | 2026-07-24 | 39d | 6d |
| 614 | 3.5.2.8.1 | **LOD 100 — Concepção** | 5d | 2026-06-29 A | 2026-07-03 A |  | 100% |  | 2026-06-01 | 2026-06-08 | 5d |  |
| 615 | 3.5.2.8.1.1 | Avaliação e Diretrizes Técnicas para Arquitetura | 5d | 2026-06-29 A | 2026-07-03 A | 415SS+33d | 100% |  | 2026-06-01 | 2026-06-08 | 5d |  |
| 616 | 3.5.2.8.1.2 | Coleta de Informações da Edificação e Análise de Risco (ABNT NBR 5419-2) | 5d | 2026-06-29 A | 2026-07-03 A | 415SS+33d | 100% |  | 2026-06-01 | 2026-06-08 | 5d |  |
| 617 | 3.5.2.8.1.3 | Estudo Preliminar de Necessidade e Nível de Proteção do SPDA | 5d | 2026-06-29 A | 2026-07-03 A | 415SS+33d | 100% |  | 2026-06-01 | 2026-06-08 | 5d |  |
| 618 | 3.5.2.8.2 | **LOD 200 — Anteprojeto** | 26d | 2026-07-06 A | 2026-08-10 A |  | 100% |  | 2026-06-09 | 2026-07-20 | 30d |  |
| 619 | 3.5.2.8.2.1 | Definição da Estratégia de Proteção e Soluções Técnicas | 12d | 2026-07-06 A | 2026-07-21 A | 617 | 100% |  | 2026-06-09 | 2026-06-22 | 10d |  |
| 620 | 3.5.2.8.2.2 | Zoneamento de Captação, Descida e Traçados Preliminares | 12d | 2026-07-22 A | 2026-08-06 A | 619 | 100% |  | 2026-06-23 | 2026-07-06 | 10d |  |
| 621 | 3.5.2.8.2.3 | Estudo de Interferências, Compatibilização e Métodos Construtivos | 2d | 2026-08-07 A | 2026-08-10 A | 620 | 100% |  | 2026-07-07 | 2026-07-20 | 10d |  |
| 622 | 3.5.2.8.3 | LOD 300 - Consolidação e documentação de entrega | 4d | 2026-08-11 | 2026-08-14 | 621 |  |  | 2026-07-21 | 2026-07-24 | 4d | 6d |

| ID | WBS | Task | Duration | Start | Finish | Predecessors | Complete | Remaining | Baseline start | Baseline finish | Baseline duration | Total slack |
| --- | --- | --- | --- | --- | --- | --- | --- | --- | --- | --- | --- | --- |
| 623 | 3.5.2.9 | **Energia Renovável** | 35d | 2026-06-29 A | 2026-08-14 A |  | 100% |  | 2026-06-01 | 2026-07-17 | 34d |  |
| 624 | 3.5.2.9.1 | **LOD 100 — Concepção** | 10d | 2026-06-29 A | 2026-07-10 A |  | 100% |  | 2026-06-01 | 2026-06-15 | 10d |  |
| 625 | 3.5.2.9.1.1 | Viabilidade e Premissas de Geração | 10d | 2026-06-29 A | 2026-07-10 A | 415SS+33d | 100% |  | 2026-06-01 | 2026-06-15 | 10d |  |
| 626 | 3.5.2.9.1.2 | Levantamento Preliminar de Áreas e Sombreamento | 10d | 2026-06-29 A | 2026-07-10 A | 415SS+33d | 100% |  | 2026-06-01 | 2026-06-15 | 10d |  |
| 627 | 3.5.2.9.1.3 | Avaliação e Diretrizes Técnicas para Arquitetônico | 10d | 2026-06-29 A | 2026-07-10 A | 415SS+33d | 100% |  | 2026-06-01 | 2026-06-15 | 10d |  |
| 628 | 3.5.2.9.2 | **LOD 200 — Anteprojeto** | 21d | 2026-07-13 A | 2026-08-10 A |  | 100% |  | 2026-06-16 | 2026-07-13 | 20d |  |
| 629 | 3.5.2.9.2.1 | Layout Preliminar de Módulos, Inversores e String Boxes | 21d | 2026-07-13 A | 2026-08-10 A | 626 | 100% |  | 2026-06-16 | 2026-07-13 | 20d |  |
| 630 | 3.5.2.9.2.2 | Infraestrutura e Rotas Técnicas Preliminares (DC/AC e Aterramento) | 21d | 2026-07-13 A | 2026-08-10 A | 626 | 100% |  | 2026-06-16 | 2026-07-13 | 20d |  |
| 631 | 3.5.2.9.2.3 | Critérios Preliminares de Proteção e Estimativa de Quantitativos | 21d | 2026-07-13 A | 2026-08-10 A | 626 | 100% |  | 2026-06-16 | 2026-07-13 | 20d |  |
| 632 | 3.5.2.9.3 | LOD 300 - Consolidação e documentação de entrega | 4d | 2026-08-11 A | 2026-08-14 A | 628 | 100% |  | 2026-07-14 | 2026-07-17 | 4d |  |
| 633 | 3.6 | **004 - Guarda Municipal** | 68d | 2026-05-19 A | 2026-08-21 |  | 92% | 5.65d | 2026-05-19 | 2026-07-27 | 49d | 1d |
| 634 | 3.6.1 | **Arquitetura** | 28d | 2026-05-19 A | 2026-06-26 A |  | 100% |  | 2026-05-19 | 2026-07-27 | 49d |  |
| 635 | 3.6.1.1 | **LOD 200 - ESTUDO PRELIMINAR** | 20d | 2026-05-19 A | 2026-06-16 A |  | 100% |  | 2026-05-19 | 2026-07-03 | 33d |  |
| 636 | 3.6.1.1.1 | Modelagem das paredes | 20d | 2026-05-19 A | 2026-06-16 A | 63FS+13d | 100% |  | 2026-05-19 | 2026-07-03 | 33d |  |
| 637 | 3.6.1.1.2 | Modelagem dos pisos | 20d | 2026-05-19 A | 2026-06-16 A | 63FS+13d | 100% |  | 2026-05-19 | 2026-07-03 | 33d |  |
| 638 | 3.6.1.1.3 | Modelagem das lajes | 20d | 2026-05-19 A | 2026-06-16 A | 63FS+13d | 100% |  | 2026-05-19 | 2026-07-03 | 0d |  |
| 639 | 3.6.1.1.4 | Inserção de portas | 20d | 2026-05-19 A | 2026-06-16 A | 63FS+13d | 100% |  | 2026-05-19 | 2026-07-03 | 33d |  |
| 640 | 3.6.1.1.5 | Inserção de janelas | 20d | 2026-05-19 A | 2026-06-16 A | 63FS+13d | 100% |  | 2026-05-19 | 2026-07-03 | 33d |  |
| 641 | 3.6.1.1.6 | Inserção de escada(s) | 20d | 2026-05-19 A | 2026-06-16 A | 63FS+13d | 100% |  | 2026-05-19 | 2026-07-03 | 33d |  |
| 642 | 3.6.1.1.7 | Inserção de elevador(es) | 20d | 2026-05-19 A | 2026-06-16 A | 63FS+13d | 100% |  | 2026-05-19 | 2026-07-03 | 33d |  |
| 643 | 3.6.1.1.8 | Inserção de rampa(s) | 20d | 2026-05-19 A | 2026-06-16 A | 63FS+13d | 100% |  | 2026-05-19 | 2026-07-03 | 0d |  |
| 644 | 3.6.1.1.9 | Inserção de layout | 20d | 2026-05-19 A | 2026-06-16 A | 63FS+13d | 100% |  | 2026-05-19 | 2026-07-03 | 33d |  |
| 645 | 3.6.1.1.10 | Identificação dos ambientes | 20d | 2026-05-19 A | 2026-06-16 A | 63FS+13d | 100% |  | 2026-05-19 | 2026-07-03 | 33d |  |
| 646 | 3.6.1.1.11 | Espaços de circulação | 20d | 2026-05-19 A | 2026-06-16 A | 63FS+13d | 100% |  | 2026-05-19 | 2026-07-03 | 33d |  |
| 647 | 3.6.1.1.12 | Áreas de serviços, funcionais e técnicas | 20d | 2026-05-19 A | 2026-06-16 A | 63FS+13d | 100% |  | 2026-05-19 | 2026-07-03 | 33d |  |
| 648 | 3.6.1.1.13 | Projeção de níveis superiores e da cobertura | 20d | 2026-05-19 A | 2026-06-16 A | 63FS+13d | 100% |  | 2026-05-19 | 2026-07-03 | 33d |  |
| 649 | 3.6.1.1.14 | Cotas de nível principais | 20d | 2026-05-19 A | 2026-06-16 A | 63FS+13d | 100% |  | 2026-05-19 | 2026-07-03 | 33d |  |
| 650 | 3.6.1.1.15 | Relatório/Memorial de Projeto Preliminar | 5d | 2026-06-10 A | 2026-06-16 A | 649FF | 100% |  | 2026-06-22 | 2026-07-03 | 10d |  |

| ID | WBS | Task | Duration | Start | Finish | Predecessors | Complete | Baseline start | Baseline finish | Baseline duration |
| --- | --- | --- | --- | --- | --- | --- | --- | --- | --- | --- |
| 651 | 3.6.1.2 | **LOD 300 - ANTEPROJETO** | 8d | 2026-06-17 A | 2026-06-26 A |  | 100% | 2026-07-06 | 2026-07-27 | 16d |
| 652 | 3.6.1.2.1 | **Situação** | 1d | 2026-06-17 A | 2026-06-17 A |  | 100% | 2026-07-06 | 2026-07-07 | 2d |
| 653 | 3.6.1.2.1.1 | Indicar simbologias de representação gráfica, conforme NBR 6492:2021; | 1d | 2026-06-17 A | 2026-06-17 A | 649 | 100% | 2026-07-06 | 2026-07-07 | 2d |
| 654 | 3.6.1.2.1.2 | Indicação Norte | 1d | 2026-06-17 A | 2026-06-17 A | 649 | 100% | 2026-07-06 | 2026-07-07 | 2d |
| 655 | 3.6.1.2.1.3 | Analisar, adicionar e fechar - Curvas de nível existentes e projetadas (conforme projetos de topografia e sondagem recebidos); | 1d | 2026-06-17 A | 2026-06-17 A | 649 | 100% | 2026-07-06 | 2026-07-07 | 2d |
| 656 | 3.6.1.2.1.4 | Indicação de Escala; | 1d | 2026-06-17 A | 2026-06-17 A | 649 | 100% | 2026-07-06 | 2026-07-07 | 2d |
| 657 | 3.6.1.2.1.5 | Vias de acesso ao conjunto, arruamento, logradouros adjacentes e calçadas com os respectivos equipamentos urbanos; | 1d | 2026-06-17 A | 2026-06-17 A | 649 | 100% | 2026-07-06 | 2026-07-07 | 2d |
| 658 | 3.6.1.2.1.6 | Platôs e taludes principais; | 1d | 2026-06-17 A | 2026-06-17 A | 649 | 100% | 2026-07-06 | 2026-07-07 | 2d |
| 659 | 3.6.1.2.1.7 | Perímetro do terreno, recuos e afastamentos; | 1d | 2026-06-17 A | 2026-06-17 A | 649 | 100% | 2026-07-06 | 2026-07-07 | 2d |
| 660 | 3.6.1.2.1.8 | Indicação das áreas a serem edificadas com o contorno da cobertura das edificações, estacionamentos e áreas permeáveis/impermeáveis; | 1d | 2026-06-17 A | 2026-06-17 A | 649 | 100% | 2026-07-06 | 2026-07-07 | 2d |
| 661 | 3.6.1.2.1.9 | Denominação das edificações, blocos ou espaços; | 1d | 2026-06-17 A | 2026-06-17 A | 649 | 100% | 2026-07-06 | 2026-07-07 | 2d |
| 662 | 3.6.1.2.1.10 | Cotas gerais | 1d | 2026-06-17 A | 2026-06-17 A | 649 | 100% | 2026-07-06 | 2026-07-07 | 2d |
| 663 | 3.6.1.2.1.11 | Cotas de nível principal. | 1d | 2026-06-17 A | 2026-06-17 A | 649 | 100% | 2026-07-06 | 2026-07-07 | 2d |
| 664 | 3.6.1.2.1.12 | Quadros de áreas | 1d | 2026-06-17 A | 2026-06-17 A | 649 | 100% | 2026-07-06 | 2026-07-07 | 2d |
| 665 | 3.6.1.2.1.13 | Relatório | 1d | 2026-06-17 A | 2026-06-17 A | 649 | 100% | 2026-07-06 | 2026-07-07 | 2d |
| 666 | 3.6.1.2.2 | Planta com as cotas de nível projetadas e existentes | 1d | 2026-06-18 A | 2026-06-18 A | 665 | 100% | 2026-07-08 | 2026-07-09 | 2d |
| 667 | 3.6.1.2.3 | **Plantas baixas (se tiver mais de um pavimento, duplicar bloco)** | 1d | 2026-06-19 A | 2026-06-19 A |  | 100% | 2026-07-10 | 2026-07-13 | 2d |
| 668 | 3.6.1.2.3.1 | Indicar simbologias de representação gráfica, conforme NBR 6492:2021; | 1d | 2026-06-19 A | 2026-06-19 A | 666 | 100% | 2026-07-10 | 2026-07-13 | 2d |
| 669 | 3.6.1.2.3.2 | Compatibilização (verificar se está tudo conforme as normas e alinhar com o restante das disciplinas de engenharia) | 1d | 2026-06-19 A | 2026-06-19 A | 666 | 100% | 2026-07-10 | 2026-07-13 | 2d |
| 670 | 3.6.1.2.3.3 | Compatibilização (deixar tudo conforme padrão Quanta) | 1d | 2026-06-19 A | 2026-06-19 A | 666 | 100% | 2026-07-10 | 2026-07-13 | 2d |
| 671 | 3.6.1.2.3.4 | Indicação de Norte; | 1d | 2026-06-19 A | 2026-06-19 A | 666 | 100% | 2026-07-10 | 2026-07-13 | 2d |
| 672 | 3.6.1.2.3.5 | Indicação de Escala; | 1d | 2026-06-19 A | 2026-06-19 A | 666 | 100% | 2026-07-10 | 2026-07-13 | 2d |
| 673 | 3.6.1.2.3.6 | Indicação de Acessos; | 1d | 2026-06-19 A | 2026-06-19 A | 666 | 100% | 2026-07-10 | 2026-07-13 | 2d |
| 674 | 3.6.1.2.3.7 | Elementos de vedação internos e externos; | 1d | 2026-06-19 A | 2026-06-19 A | 666 | 100% | 2026-07-10 | 2026-07-13 | 2d |
| 675 | 3.6.1.2.3.8 | Esquadrias; | 1d | 2026-06-19 A | 2026-06-19 A | 666 | 100% | 2026-07-10 | 2026-07-13 | 2d |
| 676 | 3.6.1.2.3.9 | Elementos estruturais principais; | 1d | 2026-06-19 A | 2026-06-19 A | 666 | 100% | 2026-07-10 | 2026-07-13 | 2d |
| 677 | 3.6.1.2.3.10 | Identificação dos ambientes e espaços (internos e externos); | 1d | 2026-06-19 A | 2026-06-19 A | 666 | 100% | 2026-07-10 | 2026-07-13 | 2d |
| 678 | 3.6.1.2.3.11 | Espaços de circulação internos e externos; | 1d | 2026-06-19 A | 2026-06-19 A | 666 | 100% | 2026-07-10 | 2026-07-13 | 2d |
| 679 | 3.6.1.2.3.12 | Áreas de serviço, funcionais e técnicas (internos e externos); | 1d | 2026-06-19 A | 2026-06-19 A | 666 | 100% | 2026-07-10 | 2026-07-13 | 2d |
| 680 | 3.6.1.2.3.13 | Projeções de níveis superiores; | 1d | 2026-06-19 A | 2026-06-19 A | 666 | 100% | 2026-07-10 | 2026-07-13 | 2d |
| 681 | 3.6.1.2.3.14 | Cotas gerais | 1d | 2026-06-19 A | 2026-06-19 A | 666 | 100% | 2026-07-10 | 2026-07-13 | 2d |
| 682 | 3.6.1.2.3.15 | Cotas de nível principal. | 1d | 2026-06-19 A | 2026-06-19 A | 666 | 100% | 2026-07-10 | 2026-07-13 | 2d |
| 683 | 3.6.1.2.3.16 | Tabelas de paredes, pisos, esquadrias e plantas | 1d | 2026-06-19 A | 2026-06-19 A | 666 | 100% | 2026-07-10 | 2026-07-13 | 2d |
| 684 | 3.6.1.2.3.17 | Quadro de áreas | 1d | 2026-06-19 A | 2026-06-19 A | 666 | 100% | 2026-07-10 | 2026-07-13 | 2d |
| 685 | 3.6.1.2.3.18 | Relatório | 1d | 2026-06-19 A | 2026-06-19 A | 666 | 100% | 2026-07-10 | 2026-07-13 | 2d |

| ID | WBS | Task | Duration | Start | Finish | Predecessors | Complete | Baseline start | Baseline finish | Baseline duration |
| --- | --- | --- | --- | --- | --- | --- | --- | --- | --- | --- |
| 686 | 3.6.1.2.4 | **Planta das coberturas** | 1d | 2026-06-22 A | 2026-06-22 A |  | 100% | 2026-07-14 | 2026-07-15 | 2d |
| 687 | 3.6.1.2.4.1 | Indicação do Norte | 1d | 2026-06-22 A | 2026-06-22 A | 684 | 100% | 2026-07-14 | 2026-07-15 | 2d |
| 688 | 3.6.1.2.4.2 | Indicação de escala | 1d | 2026-06-22 A | 2026-06-22 A | 684 | 100% | 2026-07-14 | 2026-07-15 | 2d |
| 689 | 3.6.1.2.4.3 | Curvas de nível | 1d | 2026-06-22 A | 2026-06-22 A | 684 | 100% | 2026-07-14 | 2026-07-15 | 2d |
| 690 | 3.6.1.2.4.4 | Indicação de Acessos; | 1d | 2026-06-22 A | 2026-06-22 A | 684 | 100% | 2026-07-14 | 2026-07-15 | 2d |
| 691 | 3.6.1.2.4.5 | Estacionamento e áreas cobertas | 1d | 2026-06-22 A | 2026-06-22 A | 684 | 100% | 2026-07-14 | 2026-07-15 | 2d |
| 692 | 3.6.1.2.4.6 | Cobertura das edificações | 1d | 2026-06-22 A | 2026-06-22 A | 684 | 100% | 2026-07-14 | 2026-07-15 | 2d |
| 693 | 3.6.1.2.4.7 | Sentido de escoamento das águas pluviais e inclinação | 1d | 2026-06-22 A | 2026-06-22 A | 684 | 100% | 2026-07-14 | 2026-07-15 | 2d |
| 694 | 3.6.1.2.4.8 | Cotas gerais | 1d | 2026-06-22 A | 2026-06-22 A | 684 | 100% | 2026-07-14 | 2026-07-15 | 2d |
| 695 | 3.6.1.2.4.9 | Cotas de nível principal | 1d | 2026-06-22 A | 2026-06-22 A | 684 | 100% | 2026-07-14 | 2026-07-15 | 2d |
| 696 | 3.6.1.2.4.10 | Relatório | 1d | 2026-06-22 A | 2026-06-22 A | 684 | 100% | 2026-07-14 | 2026-07-15 | 2d |
| 697 | 3.6.1.2.5 | **Cortes longitudinais** | 1d | 2026-06-23 A | 2026-06-23 A |  | 100% | 2026-07-16 | 2026-07-17 | 2d |
| 698 | 3.6.1.2.5.1 | Indicar simbologias de representação gráfica, conforme NBR 6492:2021; | 1d | 2026-06-23 A | 2026-06-23 A | 695 | 100% | 2026-07-16 | 2026-07-17 | 2d |
| 699 | 3.6.1.2.5.2 | Indicação de Escala; | 1d | 2026-06-23 A | 2026-06-23 A | 695 | 100% | 2026-07-16 | 2026-07-17 | 2d |
| 700 | 3.6.1.2.5.3 | Elementos estruturais principais; | 1d | 2026-06-23 A | 2026-06-23 A | 695 | 100% | 2026-07-16 | 2026-07-17 | 2d |
| 701 | 3.6.1.2.5.4 | Elementos de vedação internos e externos; | 1d | 2026-06-23 A | 2026-06-23 A | 695 | 100% | 2026-07-16 | 2026-07-17 | 2d |
| 702 | 3.6.1.2.5.5 | Esquadrias; | 1d | 2026-06-23 A | 2026-06-23 A | 695 | 100% | 2026-07-16 | 2026-07-17 | 2d |
| 703 | 3.6.1.2.5.6 | Identificação dos ambientes; | 1d | 2026-06-23 A | 2026-06-23 A | 695 | 100% | 2026-07-16 | 2026-07-17 | 2d |
| 704 | 3.6.1.2.5.7 | Cobertura com indicação da respectiva inclinação; | 1d | 2026-06-23 A | 2026-06-23 A | 695 | 100% | 2026-07-16 | 2026-07-17 | 2d |
| 705 | 3.6.1.2.5.8 | Cotas gerais; | 1d | 2026-06-23 A | 2026-06-23 A | 695 | 100% | 2026-07-16 | 2026-07-17 | 2d |
| 706 | 3.6.1.2.5.9 | Cotas de nível principal; | 1d | 2026-06-23 A | 2026-06-23 A | 695 | 100% | 2026-07-16 | 2026-07-17 | 2d |
| 707 | 3.6.1.2.5.10 | Eixos do projeto; | 1d | 2026-06-23 A | 2026-06-23 A | 695 | 100% | 2026-07-16 | 2026-07-17 | 2d |
| 708 | 3.6.1.2.5.11 | Relevo construído; | 1d | 2026-06-23 A | 2026-06-23 A | 695 | 100% | 2026-07-16 | 2026-07-17 | 2d |
| 709 | 3.6.1.2.5.12 | Projeção da topografia natural. | 1d | 2026-06-23 A | 2026-06-23 A | 695 | 100% | 2026-07-16 | 2026-07-17 | 2d |
| 710 | 3.6.1.2.5.13 | Relatório | 1d | 2026-06-23 A | 2026-06-23 A | 695 | 100% | 2026-07-16 | 2026-07-17 | 2d |

| ID | WBS | Task | Duration | Start | Finish | Predecessors | Complete | Baseline start | Baseline finish | Baseline duration |
| --- | --- | --- | --- | --- | --- | --- | --- | --- | --- | --- |
| 711 | 3.6.1.2.6 | **Cortes transversais** | 1d | 2026-06-24 A | 2026-06-24 A |  | 100% | 2026-07-20 | 2026-07-21 | 2d |
| 712 | 3.6.1.2.6.1 | Indicar simbologias de representação gráfica, conforme NBR 6492:2021; | 1d | 2026-06-24 A | 2026-06-24 A | 709 | 100% | 2026-07-20 | 2026-07-21 | 2d |
| 713 | 3.6.1.2.6.2 | Indicação de Escala; | 1d | 2026-06-24 A | 2026-06-24 A | 709 | 100% | 2026-07-20 | 2026-07-21 | 2d |
| 714 | 3.6.1.2.6.3 | Elementos estruturais principais; | 1d | 2026-06-24 A | 2026-06-24 A | 709 | 100% | 2026-07-20 | 2026-07-21 | 2d |
| 715 | 3.6.1.2.6.4 | Elementos de vedação internos e externos; | 1d | 2026-06-24 A | 2026-06-24 A | 709 | 100% | 2026-07-20 | 2026-07-21 | 2d |
| 716 | 3.6.1.2.6.5 | Esquadrias; | 1d | 2026-06-24 A | 2026-06-24 A | 709 | 100% | 2026-07-20 | 2026-07-21 | 2d |
| 717 | 3.6.1.2.6.6 | Identificação dos ambientes; | 1d | 2026-06-24 A | 2026-06-24 A | 709 | 100% | 2026-07-20 | 2026-07-21 | 2d |
| 718 | 3.6.1.2.6.7 | Cobertura com indicação da respectiva inclinação; | 1d | 2026-06-24 A | 2026-06-24 A | 709 | 100% | 2026-07-20 | 2026-07-21 | 2d |
| 719 | 3.6.1.2.6.8 | Cotas gerais; | 1d | 2026-06-24 A | 2026-06-24 A | 709 | 100% | 2026-07-20 | 2026-07-21 | 2d |
| 720 | 3.6.1.2.6.9 | Cotas de nível principal; | 1d | 2026-06-24 A | 2026-06-24 A | 709 | 100% | 2026-07-20 | 2026-07-21 | 2d |
| 721 | 3.6.1.2.6.10 | Eixos do projeto; | 1d | 2026-06-24 A | 2026-06-24 A | 709 | 100% | 2026-07-20 | 2026-07-21 | 2d |
| 722 | 3.6.1.2.6.11 | Relevo construído; | 1d | 2026-06-24 A | 2026-06-24 A | 709 | 100% | 2026-07-20 | 2026-07-21 | 2d |
| 723 | 3.6.1.2.6.12 | Projeção da topografia natural | 1d | 2026-06-24 A | 2026-06-24 A | 709 | 100% | 2026-07-20 | 2026-07-21 | 2d |
| 724 | 3.6.1.2.6.13 | Relatório | 1d | 2026-06-24 A | 2026-06-24 A | 709 | 100% | 2026-07-20 | 2026-07-21 | 2d |
| 725 | 3.6.1.2.7 | **Elevações** | 1d | 2026-06-25 A | 2026-06-25 A |  | 100% | 2026-07-22 | 2026-07-23 | 2d |
| 726 | 3.6.1.2.7.1 | Indicar simbologias de representação gráfica, conforme NBR 6492:2021; | 1d | 2026-06-25 A | 2026-06-25 A | 723 | 100% | 2026-07-22 | 2026-07-23 | 2d |
| 727 | 3.6.1.2.7.2 | Indicação de Escala; | 1d | 2026-06-25 A | 2026-06-25 A | 723 | 100% | 2026-07-22 | 2026-07-23 | 2d |
| 728 | 3.6.1.2.7.3 | Elementos estruturais principais; | 1d | 2026-06-25 A | 2026-06-25 A | 723 | 100% | 2026-07-22 | 2026-07-23 | 2d |
| 729 | 3.6.1.2.7.4 | Elementos de vedação internos e externos; | 1d | 2026-06-25 A | 2026-06-25 A | 723 | 100% | 2026-07-22 | 2026-07-23 | 2d |
| 730 | 3.6.1.2.7.5 | Esquadrias; | 1d | 2026-06-25 A | 2026-06-25 A | 723 | 100% | 2026-07-22 | 2026-07-23 | 2d |
| 731 | 3.6.1.2.7.6 | Relevo construído; | 1d | 2026-06-25 A | 2026-06-25 A | 723 | 100% | 2026-07-22 | 2026-07-23 | 2d |
| 732 | 3.6.1.2.7.7 | Cotas gerais; | 1d | 2026-06-25 A | 2026-06-25 A | 723 | 100% | 2026-07-22 | 2026-07-23 | 2d |
| 733 | 3.6.1.2.7.8 | Cotas de nível principais; | 1d | 2026-06-25 A | 2026-06-25 A | 723 | 100% | 2026-07-22 | 2026-07-23 | 2d |
| 734 | 3.6.1.2.7.9 | Cobertura (quando aparente). | 1d | 2026-06-25 A | 2026-06-25 A | 723 | 100% | 2026-07-22 | 2026-07-23 | 2d |

| ID | WBS | Task | Duration | Start | Finish | Predecessors | Complete | Remaining | Baseline start | Baseline finish | Baseline duration | Total slack | Free slack |
| --- | --- | --- | --- | --- | --- | --- | --- | --- | --- | --- | --- | --- | --- |
| 735 | 3.6.1.2.8 | **Memorial Descritivo** | 1d | 2026-06-26 A | 2026-06-26 A |  | 100% |  | 2026-07-24 | 2026-07-27 | 2d |  |  |
| 736 | 3.6.1.2.8.1 | Descrição dos elementos da edificação | 1d | 2026-06-26 A | 2026-06-26 A | 734 | 100% |  | 2026-07-24 | 2026-07-27 | 2d |  |  |
| 737 | 3.6.1.2.8.2 | Descrição dos componentes construtivos e materiais de construção | 1d | 2026-06-26 A | 2026-06-26 A | 734 | 100% |  | 2026-07-24 | 2026-07-27 | 2d |  |  |
| 738 | 3.6.1.2.8.3 | Lista de pranchas anexas e documentos | 1d | 2026-06-26 A | 2026-06-26 A | 734 | 100% |  | 2026-07-24 | 2026-07-27 | 2d |  |  |
| 739 | 3.6.2 | **Engenharia** | 40d | 2026-06-29 A | 2026-08-21 |  | 88% | 4.73d | 2026-06-01 | 2026-07-24 | 39d | 1d |  |
| 740 | 3.6.2.1 | **Estrutura** | 40d | 2026-06-29 A | 2026-08-21 |  | 33% | 26.8d | 2026-06-01 | 2026-07-20 | 35d | 1d |  |
| 741 | 3.6.2.1.1 | **LOD 100 — Premissas, diretrizes e interfaces** | 7d | 2026-06-29 A | 2026-07-07 A |  | 100% |  | 2026-06-01 | 2026-06-10 | 7d |  |  |
| 742 | 3.6.2.1.1.1 | Levantamento de tipos de cargas globais estimadas (permanentes, acidentais, vento e especiais). | 2d | 2026-06-29 A | 2026-06-30 A | 649SS+28d | 100% |  | 2026-06-01 | 2026-06-02 | 2d |  |  |
| 743 | 3.6.2.1.1.2 | Estudo volumétrico com modulação inicial de pilares, vigas e lajes. Entendendo vãos e desafios | 5d | 2026-06-29 A | 2026-07-03 A | 649SS+28d | 100% |  | 2026-06-01 | 2026-06-08 | 5d |  |  |
| 744 | 3.6.2.1.1.3 | Localização aproximada de elementos estruturais principais. Avaliando vãos e estudando posições | 2d | 2026-06-29 A | 2026-06-30 A | 649SS+28d | 100% |  | 2026-06-01 | 2026-06-02 | 2d |  |  |
| 745 | 3.6.2.1.1.4 | Estudo de viabilidade técnica e construtiva. | 3d | 2026-07-01 A | 2026-07-03 A | 744 | 100% |  | 2026-06-03 | 2026-06-08 | 3d |  |  |
| 746 | 3.6.2.1.1.5 | Definição preliminar do sistema estrutural (concreto armado, metálica ou mista). | 3d | 2026-07-01 A | 2026-07-03 A | 744 | 100% |  | 2026-06-03 | 2026-06-08 | 3d |  |  |
| 747 | 3.6.2.1.1.6 | Estimativa preliminar de tipologias de fundações (sapatas, blocos, estacas). | 2d | 2026-07-06 A | 2026-07-07 A | 745 | 100% |  | 2026-06-09 | 2026-06-10 | 2d |  |  |
| 748 | 3.6.2.1.1.7 | Previsão de áreas técnicas, casas de máquinas, reservatórios elevados e estrutura de cobertura. | 2d | 2026-07-06 A | 2026-07-07 A | 745 | 100% |  | 2026-06-09 | 2026-06-10 | 2d |  |  |
| 749 | 3.6.2.1.2 | **LOD 200 — Validação interdisciplinar e solução preliminar** | 30d | 2026-07-08 A | 2026-08-18 |  | 29% | 21.31d | 2026-06-11 | 2026-07-08 | 20d | 4d |  |
| 750 | 3.6.2.1.2.1 | Lista preliminar de cargas e ações para dimensionamento. | 5d | 2026-07-08 A | 2026-07-14 A | 748 | 100% |  | 2026-06-11 | 2026-06-17 | 5d |  |  |
| 751 | 3.6.2.1.2.2 | Definição preliminar de alturas de pavimentos e níveis de fundação. | 5d | 2026-07-08 A | 2026-07-14 A | 748 | 100% |  | 2026-06-11 | 2026-06-17 | 5d |  |  |
| 752 | 3.6.2.1.2.3 | Indicação aproximada do sistema de cobertura (tesouras, treliças, vigamento metálico ou concreto). | 5d | 2026-07-08 A | 2026-07-14 A | 748 | 100% |  | 2026-06-11 | 2026-06-17 | 5d |  |  |
| 753 | 3.6.2.1.2.4 | Modelagem genérica de pilares, vigas, lajes e fundações. | 5d | 2026-07-15 A | 2026-07-21 | 750 | 35% | 3.24d | 2026-06-18 | 2026-06-24 | 5d | 24d |  |
| 754 | 3.6.2.1.2.5 | Traçado preliminar de elementos especiais (escadas, rampas estruturais, reservatórios). | 5d | 2026-07-15 A | 2026-07-21 | 750 | 35% | 3.24d | 2026-06-18 | 2026-06-24 | 5d | 19d | 0d |
| 755 | 3.6.2.1.2.6 | Arquivo IFC, plantas de forma e planta de locação | 5d | 2026-07-15 A | 2026-07-21 | 750 | 35% | 3.24d | 2026-06-18 | 2026-06-24 | 5d | 1d | 0d |
| 756 | 3.6.2.1.2.7 | Inserção de fundações com tipologia e dimensões preliminares. | 5d | 2026-07-22 | 2026-07-28 | 754 |  |  | 2026-06-25 | 2026-07-01 | 5d | 19d |  |
| 757 | 3.6.2.1.2.8 | Compatibilização inicial com arquitetura e demais disciplinas. | 5d | 2026-07-22 | 2026-07-28 | 755 |  |  | 2026-06-25 | 2026-07-01 | 5d | 19d |  |
| 758 | 3.6.2.1.2.9 | Indicação de passagens de infraestrutura (shafts, aberturas em lajes e vigas). | 5d | 2026-07-22 | 2026-07-28 | 755 |  |  | 2026-06-25 | 2026-07-01 | 5d | 19d |  |
| 759 | 3.6.2.1.2.10 | Modelagem assertiva de elementos principais com dimensões aproximadas (largura, altura, espessura). | 20d | 2026-07-22 | 2026-08-18 | 755 |  |  | 2026-06-25 | 2026-07-08 | 10d | 1d | 0d |
| 760 | 3.6.2.1.2.11 | Modelagem estimada de armaduras principais (em nível de concepção). | 5d | 2026-07-22 | 2026-07-28 | 755 |  |  | 2026-06-25 | 2026-07-01 | 5d | 16d | 15d |

| ID | WBS | Task | Duration | Start | Finish | Predecessors | Complete | Remaining | Baseline start | Baseline finish | Baseline duration | Total slack |
| --- | --- | --- | --- | --- | --- | --- | --- | --- | --- | --- | --- | --- |
| 761 | 3.6.2.1.3 | **LOD 300 - Consolidação e documentação de entrega** | 3d | 2026-08-19 | 2026-08-21 |  |  |  | 2026-07-09 | 2026-07-20 | 8d | 1d |
| 762 | 3.6.2.1.3.1 | Indicação de níveis e cotas exatas. | 3d | 2026-08-19 | 2026-08-21 | 759, 760 |  |  | 2026-07-09 | 2026-07-20 | 8d | 1d |
| 763 | 3.6.2.1.3.2 | Quadro de cargas atualizado. | 3d | 2026-08-19 | 2026-08-21 | 759, 760 |  |  | 2026-07-09 | 2026-07-20 | 8d | 1d |
| 764 | 3.6.2.1.3.3 | Dimensionamento final de fundações conforme sondagem e cálculo estrutural. | 3d | 2026-08-19 | 2026-08-21 | 759, 760 |  |  | 2026-07-09 | 2026-07-20 | 8d | 1d |
| 765 | 3.6.2.1.3.4 | Definição final dos elementos da cobertura (treliças, vigas, chapas, purlins). | 3d | 2026-08-19 | 2026-08-21 | 759, 760 |  |  | 2026-07-09 | 2026-07-20 | 8d | 1d |
| 766 | 3.6.2.1.3.5 | Compatibilização final com arquitetura e instalações (aberturas, embutidos e passagens). | 3d | 2026-08-19 | 2026-08-21 | 759, 760 |  |  | 2026-07-09 | 2026-07-20 | 8d | 1d |
| 767 | 3.6.2.1.3.6 | Modelagem definitiva de pilares, vigas, lajes, blocos, sapatas e estacas. | 3d | 2026-08-19 | 2026-08-21 | 759, 760 |  |  | 2026-07-09 | 2026-07-20 | 8d | 1d |
| 768 | 3.6.2.1.3.7 | Planta estrutural com todos os elementos identificados. | 3d | 2026-08-19 | 2026-08-21 | 759, 760 |  |  | 2026-07-09 | 2026-07-20 | 8d | 1d |
| 769 | 3.6.2.1.3.8 | Memorial descritivo contendo: objetivos, justificativa, descrição do sistema, concepção de fundações/cobertura, especificações e quadro de cargas. | 3d | 2026-08-19 | 2026-08-21 | 759, 760 |  |  | 2026-07-09 | 2026-07-20 | 8d | 1d |
| 770 | 3.6.2.1.3.9 | Normas técnicas utilizadas (NBR 6118, 6120, 6122, 8800, etc.). | 3d | 2026-08-19 | 2026-08-21 | 759, 760 |  |  | 2026-07-09 | 2026-07-20 | 8d | 1d |
| 771 | 3.6.2.1.3.10 | Consolidar documentação de entrega e emissão formal da disciplina | 3d | 2026-08-19 | 2026-08-21 | 759, 760 |  |  | 2026-07-09 | 2026-07-20 | 8d | 1d |
| 772 | 3.6.2.2 | **Hidrossanitário** | 36d | 2026-06-29 A | 2026-08-17 |  | 99% | 0.42d | 2026-06-01 | 2026-07-24 | 39d | 5d |
| 773 | 3.6.2.2.1 | **LOD 100 — Premissas, diretrizes e interfaces** | 11d | 2026-06-29 A | 2026-07-13 A |  | 100% |  | 2026-06-01 | 2026-06-16 | 11d |  |
| 774 | 3.6.2.2.1.1 | Memorial preliminar | 10d | 2026-06-29 A | 2026-07-10 A | 649SS+28d | 100% |  | 2026-06-01 | 2026-06-15 | 10d |  |
| 775 | 3.6.2.2.1.2 | Indicação de áreas técnicas | 6d | 2026-06-29 A | 2026-07-06 A | 649SS+28d | 100% |  | 2026-06-09 | 2026-06-16 | 6d |  |
| 776 | 3.6.2.2.1.3 | Planta baixa com traçado conceitual | 6d | 2026-07-06 A | 2026-07-13 A | 743 | 100% |  | 2026-06-09 | 2026-06-16 | 6d |  |
| 777 | 3.6.2.2.1.4 | Pontos de consumo principais e coletas sanitárias | 6d | 2026-07-06 A | 2026-07-13 A | 743 | 100% |  | 2026-06-09 | 2026-06-16 | 6d |  |
| 778 | 3.6.2.2.1.5 | Classificação de uso | 10d | 2026-06-30 A | 2026-07-13 A | 777FF | 100% |  | 2026-06-02 | 2026-06-16 | 10d |  |
| 779 | 3.6.2.2.1.6 | Diretrizes de espaço | 10d | 2026-06-30 A | 2026-07-13 A | 777FF | 100% |  | 2026-06-02 | 2026-06-16 | 10d |  |
| 780 | 3.6.2.2.1.7 | Estimativa de demanda ou população de uso | 10d | 2026-06-30 A | 2026-07-13 A | 777FF | 100% |  | 2026-06-02 | 2026-06-16 | 10d |  |
| 781 | 3.6.2.2.1.8 | Levantamento de elementos especiais dentre outras disciplinas de Engenharia e Arquitetura | 10d | 2026-06-30 A | 2026-07-13 A | 777FF | 100% |  | 2026-06-02 | 2026-06-16 | 10d |  |
| 782 | 3.6.2.2.2 | **LOD 200 — Validação interdisciplinar e solução preliminar** | 12d | 2026-07-14 A | 2026-07-29 A |  | 100% |  | 2026-06-17 | 2026-07-14 | 20d |  |
| 783 | 3.6.2.2.2.1 | Critérios normativos adotados (ABNT, concessionárias, etc.) | 12d | 2026-07-14 A | 2026-07-29 A | 781 | 100% |  | 2026-06-17 | 2026-07-14 | 20d |  |
| 784 | 3.6.2.2.2.2 | Informações de demanda na concessionária (DPE ou AVT Aviso de Viabilidade Técnica) | 12d | 2026-07-14 A | 2026-07-29 A | 783SS, 23, 27 | 100% |  | 2026-06-17 | 2026-07-14 | 20d |  |
| 785 | 3.6.2.2.2.3 | Recebimento e Análise de Sondagem (permeabilidade ou percolação) | 12d | 2026-07-14 A | 2026-07-29 A | 783SS, 23, 27 | 100% |  | 2026-06-17 | 2026-07-14 | 20d |  |
| 786 | 3.6.2.2.2.4 | Recebimento e Análise de Topografia | 12d | 2026-07-14 A | 2026-07-29 A | 783SS, 23, 27 | 100% |  | 2026-06-17 | 2026-07-14 | 20d |  |
| 787 | 3.6.2.2.2.5 | Estudo de viabilidade técnica, econômica e ambiental | 12d | 2026-07-14 A | 2026-07-29 A | 783SS | 100% |  | 2026-06-17 | 2026-07-14 | 20d |  |
| 788 | 3.6.2.2.2.6 | Lista preliminar de sistemas envolvidos. | 12d | 2026-07-14 A | 2026-07-29 A | 781 | 100% |  | 2026-06-17 | 2026-07-14 | 20d |  |
| 789 | 3.6.2.2.2.7 | Planta baixa e cortes estimada contendo: - Traçado preliminar de barrilete, ramais, colunas - Diâmetros estimados - Localização aproximada das bombas e unidades de tratamento e reúso - Localização do ramal predial de água e esgoto - Localização aproximada | 12d | 2026-07-14 A | 2026-07-29 A | 781 | 100% |  | 2026-06-17 | 2026-07-14 | 20d |  |

| ID | WBS | Task | Duration | Start | Finish | Predecessors | Complete | Remaining | Baseline start | Baseline finish | Baseline duration | Total slack | Free slack | Constraint | Text3 |
| --- | --- | --- | --- | --- | --- | --- | --- | --- | --- | --- | --- | --- | --- | --- | --- |
| 790 | 3.6.2.2.3 | **LOD 300 - Consolidação e documentação de entrega** | 14d | 2026-07-29 A | 2026-08-17 |  | 90% | 1.4d | 2026-07-15 | 2026-07-24 | 8d | 5d |  |  |  |
| 791 | 3.6.2.2.3.1 | Planta, corte e detalhe isométrico contendo: - Modelagem detalhada com diâmetros, cotas e inclinações definitivas (barriletes, colunas, ramais) - Quantitativos e especificação técnica dos materiais (tubos, conexões, reservatórios, registros e válvulas com | 14d | 2026-07-29 A | 2026-08-17 | 789FS-1d | 95% | 0.67d | 2026-07-15 | 2026-07-24 | 8d | 5d | 0d |  |  |
| 792 | 3.6.2.2.3.2 | Memorial descritivo | 3d | 2026-08-13 A | 2026-08-17 | 791FF | 78% | 0.67d | 2026-07-22 | 2026-07-24 | 3d | 5d |  |  |  |
| 793 | 3.6.2.2.3.3 | Memória de cálculo (pressão, vazão, diâmetros, perda de carga). | 3d | 2026-08-13 A | 2026-08-17 | 791FF | 78% | 0.67d | 2026-07-22 | 2026-07-24 | 3d | 5d |  |  |  |
| 794 | 3.6.2.3 | **AVAC** | 35d | 2026-06-29 A | 2026-08-14 |  | 97% | 1.06d | 2026-06-01 | 2026-07-24 | 39d | 6d |  |  |  |
| 795 | 3.6.2.3.1 | **LOD 100 — Premissas, diretrizes e interfaces** | 20d | 2026-06-29 A | 2026-07-24 A |  | 100% |  | 2026-06-01 | 2026-06-29 | 20d |  |  |  |  |
| 796 | 3.6.2.3.1.1 | Estimativa de carga térmica por ambiente. | 10d | 2026-06-29 A | 2026-07-10 A | 649SS+28d | 100% |  | 2026-06-01 | 2026-06-15 | 10d |  |  |  |  |
| 797 | 3.6.2.3.1.2 | Localização preliminar de unidades de tratamento de ar, condensadoras e exaustores. | 10d | 2026-06-29 A | 2026-07-10 A | 649SS+28d | 100% |  | 2026-06-01 | 2026-06-15 | 10d |  |  |  |  |
| 798 | 3.6.2.3.1.3 | Pontos locação para seus elementos no projeto arquitetônico. | 10d | 2026-06-29 A | 2026-07-10 A | 649SS+28d | 100% |  | 2026-06-01 | 2026-06-15 | 10d |  |  |  |  |
| 799 | 3.6.2.3.1.4 | Estudo de viabilidade e rotas principais de distribuição de ar. | 10d | 2026-06-29 A | 2026-07-10 A | 649SS+28d | 100% |  | 2026-06-01 | 2026-06-15 | 10d |  |  |  |  |
| 800 | 3.6.2.3.1.5 | Reserva de espaços técnicos e shafts. | 10d | 2026-06-29 A | 2026-07-10 A | 649SS+28d | 100% |  | 2026-06-01 | 2026-06-15 | 10d |  |  |  |  |
| 801 | 3.6.2.3.1.6 | Levantamento de cargas especiais provenientes de outras disciplinas. | 10d | 2026-07-13 A | 2026-07-24 A | 820, 830, 649SS+28d | 100% |  | 2026-06-16 | 2026-06-29 | 10d |  |  |  |  |
| 802 | 3.6.2.3.2 | **LOD 200 — Validação interdisciplinar e solução preliminar** | 25d | 2026-07-13 A | 2026-08-14 A |  | 100% |  | 2026-06-16 | 2026-07-24 | 29d |  |  |  |  |
| 803 | 3.6.2.3.2.1 | Lista preliminar de sistemas HVAC envolvidos (expansão direta, VRF, chillers, ventilação, exaustão). | 25d | 2026-07-13 A | 2026-08-14 A | 800 | 100% |  | 2026-06-16 | 2026-07-24 | 29d |  |  |  |  |
| 804 | 3.6.2.3.2.2 | Planta baixa estimada contendo: pontos de insuflamento e retorno. | 25d | 2026-07-13 A | 2026-08-14 A | 800 | 100% |  | 2026-06-16 | 2026-07-24 | 29d |  |  |  |  |
| 805 | 3.6.2.3.2.3 | Rotas iniciais de dutos, tubulações e drenos. | 25d | 2026-07-13 A | 2026-08-14 A | 800 | 100% |  | 2026-06-16 | 2026-07-24 | 29d |  |  |  |  |
| 806 | 3.6.2.3.2.4 | Planta baixa estimada contendo: unidades internas e externas com posição preliminar. | 25d | 2026-07-13 A | 2026-08-14 A | 800 | 100% |  | 2026-06-16 | 2026-07-24 | 29d |  |  |  |  |
| 807 | 3.6.2.3.3 | Desenhos conforme IBRAOP | 5d | 2026-08-10 | 2026-08-14 |  |  |  | 2026-07-27 | 2026-07-27 | 0d | 6d |  | start no earlier than 2026-08-10 |  |
| 808 | 3.6.2.4 | **PCI (Incêndio)** | 20d | 2026-07-20 A | 2026-08-14 A |  | 100% |  | 2026-06-01 | 2026-06-29 | 20d |  |  |  |  |
| 809 | 3.6.2.4.1 | **LOD 100 — Premissas, diretrizes e interfaces** | 10d | 2026-07-20 A | 2026-07-31 A |  | 100% |  | 2026-06-01 | 2026-06-15 | 10d |  |  |  | ܁# |
| 810 | 3.6.2.4.1.1 | Estudo e avaliação da arquitetura atendendo as normas competentes de PCI | 10d | 2026-07-20 A | 2026-07-31 A | 649SS+43d | 100% |  | 2026-06-01 | 2026-06-15 | 10d |  |  |  |  |
| 811 | 3.6.2.4.1.2 | Avaliação do espaço para CMI e Central de Gás. | 10d | 2026-07-20 A | 2026-07-31 A | 649SS+43d | 100% |  | 2026-06-01 | 2026-06-15 | 10d |  |  |  |  |
| 812 | 3.6.2.4.1.3 | Pontos locação para seus elementos no projeto arquitetônico | 10d | 2026-07-20 A | 2026-07-31 A | 649SS+43d | 100% |  | 2026-06-01 | 2026-06-15 | 10d |  |  |  |  |
| 813 | 3.6.2.4.2 | **LOD 200 — Validação interdisciplinar e solução preliminar** | 10d | 2026-08-03 A | 2026-08-14 A |  | 100% |  | 2026-06-16 | 2026-06-29 | 10d |  |  |  | ܁# |
| 814 | 3.6.2.4.2.1 | Definição da classificação da edificação e o risco de incêndio | 10d | 2026-08-03 A | 2026-08-14 A | 812 | 100% |  | 2026-06-16 | 2026-06-29 | 10d |  |  |  |  |
| 815 | 3.6.2.4.2.2 | Cálculos pré-dimensionados dos extintores, hidrantes e bomba. | 10d | 2026-08-03 A | 2026-08-14 A | 812 | 100% |  | 2026-06-16 | 2026-06-29 | 10d |  |  |  |  |
| 816 | 3.6.2.4.2.3 | Avaliação das rotas de fuga, ventilação de CMI e outros elementos de importância para as normas de PCI | 10d | 2026-08-03 A | 2026-08-14 A | 812 | 100% |  | 2026-06-16 | 2026-06-29 | 10d |  |  |  |  |

| ID | WBS | Task | Duration | Start | Finish | Predecessors | Complete | Remaining | Baseline start | Baseline finish | Baseline duration | Total slack |
| --- | --- | --- | --- | --- | --- | --- | --- | --- | --- | --- | --- | --- |
| 817 | 3.6.2.5 | **Elétrica Baixa Tensão** | 35d | 2026-06-29 A | 2026-08-14 |  | 96% | 1.33d | 2026-06-01 | 2026-07-24 | 39d | 6d |
| 818 | 3.6.2.5.1 | **LOD 100 — Concepção** | 13d | 2026-06-29 A | 2026-07-15 A |  | 100% |  | 2026-06-01 | 2026-06-23 | 16d |  |
| 819 | 3.6.2.5.1.1 | Avaliação e Diretrizes Técnicas para Arquitetura | 6d | 2026-06-29 A | 2026-07-06 A | 649SS+28d | 100% |  | 2026-06-01 | 2026-06-09 | 6d |  |
| 820 | 3.6.2.5.1.2 | Estimativa de Cargas e Demanda | 10d | 2026-06-29 A | 2026-07-10 A | 649SS+28d | 100% |  | 2026-06-01 | 2026-06-15 | 10d |  |
| 821 | 3.6.2.5.1.3 | Levantamento de Equipamentos de Outras Disciplinas | 3d | 2026-07-13 A | 2026-07-15 A | 798 | 100% |  | 2026-06-16 | 2026-06-23 | 6d |  |
| 822 | 3.6.2.5.2 | **LOD 200 — Anteprojeto** | 19d | 2026-07-16 A | 2026-08-11 A |  | 100% |  | 2026-06-24 | 2026-07-20 | 19d |  |
| 823 | 3.6.2.5.2.1 | TUGs Estimados | 19d | 2026-07-16 A | 2026-08-11 A | 820, 821 | 100% |  | 2026-06-24 | 2026-07-20 | 19d |  |
| 824 | 3.6.2.5.2.2 | Pontos de Luz Estimados | 19d | 2026-07-16 A | 2026-08-11 A | 820, 821 | 100% |  | 2026-06-24 | 2026-07-20 | 19d |  |
| 825 | 3.6.2.5.2.3 | TUEs e Quadros Estimados | 19d | 2026-07-16 A | 2026-08-11 A | 820, 821 | 100% |  | 2026-06-24 | 2026-07-20 | 19d |  |
| 826 | 3.6.2.5.3 | LOD 300 - Consolidação e documentação de entrega | 3d | 2026-08-12 | 2026-08-14 | 822 |  |  | 2026-07-21 | 2026-07-24 | 4d | 6d |
| 827 | 3.6.2.6 | **Telecom** | 35d | 2026-06-29 A | 2026-08-14 |  | 94% | 2.15d | 2026-06-01 | 2026-07-17 | 34d | 6d |
| 828 | 3.6.2.6.1 | **LOD 100 — Concepção** | 10d | 2026-06-29 A | 2026-07-10 A |  | 100% |  | 2026-06-01 | 2026-06-15 | 10d |  |
| 829 | 3.6.2.6.1.1 | Avaliação e Diretrizes Técnicas para Arquitetura | 10d | 2026-06-29 A | 2026-07-10 A | 649SS+28d | 100% |  | 2026-06-01 | 2026-06-15 | 10d |  |
| 830 | 3.6.2.6.1.2 | Estimativa de Demanda de Telecomunicações | 10d | 2026-06-29 A | 2026-07-10 A | 649SS+28d | 100% |  | 2026-06-01 | 2026-06-15 | 10d |  |
| 831 | 3.6.2.6.1.3 | Levantamento de Equipamentos e Interfaces com Outras Disciplinas | 10d | 2026-06-29 A | 2026-07-10 A | 649SS+28d | 100% |  | 2026-06-01 | 2026-06-15 | 10d |  |
| 832 | 3.6.2.6.2 | **LOD 200 — Anteprojeto** | 21d | 2026-07-13 A | 2026-08-10 A |  | 100% |  | 2026-06-16 | 2026-07-13 | 20d |  |
| 833 | 3.6.2.6.2.1 | Pontos de Telecomunicações Estimados (Rede, Voz, CFTV e Demais Sistemas) | 10d | 2026-07-13 A | 2026-07-24 A | 831 | 100% |  | 2026-06-16 | 2026-06-29 | 10d |  |
| 834 | 3.6.2.6.2.2 | Racks Estimados | 10d | 2026-07-13 A | 2026-07-24 A | 831 | 100% |  | 2026-06-16 | 2026-06-29 | 10d |  |
| 835 | 3.6.2.6.2.3 | Infraestrutura de Telecomunicações Preliminar | 11d | 2026-07-27 A | 2026-08-10 A | 833, 834 | 100% |  | 2026-06-30 | 2026-07-13 | 10d |  |
| 836 | 3.6.2.6.3 | LOD 300 - Consolidação e documentação de entrega | 4d | 2026-08-11 | 2026-08-14 | 832 |  |  | 2026-07-14 | 2026-07-17 | 4d | 6d |
| 837 | 3.6.2.7 | **Subestação** | 35d | 2026-06-29 A | 2026-08-14 |  | 93% | 2.41d | 2026-06-01 | 2026-07-24 | 39d | 6d |
| 838 | 3.6.2.7.1 | **LOD 100 — Concepção** | 5d | 2026-06-29 A | 2026-07-03 A |  | 100% |  | 2026-06-01 | 2026-06-08 | 5d |  |
| 839 | 3.6.2.7.1.1 | Avaliação e Diretrizes Técnicas para Arquitetura | 5d | 2026-06-29 A | 2026-07-03 A | 649SS+28d | 100% |  | 2026-06-01 | 2026-06-08 | 5d |  |
| 840 | 3.6.2.7.1.2 | Levantamento de Demanda, Perfil de Consumo e Ponto de Entrega | 5d | 2026-06-29 A | 2026-07-03 A | 649SS+28d | 100% |  | 2026-06-01 | 2026-06-08 | 5d |  |
| 841 | 3.6.2.7.1.3 | Estudo de Viabilidade Técnica e Atendimento ao Padrão da Concessionária | 5d | 2026-06-29 A | 2026-07-03 A | 649SS+28d | 100% |  | 2026-06-01 | 2026-06-08 | 5d |  |

| ID | WBS | Task | Duration | Start | Finish | Predecessors | Complete | Remaining | Baseline start | Baseline finish | Baseline duration | Total slack |
| --- | --- | --- | --- | --- | --- | --- | --- | --- | --- | --- | --- | --- |
| 842 | 3.6.2.7.2 | **LOD 200 — Anteprojeto** | 26d | 2026-07-06 A | 2026-08-10 A |  | 100% |  | 2026-06-09 | 2026-07-20 | 30d |  |
| 843 | 3.6.2.7.2.1 | Definição do Tipo de Subestação e Arranjo Físico Preliminar | 13d | 2026-07-06 A | 2026-07-22 A | 841 | 100% |  | 2026-06-09 | 2026-06-29 | 15d |  |
| 844 | 3.6.2.7.2.2 | Dimensionamento Preliminar do Transformador e Equipamentos Principais | 13d | 2026-07-23 A | 2026-08-10 A | 843 | 100% |  | 2026-06-30 | 2026-07-20 | 15d |  |
| 845 | 3.6.2.7.2.3 | Diretrizes Preliminares de Aterramento | 13d | 2026-07-23 A | 2026-08-10 A | 843 | 100% |  | 2026-06-30 | 2026-07-20 | 15d |  |
| 846 | 3.6.2.7.3 | LOD 300 - Consolidação e documentação de entrega | 4d | 2026-08-11 | 2026-08-14 | 842 |  |  | 2026-07-21 | 2026-07-24 | 4d | 6d |
| 847 | 3.6.2.8 | **SPDA** | 35d | 2026-06-29 A | 2026-08-14 |  | 91% | 3.11d | 2026-06-01 | 2026-07-24 | 39d | 6d |
| 848 | 3.6.2.8.1 | **LOD 100 — Concepção** | 5d | 2026-06-29 A | 2026-07-03 A |  | 100% |  | 2026-06-01 | 2026-06-08 | 5d |  |
| 849 | 3.6.2.8.1.1 | Avaliação e Diretrizes Técnicas para Arquitetura | 5d | 2026-06-29 A | 2026-07-03 A | 649SS+28d | 100% |  | 2026-06-01 | 2026-06-08 | 5d |  |
| 850 | 3.6.2.8.1.2 | Coleta de Informações da Edificação e Análise de Risco (ABNT NBR 5419-2) | 5d | 2026-06-29 A | 2026-07-03 A | 649SS+28d | 100% |  | 2026-06-01 | 2026-06-08 | 5d |  |
| 851 | 3.6.2.8.1.3 | Estudo Preliminar de Necessidade e Nível de Proteção do SPDA | 5d | 2026-06-29 A | 2026-07-03 A | 649SS+28d | 100% |  | 2026-06-01 | 2026-06-08 | 5d |  |
| 852 | 3.6.2.8.2 | **LOD 200 — Anteprojeto** | 26d | 2026-07-06 A | 2026-08-10 A |  | 100% |  | 2026-06-09 | 2026-07-20 | 30d |  |
| 853 | 3.6.2.8.2.1 | Definição da Estratégia de Proteção e Soluções Técnicas | 12d | 2026-07-06 A | 2026-07-21 A | 851 | 100% |  | 2026-06-09 | 2026-06-22 | 10d |  |
| 854 | 3.6.2.8.2.2 | Zoneamento de Captação, Descida e Traçados Preliminares | 12d | 2026-07-22 A | 2026-08-06 A | 853 | 100% |  | 2026-06-23 | 2026-07-06 | 10d |  |
| 855 | 3.6.2.8.2.3 | Estudo de Interferências, Compatibilização e Métodos Construtivos | 2d | 2026-08-07 A | 2026-08-10 A | 854 | 100% |  | 2026-07-07 | 2026-07-20 | 10d |  |
| 856 | 3.6.2.8.3 | LOD 300 - Consolidação e documentação de entrega | 4d | 2026-08-11 | 2026-08-14 | 855 |  |  | 2026-07-21 | 2026-07-24 | 4d | 6d |
| 857 | 3.6.2.9 | **Energia Renovável** | 35d | 2026-06-29 A | 2026-08-14 A |  | 100% |  | 2026-06-01 | 2026-07-17 | 34d |  |
| 858 | 3.6.2.9.1 | **LOD 100 — Concepção** | 10d | 2026-06-29 A | 2026-07-10 A |  | 100% |  | 2026-06-01 | 2026-06-15 | 10d |  |
| 859 | 3.6.2.9.1.1 | Viabilidade e Premissas de Geração | 10d | 2026-06-29 A | 2026-07-10 A | 649SS+28d | 100% |  | 2026-06-01 | 2026-06-15 | 10d |  |
| 860 | 3.6.2.9.1.2 | Levantamento Preliminar de Áreas e Sombreamento | 10d | 2026-06-29 A | 2026-07-10 A | 649SS+28d | 100% |  | 2026-06-01 | 2026-06-15 | 10d |  |
| 861 | 3.6.2.9.1.3 | Avaliação e Diretrizes Técnicas para Arquitetônico | 10d | 2026-06-29 A | 2026-07-10 A | 649SS+28d | 100% |  | 2026-06-01 | 2026-06-15 | 10d |  |
| 862 | 3.6.2.9.2 | **LOD 200 — Anteprojeto** | 21d | 2026-07-13 A | 2026-08-10 A |  | 100% |  | 2026-06-16 | 2026-07-13 | 20d |  |
| 863 | 3.6.2.9.2.1 | Layout Preliminar de Módulos, Inversores e String Boxes | 21d | 2026-07-13 A | 2026-08-10 A | 860 | 100% |  | 2026-06-16 | 2026-07-13 | 20d |  |
| 864 | 3.6.2.9.2.2 | Infraestrutura e Rotas Técnicas Preliminares (DC/AC e Aterramento) | 21d | 2026-07-13 A | 2026-08-10 A | 860 | 100% |  | 2026-06-16 | 2026-07-13 | 20d |  |
| 865 | 3.6.2.9.2.3 | Critérios Preliminares de Proteção e Estimativa de Quantitativos | 21d | 2026-07-13 A | 2026-08-10 A | 860 | 100% |  | 2026-06-16 | 2026-07-13 | 20d |  |
| 866 | 3.6.2.9.3 | LOD 300 - Consolidação e documentação de entrega | 4d | 2026-08-11 A | 2026-08-14 A | 862 | 100% |  | 2026-07-14 | 2026-07-17 | 4d |  |

| ID | WBS | Task | Duration | Start | Finish | Predecessors | Complete | Remaining | Baseline start | Baseline finish | Baseline duration | Total slack |
| --- | --- | --- | --- | --- | --- | --- | --- | --- | --- | --- | --- | --- |
| 867 | 3.7 | **005 - Academia da Guarda Municipal (2 blocos)** | 64d | 2026-05-19 A | 2026-08-17 |  | 93% | 4.56d | 2026-05-19 | 2026-07-27 | 49d | 5d |
| 868 | 3.7.1 | **Arquitetura** | 28d | 2026-05-19 A | 2026-06-26 A |  | 100% |  | 2026-05-19 | 2026-07-27 | 49d |  |
| 869 | 3.7.1.1 | **LOD 200 - ESTUDO PRELIMINAR** | 20d | 2026-05-19 A | 2026-06-16 A |  | 100% |  | 2026-05-19 | 2026-07-03 | 33d |  |
| 870 | 3.7.1.1.1 | Modelagem das paredes | 20d | 2026-05-19 A | 2026-06-16 A | 63FS+13d | 100% |  | 2026-05-19 | 2026-07-03 | 33d |  |
| 871 | 3.7.1.1.2 | Modelagem dos pisos | 20d | 2026-05-19 A | 2026-06-16 A | 63FS+13d | 100% |  | 2026-05-19 | 2026-07-03 | 33d |  |
| 872 | 3.7.1.1.3 | Modelagem das lajes | 20d | 2026-05-19 A | 2026-06-16 A | 63FS+13d | 100% |  | 2026-05-19 | 2026-07-03 | 0d |  |
| 873 | 3.7.1.1.4 | Inserção de portas | 20d | 2026-05-19 A | 2026-06-16 A | 63FS+13d | 100% |  | 2026-05-19 | 2026-07-03 | 33d |  |
| 874 | 3.7.1.1.5 | Inserção de janelas | 20d | 2026-05-19 A | 2026-06-16 A | 63FS+13d | 100% |  | 2026-05-19 | 2026-07-03 | 33d |  |
| 875 | 3.7.1.1.6 | Inserção de escada(s) | 20d | 2026-05-19 A | 2026-06-16 A | 63FS+13d | 100% |  | 2026-05-19 | 2026-07-03 | 33d |  |
| 876 | 3.7.1.1.7 | Inserção de elevador(es) | 20d | 2026-05-19 A | 2026-06-16 A | 63FS+13d | 100% |  | 2026-05-19 | 2026-07-03 | 33d |  |
| 877 | 3.7.1.1.8 | Inserção de rampa(s) | 20d | 2026-05-19 A | 2026-06-16 A | 63FS+13d | 100% |  | 2026-05-19 | 2026-07-03 | 0d |  |
| 878 | 3.7.1.1.9 | Inserção de layout | 20d | 2026-05-19 A | 2026-06-16 A | 63FS+13d | 100% |  | 2026-05-19 | 2026-07-03 | 33d |  |
| 879 | 3.7.1.1.10 | Identificação dos ambientes | 20d | 2026-05-19 A | 2026-06-16 A | 63FS+13d | 100% |  | 2026-05-19 | 2026-07-03 | 33d |  |
| 880 | 3.7.1.1.11 | Espaços de circulação | 20d | 2026-05-19 A | 2026-06-16 A | 63FS+13d | 100% |  | 2026-05-19 | 2026-07-03 | 33d |  |
| 881 | 3.7.1.1.12 | Áreas de serviços, funcionais e técnicas | 20d | 2026-05-19 A | 2026-06-16 A | 63FS+13d | 100% |  | 2026-05-19 | 2026-07-03 | 33d |  |
| 882 | 3.7.1.1.13 | Projeção de níveis superiores e da cobertura | 20d | 2026-05-19 A | 2026-06-16 A | 63FS+13d | 100% |  | 2026-05-19 | 2026-07-03 | 33d |  |
| 883 | 3.7.1.1.14 | Cotas de nível principais | 20d | 2026-05-19 A | 2026-06-16 A | 63FS+13d | 100% |  | 2026-05-19 | 2026-07-03 | 33d |  |
| 884 | 3.7.1.1.15 | Relatório/Memorial de Projeto Preliminar | 5d | 2026-06-10 A | 2026-06-16 A | 883FF | 100% |  | 2026-06-22 | 2026-07-03 | 10d |  |
| 885 | 3.7.1.2 | **LOD 300 - ANTEPROJETO** | 8d | 2026-06-17 A | 2026-06-26 A |  | 100% |  | 2026-07-06 | 2026-07-27 | 16d |  |
| 886 | 3.7.1.2.1 | **Situação** | 1d | 2026-06-17 A | 2026-06-17 A |  | 100% |  | 2026-07-06 | 2026-07-07 | 2d |  |
| 887 | 3.7.1.2.1.1 | Indicar simbologias de representação gráfica, conforme NBR 6492:2021; | 1d | 2026-06-17 A | 2026-06-17 A | 883 | 100% |  | 2026-07-06 | 2026-07-07 | 2d |  |
| 888 | 3.7.1.2.1.2 | Indicação Norte | 1d | 2026-06-17 A | 2026-06-17 A | 883 | 100% |  | 2026-07-06 | 2026-07-07 | 2d |  |
| 889 | 3.7.1.2.1.3 | Analisar, adicionar e fechar - Curvas de nível existentes e projetadas (conforme projetos de topografia e sondagem recebidos); | 1d | 2026-06-17 A | 2026-06-17 A | 883 | 100% |  | 2026-07-06 | 2026-07-07 | 2d |  |
| 890 | 3.7.1.2.1.4 | Indicação de Escala; | 1d | 2026-06-17 A | 2026-06-17 A | 883 | 100% |  | 2026-07-06 | 2026-07-07 | 2d |  |
| 891 | 3.7.1.2.1.5 | Vias de acesso ao conjunto, arruamento, logradouros adjacentes e calçadas com os respectivos equipamentos urbanos; | 1d | 2026-06-17 A | 2026-06-17 A | 883 | 100% |  | 2026-07-06 | 2026-07-07 | 2d |  |
| 892 | 3.7.1.2.1.6 | Platôs e taludes principais; | 1d | 2026-06-17 A | 2026-06-17 A | 883 | 100% |  | 2026-07-06 | 2026-07-07 | 2d |  |
| 893 | 3.7.1.2.1.7 | Perímetro do terreno, recuos e afastamentos; | 1d | 2026-06-17 A | 2026-06-17 A | 883 | 100% |  | 2026-07-06 | 2026-07-07 | 2d |  |
| 894 | 3.7.1.2.1.8 | Indicação das áreas a serem edificadas com o contorno da cobertura das edificações, estacionamentos e áreas permeáveis/impermeáveis; | 1d | 2026-06-17 A | 2026-06-17 A | 883 | 100% |  | 2026-07-06 | 2026-07-07 | 2d |  |
| 895 | 3.7.1.2.1.9 | Denominação das edificações, blocos ou espaços; | 1d | 2026-06-17 A | 2026-06-17 A | 883 | 100% |  | 2026-07-06 | 2026-07-07 | 2d |  |
| 896 | 3.7.1.2.1.10 | Cotas gerais | 1d | 2026-06-17 A | 2026-06-17 A | 883 | 100% |  | 2026-07-06 | 2026-07-07 | 2d |  |
| 897 | 3.7.1.2.1.11 | Cotas de nível principal. | 1d | 2026-06-17 A | 2026-06-17 A | 883 | 100% |  | 2026-07-06 | 2026-07-07 | 2d |  |
| 898 | 3.7.1.2.1.12 | Quadros de áreas | 1d | 2026-06-17 A | 2026-06-17 A | 883 | 100% |  | 2026-07-06 | 2026-07-07 | 2d |  |
| 899 | 3.7.1.2.1.13 | Relatório | 1d | 2026-06-17 A | 2026-06-17 A | 883 | 100% |  | 2026-07-06 | 2026-07-07 | 2d |  |
| 900 | 3.7.1.2.2 | Planta com as cotas de nível projetadas e existentes | 1d | 2026-06-18 A | 2026-06-18 A | 899 | 100% |  | 2026-07-08 | 2026-07-09 | 2d |  |

| ID | WBS | Task | Duration | Start | Finish | Predecessors | Complete | Baseline start | Baseline finish | Baseline duration |
| --- | --- | --- | --- | --- | --- | --- | --- | --- | --- | --- |
| 901 | 3.7.1.2.3 | **Plantas baixas (se tiver mais de um pavimento, duplicar bloco)** | 1d | 2026-06-19 A | 2026-06-19 A |  | 100% | 2026-07-10 | 2026-07-13 | 2d |
| 902 | 3.7.1.2.3.1 | Indicar simbologias de representação gráfica, conforme NBR 6492:2021; | 1d | 2026-06-19 A | 2026-06-19 A | 900 | 100% | 2026-07-10 | 2026-07-13 | 2d |
| 903 | 3.7.1.2.3.2 | Compatibilização (verificar se está tudo conforme as normas e alinhar com o restante das disciplinas de engenharia) | 1d | 2026-06-19 A | 2026-06-19 A | 900 | 100% | 2026-07-10 | 2026-07-13 | 2d |
| 904 | 3.7.1.2.3.3 | Compatibilização (deixar tudo conforme padrão Quanta) | 1d | 2026-06-19 A | 2026-06-19 A | 900 | 100% | 2026-07-10 | 2026-07-13 | 2d |
| 905 | 3.7.1.2.3.4 | Indicação de Norte; | 1d | 2026-06-19 A | 2026-06-19 A | 900 | 100% | 2026-07-10 | 2026-07-13 | 2d |
| 906 | 3.7.1.2.3.5 | Indicação de Escala; | 1d | 2026-06-19 A | 2026-06-19 A | 900 | 100% | 2026-07-10 | 2026-07-13 | 2d |
| 907 | 3.7.1.2.3.6 | Indicação de Acessos; | 1d | 2026-06-19 A | 2026-06-19 A | 900 | 100% | 2026-07-10 | 2026-07-13 | 2d |
| 908 | 3.7.1.2.3.7 | Elementos de vedação internos e externos; | 1d | 2026-06-19 A | 2026-06-19 A | 900 | 100% | 2026-07-10 | 2026-07-13 | 2d |
| 909 | 3.7.1.2.3.8 | Esquadrias; | 1d | 2026-06-19 A | 2026-06-19 A | 900 | 100% | 2026-07-10 | 2026-07-13 | 2d |
| 910 | 3.7.1.2.3.9 | Elementos estruturais principais; | 1d | 2026-06-19 A | 2026-06-19 A | 900 | 100% | 2026-07-10 | 2026-07-13 | 2d |
| 911 | 3.7.1.2.3.10 | Identificação dos ambientes e espaços (internos e externos); | 1d | 2026-06-19 A | 2026-06-19 A | 900 | 100% | 2026-07-10 | 2026-07-13 | 2d |
| 912 | 3.7.1.2.3.11 | Espaços de circulação internos e externos; | 1d | 2026-06-19 A | 2026-06-19 A | 900 | 100% | 2026-07-10 | 2026-07-13 | 2d |
| 913 | 3.7.1.2.3.12 | Áreas de serviço, funcionais e técnicas (internos e externos); | 1d | 2026-06-19 A | 2026-06-19 A | 900 | 100% | 2026-07-10 | 2026-07-13 | 2d |
| 914 | 3.7.1.2.3.13 | Projeções de níveis superiores; | 1d | 2026-06-19 A | 2026-06-19 A | 900 | 100% | 2026-07-10 | 2026-07-13 | 2d |
| 915 | 3.7.1.2.3.14 | Cotas gerais | 1d | 2026-06-19 A | 2026-06-19 A | 900 | 100% | 2026-07-10 | 2026-07-13 | 2d |
| 916 | 3.7.1.2.3.15 | Cotas de nível principal. | 1d | 2026-06-19 A | 2026-06-19 A | 900 | 100% | 2026-07-10 | 2026-07-13 | 2d |
| 917 | 3.7.1.2.3.16 | Tabelas de paredes, pisos, esquadrias e plantas | 1d | 2026-06-19 A | 2026-06-19 A | 900 | 100% | 2026-07-10 | 2026-07-13 | 2d |
| 918 | 3.7.1.2.3.17 | Quadro de áreas | 1d | 2026-06-19 A | 2026-06-19 A | 900 | 100% | 2026-07-10 | 2026-07-13 | 2d |
| 919 | 3.7.1.2.3.18 | Relatório | 1d | 2026-06-19 A | 2026-06-19 A | 900 | 100% | 2026-07-10 | 2026-07-13 | 2d |
| 920 | 3.7.1.2.4 | **Planta das coberturas** | 1d | 2026-06-22 A | 2026-06-22 A |  | 100% | 2026-07-14 | 2026-07-15 | 2d |
| 921 | 3.7.1.2.4.1 | Indicação do Norte | 1d | 2026-06-22 A | 2026-06-22 A | 918 | 100% | 2026-07-14 | 2026-07-15 | 2d |
| 922 | 3.7.1.2.4.2 | Indicação de escala | 1d | 2026-06-22 A | 2026-06-22 A | 918 | 100% | 2026-07-14 | 2026-07-15 | 2d |
| 923 | 3.7.1.2.4.3 | Curvas de nível | 1d | 2026-06-22 A | 2026-06-22 A | 918 | 100% | 2026-07-14 | 2026-07-15 | 2d |
| 924 | 3.7.1.2.4.4 | Indicação de Acessos; | 1d | 2026-06-22 A | 2026-06-22 A | 918 | 100% | 2026-07-14 | 2026-07-15 | 2d |
| 925 | 3.7.1.2.4.5 | Estacionamento e áreas cobertas | 1d | 2026-06-22 A | 2026-06-22 A | 918 | 100% | 2026-07-14 | 2026-07-15 | 2d |
| 926 | 3.7.1.2.4.6 | Cobertura das edificações | 1d | 2026-06-22 A | 2026-06-22 A | 918 | 100% | 2026-07-14 | 2026-07-15 | 2d |
| 927 | 3.7.1.2.4.7 | Sentido de escoamento das águas pluviais e inclinação | 1d | 2026-06-22 A | 2026-06-22 A | 918 | 100% | 2026-07-14 | 2026-07-15 | 2d |
| 928 | 3.7.1.2.4.8 | Cotas gerais | 1d | 2026-06-22 A | 2026-06-22 A | 918 | 100% | 2026-07-14 | 2026-07-15 | 2d |
| 929 | 3.7.1.2.4.9 | Cotas de nível principal | 1d | 2026-06-22 A | 2026-06-22 A | 918 | 100% | 2026-07-14 | 2026-07-15 | 2d |
| 930 | 3.7.1.2.4.10 | Relatório | 1d | 2026-06-22 A | 2026-06-22 A | 918 | 100% | 2026-07-14 | 2026-07-15 | 2d |

| ID | WBS | Task | Duration | Start | Finish | Predecessors | Complete | Baseline start | Baseline finish | Baseline duration |
| --- | --- | --- | --- | --- | --- | --- | --- | --- | --- | --- |
| 931 | 3.7.1.2.5 | **Cortes longitudinais** | 1d | 2026-06-23 A | 2026-06-23 A |  | 100% | 2026-07-16 | 2026-07-17 | 2d |
| 932 | 3.7.1.2.5.1 | Indicar simbologias de representação gráfica, conforme NBR 6492:2021; | 1d | 2026-06-23 A | 2026-06-23 A | 929 | 100% | 2026-07-16 | 2026-07-17 | 2d |
| 933 | 3.7.1.2.5.2 | Indicação de Escala; | 1d | 2026-06-23 A | 2026-06-23 A | 929 | 100% | 2026-07-16 | 2026-07-17 | 2d |
| 934 | 3.7.1.2.5.3 | Elementos estruturais principais; | 1d | 2026-06-23 A | 2026-06-23 A | 929 | 100% | 2026-07-16 | 2026-07-17 | 2d |
| 935 | 3.7.1.2.5.4 | Elementos de vedação internos e externos; | 1d | 2026-06-23 A | 2026-06-23 A | 929 | 100% | 2026-07-16 | 2026-07-17 | 2d |
| 936 | 3.7.1.2.5.5 | Esquadrias; | 1d | 2026-06-23 A | 2026-06-23 A | 929 | 100% | 2026-07-16 | 2026-07-17 | 2d |
| 937 | 3.7.1.2.5.6 | Identificação dos ambientes; | 1d | 2026-06-23 A | 2026-06-23 A | 929 | 100% | 2026-07-16 | 2026-07-17 | 2d |
| 938 | 3.7.1.2.5.7 | Cobertura com indicação da respectiva inclinação; | 1d | 2026-06-23 A | 2026-06-23 A | 929 | 100% | 2026-07-16 | 2026-07-17 | 2d |
| 939 | 3.7.1.2.5.8 | Cotas gerais; | 1d | 2026-06-23 A | 2026-06-23 A | 929 | 100% | 2026-07-16 | 2026-07-17 | 2d |
| 940 | 3.7.1.2.5.9 | Cotas de nível principal; | 1d | 2026-06-23 A | 2026-06-23 A | 929 | 100% | 2026-07-16 | 2026-07-17 | 2d |
| 941 | 3.7.1.2.5.10 | Eixos do projeto; | 1d | 2026-06-23 A | 2026-06-23 A | 929 | 100% | 2026-07-16 | 2026-07-17 | 2d |
| 942 | 3.7.1.2.5.11 | Relevo construído; | 1d | 2026-06-23 A | 2026-06-23 A | 929 | 100% | 2026-07-16 | 2026-07-17 | 2d |
| 943 | 3.7.1.2.5.12 | Projeção da topografia natural. | 1d | 2026-06-23 A | 2026-06-23 A | 929 | 100% | 2026-07-16 | 2026-07-17 | 2d |
| 944 | 3.7.1.2.5.13 | Relatório | 1d | 2026-06-23 A | 2026-06-23 A | 929 | 100% | 2026-07-16 | 2026-07-17 | 2d |
| 945 | 3.7.1.2.6 | **Cortes transversais** | 1d | 2026-06-24 A | 2026-06-24 A |  | 100% | 2026-07-20 | 2026-07-21 | 2d |
| 946 | 3.7.1.2.6.1 | Indicar simbologias de representação gráfica, conforme NBR 6492:2021; | 1d | 2026-06-24 A | 2026-06-24 A | 943 | 100% | 2026-07-20 | 2026-07-21 | 2d |
| 947 | 3.7.1.2.6.2 | Indicação de Escala; | 1d | 2026-06-24 A | 2026-06-24 A | 943 | 100% | 2026-07-20 | 2026-07-21 | 2d |
| 948 | 3.7.1.2.6.3 | Elementos estruturais principais; | 1d | 2026-06-24 A | 2026-06-24 A | 943 | 100% | 2026-07-20 | 2026-07-21 | 2d |
| 949 | 3.7.1.2.6.4 | Elementos de vedação internos e externos; | 1d | 2026-06-24 A | 2026-06-24 A | 943 | 100% | 2026-07-20 | 2026-07-21 | 2d |
| 950 | 3.7.1.2.6.5 | Esquadrias; | 1d | 2026-06-24 A | 2026-06-24 A | 943 | 100% | 2026-07-20 | 2026-07-21 | 2d |
| 951 | 3.7.1.2.6.6 | Identificação dos ambientes; | 1d | 2026-06-24 A | 2026-06-24 A | 943 | 100% | 2026-07-20 | 2026-07-21 | 2d |
| 952 | 3.7.1.2.6.7 | Cobertura com indicação da respectiva inclinação; | 1d | 2026-06-24 A | 2026-06-24 A | 943 | 100% | 2026-07-20 | 2026-07-21 | 2d |
| 953 | 3.7.1.2.6.8 | Cotas gerais; | 1d | 2026-06-24 A | 2026-06-24 A | 943 | 100% | 2026-07-20 | 2026-07-21 | 2d |
| 954 | 3.7.1.2.6.9 | Cotas de nível principal; | 1d | 2026-06-24 A | 2026-06-24 A | 943 | 100% | 2026-07-20 | 2026-07-21 | 2d |
| 955 | 3.7.1.2.6.10 | Eixos do projeto; | 1d | 2026-06-24 A | 2026-06-24 A | 943 | 100% | 2026-07-20 | 2026-07-21 | 2d |
| 956 | 3.7.1.2.6.11 | Relevo construído; | 1d | 2026-06-24 A | 2026-06-24 A | 943 | 100% | 2026-07-20 | 2026-07-21 | 2d |
| 957 | 3.7.1.2.6.12 | Projeção da topografia natural | 1d | 2026-06-24 A | 2026-06-24 A | 943 | 100% | 2026-07-20 | 2026-07-21 | 2d |
| 958 | 3.7.1.2.6.13 | Relatório | 1d | 2026-06-24 A | 2026-06-24 A | 943 | 100% | 2026-07-20 | 2026-07-21 | 2d |

| ID | WBS | Task | Duration | Start | Finish | Predecessors | Complete | Remaining | Baseline start | Baseline finish | Baseline duration | Total slack |
| --- | --- | --- | --- | --- | --- | --- | --- | --- | --- | --- | --- | --- |
| 959 | 3.7.1.2.7 | **Elevações** | 1d | 2026-06-25 A | 2026-06-25 A |  | 100% |  | 2026-07-22 | 2026-07-23 | 2d |  |
| 960 | 3.7.1.2.7.1 | Indicar simbologias de representação gráfica, conforme NBR 6492:2021; | 1d | 2026-06-25 A | 2026-06-25 A | 957 | 100% |  | 2026-07-22 | 2026-07-23 | 2d |  |
| 961 | 3.7.1.2.7.2 | Indicação de Escala; | 1d | 2026-06-25 A | 2026-06-25 A | 957 | 100% |  | 2026-07-22 | 2026-07-23 | 2d |  |
| 962 | 3.7.1.2.7.3 | Elementos estruturais principais; | 1d | 2026-06-25 A | 2026-06-25 A | 957 | 100% |  | 2026-07-22 | 2026-07-23 | 2d |  |
| 963 | 3.7.1.2.7.4 | Elementos de vedação internos e externos; | 1d | 2026-06-25 A | 2026-06-25 A | 957 | 100% |  | 2026-07-22 | 2026-07-23 | 2d |  |
| 964 | 3.7.1.2.7.5 | Esquadrias; | 1d | 2026-06-25 A | 2026-06-25 A | 957 | 100% |  | 2026-07-22 | 2026-07-23 | 2d |  |
| 965 | 3.7.1.2.7.6 | Relevo construído; | 1d | 2026-06-25 A | 2026-06-25 A | 957 | 100% |  | 2026-07-22 | 2026-07-23 | 2d |  |
| 966 | 3.7.1.2.7.7 | Cotas gerais; | 1d | 2026-06-25 A | 2026-06-25 A | 957 | 100% |  | 2026-07-22 | 2026-07-23 | 2d |  |
| 967 | 3.7.1.2.7.8 | Cotas de nível principais; | 1d | 2026-06-25 A | 2026-06-25 A | 957 | 100% |  | 2026-07-22 | 2026-07-23 | 2d |  |
| 968 | 3.7.1.2.7.9 | Cobertura (quando aparente). | 1d | 2026-06-25 A | 2026-06-25 A | 957 | 100% |  | 2026-07-22 | 2026-07-23 | 2d |  |
| 969 | 3.7.1.2.8 | **Memorial Descritivo** | 1d | 2026-06-26 A | 2026-06-26 A |  | 100% |  | 2026-07-24 | 2026-07-27 | 2d |  |
| 970 | 3.7.1.2.8.1 | Descrição dos elementos da edificação | 1d | 2026-06-26 A | 2026-06-26 A | 968 | 100% |  | 2026-07-24 | 2026-07-27 | 2d |  |
| 971 | 3.7.1.2.8.2 | Descrição dos componentes construtivos e materiais de construção | 1d | 2026-06-26 A | 2026-06-26 A | 968 | 100% |  | 2026-07-24 | 2026-07-27 | 2d |  |
| 972 | 3.7.1.2.8.3 | Lista de pranchas anexas e documentos | 1d | 2026-06-26 A | 2026-06-26 A | 968 | 100% |  | 2026-07-24 | 2026-07-27 | 2d |  |
| 973 | 3.7.2 | **Engenharia** | 36d | 2026-06-29 A | 2026-08-17 |  | 90% | 3.64d | 2026-06-08 | 2026-07-24 | 35d | 5d |
| 974 | 3.7.2.1 | **Estrutura** | 35d | 2026-06-29 A | 2026-08-14 |  | 61% | 13.67d | 2026-06-08 | 2026-07-24 | 35d | 6d |
| 975 | 3.7.2.1.1 | **LOD 100 — Premissas, diretrizes e interfaces** | 7d | 2026-06-29 A | 2026-07-07 A |  | 100% |  | 2026-06-08 | 2026-06-16 | 7d |  |
| 976 | 3.7.2.1.1.1 | Levantamento de tipos de cargas globais estimadas (permanentes, acidentais, vento e especiais). | 2d | 2026-06-29 A | 2026-06-30 A | 883SS+28d | 100% |  | 2026-06-08 | 2026-06-09 | 2d |  |
| 977 | 3.7.2.1.1.2 | Estudo volumétrico com modulação inicial de pilares, vigas e lajes. Entendendo vãos e desafios | 5d | 2026-06-29 A | 2026-07-03 A | 883SS+28d | 100% |  | 2026-06-08 | 2026-06-09 | 2d |  |
| 978 | 3.7.2.1.1.3 | Localização aproximada de elementos estruturais principais. Avaliando vãos e estudando posições | 2d | 2026-06-29 A | 2026-06-30 A | 883SS+28d | 100% |  | 2026-06-08 | 2026-06-09 | 2d |  |
| 979 | 3.7.2.1.1.4 | Estudo de viabilidade técnica e construtiva. | 3d | 2026-07-01 A | 2026-07-03 A | 978 | 100% |  | 2026-06-10 | 2026-06-12 | 3d |  |
| 980 | 3.7.2.1.1.5 | Definição preliminar do sistema estrutural (concreto armado, metálica ou mista). | 3d | 2026-07-01 A | 2026-07-03 A | 978 | 100% |  | 2026-06-10 | 2026-06-12 | 3d |  |
| 981 | 3.7.2.1.1.6 | Estimativa preliminar de tipologias de fundações (sapatas, blocos, estacas). | 2d | 2026-07-06 A | 2026-07-07 A | 979 | 100% |  | 2026-06-15 | 2026-06-16 | 2d |  |
| 982 | 3.7.2.1.1.7 | Previsão de áreas técnicas, casas de máquinas, reservatórios elevados e estrutura de cobertura. | 2d | 2026-07-06 A | 2026-07-07 A | 979 | 100% |  | 2026-06-15 | 2026-06-16 | 2d |  |

| ID | WBS | Task | Duration | Start | Finish | Predecessors | Complete | Remaining | Baseline start | Baseline finish | Baseline duration | Total slack |
| --- | --- | --- | --- | --- | --- | --- | --- | --- | --- | --- | --- | --- |
| 983 | 3.7.2.1.2 | **LOD 200 — Validação interdisciplinar e solução preliminar** | 19d | 2026-07-08 A | 2026-08-03 A |  | 100% |  | 2026-06-17 | 2026-07-14 | 20d |  |
| 984 | 3.7.2.1.2.1 | Lista preliminar de cargas e ações para dimensionamento. | 5d | 2026-07-08 A | 2026-07-14 A | 982 | 100% |  | 2026-06-17 | 2026-06-23 | 5d |  |
| 985 | 3.7.2.1.2.2 | Definição preliminar de alturas de pavimentos e níveis de fundação. | 5d | 2026-07-08 A | 2026-07-14 A | 982 | 100% |  | 2026-06-17 | 2026-06-23 | 5d |  |
| 986 | 3.7.2.1.2.3 | Indicação aproximada do sistema de cobertura (tesouras, treliças, vigamento metálico ou concreto). | 5d | 2026-07-08 A | 2026-07-14 A | 982 | 100% |  | 2026-06-17 | 2026-06-23 | 5d |  |
| 987 | 3.7.2.1.2.4 | Modelagem genérica de pilares, vigas, lajes e fundações. | 5d | 2026-07-15 A | 2026-07-21 A | 984 | 100% |  | 2026-06-24 | 2026-06-30 | 5d |  |
| 988 | 3.7.2.1.2.5 | Traçado preliminar de elementos especiais (escadas, rampas estruturais, reservatórios). | 5d | 2026-07-15 A | 2026-07-21 A | 984 | 100% |  | 2026-06-24 | 2026-06-30 | 5d |  |
| 989 | 3.7.2.1.2.6 | Arquivo IFC, plantas de forma e planta de locação | 5d | 2026-07-15 A | 2026-07-21 A | 984 | 100% |  | 2026-06-24 | 2026-06-30 | 5d |  |
| 990 | 3.7.2.1.2.7 | Inserção de fundações com tipologia e dimensões preliminares. | 5d | 2026-07-22 A | 2026-07-28 A | 988 | 100% |  | 2026-07-01 | 2026-07-07 | 5d |  |
| 991 | 3.7.2.1.2.8 | Compatibilização inicial com arquitetura e demais disciplinas. | 5d | 2026-07-22 A | 2026-07-28 A | 989 | 100% |  | 2026-07-01 | 2026-07-07 | 5d |  |
| 992 | 3.7.2.1.2.9 | Indicação de passagens de infraestrutura (shafts, aberturas em lajes e vigas). | 5d | 2026-07-22 A | 2026-07-28 A | 989 | 100% |  | 2026-07-01 | 2026-07-07 | 5d |  |
| 993 | 3.7.2.1.2.10 | Modelagem assertiva de elementos principais com dimensões aproximadas (largura, altura, espessura). | 9d | 2026-07-22 A | 2026-08-03 A | 989 | 100% |  | 2026-07-01 | 2026-07-14 | 10d |  |
| 994 | 3.7.2.1.2.11 | Modelagem estimada de armaduras principais (em nível de concepção). | 5d | 2026-07-22 A | 2026-07-28 A | 989 | 100% |  | 2026-07-01 | 2026-07-07 | 5d |  |
| 995 | 3.7.2.1.3 | **LOD 300 - Consolidação e documentação de entrega** | 9d | 2026-08-04 | 2026-08-14 |  |  |  | 2026-07-15 | 2026-07-24 | 8d | 6d |
| 996 | 3.7.2.1.3.1 | Indicação de níveis e cotas exatas. | 4d | 2026-08-04 | 2026-08-07 | 993, 994 |  |  | 2026-07-15 | 2026-07-24 | 8d | 11d |
| 997 | 3.7.2.1.3.2 | Quadro de cargas atualizado. | 4d | 2026-08-04 | 2026-08-07 | 993, 994 |  |  | 2026-07-15 | 2026-07-24 | 8d | 11d |
| 998 | 3.7.2.1.3.3 | Dimensionamento final de fundações conforme sondagem e cálculo estrutural. | 4d | 2026-08-04 | 2026-08-07 | 993, 994 |  |  | 2026-07-15 | 2026-07-24 | 8d | 11d |
| 999 | 3.7.2.1.3.4 | Definição final dos elementos da cobertura (treliças, vigas, chapas, purlins). | 4d | 2026-08-04 | 2026-08-07 | 993, 994 |  |  | 2026-07-15 | 2026-07-24 | 8d | 11d |
| 1000 | 3.7.2.1.3.5 | Compatibilização final com arquitetura e instalações (aberturas, embutidos e passagens). | 4d | 2026-08-04 | 2026-08-07 | 993, 994 |  |  | 2026-07-15 | 2026-07-24 | 8d | 11d |
| 1001 | 3.7.2.1.3.6 | Modelagem definitiva de pilares, vigas, lajes, blocos, sapatas e estacas. | 4d | 2026-08-04 | 2026-08-07 | 993, 994 |  |  | 2026-07-15 | 2026-07-24 | 8d | 11d |
| 1002 | 3.7.2.1.3.7 | Planta estrutural com todos os elementos identificados. | 4d | 2026-08-04 | 2026-08-07 | 993, 994 |  |  | 2026-07-15 | 2026-07-24 | 8d | 11d |
| 1003 | 3.7.2.1.3.8 | Memorial descritivo contendo: objetivos, justificativa, descrição do sistema, concepção de fundações/cobertura, especificações e quadro de cargas. | 9d | 2026-08-04 | 2026-08-14 | 993, 994 |  |  | 2026-07-15 | 2026-07-24 | 8d | 6d |
| 1004 | 3.7.2.1.3.9 | Normas técnicas utilizadas (NBR 6118, 6120, 6122, 8800, etc.). | 4d | 2026-08-04 | 2026-08-07 | 993, 994 |  |  | 2026-07-15 | 2026-07-24 | 8d | 11d |
| 1005 | 3.7.2.1.3.10 | Consolidar documentação de entrega e emissão formal da disciplina | 9d | 2026-08-04 | 2026-08-14 | 993, 994 |  |  | 2026-07-15 | 2026-07-24 | 8d | 6d |
| 1006 | 3.7.2.2 | **Hidrossanitário** | 36d | 2026-06-29 A | 2026-08-17 |  | 88% | 4.19d | 2026-06-08 | 2026-07-24 | 35d | 5d |
| 1007 | 3.7.2.2.1 | **LOD 100 — Premissas, diretrizes e interfaces** | 11d | 2026-06-29 A | 2026-07-13 A |  | 100% |  | 2026-06-08 | 2026-06-16 | 7d |  |
| 1008 | 3.7.2.2.1.1 | Memorial preliminar | 10d | 2026-06-29 A | 2026-07-10 A | 883SS+28d | 100% |  | 2026-06-08 | 2026-06-09 | 2d |  |
| 1009 | 3.7.2.2.1.2 | Indicação de áreas técnicas | 6d | 2026-06-29 A | 2026-07-06 A | 883SS+28d | 100% |  | 2026-06-10 | 2026-06-12 | 3d |  |
| 1010 | 3.7.2.2.1.3 | Planta baixa com traçado conceitual | 6d | 2026-07-06 A | 2026-07-13 A | 977 | 100% |  | 2026-06-10 | 2026-06-12 | 3d |  |
| 1011 | 3.7.2.2.1.4 | Pontos de consumo principais e coletas sanitárias | 6d | 2026-07-06 A | 2026-07-13 A | 977 | 100% |  | 2026-06-10 | 2026-06-16 | 5d |  |
| 1012 | 3.7.2.2.1.5 | Classificação de uso | 10d | 2026-06-30 A | 2026-07-13 A | 1011FF | 100% |  | 2026-06-08 | 2026-06-16 | 7d |  |
| 1013 | 3.7.2.2.1.6 | Diretrizes de espaço | 10d | 2026-06-30 A | 2026-07-13 A | 1011FF | 100% |  | 2026-06-08 | 2026-06-16 | 7d |  |
| 1014 | 3.7.2.2.1.7 | Estimativa de demanda ou população de uso | 10d | 2026-06-30 A | 2026-07-13 A | 1011FF | 100% |  | 2026-06-08 | 2026-06-16 | 7d |  |
| 1015 | 3.7.2.2.1.8 | Levantamento de elementos especiais dentre outras disciplinas de Engenharia e Arquitetura | 10d | 2026-06-30 A | 2026-07-13 A | 1011FF | 100% |  | 2026-06-08 | 2026-06-16 | 7d |  |

| ID | WBS | Task | Duration | Start | Finish | Predecessors | Complete | Baseline start | Baseline finish | Baseline duration | Total slack | Free slack | Constraint |
| --- | --- | --- | --- | --- | --- | --- | --- | --- | --- | --- | --- | --- | --- |
| 1016 | 3.7.2.2.2 | **LOD 200 — Validação interdisciplinar e solução preliminar** | 12d | 2026-07-14 A | 2026-07-29 A |  | 100% | 2026-06-17 | 2026-07-14 | 20d |  |  |  |
| 1017 | 3.7.2.2.2.1 | Critérios normativos adotados (ABNT, concessionárias, etc.) | 12d | 2026-07-14 A | 2026-07-29 A | 1015 | 100% | 2026-06-17 | 2026-07-14 | 20d |  |  |  |
| 1018 | 3.7.2.2.2.2 | Informações de demanda na concessionária (DPE ou AVT Aviso de Viabilidade Técnica) | 12d | 2026-07-14 A | 2026-07-29 A | 1017SS, 23, 27 | 100% | 2026-06-17 | 2026-07-14 | 20d |  |  |  |
| 1019 | 3.7.2.2.2.3 | Recebimento e Análise de Sondagem (permeabilidade ou percolação) | 12d | 2026-07-14 A | 2026-07-29 A | 1017SS, 23, 27 | 100% | 2026-06-17 | 2026-07-14 | 20d |  |  |  |
| 1020 | 3.7.2.2.2.4 | Recebimento e Análise de Topografia | 12d | 2026-07-14 A | 2026-07-29 A | 1017SS, 23, 27 | 100% | 2026-06-17 | 2026-07-14 | 20d |  |  |  |
| 1021 | 3.7.2.2.2.5 | Estudo de viabilidade técnica, econômica e ambiental | 12d | 2026-07-14 A | 2026-07-29 A | 1017SS | 100% | 2026-06-17 | 2026-07-14 | 20d |  |  |  |
| 1022 | 3.7.2.2.2.6 | Lista preliminar de sistemas envolvidos. | 12d | 2026-07-14 A | 2026-07-29 A | 1015 | 100% | 2026-06-17 | 2026-07-14 | 20d |  |  |  |
| 1023 | 3.7.2.2.2.7 | Planta baixa e cortes estimada contendo: - Traçado preliminar de barrilete, ramais, colunas - Diâmetros estimados - Localização aproximada das bombas e unidades de tratamento e reúso - Localização do ramal predial de água e esgoto - Localização aproximada | 12d | 2026-07-14 A | 2026-07-29 A | 1015 | 100% | 2026-06-17 | 2026-07-14 | 20d |  |  |  |
| 1024 | 3.7.2.2.3 | **LOD 300 - Consolidação e documentação de entrega** | 14d | 2026-07-29 | 2026-08-17 |  |  | 2026-07-15 | 2026-07-24 | 8d | 5d |  |  |
| 1025 | 3.7.2.2.3.1 | Planta, corte e detalhe isométrico contendo: - Modelagem detalhada com diâmetros, cotas e inclinações definitivas (barriletes, colunas, ramais) - Quantitativos e especificação técnica dos materiais (tubos, conexões, reservatórios, registros e válvulas com | 14d | 2026-07-29 | 2026-08-17 | 1023FS-1d |  | 2026-07-15 | 2026-07-24 | 8d | 5d | 0d |  |
| 1026 | 3.7.2.2.3.2 | Memorial descritivo | 3d | 2026-08-13 | 2026-08-17 | 1025FF |  | 2026-07-22 | 2026-07-24 | 3d | 5d |  |  |
| 1027 | 3.7.2.2.3.3 | Memória de cálculo (pressão, vazão, diâmetros, perda de carga). | 3d | 2026-08-13 | 2026-08-17 | 1025FF |  | 2026-07-22 | 2026-07-24 | 3d | 5d |  |  |
| 1028 | 3.7.2.3 | **AVAC** | 35d | 2026-06-29 A | 2026-08-14 A |  | 100% | 2026-06-08 | 2026-07-24 | 35d |  |  |  |
| 1029 | 3.7.2.3.1 | **LOD 100 — Premissas, diretrizes e interfaces** | 20d | 2026-06-29 A | 2026-07-24 A |  | 100% | 2026-06-08 | 2026-06-24 | 13d |  |  |  |
| 1030 | 3.7.2.3.1.1 | Estimativa de carga térmica por ambiente. | 10d | 2026-06-29 A | 2026-07-10 A | 883SS+28d | 100% | 2026-06-08 | 2026-06-16 | 7d |  |  |  |
| 1031 | 3.7.2.3.1.2 | Localização preliminar de unidades de tratamento de ar, condensadoras e exaustores. | 10d | 2026-06-29 A | 2026-07-10 A | 883SS+28d | 100% | 2026-06-08 | 2026-06-16 | 7d |  |  |  |
| 1032 | 3.7.2.3.1.3 | Pontos locação para seus elementos no projeto arquitetônico. | 10d | 2026-06-29 A | 2026-07-10 A | 883SS+28d | 100% | 2026-06-08 | 2026-06-16 | 7d |  |  |  |
| 1033 | 3.7.2.3.1.4 | Estudo de viabilidade e rotas principais de distribuição de ar. | 10d | 2026-06-29 A | 2026-07-10 A | 883SS+28d | 100% | 2026-06-08 | 2026-06-16 | 7d |  |  |  |
| 1034 | 3.7.2.3.1.5 | Reserva de espaços técnicos e shafts. | 10d | 2026-06-29 A | 2026-07-10 A | 883SS+28d | 100% | 2026-06-08 | 2026-06-16 | 7d |  |  |  |
| 1035 | 3.7.2.3.1.6 | Levantamento de cargas especiais provenientes de outras disciplinas. | 10d | 2026-07-13 A | 2026-07-24 A | 1054, 1064, 883SS+28d | 100% | 2026-06-16 | 2026-06-24 | 7d |  |  |  |
| 1036 | 3.7.2.3.2 | **LOD 200 — Validação interdisciplinar e solução preliminar** | 25d | 2026-07-13 A | 2026-08-14 A |  | 100% | 2026-06-17 | 2026-07-24 | 28d |  |  |  |
| 1037 | 3.7.2.3.2.1 | Lista preliminar de sistemas HVAC envolvidos (expansão direta, VRF, chillers, ventilação, exaustão). | 25d | 2026-07-13 A | 2026-08-14 A | 1034 | 100% | 2026-06-17 | 2026-07-24 | 28d |  |  |  |
| 1038 | 3.7.2.3.2.2 | Planta baixa estimada contendo: pontos de insuflamento e retorno. | 25d | 2026-07-13 A | 2026-08-14 A | 1034 | 100% | 2026-06-17 | 2026-07-24 | 28d |  |  |  |
| 1039 | 3.7.2.3.2.3 | Rotas iniciais de dutos, tubulações e drenos. | 25d | 2026-07-13 A | 2026-08-14 A | 1034 | 100% | 2026-06-17 | 2026-07-24 | 28d |  |  |  |
| 1040 | 3.7.2.3.2.4 | Planta baixa estimada contendo: unidades internas e externas com posição preliminar. | 25d | 2026-07-13 A | 2026-08-14 A | 1034 | 100% | 2026-06-17 | 2026-07-24 | 28d |  |  |  |
| 1041 | 3.7.2.3.3 | Desenhos conforme IBRAOP | 5d | 2026-08-10 A | 2026-08-14 A |  | 100% | 2026-07-27 | 2026-07-27 | 0d |  |  | start no earlier than 2026-08-10 |

| ID | WBS | Task | Duration | Start | Finish | Predecessors | Complete | Remaining | Baseline start | Baseline finish | Baseline duration | Total slack | Free slack | Text3 |
| --- | --- | --- | --- | --- | --- | --- | --- | --- | --- | --- | --- | --- | --- | --- |
| 1042 | 3.7.2.4 | **PCI (Incêndio)** | 20d | 2026-07-20 A | 2026-08-14 A |  | 100% |  | 2026-06-08 | 2026-06-29 | 16d |  |  |  |
| 1043 | 3.7.2.4.1 | **LOD 100 — Premissas, diretrizes e interfaces** | 10d | 2026-07-20 A | 2026-07-31 A |  | 100% |  | 2026-06-08 | 2026-06-15 | 6d |  |  | ܁# |
| 1044 | 3.7.2.4.1.1 | Estudo e avaliação da arquitetura atendendo as normas competentes de PCI | 10d | 2026-07-20 A | 2026-07-31 A | 883SS+43d | 100% |  | 2026-06-08 | 2026-06-15 | 6d |  |  |  |
| 1045 | 3.7.2.4.1.2 | Avaliação do espaço para CMI e Central de Gás. | 10d | 2026-07-20 A | 2026-07-31 A | 883SS+43d | 100% |  | 2026-06-08 | 2026-06-15 | 6d |  |  |  |
| 1046 | 3.7.2.4.1.3 | Pontos locação para seus elementos no projeto arquitetônico | 10d | 2026-07-20 A | 2026-07-31 A | 883SS+43d | 100% |  | 2026-06-08 | 2026-06-15 | 6d |  |  |  |
| 1047 | 3.7.2.4.2 | **LOD 200 — Validação interdisciplinar e solução preliminar** | 10d | 2026-08-03 A | 2026-08-14 A |  | 100% |  | 2026-06-16 | 2026-06-29 | 10d |  |  | ܁# |
| 1048 | 3.7.2.4.2.1 | Definição da classificação da edificação e o risco de incêndio | 10d | 2026-08-03 A | 2026-08-14 A | 1046 | 100% |  | 2026-06-16 | 2026-06-29 | 10d |  |  |  |
| 1049 | 3.7.2.4.2.2 | Cálculos pré-dimensionados dos extintores, hidrantes e bomba. | 10d | 2026-08-03 A | 2026-08-14 A | 1046 | 100% |  | 2026-06-16 | 2026-06-29 | 10d |  |  |  |
| 1050 | 3.7.2.4.2.3 | Avaliação das rotas de fuga, ventilação de CMI e outros elementos de importância para as normas de PCI | 10d | 2026-08-03 A | 2026-08-14 A | 1046 | 100% |  | 2026-06-16 | 2026-06-29 | 10d |  |  |  |
| 1051 | 3.7.2.5 | **Elétrica Baixa Tensão** | 35d | 2026-06-29 A | 2026-08-14 |  | 93% | 2.59d | 2026-06-08 | 2026-07-24 | 35d | 6d |  |  |
| 1052 | 3.7.2.5.1 | **LOD 100 — Concepção** | 13d | 2026-06-29 A | 2026-07-15 A |  | 100% |  | 2026-06-08 | 2026-06-23 | 12d |  |  |  |
| 1053 | 3.7.2.5.1.1 | Avaliação e Diretrizes Técnicas para Arquitetura | 6d | 2026-06-29 A | 2026-07-06 A | 883SS+28d | 100% |  | 2026-06-08 | 2026-06-10 | 3d |  |  |  |
| 1054 | 3.7.2.5.1.2 | Estimativa de Cargas e Demanda | 10d | 2026-06-29 A | 2026-07-10 A | 883SS+28d | 100% |  | 2026-06-08 | 2026-06-15 | 6d |  |  |  |
| 1055 | 3.7.2.5.1.3 | Levantamento de Equipamentos de Outras Disciplinas | 3d | 2026-07-13 A | 2026-07-15 A | 1032 | 100% |  | 2026-06-17 | 2026-06-23 | 5d |  |  |  |
| 1056 | 3.7.2.5.2 | **LOD 200 — Anteprojeto** | 19d | 2026-07-16 A | 2026-08-11 |  | 95% | 0.95d | 2026-06-24 | 2026-07-20 | 19d | 6d | 0d |  |
| 1057 | 3.7.2.5.2.1 | TUGs Estimados | 19d | 2026-07-16 A | 2026-08-11 | 1054, 1055 | 95% | 0.95d | 2026-06-24 | 2026-07-20 | 19d | 6d |  |  |
| 1058 | 3.7.2.5.2.2 | Pontos de Luz Estimados | 19d | 2026-07-16 A | 2026-08-11 | 1054, 1055 | 95% | 0.95d | 2026-06-24 | 2026-07-20 | 19d | 6d |  |  |
| 1059 | 3.7.2.5.2.3 | TUEs e Quadros Estimados | 19d | 2026-07-16 A | 2026-08-11 | 1054, 1055 | 95% | 0.95d | 2026-06-24 | 2026-07-20 | 19d | 6d |  |  |
| 1060 | 3.7.2.5.3 | LOD 300 - Consolidação e documentação de entrega | 3d | 2026-08-12 | 2026-08-14 | 1056 |  |  | 2026-07-21 | 2026-07-24 | 4d | 6d |  |  |
| 1061 | 3.7.2.6 | **Telecom** | 35d | 2026-06-29 A | 2026-08-14 |  | 94% | 2.15d | 2026-06-08 | 2026-07-17 | 30d | 6d |  |  |
| 1062 | 3.7.2.6.1 | **LOD 100 — Concepção** | 10d | 2026-06-29 A | 2026-07-10 A |  | 100% |  | 2026-06-08 | 2026-06-15 | 6d |  |  |  |
| 1063 | 3.7.2.6.1.1 | Avaliação e Diretrizes Técnicas para Arquitetura | 10d | 2026-06-29 A | 2026-07-10 A | 883SS+28d | 100% |  | 2026-06-08 | 2026-06-15 | 6d |  |  |  |
| 1064 | 3.7.2.6.1.2 | Estimativa de Demanda de Telecomunicações | 10d | 2026-06-29 A | 2026-07-10 A | 883SS+28d | 100% |  | 2026-06-08 | 2026-06-15 | 6d |  |  |  |
| 1065 | 3.7.2.6.1.3 | Levantamento de Equipamentos e Interfaces com Outras Disciplinas | 10d | 2026-06-29 A | 2026-07-10 A | 883SS+28d | 100% |  | 2026-06-08 | 2026-06-15 | 6d |  |  |  |

| ID | WBS | Task | Duration | Start | Finish | Predecessors | Complete | Remaining | Baseline start | Baseline finish | Baseline duration | Total slack |
| --- | --- | --- | --- | --- | --- | --- | --- | --- | --- | --- | --- | --- |
| 1066 | 3.7.2.6.2 | **LOD 200 — Anteprojeto** | 21d | 2026-07-13 A | 2026-08-10 A |  | 100% |  | 2026-06-16 | 2026-07-13 | 20d |  |
| 1067 | 3.7.2.6.2.1 | Pontos de Telecomunicações Estimados (Rede, Voz, CFTV e Demais Sistemas) | 10d | 2026-07-13 A | 2026-07-24 A | 1065 | 100% |  | 2026-06-16 | 2026-06-29 | 10d |  |
| 1068 | 3.7.2.6.2.2 | Racks Estimados | 10d | 2026-07-13 A | 2026-07-24 A | 1065 | 100% |  | 2026-06-16 | 2026-06-29 | 10d |  |
| 1069 | 3.7.2.6.2.3 | Infraestrutura de Telecomunicações Preliminar | 11d | 2026-07-27 A | 2026-08-10 A | 1067, 1068 | 100% |  | 2026-06-30 | 2026-07-13 | 10d |  |
| 1070 | 3.7.2.6.3 | LOD 300 - Consolidação e documentação de entrega | 4d | 2026-08-11 | 2026-08-14 | 1066 |  |  | 2026-07-14 | 2026-07-17 | 4d | 6d |
| 1071 | 3.7.2.7 | **Subestação** | 35d | 2026-06-29 A | 2026-08-14 |  | 93% | 2.41d | 2026-06-08 | 2026-07-24 | 35d | 6d |
| 1072 | 3.7.2.7.1 | **LOD 100 — Concepção** | 5d | 2026-06-29 A | 2026-07-03 A |  | 100% |  | 2026-06-08 | 2026-06-12 | 5d |  |
| 1073 | 3.7.2.7.1.1 | Avaliação e Diretrizes Técnicas para Arquitetura | 5d | 2026-06-29 A | 2026-07-03 A | 883SS+28d | 100% |  | 2026-06-08 | 2026-06-12 | 5d |  |
| 1074 | 3.7.2.7.1.2 | Levantamento de Demanda, Perfil de Consumo e Ponto de Entrega | 5d | 2026-06-29 A | 2026-07-03 A | 883SS+28d | 100% |  | 2026-06-08 | 2026-06-12 | 5d |  |
| 1075 | 3.7.2.7.1.3 | Estudo de Viabilidade Técnica e Atendimento ao Padrão da Concessionária | 5d | 2026-06-29 A | 2026-07-03 A | 883SS+28d | 100% |  | 2026-06-08 | 2026-06-12 | 5d |  |
| 1076 | 3.7.2.7.2 | **LOD 200 — Anteprojeto** | 26d | 2026-07-06 A | 2026-08-10 A |  | 100% |  | 2026-06-15 | 2026-07-20 | 26d |  |
| 1077 | 3.7.2.7.2.1 | Definição do Tipo de Subestação e Arranjo Físico Preliminar | 13d | 2026-07-06 A | 2026-07-22 A | 1075 | 100% |  | 2026-06-15 | 2026-07-01 | 13d |  |
| 1078 | 3.7.2.7.2.2 | Dimensionamento Preliminar do Transformador e Equipamentos Principais | 13d | 2026-07-23 A | 2026-08-10 A | 1077 | 100% |  | 2026-07-02 | 2026-07-20 | 13d |  |
| 1079 | 3.7.2.7.2.3 | Diretrizes Preliminares de Aterramento | 13d | 2026-07-23 A | 2026-08-10 A | 1077 | 100% |  | 2026-07-02 | 2026-07-20 | 13d |  |
| 1080 | 3.7.2.7.3 | LOD 300 - Consolidação e documentação de entrega | 4d | 2026-08-11 | 2026-08-14 | 1076 |  |  | 2026-07-21 | 2026-07-24 | 4d | 6d |
| 1081 | 3.7.2.8 | **SPDA** | 35d | 2026-06-29 A | 2026-08-14 |  | 91% | 3.11d | 2026-06-08 | 2026-07-24 | 35d | 6d |
| 1082 | 3.7.2.8.1 | **LOD 100 — Concepção** | 5d | 2026-06-29 A | 2026-07-03 A |  | 100% |  | 2026-06-08 | 2026-06-12 | 5d |  |
| 1083 | 3.7.2.8.1.1 | Avaliação e Diretrizes Técnicas para Arquitetura | 5d | 2026-06-29 A | 2026-07-03 A | 883SS+28d | 100% |  | 2026-06-08 | 2026-06-12 | 5d |  |
| 1084 | 3.7.2.8.1.2 | Coleta de Informações da Edificação e Análise de Risco (ABNT NBR 5419-2) | 5d | 2026-06-29 A | 2026-07-03 A | 883SS+28d | 100% |  | 2026-06-08 | 2026-06-12 | 5d |  |
| 1085 | 3.7.2.8.1.3 | Estudo Preliminar de Necessidade e Nível de Proteção do SPDA | 5d | 2026-06-29 A | 2026-07-03 A | 883SS+28d | 100% |  | 2026-06-08 | 2026-06-12 | 5d |  |
| 1086 | 3.7.2.8.2 | **LOD 200 — Anteprojeto** | 26d | 2026-07-06 A | 2026-08-10 A |  | 100% |  | 2026-06-15 | 2026-07-20 | 26d |  |
| 1087 | 3.7.2.8.2.1 | Definição da Estratégia de Proteção e Soluções Técnicas | 8d | 2026-07-06 A | 2026-07-15 A | 1085 | 100% |  | 2026-06-15 | 2026-06-24 | 8d |  |
| 1088 | 3.7.2.8.2.2 | Zoneamento de Captação, Descida e Traçados Preliminares | 8d | 2026-07-16 A | 2026-07-27 A | 1087 | 100% |  | 2026-06-25 | 2026-07-06 | 8d |  |
| 1089 | 3.7.2.8.2.3 | Estudo de Interferências, Compatibilização e Métodos Construtivos | 10d | 2026-07-28 A | 2026-08-10 A | 1088 | 100% |  | 2026-07-07 | 2026-07-20 | 10d |  |
| 1090 | 3.7.2.8.3 | LOD 300 - Consolidação e documentação de entrega | 4d | 2026-08-11 | 2026-08-14 | 1089 |  |  | 2026-07-21 | 2026-07-24 | 4d | 6d |

| ID | WBS | Task | Duration | Start | Finish | Predecessors | Complete | Remaining | Baseline start | Baseline finish | Baseline duration | Total slack |
| --- | --- | --- | --- | --- | --- | --- | --- | --- | --- | --- | --- | --- |
| 1091 | 3.7.2.9 | **Energia Renovável** | 35d | 2026-06-29 A | 2026-08-14 A |  | 100% |  | 2026-06-08 | 2026-07-17 | 30d |  |
| 1092 | 3.7.2.9.1 | **LOD 100 — Concepção** | 10d | 2026-06-29 A | 2026-07-10 A |  | 100% |  | 2026-06-08 | 2026-06-16 | 7d |  |
| 1093 | 3.7.2.9.1.1 | Viabilidade e Premissas de Geração | 10d | 2026-06-29 A | 2026-07-10 A | 883SS+28d | 100% |  | 2026-06-08 | 2026-06-16 | 7d |  |
| 1094 | 3.7.2.9.1.2 | Levantamento Preliminar de Áreas e Sombreamento | 10d | 2026-06-29 A | 2026-07-10 A | 883SS+28d | 100% |  | 2026-06-08 | 2026-06-16 | 7d |  |
| 1095 | 3.7.2.9.1.3 | Avaliação e Diretrizes Técnicas para Arquitetônico | 10d | 2026-06-29 A | 2026-07-10 A | 883SS+28d | 100% |  | 2026-06-08 | 2026-06-16 | 7d |  |
| 1096 | 3.7.2.9.2 | **LOD 200 — Anteprojeto** | 21d | 2026-07-13 A | 2026-08-10 A |  | 100% |  | 2026-06-17 | 2026-07-13 | 19d |  |
| 1097 | 3.7.2.9.2.1 | Layout Preliminar de Módulos, Inversores e String Boxes | 21d | 2026-07-13 A | 2026-08-10 A | 1094 | 100% |  | 2026-06-17 | 2026-07-13 | 19d |  |
| 1098 | 3.7.2.9.2.2 | Infraestrutura e Rotas Técnicas Preliminares (DC/AC e Aterramento) | 21d | 2026-07-13 A | 2026-08-10 A | 1094 | 100% |  | 2026-06-17 | 2026-07-13 | 19d |  |
| 1099 | 3.7.2.9.2.3 | Critérios Preliminares de Proteção e Estimativa de Quantitativos | 21d | 2026-07-13 A | 2026-08-10 A | 1094 | 100% |  | 2026-06-17 | 2026-07-13 | 19d |  |
| 1100 | 3.7.2.9.3 | LOD 300 - Consolidação e documentação de entrega | 4d | 2026-08-11 A | 2026-08-14 A | 1096 | 100% |  | 2026-07-14 | 2026-07-17 | 4d |  |
| 1101 | 3.8 | **007 - PROEIS – Programa Estadual de Integração na Segurança** | 64d | 2026-05-19 A | 2026-08-17 |  | 94% | 3.73d | 2026-05-19 | 2026-07-27 | 49d | 5d |
| 1102 | 3.8.1 | **Arquitetura** | 28d | 2026-05-19 A | 2026-06-26 A |  | 100% |  | 2026-05-19 | 2026-07-27 | 49d |  |
| 1103 | 3.8.1.1 | **LOD 200 - ESTUDO PRELIMINAR** | 20d | 2026-05-19 A | 2026-06-16 A |  | 100% |  | 2026-05-19 | 2026-07-03 | 33d |  |
| 1104 | 3.8.1.1.1 | Modelagem das paredes | 20d | 2026-05-19 A | 2026-06-16 A | 63FS+13d | 100% |  | 2026-05-19 | 2026-07-03 | 33d |  |
| 1105 | 3.8.1.1.2 | Modelagem dos pisos | 20d | 2026-05-19 A | 2026-06-16 A | 63FS+13d | 100% |  | 2026-05-19 | 2026-07-03 | 33d |  |
| 1106 | 3.8.1.1.3 | Modelagem das lajes | 20d | 2026-05-19 A | 2026-06-16 A | 63FS+13d | 100% |  | 2026-05-19 | 2026-07-03 | 0d |  |
| 1107 | 3.8.1.1.4 | Inserção de portas | 20d | 2026-05-19 A | 2026-06-16 A | 63FS+13d | 100% |  | 2026-05-19 | 2026-07-03 | 33d |  |
| 1108 | 3.8.1.1.5 | Inserção de janelas | 20d | 2026-05-19 A | 2026-06-16 A | 63FS+13d | 100% |  | 2026-05-19 | 2026-07-03 | 33d |  |
| 1109 | 3.8.1.1.6 | Inserção de escada(s) | 20d | 2026-05-19 A | 2026-06-16 A | 63FS+13d | 100% |  | 2026-05-19 | 2026-07-03 | 33d |  |
| 1110 | 3.8.1.1.7 | Inserção de elevador(es) | 20d | 2026-05-19 A | 2026-06-16 A | 63FS+13d | 100% |  | 2026-05-19 | 2026-07-03 | 33d |  |
| 1111 | 3.8.1.1.8 | Inserção de rampa(s) | 20d | 2026-05-19 A | 2026-06-16 A | 63FS+13d | 100% |  | 2026-05-19 | 2026-07-03 | 0d |  |
| 1112 | 3.8.1.1.9 | Inserção de layout | 20d | 2026-05-19 A | 2026-06-16 A | 63FS+13d | 100% |  | 2026-05-19 | 2026-07-03 | 33d |  |
| 1113 | 3.8.1.1.10 | Identificação dos ambientes | 20d | 2026-05-19 A | 2026-06-16 A | 63FS+13d | 100% |  | 2026-05-19 | 2026-07-03 | 33d |  |
| 1114 | 3.8.1.1.11 | Espaços de circulação | 20d | 2026-05-19 A | 2026-06-16 A | 63FS+13d | 100% |  | 2026-05-19 | 2026-07-03 | 33d |  |
| 1115 | 3.8.1.1.12 | Áreas de serviços, funcionais e técnicas | 20d | 2026-05-19 A | 2026-06-16 A | 63FS+13d | 100% |  | 2026-05-19 | 2026-07-03 | 33d |  |
| 1116 | 3.8.1.1.13 | Projeção de níveis superiores e da cobertura | 20d | 2026-05-19 A | 2026-06-16 A | 63FS+13d | 100% |  | 2026-05-19 | 2026-07-03 | 33d |  |
| 1117 | 3.8.1.1.14 | Cotas de nível principais | 20d | 2026-05-19 A | 2026-06-16 A | 63FS+13d | 100% |  | 2026-05-19 | 2026-07-03 | 33d |  |
| 1118 | 3.8.1.1.15 | Relatório/Memorial de Projeto Preliminar | 5d | 2026-06-10 A | 2026-06-16 A | 1117FF | 100% |  | 2026-06-22 | 2026-07-03 | 10d |  |

| ID | WBS | Task | Duration | Start | Finish | Predecessors | Complete | Baseline start | Baseline finish | Baseline duration |
| --- | --- | --- | --- | --- | --- | --- | --- | --- | --- | --- |
| 1119 | 3.8.1.2 | **LOD 300 - ANTEPROJETO** | 8d | 2026-06-17 A | 2026-06-26 A |  | 100% | 2026-07-06 | 2026-07-27 | 16d |
| 1120 | 3.8.1.2.1 | **Situação** | 1d | 2026-06-17 A | 2026-06-17 A |  | 100% | 2026-07-06 | 2026-07-07 | 2d |
| 1121 | 3.8.1.2.1.1 | Indicar simbologias de representação gráfica, conforme NBR 6492:2021; | 1d | 2026-06-17 A | 2026-06-17 A | 1117 | 100% | 2026-07-06 | 2026-07-07 | 2d |
| 1122 | 3.8.1.2.1.2 | Indicação Norte | 1d | 2026-06-17 A | 2026-06-17 A | 1117 | 100% | 2026-07-06 | 2026-07-07 | 2d |
| 1123 | 3.8.1.2.1.3 | Analisar, adicionar e fechar - Curvas de nível existentes e projetadas (conforme projetos de topografia e sondagem recebidos); | 1d | 2026-06-17 A | 2026-06-17 A | 1117 | 100% | 2026-07-06 | 2026-07-07 | 2d |
| 1124 | 3.8.1.2.1.4 | Indicação de Escala; | 1d | 2026-06-17 A | 2026-06-17 A | 1117 | 100% | 2026-07-06 | 2026-07-07 | 2d |
| 1125 | 3.8.1.2.1.5 | Vias de acesso ao conjunto, arruamento, logradouros adjacentes e calçadas com os respectivos equipamentos urbanos; | 1d | 2026-06-17 A | 2026-06-17 A | 1117 | 100% | 2026-07-06 | 2026-07-07 | 2d |
| 1126 | 3.8.1.2.1.6 | Platôs e taludes principais; | 1d | 2026-06-17 A | 2026-06-17 A | 1117 | 100% | 2026-07-06 | 2026-07-07 | 2d |
| 1127 | 3.8.1.2.1.7 | Perímetro do terreno, recuos e afastamentos; | 1d | 2026-06-17 A | 2026-06-17 A | 1117 | 100% | 2026-07-06 | 2026-07-07 | 2d |
| 1128 | 3.8.1.2.1.8 | Indicação das áreas a serem edificadas com o contorno da cobertura das edificações, estacionamentos e áreas permeáveis/impermeáveis; | 1d | 2026-06-17 A | 2026-06-17 A | 1117 | 100% | 2026-07-06 | 2026-07-07 | 2d |
| 1129 | 3.8.1.2.1.9 | Denominação das edificações, blocos ou espaços; | 1d | 2026-06-17 A | 2026-06-17 A | 1117 | 100% | 2026-07-06 | 2026-07-07 | 2d |
| 1130 | 3.8.1.2.1.10 | Cotas gerais | 1d | 2026-06-17 A | 2026-06-17 A | 1117 | 100% | 2026-07-06 | 2026-07-07 | 2d |
| 1131 | 3.8.1.2.1.11 | Cotas de nível principal. | 1d | 2026-06-17 A | 2026-06-17 A | 1117 | 100% | 2026-07-06 | 2026-07-07 | 2d |
| 1132 | 3.8.1.2.1.12 | Quadros de áreas | 1d | 2026-06-17 A | 2026-06-17 A | 1117 | 100% | 2026-07-06 | 2026-07-07 | 2d |
| 1133 | 3.8.1.2.1.13 | Relatório | 1d | 2026-06-17 A | 2026-06-17 A | 1117 | 100% | 2026-07-06 | 2026-07-07 | 2d |
| 1134 | 3.8.1.2.2 | Planta com as cotas de nível projetadas e existentes | 1d | 2026-06-18 A | 2026-06-18 A | 1133 | 100% | 2026-07-08 | 2026-07-09 | 2d |
| 1135 | 3.8.1.2.3 | **Plantas baixas (se tiver mais de um pavimento, duplicar bloco)** | 1d | 2026-06-19 A | 2026-06-19 A |  | 100% | 2026-07-10 | 2026-07-13 | 2d |
| 1136 | 3.8.1.2.3.1 | Indicar simbologias de representação gráfica, conforme NBR 6492:2021; | 1d | 2026-06-19 A | 2026-06-19 A | 1134 | 100% | 2026-07-10 | 2026-07-13 | 2d |
| 1137 | 3.8.1.2.3.2 | Compatibilização (verificar se está tudo conforme as normas e alinhar com o restante das disciplinas de engenharia) | 1d | 2026-06-19 A | 2026-06-19 A | 1134 | 100% | 2026-07-10 | 2026-07-13 | 2d |
| 1138 | 3.8.1.2.3.3 | Compatibilização (deixar tudo conforme padrão Quanta) | 1d | 2026-06-19 A | 2026-06-19 A | 1134 | 100% | 2026-07-10 | 2026-07-13 | 2d |
| 1139 | 3.8.1.2.3.4 | Indicação de Norte; | 1d | 2026-06-19 A | 2026-06-19 A | 1134 | 100% | 2026-07-10 | 2026-07-13 | 2d |
| 1140 | 3.8.1.2.3.5 | Indicação de Escala; | 1d | 2026-06-19 A | 2026-06-19 A | 1134 | 100% | 2026-07-10 | 2026-07-13 | 2d |
| 1141 | 3.8.1.2.3.6 | Indicação de Acessos; | 1d | 2026-06-19 A | 2026-06-19 A | 1134 | 100% | 2026-07-10 | 2026-07-13 | 2d |
| 1142 | 3.8.1.2.3.7 | Elementos de vedação internos e externos; | 1d | 2026-06-19 A | 2026-06-19 A | 1134 | 100% | 2026-07-10 | 2026-07-13 | 2d |
| 1143 | 3.8.1.2.3.8 | Esquadrias; | 1d | 2026-06-19 A | 2026-06-19 A | 1134 | 100% | 2026-07-10 | 2026-07-13 | 2d |
| 1144 | 3.8.1.2.3.9 | Elementos estruturais principais; | 1d | 2026-06-19 A | 2026-06-19 A | 1134 | 100% | 2026-07-10 | 2026-07-13 | 2d |
| 1145 | 3.8.1.2.3.10 | Identificação dos ambientes e espaços (internos e externos); | 1d | 2026-06-19 A | 2026-06-19 A | 1134 | 100% | 2026-07-10 | 2026-07-13 | 2d |
| 1146 | 3.8.1.2.3.11 | Espaços de circulação internos e externos; | 1d | 2026-06-19 A | 2026-06-19 A | 1134 | 100% | 2026-07-10 | 2026-07-13 | 2d |
| 1147 | 3.8.1.2.3.12 | Áreas de serviço, funcionais e técnicas (internos e externos); | 1d | 2026-06-19 A | 2026-06-19 A | 1134 | 100% | 2026-07-10 | 2026-07-13 | 2d |
| 1148 | 3.8.1.2.3.13 | Projeções de níveis superiores; | 1d | 2026-06-19 A | 2026-06-19 A | 1134 | 100% | 2026-07-10 | 2026-07-13 | 2d |
| 1149 | 3.8.1.2.3.14 | Cotas gerais | 1d | 2026-06-19 A | 2026-06-19 A | 1134 | 100% | 2026-07-10 | 2026-07-13 | 2d |
| 1150 | 3.8.1.2.3.15 | Cotas de nível principal. | 1d | 2026-06-19 A | 2026-06-19 A | 1134 | 100% | 2026-07-10 | 2026-07-13 | 2d |
| 1151 | 3.8.1.2.3.16 | Tabelas de paredes, pisos, esquadrias e plantas | 1d | 2026-06-19 A | 2026-06-19 A | 1134 | 100% | 2026-07-10 | 2026-07-13 | 2d |
| 1152 | 3.8.1.2.3.17 | Quadro de áreas | 1d | 2026-06-19 A | 2026-06-19 A | 1134 | 100% | 2026-07-10 | 2026-07-13 | 2d |
| 1153 | 3.8.1.2.3.18 | Relatório | 1d | 2026-06-19 A | 2026-06-19 A | 1134 | 100% | 2026-07-10 | 2026-07-13 | 2d |

| ID | WBS | Task | Duration | Start | Finish | Predecessors | Complete | Baseline start | Baseline finish | Baseline duration |
| --- | --- | --- | --- | --- | --- | --- | --- | --- | --- | --- |
| 1154 | 3.8.1.2.4 | **Planta das coberturas** | 1d | 2026-06-22 A | 2026-06-22 A |  | 100% | 2026-07-14 | 2026-07-15 | 2d |
| 1155 | 3.8.1.2.4.1 | Indicação do Norte | 1d | 2026-06-22 A | 2026-06-22 A | 1152 | 100% | 2026-07-14 | 2026-07-15 | 2d |
| 1156 | 3.8.1.2.4.2 | Indicação de escala | 1d | 2026-06-22 A | 2026-06-22 A | 1152 | 100% | 2026-07-14 | 2026-07-15 | 2d |
| 1157 | 3.8.1.2.4.3 | Curvas de nível | 1d | 2026-06-22 A | 2026-06-22 A | 1152 | 100% | 2026-07-14 | 2026-07-15 | 2d |
| 1158 | 3.8.1.2.4.4 | Indicação de Acessos; | 1d | 2026-06-22 A | 2026-06-22 A | 1152 | 100% | 2026-07-14 | 2026-07-15 | 2d |
| 1159 | 3.8.1.2.4.5 | Estacionamento e áreas cobertas | 1d | 2026-06-22 A | 2026-06-22 A | 1152 | 100% | 2026-07-14 | 2026-07-15 | 2d |
| 1160 | 3.8.1.2.4.6 | Cobertura das edificações | 1d | 2026-06-22 A | 2026-06-22 A | 1152 | 100% | 2026-07-14 | 2026-07-15 | 2d |
| 1161 | 3.8.1.2.4.7 | Sentido de escoamento das águas pluviais e inclinação | 1d | 2026-06-22 A | 2026-06-22 A | 1152 | 100% | 2026-07-14 | 2026-07-15 | 2d |
| 1162 | 3.8.1.2.4.8 | Cotas gerais | 1d | 2026-06-22 A | 2026-06-22 A | 1152 | 100% | 2026-07-14 | 2026-07-15 | 2d |
| 1163 | 3.8.1.2.4.9 | Cotas de nível principal | 1d | 2026-06-22 A | 2026-06-22 A | 1152 | 100% | 2026-07-14 | 2026-07-15 | 2d |
| 1164 | 3.8.1.2.4.10 | Relatório | 1d | 2026-06-22 A | 2026-06-22 A | 1152 | 100% | 2026-07-14 | 2026-07-15 | 2d |
| 1165 | 3.8.1.2.5 | **Cortes longitudinais** | 1d | 2026-06-23 A | 2026-06-23 A |  | 100% | 2026-07-16 | 2026-07-17 | 2d |
| 1166 | 3.8.1.2.5.1 | Indicar simbologias de representação gráfica, conforme NBR 6492:2021; | 1d | 2026-06-23 A | 2026-06-23 A | 1163 | 100% | 2026-07-16 | 2026-07-17 | 2d |
| 1167 | 3.8.1.2.5.2 | Indicação de Escala; | 1d | 2026-06-23 A | 2026-06-23 A | 1163 | 100% | 2026-07-16 | 2026-07-17 | 2d |
| 1168 | 3.8.1.2.5.3 | Elementos estruturais principais; | 1d | 2026-06-23 A | 2026-06-23 A | 1163 | 100% | 2026-07-16 | 2026-07-17 | 2d |
| 1169 | 3.8.1.2.5.4 | Elementos de vedação internos e externos; | 1d | 2026-06-23 A | 2026-06-23 A | 1163 | 100% | 2026-07-16 | 2026-07-17 | 2d |
| 1170 | 3.8.1.2.5.5 | Esquadrias; | 1d | 2026-06-23 A | 2026-06-23 A | 1163 | 100% | 2026-07-16 | 2026-07-17 | 2d |
| 1171 | 3.8.1.2.5.6 | Identificação dos ambientes; | 1d | 2026-06-23 A | 2026-06-23 A | 1163 | 100% | 2026-07-16 | 2026-07-17 | 2d |
| 1172 | 3.8.1.2.5.7 | Cobertura com indicação da respectiva inclinação; | 1d | 2026-06-23 A | 2026-06-23 A | 1163 | 100% | 2026-07-16 | 2026-07-17 | 2d |
| 1173 | 3.8.1.2.5.8 | Cotas gerais; | 1d | 2026-06-23 A | 2026-06-23 A | 1163 | 100% | 2026-07-16 | 2026-07-17 | 2d |
| 1174 | 3.8.1.2.5.9 | Cotas de nível principal; | 1d | 2026-06-23 A | 2026-06-23 A | 1163 | 100% | 2026-07-16 | 2026-07-17 | 2d |
| 1175 | 3.8.1.2.5.10 | Eixos do projeto; | 1d | 2026-06-23 A | 2026-06-23 A | 1163 | 100% | 2026-07-16 | 2026-07-17 | 2d |
| 1176 | 3.8.1.2.5.11 | Relevo construído; | 1d | 2026-06-23 A | 2026-06-23 A | 1163 | 100% | 2026-07-16 | 2026-07-17 | 2d |
| 1177 | 3.8.1.2.5.12 | Projeção da topografia natural. | 1d | 2026-06-23 A | 2026-06-23 A | 1163 | 100% | 2026-07-16 | 2026-07-17 | 2d |
| 1178 | 3.8.1.2.5.13 | Relatório | 1d | 2026-06-23 A | 2026-06-23 A | 1163 | 100% | 2026-07-16 | 2026-07-17 | 2d |

| ID | WBS | Task | Duration | Start | Finish | Predecessors | Complete | Baseline start | Baseline finish | Baseline duration |
| --- | --- | --- | --- | --- | --- | --- | --- | --- | --- | --- |
| 1179 | 3.8.1.2.6 | **Cortes transversais** | 1d | 2026-06-24 A | 2026-06-24 A |  | 100% | 2026-07-20 | 2026-07-21 | 2d |
| 1180 | 3.8.1.2.6.1 | Indicar simbologias de representação gráfica, conforme NBR 6492:2021; | 1d | 2026-06-24 A | 2026-06-24 A | 1177 | 100% | 2026-07-20 | 2026-07-21 | 2d |
| 1181 | 3.8.1.2.6.2 | Indicação de Escala; | 1d | 2026-06-24 A | 2026-06-24 A | 1177 | 100% | 2026-07-20 | 2026-07-21 | 2d |
| 1182 | 3.8.1.2.6.3 | Elementos estruturais principais; | 1d | 2026-06-24 A | 2026-06-24 A | 1177 | 100% | 2026-07-20 | 2026-07-21 | 2d |
| 1183 | 3.8.1.2.6.4 | Elementos de vedação internos e externos; | 1d | 2026-06-24 A | 2026-06-24 A | 1177 | 100% | 2026-07-20 | 2026-07-21 | 2d |
| 1184 | 3.8.1.2.6.5 | Esquadrias; | 1d | 2026-06-24 A | 2026-06-24 A | 1177 | 100% | 2026-07-20 | 2026-07-21 | 2d |
| 1185 | 3.8.1.2.6.6 | Identificação dos ambientes; | 1d | 2026-06-24 A | 2026-06-24 A | 1177 | 100% | 2026-07-20 | 2026-07-21 | 2d |
| 1186 | 3.8.1.2.6.7 | Cobertura com indicação da respectiva inclinação; | 1d | 2026-06-24 A | 2026-06-24 A | 1177 | 100% | 2026-07-20 | 2026-07-21 | 2d |
| 1187 | 3.8.1.2.6.8 | Cotas gerais; | 1d | 2026-06-24 A | 2026-06-24 A | 1177 | 100% | 2026-07-20 | 2026-07-21 | 2d |
| 1188 | 3.8.1.2.6.9 | Cotas de nível principal; | 1d | 2026-06-24 A | 2026-06-24 A | 1177 | 100% | 2026-07-20 | 2026-07-21 | 2d |
| 1189 | 3.8.1.2.6.10 | Eixos do projeto; | 1d | 2026-06-24 A | 2026-06-24 A | 1177 | 100% | 2026-07-20 | 2026-07-21 | 2d |
| 1190 | 3.8.1.2.6.11 | Relevo construído; | 1d | 2026-06-24 A | 2026-06-24 A | 1177 | 100% | 2026-07-20 | 2026-07-21 | 2d |
| 1191 | 3.8.1.2.6.12 | Projeção da topografia natural | 1d | 2026-06-24 A | 2026-06-24 A | 1177 | 100% | 2026-07-20 | 2026-07-21 | 2d |
| 1192 | 3.8.1.2.6.13 | Relatório | 1d | 2026-06-24 A | 2026-06-24 A | 1177 | 100% | 2026-07-20 | 2026-07-21 | 2d |
| 1193 | 3.8.1.2.7 | **Elevações** | 1d | 2026-06-25 A | 2026-06-25 A |  | 100% | 2026-07-22 | 2026-07-23 | 2d |
| 1194 | 3.8.1.2.7.1 | Indicar simbologias de representação gráfica, conforme NBR 6492:2021; | 1d | 2026-06-25 A | 2026-06-25 A | 1191 | 100% | 2026-07-22 | 2026-07-23 | 2d |
| 1195 | 3.8.1.2.7.2 | Indicação de Escala; | 1d | 2026-06-25 A | 2026-06-25 A | 1191 | 100% | 2026-07-22 | 2026-07-23 | 2d |
| 1196 | 3.8.1.2.7.3 | Elementos estruturais principais; | 1d | 2026-06-25 A | 2026-06-25 A | 1191 | 100% | 2026-07-22 | 2026-07-23 | 2d |
| 1197 | 3.8.1.2.7.4 | Elementos de vedação internos e externos; | 1d | 2026-06-25 A | 2026-06-25 A | 1191 | 100% | 2026-07-22 | 2026-07-23 | 2d |
| 1198 | 3.8.1.2.7.5 | Esquadrias; | 1d | 2026-06-25 A | 2026-06-25 A | 1191 | 100% | 2026-07-22 | 2026-07-23 | 2d |
| 1199 | 3.8.1.2.7.6 | Relevo construído; | 1d | 2026-06-25 A | 2026-06-25 A | 1191 | 100% | 2026-07-22 | 2026-07-23 | 2d |
| 1200 | 3.8.1.2.7.7 | Cotas gerais; | 1d | 2026-06-25 A | 2026-06-25 A | 1191 | 100% | 2026-07-22 | 2026-07-23 | 2d |
| 1201 | 3.8.1.2.7.8 | Cotas de nível principais; | 1d | 2026-06-25 A | 2026-06-25 A | 1191 | 100% | 2026-07-22 | 2026-07-23 | 2d |
| 1202 | 3.8.1.2.7.9 | Cobertura (quando aparente). | 1d | 2026-06-25 A | 2026-06-25 A | 1191 | 100% | 2026-07-22 | 2026-07-23 | 2d |

| ID | WBS | Task | Duration | Start | Finish | Predecessors | Complete | Remaining | Baseline start | Baseline finish | Baseline duration | Total slack |
| --- | --- | --- | --- | --- | --- | --- | --- | --- | --- | --- | --- | --- |
| 1203 | 3.8.1.2.8 | **Memorial Descritivo** | 1d | 2026-06-26 A | 2026-06-26 A |  | 100% |  | 2026-07-24 | 2026-07-27 | 2d |  |
| 1204 | 3.8.1.2.8.1 | Descrição dos elementos da edificação | 1d | 2026-06-26 A | 2026-06-26 A | 1202 | 100% |  | 2026-07-24 | 2026-07-27 | 2d |  |
| 1205 | 3.8.1.2.8.2 | Descrição dos componentes construtivos e materiais de construção | 1d | 2026-06-26 A | 2026-06-26 A | 1202 | 100% |  | 2026-07-24 | 2026-07-27 | 2d |  |
| 1206 | 3.8.1.2.8.3 | Lista de pranchas anexas e documentos | 1d | 2026-06-26 A | 2026-06-26 A | 1202 | 100% |  | 2026-07-24 | 2026-07-27 | 2d |  |
| 1207 | 3.8.2 | **Engenharia** | 38d | 2026-06-25 A | 2026-08-17 |  | 92% | 3.15d | 2026-06-08 | 2026-07-24 | 35d | 5d |
| 1208 | 3.8.2.1 | **Estrutura** | 36d | 2026-06-29 A | 2026-08-17 |  | 75% | 8.92d | 2026-06-08 | 2026-07-24 | 35d | 5d |
| 1209 | 3.8.2.1.1 | **LOD 100 — Premissas, diretrizes e interfaces** | 7d | 2026-06-29 A | 2026-07-07 A |  | 100% |  | 2026-06-08 | 2026-06-16 | 7d |  |
| 1210 | 3.8.2.1.1.1 | Levantamento de tipos de cargas globais estimadas (permanentes, acidentais, vento e especiais). | 2d | 2026-06-29 A | 2026-06-30 A | 1117SS+28d | 100% |  | 2026-06-08 | 2026-06-09 | 2d |  |
| 1211 | 3.8.2.1.1.2 | Estudo volumétrico com modulação inicial de pilares, vigas e lajes. Entendendo vãos e desafios | 2d | 2026-06-29 A | 2026-06-30 A | 1117SS+28d | 100% |  | 2026-06-08 | 2026-06-09 | 2d |  |
| 1212 | 3.8.2.1.1.3 | Localização aproximada de elementos estruturais principais. Avaliando vãos e estudando posições | 2d | 2026-06-29 A | 2026-06-30 A | 1117SS+28d | 100% |  | 2026-06-08 | 2026-06-09 | 2d |  |
| 1213 | 3.8.2.1.1.4 | Estudo de viabilidade técnica e construtiva. | 3d | 2026-07-01 A | 2026-07-03 A | 1212 | 100% |  | 2026-06-10 | 2026-06-12 | 3d |  |
| 1214 | 3.8.2.1.1.5 | Definição preliminar do sistema estrutural (concreto armado, metálica ou mista). | 3d | 2026-07-01 A | 2026-07-03 A | 1212 | 100% |  | 2026-06-10 | 2026-06-12 | 3d |  |
| 1215 | 3.8.2.1.1.6 | Estimativa preliminar de tipologias de fundações (sapatas, blocos, estacas). | 2d | 2026-07-06 A | 2026-07-07 A | 1213 | 100% |  | 2026-06-15 | 2026-06-16 | 2d |  |
| 1216 | 3.8.2.1.1.7 | Previsão de áreas técnicas, casas de máquinas, reservatórios elevados e estrutura de cobertura. | 2d | 2026-07-06 A | 2026-07-07 A | 1213 | 100% |  | 2026-06-15 | 2026-06-16 | 2d |  |
| 1217 | 3.8.2.1.2 | **LOD 200 — Validação interdisciplinar e solução preliminar** | 20d | 2026-07-08 A | 2026-08-04 A |  | 100% |  | 2026-06-17 | 2026-07-14 | 20d |  |
| 1218 | 3.8.2.1.2.1 | Lista preliminar de cargas e ações para dimensionamento. | 5d | 2026-07-08 A | 2026-07-14 A | 1216 | 100% |  | 2026-06-17 | 2026-06-23 | 5d |  |
| 1219 | 3.8.2.1.2.2 | Definição preliminar de alturas de pavimentos e níveis de fundação. | 5d | 2026-07-08 A | 2026-07-14 A | 1216 | 100% |  | 2026-06-17 | 2026-06-23 | 5d |  |
| 1220 | 3.8.2.1.2.3 | Indicação aproximada do sistema de cobertura (tesouras, treliças, vigamento metálico ou concreto). | 5d | 2026-07-08 A | 2026-07-14 A | 1216 | 100% |  | 2026-06-17 | 2026-06-23 | 5d |  |
| 1221 | 3.8.2.1.2.4 | Modelagem genérica de pilares, vigas, lajes e fundações. | 5d | 2026-07-15 A | 2026-07-21 A | 1218 | 100% |  | 2026-06-24 | 2026-06-30 | 5d |  |
| 1222 | 3.8.2.1.2.5 | Traçado preliminar de elementos especiais (escadas, rampas estruturais, reservatórios). | 5d | 2026-07-15 A | 2026-07-21 A | 1218 | 100% |  | 2026-06-24 | 2026-06-30 | 5d |  |
| 1223 | 3.8.2.1.2.6 | Arquivo IFC, plantas de forma e planta de locação | 5d | 2026-07-15 A | 2026-07-21 A | 1218 | 100% |  | 2026-06-24 | 2026-06-30 | 5d |  |
| 1224 | 3.8.2.1.2.7 | Inserção de fundações com tipologia e dimensões preliminares. | 5d | 2026-07-22 A | 2026-07-28 A | 1222 | 100% |  | 2026-07-01 | 2026-07-07 | 5d |  |
| 1225 | 3.8.2.1.2.8 | Compatibilização inicial com arquitetura e demais disciplinas. | 5d | 2026-07-22 A | 2026-07-28 A | 1223 | 100% |  | 2026-07-01 | 2026-07-07 | 5d |  |
| 1226 | 3.8.2.1.2.9 | Indicação de passagens de infraestrutura (shafts, aberturas em lajes e vigas). | 5d | 2026-07-22 A | 2026-07-28 A | 1223 | 100% |  | 2026-07-01 | 2026-07-07 | 5d |  |
| 1227 | 3.8.2.1.2.10 | Modelagem assertiva de elementos principais com dimensões aproximadas (largura, altura, espessura). | 10d | 2026-07-22 A | 2026-08-04 A | 1223 | 100% |  | 2026-07-01 | 2026-07-14 | 10d |  |
| 1228 | 3.8.2.1.2.11 | Modelagem estimada de armaduras principais (em nível de concepção). | 5d | 2026-07-22 A | 2026-07-28 A | 1223 | 100% |  | 2026-07-01 | 2026-07-07 | 5d |  |

| ID | WBS | Task | Duration | Start | Finish | Predecessors | Complete | Remaining | Baseline start | Baseline finish | Baseline duration | Total slack |
| --- | --- | --- | --- | --- | --- | --- | --- | --- | --- | --- | --- | --- |
| 1229 | 3.8.2.1.3 | **LOD 300 - Consolidação e documentação de entrega** | 9d | 2026-08-05 A | 2026-08-17 |  | 29% | 6.37d | 2026-07-15 | 2026-07-24 | 8d | 5d |
| 1230 | 3.8.2.1.3.1 | Indicação de níveis e cotas exatas. | 3d | 2026-08-05 A | 2026-08-07 | 1227, 1228 | 40% | 1.8d | 2026-07-15 | 2026-07-24 | 8d | 11d |
| 1231 | 3.8.2.1.3.2 | Quadro de cargas atualizado. | 3d | 2026-08-05 A | 2026-08-07 | 1227, 1228 | 40% | 1.8d | 2026-07-15 | 2026-07-24 | 8d | 11d |
| 1232 | 3.8.2.1.3.3 | Dimensionamento final de fundações conforme sondagem e cálculo estrutural. | 3d | 2026-08-05 A | 2026-08-07 | 1227, 1228 | 40% | 1.8d | 2026-07-15 | 2026-07-24 | 8d | 11d |
| 1233 | 3.8.2.1.3.4 | Definição final dos elementos da cobertura (treliças, vigas, chapas, purlins). | 3d | 2026-08-05 A | 2026-08-07 | 1227, 1228 | 40% | 1.8d | 2026-07-15 | 2026-07-24 | 8d | 11d |
| 1234 | 3.8.2.1.3.5 | Compatibilização final com arquitetura e instalações (aberturas, embutidos e passagens). | 3d | 2026-08-05 A | 2026-08-07 | 1227, 1228 | 40% | 1.8d | 2026-07-15 | 2026-07-24 | 8d | 11d |
| 1235 | 3.8.2.1.3.6 | Modelagem definitiva de pilares, vigas, lajes, blocos, sapatas e estacas. | 3d | 2026-08-05 A | 2026-08-07 | 1227, 1228 | 40% | 1.8d | 2026-07-15 | 2026-07-24 | 8d | 11d |
| 1236 | 3.8.2.1.3.7 | Planta estrutural com todos os elementos identificados. | 3d | 2026-08-05 A | 2026-08-07 | 1227, 1228 | 40% | 1.8d | 2026-07-15 | 2026-07-24 | 8d | 11d |
| 1237 | 3.8.2.1.3.8 | Memorial descritivo contendo: objetivos, justificativa, descrição do sistema, concepção de fundações/cobertura, especificações e quadro de cargas. | 9d | 2026-08-05 A | 2026-08-17 | 1227, 1228 | 13% | 7.8d | 2026-07-15 | 2026-07-24 | 8d | 5d |
| 1238 | 3.8.2.1.3.9 | Normas técnicas utilizadas (NBR 6118, 6120, 6122, 8800, etc.). | 3d | 2026-08-05 A | 2026-08-07 | 1227, 1228 | 40% | 1.8d | 2026-07-15 | 2026-07-24 | 8d | 11d |
| 1239 | 3.8.2.1.3.10 | Consolidar documentação de entrega e emissão formal da disciplina | 8d | 2026-08-05 A | 2026-08-14 | 1227, 1228 | 15% | 6.8d | 2026-07-15 | 2026-07-24 | 8d | 6d |
| 1240 | 3.8.2.2 | **Hidrossanitário** | 38d | 2026-06-25 A | 2026-08-17 |  | 89% | 4.09d | 2026-06-08 | 2026-07-24 | 35d | 5d |
| 1241 | 3.8.2.2.1 | **LOD 100 — Premissas, diretrizes e interfaces** | 12d | 2026-06-25 A | 2026-07-10 A |  | 100% |  | 2026-06-08 | 2026-06-16 | 7d |  |
| 1242 | 3.8.2.2.1.1 | Memorial preliminar | 10d | 2026-06-29 A | 2026-07-10 A | 1117SS+28d | 100% |  | 2026-06-08 | 2026-06-09 | 2d |  |
| 1243 | 3.8.2.2.1.2 | Indicação de áreas técnicas | 6d | 2026-06-29 A | 2026-07-06 A | 1117SS+28d | 100% |  | 2026-06-10 | 2026-06-12 | 3d |  |
| 1244 | 3.8.2.2.1.3 | Planta baixa com traçado conceitual | 6d | 2026-07-01 A | 2026-07-08 A | 1211 | 100% |  | 2026-06-10 | 2026-06-12 | 3d |  |
| 1245 | 3.8.2.2.1.4 | Pontos de consumo principais e coletas sanitárias | 6d | 2026-07-01 A | 2026-07-08 A | 1211 | 100% |  | 2026-06-10 | 2026-06-16 | 5d |  |
| 1246 | 3.8.2.2.1.5 | Classificação de uso | 10d | 2026-06-25 A | 2026-07-08 A | 1245FF | 100% |  | 2026-06-08 | 2026-06-16 | 7d |  |
| 1247 | 3.8.2.2.1.6 | Diretrizes de espaço | 10d | 2026-06-25 A | 2026-07-08 A | 1245FF | 100% |  | 2026-06-08 | 2026-06-16 | 7d |  |
| 1248 | 3.8.2.2.1.7 | Estimativa de demanda ou população de uso | 10d | 2026-06-25 A | 2026-07-08 A | 1245FF | 100% |  | 2026-06-08 | 2026-06-16 | 7d |  |
| 1249 | 3.8.2.2.1.8 | Levantamento de elementos especiais dentre outras disciplinas de Engenharia e Arquitetura | 10d | 2026-06-25 A | 2026-07-08 A | 1245FF | 100% |  | 2026-06-08 | 2026-06-16 | 7d |  |
| 1250 | 3.8.2.2.2 | **LOD 200 — Validação interdisciplinar e solução preliminar** | 14d | 2026-07-09 A | 2026-07-28 A |  | 100% |  | 2026-06-17 | 2026-07-14 | 20d |  |
| 1251 | 3.8.2.2.2.1 | Critérios normativos adotados (ABNT, concessionárias, etc.) | 14d | 2026-07-09 A | 2026-07-28 A | 1249 | 100% |  | 2026-06-17 | 2026-07-14 | 20d |  |
| 1252 | 3.8.2.2.2.2 | Informações de demanda na concessionária (DPE ou AVT Aviso de Viabilidade Técnica) | 14d | 2026-07-09 A | 2026-07-28 A | 1251SS, 23, 27 | 100% |  | 2026-06-17 | 2026-07-14 | 20d |  |
| 1253 | 3.8.2.2.2.3 | Recebimento e Análise de Sondagem (permeabilidade ou percolação) | 14d | 2026-07-09 A | 2026-07-28 A | 1251SS, 23, 27 | 100% |  | 2026-06-17 | 2026-07-14 | 20d |  |
| 1254 | 3.8.2.2.2.4 | Recebimento e Análise de Topografia | 14d | 2026-07-09 A | 2026-07-28 A | 1251SS, 23, 27 | 100% |  | 2026-06-17 | 2026-07-14 | 20d |  |
| 1255 | 3.8.2.2.2.5 | Estudo de viabilidade técnica, econômica e ambiental | 14d | 2026-07-09 A | 2026-07-28 A | 1251SS | 100% |  | 2026-06-17 | 2026-07-14 | 20d |  |
| 1256 | 3.8.2.2.2.6 | Lista preliminar de sistemas envolvidos. | 14d | 2026-07-09 A | 2026-07-28 A | 1249 | 100% |  | 2026-06-17 | 2026-07-14 | 20d |  |
| 1257 | 3.8.2.2.2.7 | Planta baixa e cortes estimada contendo: - Traçado preliminar de barrilete, ramais, colunas - Diâmetros estimados - Localização aproximada das bombas e unidades de tratamento e reúso - Localização do ramal predial de água e esgoto - Localização aproximada | 14d | 2026-07-09 A | 2026-07-28 A | 1249 | 100% |  | 2026-06-17 | 2026-07-14 | 20d |  |

| ID | WBS | Task | Duration | Start | Finish | Predecessors | Complete | Remaining | Baseline start | Baseline finish | Baseline duration | Total slack | Free slack | Constraint | Text3 |
| --- | --- | --- | --- | --- | --- | --- | --- | --- | --- | --- | --- | --- | --- | --- | --- |
| 1258 | 3.8.2.2.3 | **LOD 300 - Consolidação e documentação de entrega** | 14d | 2026-07-29 | 2026-08-17 |  |  |  | 2026-07-15 | 2026-07-24 | 8d | 5d |  |  |  |
| 1259 | 3.8.2.2.3.1 | Planta, corte e detalhe isométrico contendo: - Modelagem detalhada com diâmetros, cotas e inclinações definitivas (barriletes, colunas, ramais) - Quantitativos e especificação técnica dos materiais (tubos, conexões, reservatórios, registros e válvulas com | 14d | 2026-07-29 | 2026-08-17 | 1257 |  |  | 2026-07-15 | 2026-07-24 | 8d | 5d | 0d |  |  |
| 1260 | 3.8.2.2.3.2 | Memorial descritivo | 3d | 2026-08-13 | 2026-08-17 | 1259FF |  |  | 2026-07-22 | 2026-07-24 | 3d | 5d |  |  |  |
| 1261 | 3.8.2.2.3.3 | Memória de cálculo (pressão, vazão, diâmetros, perda de carga). | 3d | 2026-08-13 | 2026-08-17 | 1257, 1259FF |  |  | 2026-07-22 | 2026-07-24 | 3d | 5d |  |  |  |
| 1262 | 3.8.2.3 | **AVAC** | 35d | 2026-06-29 A | 2026-08-14 |  | 97% | 1.1d | 2026-06-08 | 2026-07-24 | 35d | 6d |  |  |  |
| 1263 | 3.8.2.3.1 | **LOD 100 — Premissas, diretrizes e interfaces** | 17d | 2026-06-29 A | 2026-07-21 A |  | 100% |  | 2026-06-08 | 2026-06-24 | 13d |  |  |  |  |
| 1264 | 3.8.2.3.1.1 | Estimativa de carga térmica por ambiente. | 7d | 2026-06-29 A | 2026-07-07 A | 1117SS+28d | 100% |  | 2026-06-08 | 2026-06-16 | 7d |  |  |  |  |
| 1265 | 3.8.2.3.1.2 | Localização preliminar de unidades de tratamento de ar, condensadoras e exaustores. | 7d | 2026-06-29 A | 2026-07-07 A | 1117SS+28d | 100% |  | 2026-06-08 | 2026-06-16 | 7d |  |  |  |  |
| 1266 | 3.8.2.3.1.3 | Pontos locação para seus elementos no projeto arquitetônico. | 7d | 2026-06-29 A | 2026-07-07 A | 1117SS+28d | 100% |  | 2026-06-08 | 2026-06-16 | 7d |  |  |  |  |
| 1267 | 3.8.2.3.1.4 | Estudo de viabilidade e rotas principais de distribuição de ar. | 7d | 2026-06-29 A | 2026-07-07 A | 1117SS+28d | 100% |  | 2026-06-08 | 2026-06-16 | 7d |  |  |  |  |
| 1268 | 3.8.2.3.1.5 | Reserva de espaços técnicos e shafts. | 7d | 2026-06-29 A | 2026-07-07 A | 1117SS+28d | 100% |  | 2026-06-08 | 2026-06-16 | 7d |  |  |  |  |
| 1269 | 3.8.2.3.1.6 | Levantamento de cargas especiais provenientes de outras disciplinas. | 7d | 2026-07-13 A | 2026-07-21 A | 1117SS+28d, 1288, 1298 | 100% |  | 2026-06-16 | 2026-06-24 | 7d |  |  |  |  |
| 1270 | 3.8.2.3.2 | **LOD 200 — Validação interdisciplinar e solução preliminar** | 28d | 2026-07-08 A | 2026-08-14 A |  | 100% |  | 2026-06-17 | 2026-07-24 | 28d |  |  |  |  |
| 1271 | 3.8.2.3.2.1 | Lista preliminar de sistemas HVAC envolvidos (expansão direta, VRF, chillers, ventilação, exaustão). | 28d | 2026-07-08 A | 2026-08-14 A | 1268 | 100% |  | 2026-06-17 | 2026-07-24 | 28d |  |  |  |  |
| 1272 | 3.8.2.3.2.2 | Planta baixa estimada contendo: pontos de insuflamento e retorno. | 28d | 2026-07-08 A | 2026-08-14 A | 1268 | 100% |  | 2026-06-17 | 2026-07-24 | 28d |  |  |  |  |
| 1273 | 3.8.2.3.2.3 | Rotas iniciais de dutos, tubulações e drenos. | 28d | 2026-07-08 A | 2026-08-14 A | 1268 | 100% |  | 2026-06-17 | 2026-07-24 | 28d |  |  |  |  |
| 1274 | 3.8.2.3.2.4 | Planta baixa estimada contendo: unidades internas e externas com posição preliminar. | 28d | 2026-07-08 A | 2026-08-14 A | 1268 | 100% |  | 2026-06-17 | 2026-07-24 | 28d |  |  |  |  |
| 1275 | 3.8.2.3.3 | Desenhos conforme IBRAOP | 5d | 2026-08-10 | 2026-08-14 |  |  |  | 2026-07-27 | 2026-07-27 | 0d | 6d |  | start no earlier than 2026-08-10 |  |
| 1276 | 3.8.2.4 | **PCI (Incêndio)** | 20d | 2026-07-20 A | 2026-08-14 A |  | 100% |  | 2026-06-08 | 2026-06-29 | 16d |  |  |  |  |
| 1277 | 3.8.2.4.1 | **LOD 100 — Premissas, diretrizes e interfaces** | 10d | 2026-07-20 A | 2026-07-31 A |  | 100% |  | 2026-06-08 | 2026-06-15 | 6d |  |  |  | ܁# |
| 1278 | 3.8.2.4.1.1 | Estudo e avaliação da arquitetura atendendo as normas competentes de PCI | 10d | 2026-07-20 A | 2026-07-31 A | 1117SS+43d | 100% |  | 2026-06-08 | 2026-06-15 | 6d |  |  |  |  |
| 1279 | 3.8.2.4.1.2 | Avaliação do espaço para CMI e Central de Gás. | 10d | 2026-07-20 A | 2026-07-31 A | 1117SS+43d | 100% |  | 2026-06-08 | 2026-06-15 | 6d |  |  |  |  |
| 1280 | 3.8.2.4.1.3 | Pontos locação para seus elementos no projeto arquitetônico | 10d | 2026-07-20 A | 2026-07-31 A | 1117SS+43d | 100% |  | 2026-06-08 | 2026-06-15 | 6d |  |  |  |  |
| 1281 | 3.8.2.4.2 | **LOD 200 — Validação interdisciplinar e solução preliminar** | 10d | 2026-08-03 A | 2026-08-14 A |  | 100% |  | 2026-06-16 | 2026-06-29 | 10d |  |  |  | ܁# |
| 1282 | 3.8.2.4.2.1 | Definição da classificação da edificação e o risco de incêndio | 10d | 2026-08-03 A | 2026-08-14 A | 1280 | 100% |  | 2026-06-16 | 2026-06-29 | 10d |  |  |  |  |
| 1283 | 3.8.2.4.2.2 | Cálculos pré-dimensionados dos extintores, hidrantes e bomba. | 10d | 2026-08-03 A | 2026-08-14 A | 1280 | 100% |  | 2026-06-16 | 2026-06-29 | 10d |  |  |  |  |
| 1284 | 3.8.2.4.2.3 | Avaliação das rotas de fuga, ventilação de CMI e outros elementos de importância para as normas de PCI | 10d | 2026-08-03 A | 2026-08-14 A | 1280 | 100% |  | 2026-06-16 | 2026-06-29 | 10d |  |  |  |  |

| ID | WBS | Task | Duration | Start | Finish | Predecessors | Complete | Remaining | Baseline start | Baseline finish | Baseline duration | Total slack |
| --- | --- | --- | --- | --- | --- | --- | --- | --- | --- | --- | --- | --- |
| 1285 | 3.8.2.5 | **Elétrica Baixa Tensão** | 35d | 2026-06-29 A | 2026-08-14 |  | 93% | 2.56d | 2026-06-08 | 2026-07-24 | 35d | 6d |
| 1286 | 3.8.2.5.1 | **LOD 100 — Concepção** | 10d | 2026-06-29 A | 2026-07-10 A |  | 100% |  | 2026-06-08 | 2026-06-23 | 12d |  |
| 1287 | 3.8.2.5.1.1 | Avaliação e Diretrizes Técnicas para Arquitetura | 6d | 2026-06-29 A | 2026-07-06 A | 1117SS+28d | 100% |  | 2026-06-08 | 2026-06-10 | 3d |  |
| 1288 | 3.8.2.5.1.2 | Estimativa de Cargas e Demanda | 10d | 2026-06-29 A | 2026-07-10 A | 1117SS+28d | 100% |  | 2026-06-08 | 2026-06-15 | 6d |  |
| 1289 | 3.8.2.5.1.3 | Levantamento de Equipamentos de Outras Disciplinas | 3d | 2026-07-08 A | 2026-07-10 A | 1266 | 100% |  | 2026-06-17 | 2026-06-23 | 5d |  |
| 1290 | 3.8.2.5.2 | **LOD 200 — Anteprojeto** | 19d | 2026-07-13 A | 2026-08-06 A |  | 100% |  | 2026-06-24 | 2026-07-20 | 19d |  |
| 1291 | 3.8.2.5.2.1 | TUGs Estimados | 19d | 2026-07-13 A | 2026-08-06 A | 1288, 1289 | 100% |  | 2026-06-24 | 2026-07-20 | 19d |  |
| 1292 | 3.8.2.5.2.2 | Pontos de Luz Estimados | 19d | 2026-07-13 A | 2026-08-06 A | 1288, 1289 | 100% |  | 2026-06-24 | 2026-07-20 | 19d |  |
| 1293 | 3.8.2.5.2.3 | TUEs e Quadros Estimados | 19d | 2026-07-13 A | 2026-08-06 A | 1288, 1289 | 100% |  | 2026-06-24 | 2026-07-20 | 19d |  |
| 1294 | 3.8.2.5.3 | LOD 300 - Consolidação e documentação de entrega | 6d | 2026-08-07 | 2026-08-14 | 1290 |  |  | 2026-07-21 | 2026-07-24 | 4d | 6d |
| 1295 | 3.8.2.6 | **Telecom** | 35d | 2026-06-29 A | 2026-08-14 |  | 94% | 2.15d | 2026-06-08 | 2026-07-17 | 30d | 6d |
| 1296 | 3.8.2.6.1 | **LOD 100 — Concepção** | 10d | 2026-06-29 A | 2026-07-10 A |  | 100% |  | 2026-06-08 | 2026-06-15 | 6d |  |
| 1297 | 3.8.2.6.1.1 | Avaliação e Diretrizes Técnicas para Arquitetura | 10d | 2026-06-29 A | 2026-07-10 A | 1117SS+28d | 100% |  | 2026-06-08 | 2026-06-15 | 6d |  |
| 1298 | 3.8.2.6.1.2 | Estimativa de Demanda de Telecomunicações | 10d | 2026-06-29 A | 2026-07-10 A | 1117SS+28d | 100% |  | 2026-06-08 | 2026-06-15 | 6d |  |
| 1299 | 3.8.2.6.1.3 | Levantamento de Equipamentos e Interfaces com Outras Disciplinas | 10d | 2026-06-29 A | 2026-07-10 A | 1117SS+28d | 100% |  | 2026-06-08 | 2026-06-15 | 6d |  |
| 1300 | 3.8.2.6.2 | **LOD 200 — Anteprojeto** | 21d | 2026-07-13 A | 2026-08-10 A |  | 100% |  | 2026-06-16 | 2026-07-13 | 20d |  |
| 1301 | 3.8.2.6.2.1 | Pontos de Telecomunicações Estimados (Rede, Voz, CFTV e Demais Sistemas) | 10d | 2026-07-13 A | 2026-07-24 A | 1299 | 100% |  | 2026-06-16 | 2026-06-29 | 10d |  |
| 1302 | 3.8.2.6.2.2 | Racks Estimados | 10d | 2026-07-13 A | 2026-07-24 A | 1299 | 100% |  | 2026-06-16 | 2026-06-29 | 10d |  |
| 1303 | 3.8.2.6.2.3 | Infraestrutura de Telecomunicações Preliminar | 11d | 2026-07-27 A | 2026-08-10 A | 1301, 1302 | 100% |  | 2026-06-30 | 2026-07-13 | 10d |  |
| 1304 | 3.8.2.6.3 | LOD 300 - Consolidação e documentação de entrega | 4d | 2026-08-11 | 2026-08-14 | 1300 |  |  | 2026-07-14 | 2026-07-17 | 4d | 6d |
| 1305 | 3.8.2.7 | **Subestação** | 35d | 2026-06-29 A | 2026-08-14 |  | 93% | 2.41d | 2026-06-08 | 2026-07-24 | 35d | 6d |
| 1306 | 3.8.2.7.1 | **LOD 100 — Concepção** | 5d | 2026-06-29 A | 2026-07-03 A |  | 100% |  | 2026-06-08 | 2026-06-12 | 5d |  |
| 1307 | 3.8.2.7.1.1 | Avaliação e Diretrizes Técnicas para Arquitetura | 5d | 2026-06-29 A | 2026-07-03 A | 1117SS+28d | 100% |  | 2026-06-08 | 2026-06-12 | 5d |  |
| 1308 | 3.8.2.7.1.2 | Levantamento de Demanda, Perfil de Consumo e Ponto de Entrega | 5d | 2026-06-29 A | 2026-07-03 A | 1117SS+28d | 100% |  | 2026-06-08 | 2026-06-12 | 5d |  |
| 1309 | 3.8.2.7.1.3 | Estudo de Viabilidade Técnica e Atendimento ao Padrão da Concessionária | 5d | 2026-06-29 A | 2026-07-03 A | 1117SS+28d | 100% |  | 2026-06-08 | 2026-06-12 | 5d |  |

| ID | WBS | Task | Duration | Start | Finish | Predecessors | Complete | Remaining | Baseline start | Baseline finish | Baseline duration | Total slack |
| --- | --- | --- | --- | --- | --- | --- | --- | --- | --- | --- | --- | --- |
| 1310 | 3.8.2.7.2 | **LOD 200 — Anteprojeto** | 26d | 2026-07-06 A | 2026-08-10 A |  | 100% |  | 2026-06-15 | 2026-07-20 | 26d |  |
| 1311 | 3.8.2.7.2.1 | Definição do Tipo de Subestação e Arranjo Físico Preliminar | 13d | 2026-07-06 A | 2026-07-22 A | 1309 | 100% |  | 2026-06-15 | 2026-07-01 | 13d |  |
| 1312 | 3.8.2.7.2.2 | Dimensionamento Preliminar do Transformador e Equipamentos Principais | 13d | 2026-07-23 A | 2026-08-10 A | 1311 | 100% |  | 2026-07-02 | 2026-07-20 | 13d |  |
| 1313 | 3.8.2.7.2.3 | Diretrizes Preliminares de Aterramento | 13d | 2026-07-23 A | 2026-08-10 A | 1311 | 100% |  | 2026-07-02 | 2026-07-20 | 13d |  |
| 1314 | 3.8.2.7.3 | LOD 300 - Consolidação e documentação de entrega | 4d | 2026-08-11 | 2026-08-14 | 1310 |  |  | 2026-07-21 | 2026-07-24 | 4d | 6d |
| 1315 | 3.8.2.8 | **SPDA** | 35d | 2026-06-29 A | 2026-08-14 |  | 91% | 3.11d | 2026-06-08 | 2026-07-24 | 35d | 6d |
| 1316 | 3.8.2.8.1 | **LOD 100 — Concepção** | 5d | 2026-06-29 A | 2026-07-03 A |  | 100% |  | 2026-06-08 | 2026-06-12 | 5d |  |
| 1317 | 3.8.2.8.1.1 | Avaliação e Diretrizes Técnicas para Arquitetura | 5d | 2026-06-29 A | 2026-07-03 A | 1117SS+28d | 100% |  | 2026-06-08 | 2026-06-12 | 5d |  |
| 1318 | 3.8.2.8.1.2 | Coleta de Informações da Edificação e Análise de Risco (ABNT NBR 5419-2) | 5d | 2026-06-29 A | 2026-07-03 A | 1117SS+28d | 100% |  | 2026-06-08 | 2026-06-12 | 5d |  |
| 1319 | 3.8.2.8.1.3 | Estudo Preliminar de Necessidade e Nível de Proteção do SPDA | 5d | 2026-06-29 A | 2026-07-03 A | 1117SS+28d | 100% |  | 2026-06-08 | 2026-06-12 | 5d |  |
| 1320 | 3.8.2.8.2 | **LOD 200 — Anteprojeto** | 26d | 2026-07-06 A | 2026-08-10 A |  | 100% |  | 2026-06-15 | 2026-07-20 | 26d |  |
| 1321 | 3.8.2.8.2.1 | Definição da Estratégia de Proteção e Soluções Técnicas | 8d | 2026-07-06 A | 2026-07-15 A | 1319 | 100% |  | 2026-06-15 | 2026-06-24 | 8d |  |
| 1322 | 3.8.2.8.2.2 | Zoneamento de Captação, Descida e Traçados Preliminares | 8d | 2026-07-16 A | 2026-07-27 A | 1321 | 100% |  | 2026-06-25 | 2026-07-06 | 8d |  |
| 1323 | 3.8.2.8.2.3 | Estudo de Interferências, Compatibilização e Métodos Construtivos | 10d | 2026-07-28 A | 2026-08-10 A | 1322 | 100% |  | 2026-07-07 | 2026-07-20 | 10d |  |
| 1324 | 3.8.2.8.3 | LOD 300 - Consolidação e documentação de entrega | 4d | 2026-08-11 | 2026-08-14 | 1323 |  |  | 2026-07-21 | 2026-07-24 | 4d | 6d |
| 1325 | 3.8.2.9 | **Energia Renovável** | 35d | 2026-06-29 A | 2026-08-14 A |  | 100% |  | 2026-06-08 | 2026-07-17 | 30d |  |
| 1326 | 3.8.2.9.1 | **LOD 100 — Concepção** | 10d | 2026-06-29 A | 2026-07-10 A |  | 100% |  | 2026-06-08 | 2026-06-16 | 7d |  |
| 1327 | 3.8.2.9.1.1 | Viabilidade e Premissas de Geração | 10d | 2026-06-29 A | 2026-07-10 A | 1117SS+28d | 100% |  | 2026-06-08 | 2026-06-16 | 7d |  |
| 1328 | 3.8.2.9.1.2 | Levantamento Preliminar de Áreas e Sombreamento | 10d | 2026-06-29 A | 2026-07-10 A | 1117SS+28d | 100% |  | 2026-06-08 | 2026-06-16 | 7d |  |
| 1329 | 3.8.2.9.1.3 | Avaliação e Diretrizes Técnicas para Arquitetônico | 10d | 2026-06-29 A | 2026-07-10 A | 1117SS+28d | 100% |  | 2026-06-08 | 2026-06-16 | 7d |  |
| 1330 | 3.8.2.9.2 | **LOD 200 — Anteprojeto** | 21d | 2026-07-13 A | 2026-08-10 A |  | 100% |  | 2026-06-17 | 2026-07-13 | 19d |  |
| 1331 | 3.8.2.9.2.1 | Layout Preliminar de Módulos, Inversores e String Boxes | 21d | 2026-07-13 A | 2026-08-10 A | 1328 | 100% |  | 2026-06-17 | 2026-07-13 | 19d |  |
| 1332 | 3.8.2.9.2.2 | Infraestrutura e Rotas Técnicas Preliminares (DC/AC e Aterramento) | 21d | 2026-07-13 A | 2026-08-10 A | 1328 | 100% |  | 2026-06-17 | 2026-07-13 | 19d |  |
| 1333 | 3.8.2.9.2.3 | Critérios Preliminares de Proteção e Estimativa de Quantitativos | 21d | 2026-07-13 A | 2026-08-10 A | 1328 | 100% |  | 2026-06-17 | 2026-07-13 | 19d |  |
| 1334 | 3.8.2.9.3 | LOD 300 - Consolidação e documentação de entrega | 4d | 2026-08-11 A | 2026-08-14 A | 1330 | 100% |  | 2026-07-14 | 2026-07-17 | 4d |  |

| ID | WBS | Task | Duration | Start | Finish | Predecessors | Complete | Remaining | Baseline start | Baseline finish | Baseline duration | Total slack |
| --- | --- | --- | --- | --- | --- | --- | --- | --- | --- | --- | --- | --- |
| 1335 | 3.9 | **006 - Anexo Academia GM (3 blocos)** | 64d | 2026-05-19 A | 2026-08-17 |  | 94% | 4.14d | 2026-05-19 | 2026-08-17 | 0d | 5d |
| 1336 | 3.9.1 | **Arquitetura** | 28d | 2026-05-19 A | 2026-06-26 A |  | 100% |  | 2026-05-19 | 2026-06-26 | 0d |  |
| 1337 | 3.9.1.1 | **LOD 200 - ESTUDO PRELIMINAR** | 20d | 2026-05-19 A | 2026-06-16 A |  | 100% |  | 2026-05-19 | 2026-07-03 | 33d |  |
| 1338 | 3.9.1.1.1 | Modelagem das paredes | 20d | 2026-05-19 A | 2026-06-16 A | 63FS+13d | 100% |  | 2026-05-19 | 2026-07-03 | 33d |  |
| 1339 | 3.9.1.1.2 | Modelagem dos pisos | 20d | 2026-05-19 A | 2026-06-16 A | 63FS+13d | 100% |  | 2026-05-19 | 2026-07-03 | 33d |  |
| 1340 | 3.9.1.1.3 | Modelagem das lajes | 20d | 2026-05-19 A | 2026-06-16 A | 63FS+13d | 100% |  | 2026-05-19 | 2026-07-03 | 0d |  |
| 1341 | 3.9.1.1.4 | Inserção de portas | 20d | 2026-05-19 A | 2026-06-16 A | 63FS+13d | 100% |  | 2026-05-19 | 2026-07-03 | 33d |  |
| 1342 | 3.9.1.1.5 | Inserção de janelas | 20d | 2026-05-19 A | 2026-06-16 A | 63FS+13d | 100% |  | 2026-05-19 | 2026-07-03 | 33d |  |
| 1343 | 3.9.1.1.6 | Inserção de escada(s) | 20d | 2026-05-19 A | 2026-06-16 A | 63FS+13d | 100% |  | 2026-05-19 | 2026-07-03 | 33d |  |
| 1344 | 3.9.1.1.7 | Inserção de elevador(es) | 20d | 2026-05-19 A | 2026-06-16 A | 63FS+13d | 100% |  | 2026-05-19 | 2026-07-03 | 33d |  |
| 1345 | 3.9.1.1.8 | Inserção de rampa(s) | 20d | 2026-05-19 A | 2026-06-16 A | 63FS+13d | 100% |  | 2026-05-19 | 2026-07-03 | 0d |  |
| 1346 | 3.9.1.1.9 | Inserção de layout | 20d | 2026-05-19 A | 2026-06-16 A | 63FS+13d | 100% |  | 2026-05-19 | 2026-07-03 | 33d |  |
| 1347 | 3.9.1.1.10 | Identificação dos ambientes | 20d | 2026-05-19 A | 2026-06-16 A | 63FS+13d | 100% |  | 2026-05-19 | 2026-07-03 | 33d |  |
| 1348 | 3.9.1.1.11 | Espaços de circulação | 20d | 2026-05-19 A | 2026-06-16 A | 63FS+13d | 100% |  | 2026-05-19 | 2026-07-03 | 33d |  |
| 1349 | 3.9.1.1.12 | Áreas de serviços, funcionais e técnicas | 20d | 2026-05-19 A | 2026-06-16 A | 63FS+13d | 100% |  | 2026-05-19 | 2026-07-03 | 33d |  |
| 1350 | 3.9.1.1.13 | Projeção de níveis superiores e da cobertura | 20d | 2026-05-19 A | 2026-06-16 A | 63FS+13d | 100% |  | 2026-05-19 | 2026-07-03 | 33d |  |
| 1351 | 3.9.1.1.14 | Cotas de nível principais | 20d | 2026-05-19 A | 2026-06-16 A | 63FS+13d | 100% |  | 2026-05-19 | 2026-07-03 | 33d |  |
| 1352 | 3.9.1.1.15 | Relatório/Memorial de Projeto Preliminar | 5d | 2026-06-10 A | 2026-06-16 A | 1351FF | 100% |  | 2026-06-22 | 2026-07-03 | 10d |  |
| 1353 | 3.9.1.2 | **LOD 300 - ANTEPROJETO** | 8d | 2026-06-17 A | 2026-06-26 A |  | 100% |  | 2026-07-06 | 2026-07-27 | 16d |  |
| 1354 | 3.9.1.2.1 | **Situação** | 1d | 2026-06-17 A | 2026-06-17 A |  | 100% |  | 2026-07-06 | 2026-07-07 | 2d |  |
| 1355 | 3.9.1.2.1.1 | Indicar simbologias de representação gráfica, conforme NBR 6492:2021; | 1d | 2026-06-17 A | 2026-06-17 A | 1351 | 100% |  | 2026-07-06 | 2026-07-07 | 2d |  |
| 1356 | 3.9.1.2.1.2 | Indicação Norte | 1d | 2026-06-17 A | 2026-06-17 A | 1351 | 100% |  | 2026-07-06 | 2026-07-07 | 2d |  |
| 1357 | 3.9.1.2.1.3 | Analisar, adicionar e fechar - Curvas de nível existentes e projetadas (conforme projetos de topografia e sondagem recebidos); | 1d | 2026-06-17 A | 2026-06-17 A | 1351 | 100% |  | 2026-07-06 | 2026-07-07 | 2d |  |
| 1358 | 3.9.1.2.1.4 | Indicação de Escala; | 1d | 2026-06-17 A | 2026-06-17 A | 1351 | 100% |  | 2026-07-06 | 2026-07-07 | 2d |  |
| 1359 | 3.9.1.2.1.5 | Vias de acesso ao conjunto, arruamento, logradouros adjacentes e calçadas com os respectivos equipamentos urbanos; | 1d | 2026-06-17 A | 2026-06-17 A | 1351 | 100% |  | 2026-07-06 | 2026-07-07 | 2d |  |
| 1360 | 3.9.1.2.1.6 | Platôs e taludes principais; | 1d | 2026-06-17 A | 2026-06-17 A | 1351 | 100% |  | 2026-07-06 | 2026-07-07 | 2d |  |
| 1361 | 3.9.1.2.1.7 | Perímetro do terreno, recuos e afastamentos; | 1d | 2026-06-17 A | 2026-06-17 A | 1351 | 100% |  | 2026-07-06 | 2026-07-07 | 2d |  |
| 1362 | 3.9.1.2.1.8 | Indicação das áreas a serem edificadas com o contorno da cobertura das edificações, estacionamentos e áreas permeáveis/impermeáveis; | 1d | 2026-06-17 A | 2026-06-17 A | 1351 | 100% |  | 2026-07-06 | 2026-07-07 | 2d |  |
| 1363 | 3.9.1.2.1.9 | Denominação das edificações, blocos ou espaços; | 1d | 2026-06-17 A | 2026-06-17 A | 1351 | 100% |  | 2026-07-06 | 2026-07-07 | 2d |  |
| 1364 | 3.9.1.2.1.10 | Cotas gerais | 1d | 2026-06-17 A | 2026-06-17 A | 1351 | 100% |  | 2026-07-06 | 2026-07-07 | 2d |  |
| 1365 | 3.9.1.2.1.11 | Cotas de nível principal. | 1d | 2026-06-17 A | 2026-06-17 A | 1351 | 100% |  | 2026-07-06 | 2026-07-07 | 2d |  |
| 1366 | 3.9.1.2.1.12 | Quadros de áreas | 1d | 2026-06-17 A | 2026-06-17 A | 1351 | 100% |  | 2026-07-06 | 2026-07-07 | 2d |  |
| 1367 | 3.9.1.2.1.13 | Relatório | 1d | 2026-06-17 A | 2026-06-17 A | 1351 | 100% |  | 2026-07-06 | 2026-07-07 | 2d |  |
| 1368 | 3.9.1.2.2 | Planta com as cotas de nível projetadas e existentes | 1d | 2026-06-18 A | 2026-06-18 A | 1367 | 100% |  | 2026-07-08 | 2026-07-09 | 2d |  |

| ID | WBS | Task | Duration | Start | Finish | Predecessors | Complete | Baseline start | Baseline finish | Baseline duration |
| --- | --- | --- | --- | --- | --- | --- | --- | --- | --- | --- |
| 1369 | 3.9.1.2.3 | **Plantas baixas (se tiver mais de um pavimento, duplicar bloco)** | 1d | 2026-06-19 A | 2026-06-19 A |  | 100% | 2026-07-10 | 2026-07-13 | 2d |
| 1370 | 3.9.1.2.3.1 | Indicar simbologias de representação gráfica, conforme NBR 6492:2021; | 1d | 2026-06-19 A | 2026-06-19 A | 1368 | 100% | 2026-07-10 | 2026-07-13 | 2d |
| 1371 | 3.9.1.2.3.2 | Compatibilização (verificar se está tudo conforme as normas e alinhar com o restante das disciplinas de engenharia) | 1d | 2026-06-19 A | 2026-06-19 A | 1368 | 100% | 2026-07-10 | 2026-07-13 | 2d |
| 1372 | 3.9.1.2.3.3 | Compatibilização (deixar tudo conforme padrão Quanta) | 1d | 2026-06-19 A | 2026-06-19 A | 1368 | 100% | 2026-07-10 | 2026-07-13 | 2d |
| 1373 | 3.9.1.2.3.4 | Indicação de Norte; | 1d | 2026-06-19 A | 2026-06-19 A | 1368 | 100% | 2026-07-10 | 2026-07-13 | 2d |
| 1374 | 3.9.1.2.3.5 | Indicação de Escala; | 1d | 2026-06-19 A | 2026-06-19 A | 1368 | 100% | 2026-07-10 | 2026-07-13 | 2d |
| 1375 | 3.9.1.2.3.6 | Indicação de Acessos; | 1d | 2026-06-19 A | 2026-06-19 A | 1368 | 100% | 2026-07-10 | 2026-07-13 | 2d |
| 1376 | 3.9.1.2.3.7 | Elementos de vedação internos e externos; | 1d | 2026-06-19 A | 2026-06-19 A | 1368 | 100% | 2026-07-10 | 2026-07-13 | 2d |
| 1377 | 3.9.1.2.3.8 | Esquadrias; | 1d | 2026-06-19 A | 2026-06-19 A | 1368 | 100% | 2026-07-10 | 2026-07-13 | 2d |
| 1378 | 3.9.1.2.3.9 | Elementos estruturais principais; | 1d | 2026-06-19 A | 2026-06-19 A | 1368 | 100% | 2026-07-10 | 2026-07-13 | 2d |
| 1379 | 3.9.1.2.3.10 | Identificação dos ambientes e espaços (internos e externos); | 1d | 2026-06-19 A | 2026-06-19 A | 1368 | 100% | 2026-07-10 | 2026-07-13 | 2d |
| 1380 | 3.9.1.2.3.11 | Espaços de circulação internos e externos; | 1d | 2026-06-19 A | 2026-06-19 A | 1368 | 100% | 2026-07-10 | 2026-07-13 | 2d |
| 1381 | 3.9.1.2.3.12 | Áreas de serviço, funcionais e técnicas (internos e externos); | 1d | 2026-06-19 A | 2026-06-19 A | 1368 | 100% | 2026-07-10 | 2026-07-13 | 2d |
| 1382 | 3.9.1.2.3.13 | Projeções de níveis superiores; | 1d | 2026-06-19 A | 2026-06-19 A | 1368 | 100% | 2026-07-10 | 2026-07-13 | 2d |
| 1383 | 3.9.1.2.3.14 | Cotas gerais | 1d | 2026-06-19 A | 2026-06-19 A | 1368 | 100% | 2026-07-10 | 2026-07-13 | 2d |
| 1384 | 3.9.1.2.3.15 | Cotas de nível principal. | 1d | 2026-06-19 A | 2026-06-19 A | 1368 | 100% | 2026-07-10 | 2026-07-13 | 2d |
| 1385 | 3.9.1.2.3.16 | Tabelas de paredes, pisos, esquadrias e plantas | 1d | 2026-06-19 A | 2026-06-19 A | 1368 | 100% | 2026-07-10 | 2026-07-13 | 2d |
| 1386 | 3.9.1.2.3.17 | Quadro de áreas | 1d | 2026-06-19 A | 2026-06-19 A | 1368 | 100% | 2026-07-10 | 2026-07-13 | 2d |
| 1387 | 3.9.1.2.3.18 | Relatório | 1d | 2026-06-19 A | 2026-06-19 A | 1368 | 100% | 2026-07-10 | 2026-07-13 | 2d |
| 1388 | 3.9.1.2.4 | **Planta das coberturas** | 1d | 2026-06-22 A | 2026-06-22 A |  | 100% | 2026-07-14 | 2026-07-15 | 2d |
| 1389 | 3.9.1.2.4.1 | Indicação do Norte | 1d | 2026-06-22 A | 2026-06-22 A | 1386 | 100% | 2026-07-14 | 2026-07-15 | 2d |
| 1390 | 3.9.1.2.4.2 | Indicação de escala | 1d | 2026-06-22 A | 2026-06-22 A | 1386 | 100% | 2026-07-14 | 2026-07-15 | 2d |
| 1391 | 3.9.1.2.4.3 | Curvas de nível | 1d | 2026-06-22 A | 2026-06-22 A | 1386 | 100% | 2026-07-14 | 2026-07-15 | 2d |
| 1392 | 3.9.1.2.4.4 | Indicação de Acessos; | 1d | 2026-06-22 A | 2026-06-22 A | 1386 | 100% | 2026-07-14 | 2026-07-15 | 2d |
| 1393 | 3.9.1.2.4.5 | Estacionamento e áreas cobertas | 1d | 2026-06-22 A | 2026-06-22 A | 1386 | 100% | 2026-07-14 | 2026-07-15 | 2d |
| 1394 | 3.9.1.2.4.6 | Cobertura das edificações | 1d | 2026-06-22 A | 2026-06-22 A | 1386 | 100% | 2026-07-14 | 2026-07-15 | 2d |
| 1395 | 3.9.1.2.4.7 | Sentido de escoamento das águas pluviais e inclinação | 1d | 2026-06-22 A | 2026-06-22 A | 1386 | 100% | 2026-07-14 | 2026-07-15 | 2d |
| 1396 | 3.9.1.2.4.8 | Cotas gerais | 1d | 2026-06-22 A | 2026-06-22 A | 1386 | 100% | 2026-07-14 | 2026-07-15 | 2d |
| 1397 | 3.9.1.2.4.9 | Cotas de nível principal | 1d | 2026-06-22 A | 2026-06-22 A | 1386 | 100% | 2026-07-14 | 2026-07-15 | 2d |
| 1398 | 3.9.1.2.4.10 | Relatório | 1d | 2026-06-22 A | 2026-06-22 A | 1386 | 100% | 2026-07-14 | 2026-07-15 | 2d |

| ID | WBS | Task | Duration | Start | Finish | Predecessors | Complete | Baseline start | Baseline finish | Baseline duration |
| --- | --- | --- | --- | --- | --- | --- | --- | --- | --- | --- |
| 1399 | 3.9.1.2.5 | **Cortes longitudinais** | 1d | 2026-06-23 A | 2026-06-23 A |  | 100% | 2026-07-16 | 2026-07-17 | 2d |
| 1400 | 3.9.1.2.5.1 | Indicar simbologias de representação gráfica, conforme NBR 6492:2021; | 1d | 2026-06-23 A | 2026-06-23 A | 1397 | 100% | 2026-07-16 | 2026-07-17 | 2d |
| 1401 | 3.9.1.2.5.2 | Indicação de Escala; | 1d | 2026-06-23 A | 2026-06-23 A | 1397 | 100% | 2026-07-16 | 2026-07-17 | 2d |
| 1402 | 3.9.1.2.5.3 | Elementos estruturais principais; | 1d | 2026-06-23 A | 2026-06-23 A | 1397 | 100% | 2026-07-16 | 2026-07-17 | 2d |
| 1403 | 3.9.1.2.5.4 | Elementos de vedação internos e externos; | 1d | 2026-06-23 A | 2026-06-23 A | 1397 | 100% | 2026-07-16 | 2026-07-17 | 2d |
| 1404 | 3.9.1.2.5.5 | Esquadrias; | 1d | 2026-06-23 A | 2026-06-23 A | 1397 | 100% | 2026-07-16 | 2026-07-17 | 2d |
| 1405 | 3.9.1.2.5.6 | Identificação dos ambientes; | 1d | 2026-06-23 A | 2026-06-23 A | 1397 | 100% | 2026-07-16 | 2026-07-17 | 2d |
| 1406 | 3.9.1.2.5.7 | Cobertura com indicação da respectiva inclinação; | 1d | 2026-06-23 A | 2026-06-23 A | 1397 | 100% | 2026-07-16 | 2026-07-17 | 2d |
| 1407 | 3.9.1.2.5.8 | Cotas gerais; | 1d | 2026-06-23 A | 2026-06-23 A | 1397 | 100% | 2026-07-16 | 2026-07-17 | 2d |
| 1408 | 3.9.1.2.5.9 | Cotas de nível principal; | 1d | 2026-06-23 A | 2026-06-23 A | 1397 | 100% | 2026-07-16 | 2026-07-17 | 2d |
| 1409 | 3.9.1.2.5.10 | Eixos do projeto; | 1d | 2026-06-23 A | 2026-06-23 A | 1397 | 100% | 2026-07-16 | 2026-07-17 | 2d |
| 1410 | 3.9.1.2.5.11 | Relevo construído; | 1d | 2026-06-23 A | 2026-06-23 A | 1397 | 100% | 2026-07-16 | 2026-07-17 | 2d |
| 1411 | 3.9.1.2.5.12 | Projeção da topografia natural. | 1d | 2026-06-23 A | 2026-06-23 A | 1397 | 100% | 2026-07-16 | 2026-07-17 | 2d |
| 1412 | 3.9.1.2.5.13 | Relatório | 1d | 2026-06-23 A | 2026-06-23 A | 1397 | 100% | 2026-07-16 | 2026-07-17 | 2d |
| 1413 | 3.9.1.2.6 | **Cortes transversais** | 1d | 2026-06-24 A | 2026-06-24 A |  | 100% | 2026-07-20 | 2026-07-21 | 2d |
| 1414 | 3.9.1.2.6.1 | Indicar simbologias de representação gráfica, conforme NBR 6492:2021; | 1d | 2026-06-24 A | 2026-06-24 A | 1411 | 100% | 2026-07-20 | 2026-07-21 | 2d |
| 1415 | 3.9.1.2.6.2 | Indicação de Escala; | 1d | 2026-06-24 A | 2026-06-24 A | 1411 | 100% | 2026-07-20 | 2026-07-21 | 2d |
| 1416 | 3.9.1.2.6.3 | Elementos estruturais principais; | 1d | 2026-06-24 A | 2026-06-24 A | 1411 | 100% | 2026-07-20 | 2026-07-21 | 2d |
| 1417 | 3.9.1.2.6.4 | Elementos de vedação internos e externos; | 1d | 2026-06-24 A | 2026-06-24 A | 1411 | 100% | 2026-07-20 | 2026-07-21 | 2d |
| 1418 | 3.9.1.2.6.5 | Esquadrias; | 1d | 2026-06-24 A | 2026-06-24 A | 1411 | 100% | 2026-07-20 | 2026-07-21 | 2d |
| 1419 | 3.9.1.2.6.6 | Identificação dos ambientes; | 1d | 2026-06-24 A | 2026-06-24 A | 1411 | 100% | 2026-07-20 | 2026-07-21 | 2d |
| 1420 | 3.9.1.2.6.7 | Cobertura com indicação da respectiva inclinação; | 1d | 2026-06-24 A | 2026-06-24 A | 1411 | 100% | 2026-07-20 | 2026-07-21 | 2d |
| 1421 | 3.9.1.2.6.8 | Cotas gerais; | 1d | 2026-06-24 A | 2026-06-24 A | 1411 | 100% | 2026-07-20 | 2026-07-21 | 2d |
| 1422 | 3.9.1.2.6.9 | Cotas de nível principal; | 1d | 2026-06-24 A | 2026-06-24 A | 1411 | 100% | 2026-07-20 | 2026-07-21 | 2d |
| 1423 | 3.9.1.2.6.10 | Eixos do projeto; | 1d | 2026-06-24 A | 2026-06-24 A | 1411 | 100% | 2026-07-20 | 2026-07-21 | 2d |
| 1424 | 3.9.1.2.6.11 | Relevo construído; | 1d | 2026-06-24 A | 2026-06-24 A | 1411 | 100% | 2026-07-20 | 2026-07-21 | 2d |
| 1425 | 3.9.1.2.6.12 | Projeção da topografia natural | 1d | 2026-06-24 A | 2026-06-24 A | 1411 | 100% | 2026-07-20 | 2026-07-21 | 2d |
| 1426 | 3.9.1.2.6.13 | Relatório | 1d | 2026-06-24 A | 2026-06-24 A | 1411 | 100% | 2026-07-20 | 2026-07-21 | 2d |

| ID | WBS | Task | Duration | Start | Finish | Predecessors | Complete | Remaining | Baseline start | Baseline finish | Baseline duration | Total slack |
| --- | --- | --- | --- | --- | --- | --- | --- | --- | --- | --- | --- | --- |
| 1427 | 3.9.1.2.7 | **Elevações** | 1d | 2026-06-25 A | 2026-06-25 A |  | 100% |  | 2026-07-22 | 2026-07-23 | 2d |  |
| 1428 | 3.9.1.2.7.1 | Indicar simbologias de representação gráfica, conforme NBR 6492:2021; | 1d | 2026-06-25 A | 2026-06-25 A | 1425 | 100% |  | 2026-07-22 | 2026-07-23 | 2d |  |
| 1429 | 3.9.1.2.7.2 | Indicação de Escala; | 1d | 2026-06-25 A | 2026-06-25 A | 1425 | 100% |  | 2026-07-22 | 2026-07-23 | 2d |  |
| 1430 | 3.9.1.2.7.3 | Elementos estruturais principais; | 1d | 2026-06-25 A | 2026-06-25 A | 1425 | 100% |  | 2026-07-22 | 2026-07-23 | 2d |  |
| 1431 | 3.9.1.2.7.4 | Elementos de vedação internos e externos; | 1d | 2026-06-25 A | 2026-06-25 A | 1425 | 100% |  | 2026-07-22 | 2026-07-23 | 2d |  |
| 1432 | 3.9.1.2.7.5 | Esquadrias; | 1d | 2026-06-25 A | 2026-06-25 A | 1425 | 100% |  | 2026-07-22 | 2026-07-23 | 2d |  |
| 1433 | 3.9.1.2.7.6 | Relevo construído; | 1d | 2026-06-25 A | 2026-06-25 A | 1425 | 100% |  | 2026-07-22 | 2026-07-23 | 2d |  |
| 1434 | 3.9.1.2.7.7 | Cotas gerais; | 1d | 2026-06-25 A | 2026-06-25 A | 1425 | 100% |  | 2026-07-22 | 2026-07-23 | 2d |  |
| 1435 | 3.9.1.2.7.8 | Cotas de nível principais; | 1d | 2026-06-25 A | 2026-06-25 A | 1425 | 100% |  | 2026-07-22 | 2026-07-23 | 2d |  |
| 1436 | 3.9.1.2.7.9 | Cobertura (quando aparente). | 1d | 2026-06-25 A | 2026-06-25 A | 1425 | 100% |  | 2026-07-22 | 2026-07-23 | 2d |  |
| 1437 | 3.9.1.2.8 | **Memorial Descritivo** | 1d | 2026-06-26 A | 2026-06-26 A |  | 100% |  | 2026-07-24 | 2026-07-27 | 2d |  |
| 1438 | 3.9.1.2.8.1 | Descrição dos elementos da edificação | 1d | 2026-06-26 A | 2026-06-26 A | 1436 | 100% |  | 2026-07-24 | 2026-07-27 | 2d |  |
| 1439 | 3.9.1.2.8.2 | Descrição dos componentes construtivos e materiais de construção | 1d | 2026-06-26 A | 2026-06-26 A | 1436 | 100% |  | 2026-07-24 | 2026-07-27 | 2d |  |
| 1440 | 3.9.1.2.8.3 | Lista de pranchas anexas e documentos | 1d | 2026-06-26 A | 2026-06-26 A | 1436 | 100% |  | 2026-07-24 | 2026-07-27 | 2d |  |
| 1441 | 3.9.2 | **Engenharia** | 36d | 2026-06-26 A | 2026-08-17 |  | 90% | 3.42d | 2026-06-08 | 2026-07-24 | 35d | 5d |
| 1442 | 3.9.2.1 | **Estrutura** | 36d | 2026-06-29 A | 2026-08-17 |  | 61% | 13.97d | 2026-06-08 | 2026-07-24 | 35d | 5d |
| 1443 | 3.9.2.1.1 | **LOD 100 — Premissas, diretrizes e interfaces** | 7d | 2026-06-29 A | 2026-07-07 A |  | 100% |  | 2026-06-08 | 2026-06-16 | 7d |  |
| 1444 | 3.9.2.1.1.1 | Levantamento de tipos de cargas globais estimadas (permanentes, acidentais, vento e especiais). | 2d | 2026-06-29 A | 2026-06-30 A | 1351SS+28d | 100% |  | 2026-06-08 | 2026-06-09 | 2d |  |
| 1445 | 3.9.2.1.1.2 | Estudo volumétrico com modulação inicial de pilares, vigas e lajes. Entendendo vãos e desafios | 5d | 2026-06-29 A | 2026-07-03 A | 1351SS+28d | 100% |  | 2026-06-08 | 2026-06-09 | 2d |  |
| 1446 | 3.9.2.1.1.3 | Localização aproximada de elementos estruturais principais. Avaliando vãos e estudando posições | 2d | 2026-06-29 A | 2026-06-30 A | 1351SS+28d | 100% |  | 2026-06-08 | 2026-06-09 | 2d |  |
| 1447 | 3.9.2.1.1.4 | Estudo de viabilidade técnica e construtiva. | 3d | 2026-07-01 A | 2026-07-03 A | 1446 | 100% |  | 2026-06-10 | 2026-06-12 | 3d |  |
| 1448 | 3.9.2.1.1.5 | Definição preliminar do sistema estrutural (concreto armado, metálica ou mista). | 3d | 2026-07-01 A | 2026-07-03 A | 1446 | 100% |  | 2026-06-10 | 2026-06-12 | 3d |  |
| 1449 | 3.9.2.1.1.6 | Estimativa preliminar de tipologias de fundações (sapatas, blocos, estacas). | 2d | 2026-07-06 A | 2026-07-07 A | 1447 | 100% |  | 2026-06-15 | 2026-06-16 | 2d |  |
| 1450 | 3.9.2.1.1.7 | Previsão de áreas técnicas, casas de máquinas, reservatórios elevados e estrutura de cobertura. | 2d | 2026-07-06 A | 2026-07-07 A | 1447 | 100% |  | 2026-06-15 | 2026-06-16 | 2d |  |

| ID | WBS | Task | Duration | Start | Finish | Predecessors | Complete | Remaining | Baseline start | Baseline finish | Baseline duration | Total slack |
| --- | --- | --- | --- | --- | --- | --- | --- | --- | --- | --- | --- | --- |
| 1451 | 3.9.2.1.2 | **LOD 200 — Validação interdisciplinar e solução preliminar** | 23d | 2026-07-08 A | 2026-08-07 A |  | 100% |  | 2026-06-17 | 2026-07-14 | 20d |  |
| 1452 | 3.9.2.1.2.1 | Lista preliminar de cargas e ações para dimensionamento. | 5d | 2026-07-08 A | 2026-07-14 A | 1450 | 100% |  | 2026-06-17 | 2026-06-23 | 5d |  |
| 1453 | 3.9.2.1.2.2 | Definição preliminar de alturas de pavimentos e níveis de fundação. | 5d | 2026-07-08 A | 2026-07-14 A | 1450 | 100% |  | 2026-06-17 | 2026-06-23 | 5d |  |
| 1454 | 3.9.2.1.2.3 | Indicação aproximada do sistema de cobertura (tesouras, treliças, vigamento metálico ou concreto). | 5d | 2026-07-08 A | 2026-07-14 A | 1450 | 100% |  | 2026-06-17 | 2026-06-23 | 5d |  |
| 1455 | 3.9.2.1.2.4 | Modelagem genérica de pilares, vigas, lajes e fundações. | 5d | 2026-07-15 A | 2026-07-21 A | 1452 | 100% |  | 2026-06-24 | 2026-06-30 | 5d |  |
| 1456 | 3.9.2.1.2.5 | Traçado preliminar de elementos especiais (escadas, rampas estruturais, reservatórios). | 5d | 2026-07-15 A | 2026-07-21 A | 1452 | 100% |  | 2026-06-24 | 2026-06-30 | 5d |  |
| 1457 | 3.9.2.1.2.6 | Arquivo IFC, plantas de forma e planta de locação | 5d | 2026-07-15 A | 2026-07-21 A | 1452 | 100% |  | 2026-06-24 | 2026-06-30 | 5d |  |
| 1458 | 3.9.2.1.2.7 | Inserção de fundações com tipologia e dimensões preliminares. | 5d | 2026-07-22 A | 2026-07-28 A | 1456 | 100% |  | 2026-07-01 | 2026-07-07 | 5d |  |
| 1459 | 3.9.2.1.2.8 | Compatibilização inicial com arquitetura e demais disciplinas. | 5d | 2026-07-22 A | 2026-07-28 A | 1457 | 100% |  | 2026-07-01 | 2026-07-07 | 5d |  |
| 1460 | 3.9.2.1.2.9 | Indicação de passagens de infraestrutura (shafts, aberturas em lajes e vigas). | 5d | 2026-07-22 A | 2026-07-28 A | 1457 | 100% |  | 2026-07-01 | 2026-07-07 | 5d |  |
| 1461 | 3.9.2.1.2.10 | Modelagem assertiva de elementos principais com dimensões aproximadas (largura, altura, espessura). | 13d | 2026-07-22 A | 2026-08-07 A | 1457 | 100% |  | 2026-07-01 | 2026-07-14 | 10d |  |
| 1462 | 3.9.2.1.2.11 | Modelagem estimada de armaduras principais (em nível de concepção). | 5d | 2026-07-22 A | 2026-07-28 A | 1457 | 100% |  | 2026-07-01 | 2026-07-07 | 5d |  |
| 1463 | 3.9.2.1.3 | **LOD 300 - Consolidação e documentação de entrega** | 6d | 2026-08-10 | 2026-08-17 |  |  |  | 2026-07-15 | 2026-07-24 | 8d | 5d |
| 1464 | 3.9.2.1.3.1 | Indicação de níveis e cotas exatas. | 5d | 2026-08-10 | 2026-08-14 | 1461, 1462 |  |  | 2026-07-15 | 2026-07-24 | 8d | 6d |
| 1465 | 3.9.2.1.3.2 | Quadro de cargas atualizado. | 5d | 2026-08-10 | 2026-08-14 | 1461, 1462 |  |  | 2026-07-15 | 2026-07-24 | 8d | 6d |
| 1466 | 3.9.2.1.3.3 | Dimensionamento final de fundações conforme sondagem e cálculo estrutural. | 5d | 2026-08-10 | 2026-08-14 | 1461, 1462 |  |  | 2026-07-15 | 2026-07-24 | 8d | 6d |
| 1467 | 3.9.2.1.3.4 | Definição final dos elementos da cobertura (treliças, vigas, chapas, purlins). | 5d | 2026-08-10 | 2026-08-14 | 1461, 1462 |  |  | 2026-07-15 | 2026-07-24 | 8d | 6d |
| 1468 | 3.9.2.1.3.5 | Compatibilização final com arquitetura e instalações (aberturas, embutidos e passagens). | 5d | 2026-08-10 | 2026-08-14 | 1461, 1462 |  |  | 2026-07-15 | 2026-07-24 | 8d | 6d |
| 1469 | 3.9.2.1.3.6 | Modelagem definitiva de pilares, vigas, lajes, blocos, sapatas e estacas. | 5d | 2026-08-10 | 2026-08-14 | 1461, 1462 |  |  | 2026-07-15 | 2026-07-24 | 8d | 6d |
| 1470 | 3.9.2.1.3.7 | Planta estrutural com todos os elementos identificados. | 5d | 2026-08-10 | 2026-08-14 | 1461, 1462 |  |  | 2026-07-15 | 2026-07-24 | 8d | 6d |
| 1471 | 3.9.2.1.3.8 | Memorial descritivo contendo: objetivos, justificativa, descrição do sistema, concepção de fundações/cobertura, especificações e quadro de cargas. | 6d | 2026-08-10 | 2026-08-17 | 1461, 1462 |  |  | 2026-07-15 | 2026-07-24 | 8d | 5d |
| 1472 | 3.9.2.1.3.9 | Normas técnicas utilizadas (NBR 6118, 6120, 6122, 8800, etc.). | 5d | 2026-08-10 | 2026-08-14 | 1461, 1462 |  |  | 2026-07-15 | 2026-07-24 | 8d | 6d |
| 1473 | 3.9.2.1.3.10 | Consolidar documentação de entrega e emissão formal da disciplina | 6d | 2026-08-10 | 2026-08-17 | 1461, 1462 |  |  | 2026-07-15 | 2026-07-24 | 8d | 5d |
| 1474 | 3.9.2.2 | **Hidrossanitário** | 36d | 2026-06-29 A | 2026-08-17 |  | 99% | 0.42d | 2026-06-08 | 2026-07-24 | 35d | 5d |
| 1475 | 3.9.2.2.1 | **LOD 100 — Premissas, diretrizes e interfaces** | 11d | 2026-06-29 A | 2026-07-13 A |  | 100% |  | 2026-06-08 | 2026-06-16 | 7d |  |
| 1476 | 3.9.2.2.1.1 | Memorial preliminar | 10d | 2026-06-29 A | 2026-07-10 A | 1351SS+28d | 100% |  | 2026-06-08 | 2026-06-09 | 2d |  |
| 1477 | 3.9.2.2.1.2 | Indicação de áreas técnicas | 6d | 2026-06-29 A | 2026-07-06 A | 1351SS+28d | 100% |  | 2026-06-10 | 2026-06-12 | 3d |  |
| 1478 | 3.9.2.2.1.3 | Planta baixa com traçado conceitual | 6d | 2026-07-06 A | 2026-07-13 A | 1445 | 100% |  | 2026-06-10 | 2026-06-12 | 3d |  |
| 1479 | 3.9.2.2.1.4 | Pontos de consumo principais e coletas sanitárias | 6d | 2026-07-06 A | 2026-07-13 A | 1445 | 100% |  | 2026-06-10 | 2026-06-16 | 5d |  |
| 1480 | 3.9.2.2.1.5 | Classificação de uso | 10d | 2026-06-30 A | 2026-07-13 A | 1479FF | 100% |  | 2026-06-08 | 2026-06-16 | 7d |  |
| 1481 | 3.9.2.2.1.6 | Diretrizes de espaço | 10d | 2026-06-30 A | 2026-07-13 A | 1479FF | 100% |  | 2026-06-08 | 2026-06-16 | 7d |  |
| 1482 | 3.9.2.2.1.7 | Estimativa de demanda ou população de uso | 10d | 2026-06-30 A | 2026-07-13 A | 1479FF | 100% |  | 2026-06-08 | 2026-06-16 | 7d |  |
| 1483 | 3.9.2.2.1.8 | Levantamento de elementos especiais dentre outras disciplinas de Engenharia e Arquitetura | 10d | 2026-06-30 A | 2026-07-13 A | 1479FF | 100% |  | 2026-06-08 | 2026-06-16 | 7d |  |

| ID | WBS | Task | Duration | Start | Finish | Predecessors | Complete | Remaining | Baseline start | Baseline finish | Baseline duration | Total slack | Free slack | Constraint |
| --- | --- | --- | --- | --- | --- | --- | --- | --- | --- | --- | --- | --- | --- | --- |
| 1484 | 3.9.2.2.2 | **LOD 200 — Validação interdisciplinar e solução preliminar** | 12d | 2026-07-14 A | 2026-07-29 A |  | 100% |  | 2026-06-17 | 2026-07-14 | 20d |  |  |  |
| 1485 | 3.9.2.2.2.1 | Critérios normativos adotados (ABNT, concessionárias, etc.) | 12d | 2026-07-14 A | 2026-07-29 A | 1483 | 100% |  | 2026-06-17 | 2026-07-14 | 20d |  |  |  |
| 1486 | 3.9.2.2.2.2 | Informações de demanda na concessionária (DPE ou AVT Aviso de Viabilidade Técnica) | 12d | 2026-07-14 A | 2026-07-29 A | 1485SS, 23, 27 | 100% |  | 2026-06-17 | 2026-07-14 | 20d |  |  |  |
| 1487 | 3.9.2.2.2.3 | Recebimento e Análise de Sondagem (permeabilidade ou percolação) | 12d | 2026-07-14 A | 2026-07-29 A | 1485SS, 23, 27 | 100% |  | 2026-06-17 | 2026-07-14 | 20d |  |  |  |
| 1488 | 3.9.2.2.2.4 | Recebimento e Análise de Topografia | 12d | 2026-07-14 A | 2026-07-29 A | 1485SS, 23, 27 | 100% |  | 2026-06-17 | 2026-07-14 | 20d |  |  |  |
| 1489 | 3.9.2.2.2.5 | Estudo de viabilidade técnica, econômica e ambiental | 12d | 2026-07-14 A | 2026-07-29 A | 1485SS | 100% |  | 2026-06-17 | 2026-07-14 | 20d |  |  |  |
| 1490 | 3.9.2.2.2.6 | Lista preliminar de sistemas envolvidos. | 12d | 2026-07-14 A | 2026-07-29 A | 1483 | 100% |  | 2026-06-17 | 2026-07-14 | 20d |  |  |  |
| 1491 | 3.9.2.2.2.7 | Planta baixa e cortes estimada contendo: - Traçado preliminar de barrilete, ramais, colunas - Diâmetros estimados - Localização aproximada das bombas e unidades de tratamento e reúso - Localização do ramal predial de água e esgoto - Localização aproximada | 12d | 2026-07-14 A | 2026-07-29 A | 1483 | 100% |  | 2026-06-17 | 2026-07-14 | 20d |  |  |  |
| 1492 | 3.9.2.2.3 | **LOD 300 - Consolidação e documentação de entrega** | 14d | 2026-07-29 A | 2026-08-17 |  | 90% | 1.4d | 2026-07-15 | 2026-07-24 | 8d | 5d |  |  |
| 1493 | 3.9.2.2.3.1 | Planta, corte e detalhe isométrico contendo: - Modelagem detalhada com diâmetros, cotas e inclinações definitivas (barriletes, colunas, ramais) - Quantitativos e especificação técnica dos materiais (tubos, conexões, reservatórios, registros e válvulas com | 14d | 2026-07-29 A | 2026-08-17 | 1491FS-1d | 95% | 0.67d | 2026-07-15 | 2026-07-24 | 8d | 5d | 0d |  |
| 1494 | 3.9.2.2.3.2 | Memorial descritivo | 3d | 2026-08-13 A | 2026-08-17 | 1493FF | 78% | 0.67d | 2026-07-22 | 2026-07-24 | 3d | 5d |  |  |
| 1495 | 3.9.2.2.3.3 | Memória de cálculo (pressão, vazão, diâmetros, perda de carga). | 3d | 2026-08-13 A | 2026-08-17 | 1493FF, 1491 | 78% | 0.67d | 2026-07-22 | 2026-07-24 | 3d | 5d |  |  |
| 1496 | 3.9.2.3 | **AVAC** | 35d | 2026-06-29 A | 2026-08-14 |  | 97% | 1.06d | 2026-06-08 | 2026-07-24 | 35d | 6d |  |  |
| 1497 | 3.9.2.3.1 | **LOD 100 — Premissas, diretrizes e interfaces** | 20d | 2026-06-29 A | 2026-07-24 A |  | 100% |  | 2026-06-08 | 2026-06-24 | 13d |  |  |  |
| 1498 | 3.9.2.3.1.1 | Estimativa de carga térmica por ambiente. | 10d | 2026-06-29 A | 2026-07-10 A | 1351SS+28d | 100% |  | 2026-06-08 | 2026-06-16 | 7d |  |  |  |
| 1499 | 3.9.2.3.1.2 | Localização preliminar de unidades de tratamento de ar, condensadoras e exaustores. | 10d | 2026-06-29 A | 2026-07-10 A | 1351SS+28d | 100% |  | 2026-06-08 | 2026-06-16 | 7d |  |  |  |
| 1500 | 3.9.2.3.1.3 | Pontos locação para seus elementos no projeto arquitetônico. | 10d | 2026-06-29 A | 2026-07-10 A | 1351SS+28d | 100% |  | 2026-06-08 | 2026-06-16 | 7d |  |  |  |
| 1501 | 3.9.2.3.1.4 | Estudo de viabilidade e rotas principais de distribuição de ar. | 10d | 2026-06-29 A | 2026-07-10 A | 1351SS+28d | 100% |  | 2026-06-08 | 2026-06-16 | 7d |  |  |  |
| 1502 | 3.9.2.3.1.5 | Reserva de espaços técnicos e shafts. | 10d | 2026-06-29 A | 2026-07-10 A | 1351SS+28d | 100% |  | 2026-06-08 | 2026-06-16 | 7d |  |  |  |
| 1503 | 3.9.2.3.1.6 | Levantamento de cargas especiais provenientes de outras disciplinas. | 10d | 2026-07-13 A | 2026-07-24 A | 1351SS+28d, 1522, 1532 | 100% |  | 2026-06-16 | 2026-06-24 | 7d |  |  |  |
| 1504 | 3.9.2.3.2 | **LOD 200 — Validação interdisciplinar e solução preliminar** | 25d | 2026-07-13 A | 2026-08-14 A |  | 100% |  | 2026-06-17 | 2026-07-24 | 28d |  |  |  |
| 1505 | 3.9.2.3.2.1 | Lista preliminar de sistemas HVAC envolvidos (expansão direta, VRF, chillers, ventilação, exaustão). | 25d | 2026-07-13 A | 2026-08-14 A | 1502 | 100% |  | 2026-06-17 | 2026-07-24 | 28d |  |  |  |
| 1506 | 3.9.2.3.2.2 | Planta baixa estimada contendo: pontos de insuflamento e retorno. | 25d | 2026-07-13 A | 2026-08-14 A | 1502 | 100% |  | 2026-06-17 | 2026-07-24 | 28d |  |  |  |
| 1507 | 3.9.2.3.2.3 | Rotas iniciais de dutos, tubulações e drenos. | 25d | 2026-07-13 A | 2026-08-14 A | 1502 | 100% |  | 2026-06-17 | 2026-07-24 | 28d |  |  |  |
| 1508 | 3.9.2.3.2.4 | Planta baixa estimada contendo: unidades internas e externas com posição preliminar. | 25d | 2026-07-13 A | 2026-08-14 A | 1502 | 100% |  | 2026-06-17 | 2026-07-24 | 28d |  |  |  |
| 1509 | 3.9.2.3.3 | Desenhos conforme IBRAOP | 5d | 2026-08-10 | 2026-08-14 |  |  |  | 2026-07-27 | 2026-07-27 | 0d | 6d |  | start no earlier than 2026-08-10 |

| ID | WBS | Task | Duration | Start | Finish | Predecessors | Complete | Remaining | Baseline start | Baseline finish | Baseline duration | Total slack | Text3 |
| --- | --- | --- | --- | --- | --- | --- | --- | --- | --- | --- | --- | --- | --- |
| 1510 | 3.9.2.4 | **PCI (Incêndio)** | 20d | 2026-07-20 A | 2026-08-14 A |  | 100% |  | 2026-06-08 | 2026-06-29 | 16d |  |  |
| 1511 | 3.9.2.4.1 | **LOD 100 — Premissas, diretrizes e interfaces** | 10d | 2026-07-20 A | 2026-07-31 A |  | 100% |  | 2026-06-08 | 2026-06-15 | 6d |  | ܁# |
| 1512 | 3.9.2.4.1.1 | Estudo e avaliação da arquitetura atendendo as normas competentes de PCI | 10d | 2026-07-20 A | 2026-07-31 A | 1351SS+43d | 100% |  | 2026-06-08 | 2026-06-15 | 6d |  |  |
| 1513 | 3.9.2.4.1.2 | Avaliação do espaço para CMI e Central de Gás. | 10d | 2026-07-20 A | 2026-07-31 A | 1351SS+43d | 100% |  | 2026-06-08 | 2026-06-15 | 6d |  |  |
| 1514 | 3.9.2.4.1.3 | Pontos locação para seus elementos no projeto arquitetônico | 10d | 2026-07-20 A | 2026-07-31 A | 1351SS+43d | 100% |  | 2026-06-08 | 2026-06-15 | 6d |  |  |
| 1515 | 3.9.2.4.2 | **LOD 200 — Validação interdisciplinar e solução preliminar** | 10d | 2026-08-03 A | 2026-08-14 A |  | 100% |  | 2026-06-16 | 2026-06-29 | 10d |  | ܁# |
| 1516 | 3.9.2.4.2.1 | Definição da classificação da edificação e o risco de incêndio | 10d | 2026-08-03 A | 2026-08-14 A | 1514 | 100% |  | 2026-06-16 | 2026-06-29 | 10d |  |  |
| 1517 | 3.9.2.4.2.2 | Cálculos pré-dimensionados dos extintores, hidrantes e bomba. | 10d | 2026-08-03 A | 2026-08-14 A | 1514 | 100% |  | 2026-06-16 | 2026-06-29 | 10d |  |  |
| 1518 | 3.9.2.4.2.3 | Avaliação das rotas de fuga, ventilação de CMI e outros elementos de importância para as normas de PCI | 10d | 2026-08-03 A | 2026-08-14 A | 1514 | 100% |  | 2026-06-16 | 2026-06-29 | 10d |  |  |
| 1519 | 3.9.2.5 | **Elétrica Baixa Tensão** | 35d | 2026-06-29 A | 2026-08-14 |  | 96% | 1.33d | 2026-06-08 | 2026-07-24 | 35d | 6d |  |
| 1520 | 3.9.2.5.1 | **LOD 100 — Concepção** | 13d | 2026-06-29 A | 2026-07-15 A |  | 100% |  | 2026-06-08 | 2026-06-23 | 12d |  |  |
| 1521 | 3.9.2.5.1.1 | Avaliação e Diretrizes Técnicas para Arquitetura | 6d | 2026-06-29 A | 2026-07-06 A | 1351SS+28d | 100% |  | 2026-06-08 | 2026-06-10 | 3d |  |  |
| 1522 | 3.9.2.5.1.2 | Estimativa de Cargas e Demanda | 10d | 2026-06-29 A | 2026-07-10 A | 1351SS+28d | 100% |  | 2026-06-08 | 2026-06-15 | 6d |  |  |
| 1523 | 3.9.2.5.1.3 | Levantamento de Equipamentos de Outras Disciplinas | 3d | 2026-07-13 A | 2026-07-15 A | 1500, 1514 | 100% |  | 2026-06-17 | 2026-06-23 | 5d |  |  |
| 1524 | 3.9.2.5.2 | **LOD 200 — Anteprojeto** | 19d | 2026-07-16 A | 2026-08-11 A |  | 100% |  | 2026-06-24 | 2026-07-20 | 19d |  |  |
| 1525 | 3.9.2.5.2.1 | TUGs Estimados | 19d | 2026-07-16 A | 2026-08-11 A | 1522, 1523 | 100% |  | 2026-06-24 | 2026-07-20 | 19d |  |  |
| 1526 | 3.9.2.5.2.2 | Pontos de Luz Estimados | 19d | 2026-07-16 A | 2026-08-11 A | 1522, 1523 | 100% |  | 2026-06-24 | 2026-07-20 | 19d |  |  |
| 1527 | 3.9.2.5.2.3 | TUEs e Quadros Estimados | 19d | 2026-07-16 A | 2026-08-11 A | 1522, 1523 | 100% |  | 2026-06-24 | 2026-07-20 | 19d |  |  |
| 1528 | 3.9.2.5.3 | LOD 300 - Consolidação e documentação de entrega | 3d | 2026-08-12 | 2026-08-14 | 1524 |  |  | 2026-07-21 | 2026-07-24 | 4d | 6d |  |
| 1529 | 3.9.2.6 | **Telecom** | 35d | 2026-06-29 A | 2026-08-14 |  | 94% | 2.15d | 2026-06-08 | 2026-07-17 | 30d | 6d |  |
| 1530 | 3.9.2.6.1 | **LOD 100 — Concepção** | 10d | 2026-06-29 A | 2026-07-10 A |  | 100% |  | 2026-06-08 | 2026-06-15 | 6d |  |  |
| 1531 | 3.9.2.6.1.1 | Avaliação e Diretrizes Técnicas para Arquitetura | 10d | 2026-06-29 A | 2026-07-10 A | 1351SS+28d | 100% |  | 2026-06-08 | 2026-06-15 | 6d |  |  |
| 1532 | 3.9.2.6.1.2 | Estimativa de Demanda de Telecomunicações | 10d | 2026-06-29 A | 2026-07-10 A | 1351SS+28d | 100% |  | 2026-06-08 | 2026-06-15 | 6d |  |  |
| 1533 | 3.9.2.6.1.3 | Levantamento de Equipamentos e Interfaces com Outras Disciplinas | 10d | 2026-06-29 A | 2026-07-10 A | 1351SS+28d | 100% |  | 2026-06-08 | 2026-06-15 | 6d |  |  |

| ID | WBS | Task | Duration | Start | Finish | Predecessors | Complete | Remaining | Baseline start | Baseline finish | Baseline duration | Total slack |
| --- | --- | --- | --- | --- | --- | --- | --- | --- | --- | --- | --- | --- |
| 1534 | 3.9.2.6.2 | **LOD 200 — Anteprojeto** | 21d | 2026-07-13 A | 2026-08-10 A |  | 100% |  | 2026-06-16 | 2026-07-13 | 20d |  |
| 1535 | 3.9.2.6.2.1 | Pontos de Telecomunicações Estimados (Rede, Voz, CFTV e Demais Sistemas) | 10d | 2026-07-13 A | 2026-07-24 A | 1533 | 100% |  | 2026-06-16 | 2026-06-29 | 10d |  |
| 1536 | 3.9.2.6.2.2 | Racks Estimados | 10d | 2026-07-13 A | 2026-07-24 A | 1533 | 100% |  | 2026-06-16 | 2026-06-29 | 10d |  |
| 1537 | 3.9.2.6.2.3 | Infraestrutura de Telecomunicações Preliminar | 11d | 2026-07-27 A | 2026-08-10 A | 1535, 1536 | 100% |  | 2026-06-30 | 2026-07-13 | 10d |  |
| 1538 | 3.9.2.6.3 | LOD 300 - Consolidação e documentação de entrega | 4d | 2026-08-11 | 2026-08-14 | 1534 |  |  | 2026-07-14 | 2026-07-17 | 4d | 6d |
| 1539 | 3.9.2.7 | **Subestação** | 35d | 2026-06-29 A | 2026-08-14 |  | 93% | 2.41d | 2026-06-08 | 2026-07-24 | 35d | 6d |
| 1540 | 3.9.2.7.1 | **LOD 100 — Concepção** | 5d | 2026-06-29 A | 2026-07-03 A |  | 100% |  | 2026-06-08 | 2026-06-12 | 5d |  |
| 1541 | 3.9.2.7.1.1 | Avaliação e Diretrizes Técnicas para Arquitetura | 5d | 2026-06-29 A | 2026-07-03 A | 1351SS+28d | 100% |  | 2026-06-08 | 2026-06-12 | 5d |  |
| 1542 | 3.9.2.7.1.2 | Levantamento de Demanda, Perfil de Consumo e Ponto de Entrega | 5d | 2026-06-29 A | 2026-07-03 A | 1351SS+28d | 100% |  | 2026-06-08 | 2026-06-12 | 5d |  |
| 1543 | 3.9.2.7.1.3 | Estudo de Viabilidade Técnica e Atendimento ao Padrão da Concessionária | 5d | 2026-06-29 A | 2026-07-03 A | 1351SS+28d | 100% |  | 2026-06-08 | 2026-06-12 | 5d |  |
| 1544 | 3.9.2.7.2 | **LOD 200 — Anteprojeto** | 26d | 2026-07-06 A | 2026-08-10 A |  | 100% |  | 2026-06-15 | 2026-07-20 | 26d |  |
| 1545 | 3.9.2.7.2.1 | Definição do Tipo de Subestação e Arranjo Físico Preliminar | 13d | 2026-07-06 A | 2026-07-22 A | 1543 | 100% |  | 2026-06-15 | 2026-07-01 | 13d |  |
| 1546 | 3.9.2.7.2.2 | Dimensionamento Preliminar do Transformador e Equipamentos Principais | 13d | 2026-07-23 A | 2026-08-10 A | 1545 | 100% |  | 2026-07-02 | 2026-07-20 | 13d |  |
| 1547 | 3.9.2.7.2.3 | Diretrizes Preliminares de Aterramento | 13d | 2026-07-23 A | 2026-08-10 A | 1545 | 100% |  | 2026-07-02 | 2026-07-20 | 13d |  |
| 1548 | 3.9.2.7.3 | LOD 300 - Consolidação e documentação de entrega | 4d | 2026-08-11 | 2026-08-14 | 1544 |  |  | 2026-07-21 | 2026-07-24 | 4d | 6d |
| 1549 | 3.9.2.8 | **SPDA** | 35d | 2026-06-29 A | 2026-08-14 |  | 91% | 3.11d | 2026-06-08 | 2026-07-24 | 35d | 6d |
| 1550 | 3.9.2.8.1 | **LOD 100 — Concepção** | 5d | 2026-06-29 A | 2026-07-03 A |  | 100% |  | 2026-06-08 | 2026-06-12 | 5d |  |
| 1551 | 3.9.2.8.1.1 | Avaliação e Diretrizes Técnicas para Arquitetura | 5d | 2026-06-29 A | 2026-07-03 A | 1351SS+28d | 100% |  | 2026-06-08 | 2026-06-12 | 5d |  |
| 1552 | 3.9.2.8.1.2 | Coleta de Informações da Edificação e Análise de Risco (ABNT NBR 5419-2) | 5d | 2026-06-29 A | 2026-07-03 A | 1351SS+28d | 100% |  | 2026-06-08 | 2026-06-12 | 5d |  |
| 1553 | 3.9.2.8.1.3 | Estudo Preliminar de Necessidade e Nível de Proteção do SPDA | 5d | 2026-06-29 A | 2026-07-03 A | 1351SS+28d | 100% |  | 2026-06-08 | 2026-06-12 | 5d |  |
| 1554 | 3.9.2.8.2 | **LOD 200 — Anteprojeto** | 26d | 2026-07-06 A | 2026-08-10 A |  | 100% |  | 2026-06-15 | 2026-07-20 | 26d |  |
| 1555 | 3.9.2.8.2.1 | Definição da Estratégia de Proteção e Soluções Técnicas | 8d | 2026-07-06 A | 2026-07-15 A | 1553 | 100% |  | 2026-06-15 | 2026-06-24 | 8d |  |
| 1556 | 3.9.2.8.2.2 | Zoneamento de Captação, Descida e Traçados Preliminares | 8d | 2026-07-16 A | 2026-07-27 A | 1555 | 100% |  | 2026-06-25 | 2026-07-06 | 8d |  |
| 1557 | 3.9.2.8.2.3 | Estudo de Interferências, Compatibilização e Métodos Construtivos | 10d | 2026-07-28 A | 2026-08-10 A | 1556 | 100% |  | 2026-07-07 | 2026-07-20 | 10d |  |
| 1558 | 3.9.2.8.3 | LOD 300 - Consolidação e documentação de entrega | 4d | 2026-08-11 | 2026-08-14 | 1557 |  |  | 2026-07-21 | 2026-07-24 | 4d | 6d |

| ID | WBS | Task | Type | Duration | Start | Finish | Predecessors | Complete | Baseline start | Baseline finish | Baseline duration | Total slack | Constraint |
| --- | --- | --- | --- | --- | --- | --- | --- | --- | --- | --- | --- | --- | --- |
| 1559 | 3.9.2.9 | **Energia Renovável** |  | 0d | 2026-06-26 A | 2026-06-26 A |  | 100% | 2026-06-08 | 2026-07-17 | 30d |  |  |
| 1560 | 3.9.2.9.1 | **LOD 100 — Concepção** |  | 0d | 2026-06-26 A | 2026-06-26 A |  | 100% | 2026-06-08 | 2026-06-16 | 7d |  |  |
| 1561 | 3.9.2.9.1.1 | Viabilidade e Premissas de Geração | milestone | 0d | 2026-06-26 A | 2026-06-26 A | 1351SS+28d | 100% | 2026-06-08 | 2026-06-16 | 7d |  |  |
| 1562 | 3.9.2.9.1.2 | Levantamento Preliminar de Áreas e Sombreamento | milestone | 0d | 2026-06-26 A | 2026-06-26 A | 1351SS+28d | 100% | 2026-06-08 | 2026-06-16 | 7d |  |  |
| 1563 | 3.9.2.9.1.3 | Avaliação e Diretrizes Técnicas para Arquitetônico | milestone | 0d | 2026-06-26 A | 2026-06-26 A | 1351SS+28d | 100% | 2026-06-08 | 2026-06-16 | 7d |  |  |
| 1564 | 3.9.2.9.2 | **LOD 200 — Anteprojeto** |  | 0d | 2026-06-26 A | 2026-06-26 A |  | 100% | 2026-06-17 | 2026-07-13 | 19d |  |  |
| 1565 | 3.9.2.9.2.1 | Layout Preliminar de Módulos, Inversores e String Boxes | milestone | 0d | 2026-06-26 A | 2026-06-26 A | 1562 | 100% | 2026-06-17 | 2026-07-13 | 19d |  |  |
| 1566 | 3.9.2.9.2.2 | Infraestrutura e Rotas Técnicas Preliminares (DC/AC e Aterramento) | milestone | 0d | 2026-06-26 A | 2026-06-26 A | 1562 | 100% | 2026-06-17 | 2026-07-13 | 19d |  |  |
| 1567 | 3.9.2.9.2.3 | Critérios Preliminares de Proteção e Estimativa de Quantitativos | milestone | 0d | 2026-06-26 A | 2026-06-26 A | 1562 | 100% | 2026-06-17 | 2026-07-13 | 19d |  |  |
| 1568 | 3.9.2.9.3 | LOD 300 - Consolidação e documentação de entrega | milestone | 0d | 2026-06-26 A | 2026-06-26 A | 1564 | 100% | 2026-07-14 | 2026-07-17 | 4d |  |  |
| 1569 | 4 | P2 - Orçamento/Cronograma |  | 13d | 2026-08-10 | 2026-08-26 | 30FS-11d |  | 2026-07-28 | 2026-08-24 | 20d | 0d | start no earlier than 2026-08-10 |
| 1570 | 5 | P3 - Modelagem Econômico Financeira |  | 10d | 2026-08-13 | 2026-08-26 | 1569FF |  | 2026-08-11 | 2026-08-24 | 10d | 0d |  |
| 1571 | 6 | P4 - Modelagem Jurídica |  | 10d | 2026-08-13 | 2026-08-26 | 1569FF |  | 2026-08-11 | 2026-08-24 | 10d | 0d |  |
| 1573 | 7 | Periodo de revisão se necessário | milestone | 0d | 2026-08-26 | 2026-08-26 | 1571FF |  | 2026-08-24 | 2026-08-24 | 0d | 0d |  |
