# OS 057 - ANTEPROJETO CIDADE DO SKATE

Schedule from MS Project, 2026-03-02 to 2026-09-22, status date 2026-08-11, A marks actual dates.

## Calendars

- Calendário 1: Mon-Fri 09:00-12:00, 13:00-18:00; Sat-Sun off. Exceptions (off unless hours are given): 2026-04-03 (Feriado Sexta-Feira Santa), 2026-04-21 (Feriado Tiradentes), 2026-05-01 (Feriado Dia do Trabalho), 2026-06-04 (Feriado Corpus Christi), 2026-09-07 (Feriado Independencia do Brasil).

## Resources

| Resource | Group |
| --- | --- |
| SMI Engenharia | SMI |
| Rui Raoli BIM |  |
| Tecra Engenharia | Tecra |
| Dorothea Heirichs | Dorothea |
| Yuka Ogawa | Yuka |
| Jurídico Quanta |  |
| Priscila Abreu EST |  |
| Leomar Delgado | Leomar |
| Limonge de Almeida | Limonge |
| AeB Engenharia | AeB engenharia |
| Fernanda Garruti EST |  |
| Rodrigo Goes EST |  |
| Nous Engenharia (Wanessa) | Nous Engenharia |
| Abel Lopes HID |  |
| Matheus Ferreira HID |  |
| Kayke Cheli PROJ |  |
| João Gabriel PROJ |  |
| Alan Albuquerque ELE |  |
| Leo Ferrari ELE |  |
| Marcelo Ricardo ELE |  |
| Gabriel Caurim | Gcaurin |
| MOB Eng | MOB |
| Heitor Rubio ELE |  |
| Paulo G. ELE |  |
| Thaíza Rodrig. ELE |  |
| Rafael Menna ENE |  |
| Lucas Pacheco ENE |  |
| Lucas Silva ENE Estag |  |
| Amanda W. HID |  |
| Neemias PCI/GAS |  |
| Anderson F. HVAC |  |
| Alexandre Blumel |  |
| Vanessa Maia ORC |  |
| Bruno Souza ORC |  |
| Romulo Santos ORC |  |
| Diego Bieger | Diego Bieger |
| Tiago Carlos TER |  |
| Raquel Morano |  |
| Guilherme ECO |  |
| Setor Jurídico |  |
| Vinicius Delgado |  |
| Morena Braga |  |
| P/ TERCEIRIZAR |  |
| MAFRA | MAFRA |
| BLR | BLR |
| COTRAL | COTRAL |
| Prime | PRIME |
| CODEMAR | Cliente |
| SEMED | Cliente |
| Carlos Alberto (Casoba) |  |
| Cezar Augusto ELE |  |
| Carlos Santos TER |  |
| Maíra Rocha |  |
| Jairo Diniz |  |
| Eloá Honaiser |  |
| Erick Lima |  |
| Tarcísio Marques CPT |  |
| Igor Freire DADOS |  |
| Hagata Oliveira DADOS |  |
| Marcel Silva CNF |  |
| Gustavo Oliveira CNF |  |
| Letícia Gonç. CNF |  |
| Equipe Energia |  |
| Petras |  |
| Pilotis |  |
| Rodofer |  |
| TMSilva |  |
| STCGEO |  |
| Vitor Sales GEO |  |
| Prossema | Prossema |
| Proseng | Prosseng |
| Pamplona | Pamplona |
| PeX | PeX |
| Eoliver | Eoliver |
| Aleff Moura |  |
| S&A Engenharia |  |
| Matheus Barboza MOBILIDADE |  |
| Neemias Eloy PCI/GAS |  |
| TecTON |  |
| Anderson F. HVAC |  |
| Gabriela Gama ARQ |  |
| Bruno Almeida ARQ |  |
| Richard Marx ARQ |  |
| Lorena ARQ |  |
| Camila ARQ |  |
| Mariana ARQ |  |
| Érica ARQ |  |
| Maria Lis ARQ |  |
| Antônio Alves ARQ |  |
| Juliana ARQ |  |
| Caio Ary ARQ |  |
| Roberto Mattos ARQ |  |
| Camilla Bessa CNF |  |
| Alex Matoso SUP |  |
| Aline Bonsanto CPT |  |
| Pavanello |  |
| AKKERMAN |  |
| RiO RAMP |  |

## Schedule

| ID | WBS | Task | Type | Duration | Start | Finish | Predecessors | Complete | Baseline start | Baseline finish | Baseline duration | Constraint |
| --- | --- | --- | --- | --- | --- | --- | --- | --- | --- | --- | --- | --- |
| 1 | 1 | **P0 - Estudos Iniciais/Plano de Trabalho** |  | 67d | 2026-03-02 A | 2026-06-08 A |  | 100% | 2026-03-02 | 2026-06-08 | 67d |  |
| 2 | 1.1 | Marco de Abertura de OS |  | 1d | 2026-03-02 A | 2026-03-02 A |  | 100% | 2026-03-02 | 2026-03-02 | 1d | start no earlier than 2026-03-02 |
| 3 | 1.2 | Recebimento de dados da contratante |  | 1d | 2026-03-02 A | 2026-03-02 A |  | 100% | 2026-03-02 | 2026-03-02 | 1d | start no earlier than 2026-03-02 |
| 4 | 1.3 | Recebimento de dados do projeto |  | 1d | 2026-03-02 A | 2026-03-02 A |  | 100% | 2026-03-02 | 2026-03-02 | 1d | start no earlier than 2026-03-02 |
| 5 | 1.4 | **Definições do projeto** |  | 0d | 2026-05-11 A | 2026-05-11 A |  | 100% | 2026-05-11 | 2026-05-11 | 0d |  |
| 6 | 1.4.1 | Definição de escopo | milestone | 0d | 2026-05-11 A | 2026-05-11 A |  | 100% | 2026-05-11 | 2026-05-11 | 0d | start no earlier than 2026-05-11 |
| 7 | 1.4.2 | Aprovação do escopo (contrato) | milestone | 0d | 2026-05-11 A | 2026-05-11 A |  | 100% | 2026-05-11 | 2026-05-11 | 0d | start no earlier than 2026-05-11 |
| 8 | 1.4.3 | Definição de responsabilidades | milestone | 0d | 2026-05-11 A | 2026-05-11 A |  | 100% | 2026-05-11 | 2026-05-11 | 0d | start no earlier than 2026-05-11 |
| 9 | 1.4.4 | Definição de comunicação | milestone | 0d | 2026-05-11 A | 2026-05-11 A |  | 100% | 2026-05-11 | 2026-05-11 | 0d | start no earlier than 2026-05-11 |
| 10 | 1.4.5 | Forma de gerenciamento do escopo | milestone | 0d | 2026-05-11 A | 2026-05-11 A |  | 100% | 2026-05-11 | 2026-05-11 | 0d | start no earlier than 2026-05-11 |
| 11 | 1.4.6 | Requisitos de qualidade | milestone | 0d | 2026-05-11 A | 2026-05-11 A |  | 100% | 2026-05-11 | 2026-05-11 | 0d | start no earlier than 2026-05-11 |
| 12 | 1.4.7 | Forma de gerenciamento da qualidade | milestone | 0d | 2026-05-11 A | 2026-05-11 A |  | 100% | 2026-05-11 | 2026-05-11 | 0d | start no earlier than 2026-05-11 |
| 13 | 1.5 | **Definição de Subcontratadas necessárias** |  | 8d | 2026-05-27 A | 2026-06-08 A |  | 100% | 2026-05-27 | 2026-06-08 | 8d |  |
| 14 | 1.5.1 | Definir quais diciplinas e edificações devem ser cotadas externamente |  | 2d | 2026-05-27 A | 2026-05-28 A |  | 100% | 2026-05-27 | 2026-05-28 | 2d | start no earlier than 2026-05-27 |
| 15 | 1.5.2 | Envio e Resposta dos fornecedores |  | 2d | 2026-05-29 A | 2026-06-01 A | 14 | 100% | 2026-05-29 | 2026-06-01 | 2d |  |
| 16 | 1.5.3 | Seleção das subcontratações |  | 2d | 2026-06-02 A | 2026-06-03 A | 15 | 100% | 2026-06-02 | 2026-06-03 | 2d |  |
| 17 | 1.5.4 | Reunião Kickoff - Subcontratadas |  | 2d | 2026-06-05 A | 2026-06-08 A | 16 | 100% | 2026-06-05 | 2026-06-08 | 2d |  |
| 18 | 1.6 | **Elaborar/Ajustar Cronograma - compatível com o escopo do projeto** |  | 20d | 2026-05-11 A | 2026-06-08 A |  | 100% | 2026-05-11 | 2026-06-08 | 20d |  |
| 19 | 1.6.1 | Estruturação da EAP |  | 5d | 2026-05-11 A | 2026-05-15 A |  | 100% | 2026-05-11 | 2026-05-15 | 5d |  |
| 20 | 1.6.2 | Ajuste de prazos |  | 8d | 2026-05-18 A | 2026-05-27 A | 19 | 100% | 2026-05-18 | 2026-05-27 | 8d |  |
| 21 | 1.6.3 | Inclusão de recursos |  | 7d | 2026-05-28 A | 2026-06-08 A | 20 | 100% | 2026-05-28 | 2026-06-08 | 7d |  |
| 22 | 2 | **P0 - Serviços de campo** |  | 2d | 2026-03-02 A | 2026-03-03 A |  | 100% | 2026-03-02 | 2026-03-03 | 2d |  |
| 23 | 2.1 | Sondagem |  | 2d | 2026-03-02 A | 2026-03-03 A |  | 100% | 2026-03-02 | 2026-03-03 | 2d |  |
| 24 | 2.2 | **Topografia** |  | 2d | 2026-03-02 A | 2026-03-03 A |  | 100% | 2026-03-02 | 2026-03-03 | 2d |  |
| 25 | 2.2.1 | Levantamento topográfico |  | 2d | 2026-03-02 A | 2026-03-03 A |  | 100% | 2026-03-02 | 2026-03-03 | 2d |  |
| 26 | 2.2.2 | Processamento |  | 2d | 2026-03-02 A | 2026-03-03 A |  | 100% | 2026-03-02 | 2026-03-03 | 2d |  |
| 27 | 2.2.3 | Finalização do projeto topográfico |  | 2d | 2026-03-02 A | 2026-03-03 A |  | 100% | 2026-03-02 | 2026-03-03 | 2d |  |
| 28 | 2.2.4 | Levantamento de Dados e Visita de Campo (arquitetônico, scanner, legislação, entrevistas...) |  | 2d | 2026-03-02 A | 2026-03-03 A |  | 100% | 2026-03-02 | 2026-03-03 | 2d |  |
| 29 | 2.3 | Estudos/Laudo Ambiental |  | 1d | 2026-03-02 A | 2026-03-02 A |  | 100% | 2026-03-02 | 2026-03-02 | 1d |  |

| ID | WBS | Task | Duration | Start | Finish | Predecessors | Complete | Remaining | Baseline start | Baseline finish | Baseline duration | Total slack | Constraint |
| --- | --- | --- | --- | --- | --- | --- | --- | --- | --- | --- | --- | --- | --- |
| 30 | 3 | **P1 - Anteprojeto** | 122d | 2026-03-02 A | 2026-08-24 |  | 58% | 51.72d | 2026-03-02 | 2026-07-27 | 102d | 0d |  |
| 31 | 3.1 | **Fase de Preparação** | 4d | 2026-03-02 A | 2026-03-05 A |  | 100% |  | 2026-03-02 | 2026-03-05 | 4d |  |  |
| 32 | 3.1.1 | **Serviços de Campo** | 1d | 2026-03-02 A | 2026-03-02 A |  | 100% |  | 2026-03-02 | 2026-03-02 | 1d |  |  |
| 33 | 3.1.1.1 | Recebimento da Topografia | 1d | 2026-03-02 A | 2026-03-02 A |  | 100% |  | 2026-03-02 | 2026-03-02 | 1d |  |  |
| 34 | 3.1.1.2 | Recebimento da Sondagem | 1d | 2026-03-02 A | 2026-03-02 A |  | 100% |  | 2026-03-02 | 2026-03-02 | 1d |  |  |
| 35 | 3.1.1.3 | Levantamento de Dados (ambientais locais, urbanísticos, legislativos, plantas cadastrais da vizinhança etc.) | 1d | 2026-03-02 A | 2026-03-02 A |  | 100% |  | 2026-03-02 | 2026-03-02 | 1d |  |  |
| 36 | 3.1.1.4 | Visita de Campo | 1d | 2026-03-02 A | 2026-03-02 A |  | 100% |  | 2026-03-02 | 2026-03-02 | 1d |  |  |
| 37 | 3.1.1.5 | Relatório/Memorial de Compatibilização | 1d | 2026-03-02 A | 2026-03-02 A |  | 100% |  | 2026-03-02 | 2026-03-02 | 1d |  |  |
| 38 | 3.1.2 | **Produção de Subsídios ao Projeto** | 4d | 2026-03-02 A | 2026-03-05 A |  | 100% |  | 2026-03-02 | 2026-03-05 | 4d |  |  |
| 39 | 3.1.2.1 | Elaboração do Programa de Necessidades (relação dos ambientes, áreas, mobiliários, fluxos pretendidos, organograma funcional, descrição dos usuários e atividades etc.) | 4d | 2026-03-02 A | 2026-03-05 A |  | 100% |  | 2026-03-02 | 2026-03-05 | 4d |  |  |
| 40 | 3.1.2.2 | Elaboração de Benchmark (reconhecimento do território, referências projetuais e premissas de projeto) | 4d | 2026-03-02 A | 2026-03-05 A |  | 100% |  | 2026-03-02 | 2026-03-05 | 4d |  |  |
| 41 | 3.2 | **PROJETO CONCEITUAL (LOD 100)** | 40d | 2026-03-02 A | 2026-04-28 A |  | 100% |  | 2026-03-02 | 2026-04-28 | 40d |  |  |
| 42 | 3.2.1 | Benchmarking (pesquisa e relatório de referências de tipologias semelhantes para entendimento de fluxos, implantação etc. e de outras tipologias para buscar referências estéticas e de materialidade) | 1d | 2026-03-02 A | 2026-03-02 A |  | 100% |  | 2026-03-02 | 2026-03-02 | 1d |  |  |
| 43 | 3.2.2 | **Elaboração de Masterplan** | 35d | 2026-03-02 A | 2026-04-20 A |  | 100% |  | 2026-03-02 | 2026-04-20 | 35d |  |  |
| 44 | 3.2.2.1 | Revisão do Masterplan - R01 | 15d | 2026-03-02 A | 2026-03-20 A |  | 100% |  | 2026-03-02 | 2026-03-20 | 15d |  |  |
| 45 | 3.2.2.2 | Revisão do Masterplan - R02 | 10d | 2026-03-23 A | 2026-04-06 A | 44 | 100% |  | 2026-03-23 | 2026-04-06 | 10d |  |  |
| 46 | 3.2.2.3 | Relatório/Memorial de Compatibilização | 10d | 2026-04-07 A | 2026-04-20 A | 45 | 100% |  | 2026-04-07 | 2026-04-20 | 10d |  |  |
| 47 | 3.2.3 | **Estudo da Forma - CT Olímpico** | 23d | 2026-03-25 A | 2026-04-28 A |  | 100% |  | 2026-03-25 | 2026-04-28 | 23d |  |  |
| 48 | 3.2.3.1 | Processo de Criação (atelier, discussão, início de plantas, ideias de fachada) | 1d | 2026-04-16 A | 2026-04-16 A |  | 100% |  | 2026-04-16 | 2026-04-16 | 1d |  | start no earlier than 2026-04-16 |
| 49 | 3.2.3.2 | Setorização e Fluxogramas | 1d | 2026-04-16 A | 2026-04-16 A |  | 100% |  | 2026-04-16 | 2026-04-16 | 1d |  | start no earlier than 2026-04-16 |
| 50 | 3.2.3.3 | Plano de Massas (situação/implantação/zoneamento) | 1d | 2026-04-16 A | 2026-04-16 A |  | 100% |  | 2026-04-16 | 2026-04-16 | 1d |  | start no earlier than 2026-04-16 |
| 51 | 3.2.3.4 | Estudo de Fachadas | 1d | 2026-04-28 A | 2026-04-28 A |  | 100% |  | 2026-04-28 | 2026-04-28 | 1d |  | start no earlier than 2026-04-28 |
| 52 | 3.2.3.5 | Relatório/Memorial Justificativo de Projeto Conceitual | 1d | 2026-03-25 A | 2026-03-25 A |  | 100% |  | 2026-03-25 | 2026-03-25 | 1d |  | start no earlier than 2026-03-25 |
| 53 | 3.2.4 | **Estudo da Forma - CT Indoor** | 23d | 2026-03-25 A | 2026-04-28 A |  | 100% |  | 2026-03-25 | 2026-04-28 | 23d |  |  |
| 54 | 3.2.4.1 | Processo de Criação (atelier, discussão, início de plantas, ideias de fachada) | 1d | 2026-04-16 A | 2026-04-16 A |  | 100% |  | 2026-04-16 | 2026-04-16 | 1d |  | start no earlier than 2026-04-16 |
| 55 | 3.2.4.2 | Setorização e Fluxogramas | 1d | 2026-04-16 A | 2026-04-16 A |  | 100% |  | 2026-04-16 | 2026-04-16 | 1d |  | start no earlier than 2026-04-16 |
| 56 | 3.2.4.3 | Plano de Massas (situação/implantação/zoneamento) | 1d | 2026-04-16 A | 2026-04-16 A |  | 100% |  | 2026-04-16 | 2026-04-16 | 1d |  | start no earlier than 2026-04-16 |
| 57 | 3.2.4.4 | Estudo de Fachadas | 1d | 2026-04-28 A | 2026-04-28 A |  | 100% |  | 2026-04-28 | 2026-04-28 | 1d |  | start no earlier than 2026-04-28 |
| 58 | 3.2.4.5 | Relatório/Memorial Justificativo de Projeto Conceitual | 1d | 2026-03-25 A | 2026-03-25 A |  | 100% |  | 2026-03-25 | 2026-03-25 | 1d |  | start no earlier than 2026-03-25 |

| ID | WBS | Task | Duration | Start | Finish | Complete | Baseline start | Baseline finish | Baseline duration | Constraint |
| --- | --- | --- | --- | --- | --- | --- | --- | --- | --- | --- |
| 59 | 3.2.5 | **Estudo da Forma - Centro de Técnologia e Educação** | 23d | 2026-03-25 A | 2026-04-28 A | 100% | 2026-03-25 | 2026-04-28 | 23d |  |
| 60 | 3.2.5.1 | Processo de Criação (atelier, discussão, início de plantas, ideias de fachada) | 1d | 2026-04-16 A | 2026-04-16 A | 100% | 2026-04-16 | 2026-04-16 | 1d | start no earlier than 2026-04-16 |
| 61 | 3.2.5.2 | Setorização e Fluxogramas | 1d | 2026-04-16 A | 2026-04-16 A | 100% | 2026-04-16 | 2026-04-16 | 1d | start no earlier than 2026-04-16 |
| 62 | 3.2.5.3 | Plano de Massas (situação/implantação/zoneamento) | 1d | 2026-04-16 A | 2026-04-16 A | 100% | 2026-04-16 | 2026-04-16 | 1d | start no earlier than 2026-04-16 |
| 63 | 3.2.5.4 | Estudo de Fachadas | 1d | 2026-04-28 A | 2026-04-28 A | 100% | 2026-04-28 | 2026-04-28 | 1d | start no earlier than 2026-04-28 |
| 64 | 3.2.5.5 | Relatório/Memorial Justificativo de Projeto Conceitual | 1d | 2026-03-25 A | 2026-03-25 A | 100% | 2026-03-25 | 2026-03-25 | 1d | start no earlier than 2026-03-25 |
| 65 | 3.2.6 | **Estudo da Forma - Arena Multiuso** | 23d | 2026-03-25 A | 2026-04-28 A | 100% | 2026-03-25 | 2026-04-28 | 23d |  |
| 66 | 3.2.6.1 | Processo de Criação (atelier, discussão, início de plantas, ideias de fachada) | 1d | 2026-04-16 A | 2026-04-16 A | 100% | 2026-04-16 | 2026-04-16 | 1d | start no earlier than 2026-04-16 |
| 67 | 3.2.6.2 | Setorização e Fluxogramas | 1d | 2026-04-16 A | 2026-04-16 A | 100% | 2026-04-16 | 2026-04-16 | 1d | start no earlier than 2026-04-16 |
| 68 | 3.2.6.3 | Plano de Massas (situação/implantação/zoneamento) | 1d | 2026-04-16 A | 2026-04-16 A | 100% | 2026-04-16 | 2026-04-16 | 1d | start no earlier than 2026-04-16 |
| 69 | 3.2.6.4 | Estudo de Fachadas | 1d | 2026-04-28 A | 2026-04-28 A | 100% | 2026-04-28 | 2026-04-28 | 1d | start no earlier than 2026-04-28 |
| 70 | 3.2.6.5 | Relatório/Memorial Justificativo de Projeto Conceitual | 1d | 2026-03-25 A | 2026-03-25 A | 100% | 2026-03-25 | 2026-03-25 | 1d | start no earlier than 2026-03-25 |
| 71 | 3.2.7 | **Estudo da Forma - Flow/Surfskate** | 23d | 2026-03-25 A | 2026-04-28 A | 100% | 2026-03-25 | 2026-04-28 | 23d |  |
| 72 | 3.2.7.1 | Processo de Criação (atelier, discussão, início de plantas, ideias de fachada) | 1d | 2026-04-16 A | 2026-04-16 A | 100% | 2026-04-16 | 2026-04-16 | 1d | start no earlier than 2026-04-16 |
| 73 | 3.2.7.2 | Setorização e Fluxogramas | 1d | 2026-04-16 A | 2026-04-16 A | 100% | 2026-04-16 | 2026-04-16 | 1d | start no earlier than 2026-04-16 |
| 74 | 3.2.7.3 | Plano de Massas (situação/implantação/zoneamento) | 1d | 2026-04-16 A | 2026-04-16 A | 100% | 2026-04-16 | 2026-04-16 | 1d | start no earlier than 2026-04-16 |
| 75 | 3.2.7.4 | Estudo de Fachadas | 1d | 2026-04-28 A | 2026-04-28 A | 100% | 2026-04-28 | 2026-04-28 | 1d | start no earlier than 2026-04-28 |
| 76 | 3.2.7.5 | Relatório/Memorial Justificativo de Projeto Conceitual | 1d | 2026-03-25 A | 2026-03-25 A | 100% | 2026-03-25 | 2026-03-25 | 1d | start no earlier than 2026-03-25 |
| 77 | 3.2.8 | **Estudo da Forma - Skatepark Outdoor** | 23d | 2026-03-25 A | 2026-04-28 A | 100% | 2026-03-25 | 2026-04-28 | 23d |  |
| 78 | 3.2.8.1 | Processo de Criação (atelier, discussão, início de plantas, ideias de fachada) | 1d | 2026-04-16 A | 2026-04-16 A | 100% | 2026-04-16 | 2026-04-16 | 1d | start no earlier than 2026-04-16 |
| 79 | 3.2.8.2 | Setorização e Fluxogramas | 1d | 2026-04-16 A | 2026-04-16 A | 100% | 2026-04-16 | 2026-04-16 | 1d | start no earlier than 2026-04-16 |
| 80 | 3.2.8.3 | Plano de Massas (situação/implantação/zoneamento) | 1d | 2026-04-16 A | 2026-04-16 A | 100% | 2026-04-16 | 2026-04-16 | 1d | start no earlier than 2026-04-16 |
| 81 | 3.2.8.4 | Estudo de Fachadas | 1d | 2026-04-28 A | 2026-04-28 A | 100% | 2026-04-28 | 2026-04-28 | 1d | start no earlier than 2026-04-28 |
| 82 | 3.2.8.5 | Relatório/Memorial Justificativo de Projeto Conceitual | 1d | 2026-03-25 A | 2026-03-25 A | 100% | 2026-03-25 | 2026-03-25 | 1d | start no earlier than 2026-03-25 |
| 83 | 3.3 | Urbanismo da cidade do skate | 7d | 2026-05-20 A | 2026-05-28 A | 100% | 2026-05-20 | 2026-05-20 | 0d | start no earlier than 2026-05-20 |
| 84 | 3.4 | Revisão masterplan para alojamento | 7d | 2026-05-20 A | 2026-05-28 A | 100% | 2026-05-20 | 2026-05-20 | 0d | start no earlier than 2026-05-20 |

| ID | WBS | Task | Duration | Start | Finish | Predecessors | Complete | Remaining | Baseline start | Baseline finish | Baseline duration | Total slack | Free slack |
| --- | --- | --- | --- | --- | --- | --- | --- | --- | --- | --- | --- | --- | --- |
| 85 | 3.5 | **Implantação** | 116d | 2026-03-03 A | 2026-08-17 |  | 75% | 29.54d | 2026-03-03 | 2026-07-24 | 100d | 5d |  |
| 86 | 3.5.1 | **LOD 300 - ANTEPROJETO** | 40d | 2026-05-29 A | 2026-07-24 |  | 77% | 9.04d | 2026-05-29 | 2026-07-24 | 40d | 21d |  |
| 87 | 3.5.1.1 | Indicar simbologias de representação gráfica, conforme NBR 6492:2021; | 40d | 2026-05-29 A | 2026-07-24 | 41FS+21d | 78% | 8.8d | 2026-05-29 | 2026-07-24 | 40d | 21d |  |
| 88 | 3.5.1.2 | Compatibilização (verificar se está tudo conforme as normas e alinhar com o restante das disciplinas de engenharia) | 40d | 2026-05-29 A | 2026-07-24 | 41FS+21d | 78% | 8.8d | 2026-05-29 | 2026-07-24 | 40d | 21d |  |
| 89 | 3.5.1.3 | Compatibilização (deixar tudo conforme padrão Quanta) | 40d | 2026-05-29 A | 2026-07-24 | 41FS+21d | 78% | 8.8d | 2026-05-29 | 2026-07-24 | 40d | 21d |  |
| 90 | 3.5.1.4 | Indicação de Norte; | 40d | 2026-05-29 A | 2026-07-24 | 41FS+21d | 78% | 8.8d | 2026-05-29 | 2026-07-24 | 40d | 21d |  |
| 91 | 3.5.1.5 | Indicação de Escala; | 40d | 2026-05-29 A | 2026-07-24 | 41FS+21d | 78% | 8.8d | 2026-05-29 | 2026-07-24 | 40d | 21d |  |
| 92 | 3.5.1.6 | Vias de acesso e calçadas; | 40d | 2026-05-29 A | 2026-07-24 | 41FS+21d | 78% | 8.8d | 2026-05-29 | 2026-07-24 | 40d | 21d |  |
| 93 | 3.5.1.7 | Definição dos Percursos e caminhos | 40d | 2026-05-29 A | 2026-07-24 | 41FS+21d | 78% | 8.8d | 2026-05-29 | 2026-07-24 | 40d | 21d |  |
| 94 | 3.5.1.8 | Definição de desenhos de canteiros | 40d | 2026-05-29 A | 2026-07-24 | 41FS+21d | 78% | 8.8d | 2026-05-29 | 2026-07-24 | 40d | 21d |  |
| 95 | 3.5.1.9 | Localização de Mobiliário | 40d | 2026-05-29 A | 2026-07-24 | 41FS+21d | 78% | 8.8d | 2026-05-29 | 2026-07-24 | 40d | 21d |  |
| 96 | 3.5.1.10 | Acesso principal do objeto arquitetônico; | 40d | 2026-05-29 A | 2026-07-24 | 41FS+21d | 78% | 8.8d | 2026-05-29 | 2026-07-24 | 40d | 21d |  |
| 97 | 3.5.1.11 | Definição de localização de rampas e escadarias | 40d | 2026-05-29 A | 2026-07-24 | 41FS+21d | 78% | 8.8d | 2026-05-29 | 2026-07-24 | 40d | 21d |  |
| 98 | 3.5.1.12 | Platôs e taludes; | 40d | 2026-05-29 A | 2026-07-24 | 41FS+21d | 78% | 8.8d | 2026-05-29 | 2026-07-24 | 40d | 21d |  |
| 99 | 3.5.1.13 | Perímetro do terreno, recuos e afastamentos; | 40d | 2026-05-29 A | 2026-07-24 | 41FS+21d | 78% | 8.8d | 2026-05-29 | 2026-07-24 | 40d | 21d |  |
| 100 | 3.5.1.14 | Eixos do projeto com respectivo ponto de referência; | 40d | 2026-05-29 A | 2026-07-24 | 41FS+21d | 78% | 8.8d | 2026-05-29 | 2026-07-24 | 40d | 21d |  |
| 101 | 3.5.1.15 | Denominação das edificações, blocos ou espaços; | 40d | 2026-05-29 A | 2026-07-24 | 41FS+21d | 78% | 8.8d | 2026-05-29 | 2026-07-24 | 40d | 21d |  |
| 102 | 3.5.1.16 | Indicação de áreas cobertas e estacionamentos; | 40d | 2026-05-29 A | 2026-07-24 | 41FS+21d | 78% | 8.8d | 2026-05-29 | 2026-07-24 | 40d | 21d |  |
| 103 | 3.5.1.17 | Cotas gerais | 40d | 2026-05-29 A | 2026-07-24 | 41FS+21d | 78% | 8.8d | 2026-05-29 | 2026-07-24 | 40d | 21d |  |
| 104 | 3.5.1.18 | Cotas de nível principais | 40d | 2026-05-29 A | 2026-07-24 | 41FS+21d | 78% | 8.8d | 2026-05-29 | 2026-07-24 | 40d | 21d |  |
| 105 | 3.5.1.19 | Quadro de áreas | 40d | 2026-05-29 A | 2026-07-24 | 41FS+21d | 78% | 8.8d | 2026-05-29 | 2026-07-24 | 40d | 21d | 0d |
| 106 | 3.5.1.20 | Relatório | 10d | 2026-07-13 A | 2026-07-24 | 105FF | 78% | 2.2d | 2026-07-13 | 2026-07-24 | 10d | 21d | 0d |
| 107 | 3.5.1.21 | Aprovação de Conformidade | 3d | 2026-07-22 | 2026-07-24 | 106FF |  |  | 2026-07-22 | 2026-07-24 | 0d | 21d |  |
| 108 | 3.5.1.22 | Material para entrega ao contrato | 3d | 2026-07-22 | 2026-07-24 | 106FF |  |  | 2026-07-22 | 2026-07-24 | 0d | 21d |  |

| ID | WBS | Task | Duration | Start | Finish | Predecessors | Complete | Remaining | Baseline start | Baseline finish | Baseline duration | Total slack | Free slack | Constraint | Text3 |
| --- | --- | --- | --- | --- | --- | --- | --- | --- | --- | --- | --- | --- | --- | --- | --- |
| 109 | 3.5.2 | **Terraplanagem / Pavimentação** | 116d | 2026-03-03 A | 2026-08-17 |  | 70% | 34.8d | 2026-03-03 | 2026-04-29 | 40d | 5d |  |  |  |
| 110 | 3.5.2.1 | **LOD 100 — Premissas, diretrizes e interfaces** | 10d | 2026-03-03 A | 2026-03-16 A |  | 100% |  | 2026-03-03 | 2026-03-16 | 10d |  |  |  | ܁$ |
| 111 | 3.5.2.1.1 | Avaliação geral de interferências e topografia local. | 5d | 2026-03-03 A | 2026-03-09 A |  | 100% |  | 2026-03-03 | 2026-03-09 | 5d |  |  | start no earlier than 2026-03-03 |  |
| 112 | 3.5.2.1.2 | Curvas de nível preliminares (quando disponíveis). | 5d | 2026-03-03 A | 2026-03-09 A | 111SS | 100% |  | 2026-03-03 | 2026-03-09 | 5d |  |  |  |  |
| 113 | 3.5.2.1.3 | Levantamento topográfico inicial com representação genérica da área. | 5d | 2026-03-03 A | 2026-03-09 A | 111SS | 100% |  | 2026-03-03 | 2026-03-09 | 5d |  |  |  |  |
| 114 | 3.5.2.1.4 | Análise estimativa de movimentação de terra. | 5d | 2026-03-10 A | 2026-03-16 A | 112 | 100% |  | 2026-03-10 | 2026-03-16 | 5d |  |  |  |  |
| 115 | 3.5.2.1.5 | Estudos de viabilidade | 5d | 2026-03-10 A | 2026-03-16 A | 112 | 100% |  | 2026-03-10 | 2026-03-16 | 5d |  |  |  |  |
| 116 | 3.5.2.1.6 | Elementos representados de forma simbólica sem georreferenciamento preciso. | 5d | 2026-03-10 A | 2026-03-16 A | 113 | 100% |  | 2026-03-10 | 2026-03-16 | 5d |  |  |  |  |
| 117 | 3.5.2.1.7 | Superfície genérica do terreno. | 5d | 2026-03-10 A | 2026-03-16 A | 113 | 100% |  | 2026-03-10 | 2026-03-16 | 5d |  |  |  |  |
| 118 | 3.5.2.2 | **LOD 200 — Validação interdisciplinar e solução preliminar** | 27d | 2026-05-21 A | 2026-06-29 |  | 81% | 5.07d | 2026-03-17 | 2026-04-14 | 20d | 40d |  |  | ܁$ |
| 119 | 3.5.2.2.1 | Avaliação técnica detalhada. | 27d | 2026-05-21 A | 2026-06-29 | 41FS+15d | 81% | 5.07d | 2026-03-17 | 2026-04-14 | 20d | 40d |  |  |  |
| 120 | 3.5.2.2.2 | Compatibilização inicial com drenagem, fundações e geometria. | 27d | 2026-05-21 A | 2026-06-29 | 41FS+15d | 81% | 5.07d | 2026-03-17 | 2026-04-14 | 20d | 40d |  |  |  |
| 121 | 3.5.2.2.3 | Indicação dos pontos de sondagem em planta georreferenciada. | 27d | 2026-05-21 A | 2026-06-29 | 41FS+15d | 81% | 5.07d | 2026-03-17 | 2026-04-14 | 20d | 40d |  |  |  |
| 122 | 3.5.2.2.4 | Sondagens geotécnicas: Cronograma de execução com áreas e quantidade de perfurações; Boletins informativos com planta de localização dos furos, profundidades e descrição estratigráfica (solo). | 27d | 2026-05-21 A | 2026-06-29 | 41FS+15d | 81% | 5.07d | 2026-03-17 | 2026-04-14 | 20d | 40d |  |  |  |
| 123 | 3.5.2.2.5 | Levantamento topográfico: Arquivo em formato.dwg, com coordenadas georreferenciadas (latitude/longitude), curvas de nível, ortofoto e base planimétrica. | 27d | 2026-05-21 A | 2026-06-29 | 41FS+15d | 81% | 5.07d | 2026-03-17 | 2026-04-14 | 20d | 40d |  |  |  |
| 124 | 3.5.2.2.6 | Planta topográfica com triangulação real (MDT). | 27d | 2026-05-21 A | 2026-06-29 | 41FS+15d | 81% | 5.07d | 2026-03-17 | 2026-04-14 | 20d | 5d | 0d |  |  |
| 125 | 3.5.2.3 | **LOD 300 - Consolidação e documentação de entrega** | 35d | 2026-06-30 | 2026-08-17 |  |  |  | 2026-04-15 | 2026-04-29 | 10d | 5d |  |  | ܁$ |
| 126 | 3.5.2.3.1 | Alinhamentos de estaqueamento longitudinal e transversal. | 5d | 2026-06-30 | 2026-07-06 | 124 |  |  | 2026-04-15 | 2026-04-22 | 5d | 35d |  |  |  |
| 127 | 3.5.2.3.2 | Análise integrada dos dados topográficos e de sondagem. | 5d | 2026-06-30 | 2026-07-06 | 124 |  |  | 2026-04-15 | 2026-04-22 | 5d | 35d |  |  |  |
| 128 | 3.5.2.3.3 | Planta baixa georreferenciada com projeção de cortes e aterros. | 10d | 2026-06-30 | 2026-07-13 | 124 |  |  | 2026-04-15 | 2026-04-29 | 10d | 5d | 0d |  |  |
| 129 | 3.5.2.3.4 | Perfis longitudinais e transversais do terreno na situação atual e projetada. | 5d | 2026-06-30 | 2026-07-06 | 124 |  |  | 2026-04-15 | 2026-04-22 | 5d | 35d |  |  |  |
| 130 | 3.5.2.3.5 | Tabelas com variações altimétricas de corte e aterro. | 10d | 2026-08-04 | 2026-08-17 | 128FS+15d |  |  | 2026-04-15 | 2026-04-22 | 5d | 5d |  |  |  |
| 131 | 3.5.2.3.6 | Aprovação de Conformidade | 3d | 2026-07-09 | 2026-07-13 | 128FF |  |  | 2026-04-17 | 2026-04-22 | 0d | 30d |  |  |  |
| 132 | 3.5.2.3.7 | Material para entrega ao contrato | 3d | 2026-07-09 | 2026-07-13 | 128FF |  |  | 2026-04-17 | 2026-04-22 | 0d | 30d |  |  |  |

| ID | WBS | Task | Duration | Start | Finish | Predecessors | Complete | Remaining | Baseline start | Baseline finish | Baseline duration | Total slack | Free slack |
| --- | --- | --- | --- | --- | --- | --- | --- | --- | --- | --- | --- | --- | --- |
| 133 | 3.5.3 | **Drenagem** | 39d | 2026-06-01 A | 2026-07-24 |  | 80% | 7.8d | 2026-06-01 | 2026-07-24 | 39d | 21d |  |
| 134 | 3.5.3.1 | **LOD 100 — Premissas, diretrizes e interfaces** | 5d | 2026-06-01 A | 2026-06-08 A |  | 100% |  | 2026-06-01 | 2026-06-08 | 5d |  |  |
| 135 | 3.5.3.1.1 | Diretrizes de espaço | 5d | 2026-06-01 A | 2026-06-08 A | 117FS+51d | 100% |  | 2026-06-01 | 2026-06-08 | 5d |  |  |
| 136 | 3.5.3.1.2 | Memorial preliminar | 5d | 2026-06-01 A | 2026-06-08 A | 117FS+51d | 100% |  | 2026-06-01 | 2026-06-08 | 5d |  |  |
| 137 | 3.5.3.1.3 | Análise climatológica | 5d | 2026-06-01 A | 2026-06-08 A | 117FS+51d | 100% |  | 2026-06-01 | 2026-06-08 | 5d |  |  |
| 138 | 3.5.3.1.4 | Delimitação de área de contribuição | 5d | 2026-06-01 A | 2026-06-08 A | 117FS+51d | 100% |  | 2026-06-01 | 2026-06-08 | 5d |  |  |
| 139 | 3.5.3.1.5 | Levantamento de elementos especiais dentre outras disciplinas de Engenharia e Arquitetura | 5d | 2026-06-01 A | 2026-06-08 A | 117FS+51d | 100% |  | 2026-06-01 | 2026-06-08 | 5d |  |  |
| 140 | 3.5.3.1.6 | Indicação de áreas técnicas | 5d | 2026-06-01 A | 2026-06-08 A | 117FS+51d | 100% |  | 2026-06-01 | 2026-06-08 | 5d |  |  |
| 141 | 3.5.3.1.7 | Planta baixa com traçado conceitual | 5d | 2026-06-01 A | 2026-06-08 A | 117FS+51d | 100% |  | 2026-06-01 | 2026-06-08 | 5d |  |  |
| 142 | 3.5.3.1.8 | Traçado geral de descidas pluviais | 5d | 2026-06-01 A | 2026-06-08 A | 117FS+51d | 100% |  | 2026-06-01 | 2026-06-08 | 5d |  |  |
| 143 | 3.5.3.2 | **LOD 200 — Validação interdisciplinar e solução preliminar** | 20d | 2026-06-09 A | 2026-07-06 A |  | 100% |  | 2026-06-09 | 2026-07-06 | 20d |  |  |
| 144 | 3.5.3.2.1 | Critérios normativos adotados (ABNT, concessionárias, etc.) | 10d | 2026-06-09 A | 2026-06-22 A | 142 | 100% |  | 2026-06-09 | 2026-06-22 | 10d |  |  |
| 145 | 3.5.3.2.2 | Lista preliminar de sistemas e interfaces envolvidos | 10d | 2026-06-09 A | 2026-06-22 A | 142 | 100% |  | 2026-06-09 | 2026-06-22 | 10d |  |  |
| 146 | 3.5.3.2.3 | Planta baixa e cortes estimada contendo: - Traçado preliminar de condutores verticais e horizontais - Dimensionamento inicial de calhas e condutores - Localização de elementos ou redes de drenagem existente - Indicação de áreas técnicas | 10d | 2026-06-09 A | 2026-06-22 A | 142 | 100% |  | 2026-06-09 | 2026-06-22 | 10d |  |  |
| 147 | 3.5.3.2.4 | Estudo de viabilidade técnica, econômica e ambiental | 10d | 2026-06-23 A | 2026-07-06 A | 144, 145 | 100% |  | 2026-06-23 | 2026-07-06 | 10d |  |  |
| 148 | 3.5.3.2.5 | Levantamento topográfico da área de contribuição e elementos existentes | 10d | 2026-06-23 A | 2026-07-06 A | 144, 145 | 100% |  | 2026-06-23 | 2026-07-06 | 10d |  |  |
| 149 | 3.5.3.2.6 | Sondagem (permeabilidade ou percolação) | 10d | 2026-06-23 A | 2026-07-06 A | 144, 145 | 100% |  | 2026-06-23 | 2026-07-06 | 10d |  |  |
| 150 | 3.5.3.3 | **LOD 300 - Consolidação e documentação de entrega** | 14d | 2026-07-07 | 2026-07-24 |  |  |  | 2026-07-07 | 2026-07-24 | 14d | 21d |  |
| 151 | 3.5.3.3.1 | Memorial descritivo | 5d | 2026-07-07 | 2026-07-13 | 148 |  |  | 2026-07-07 | 2026-07-13 | 5d | 21d | 0d |
| 152 | 3.5.3.3.2 | Memória de cálculo | 5d | 2026-07-07 | 2026-07-13 | 148, 147 |  |  | 2026-07-07 | 2026-07-13 | 5d | 21d | 0d |
| 153 | 3.5.3.3.3 | Planta, corte e detalhe isométrico contendo: - Detalhamento dos condutores com diâmetros, cotas e inclinações definitivas (condutores pluviais) - Calhas, bocas de lobo, dissipadores de energia e demais elementos/equipamentos definitivos | 5d | 2026-07-14 | 2026-07-20 | 151, 152 |  |  | 2026-07-14 | 2026-07-20 | 5d | 21d | 0d |
| 154 | 3.5.3.3.4 | Quantitativos e especificação técnica dos materiais | 4d | 2026-07-21 | 2026-07-24 | 153 |  |  | 2026-07-21 | 2026-07-24 | 4d | 21d | 0d |
| 155 | 3.5.3.3.5 | Aprovação de Conformidade | 3d | 2026-07-22 | 2026-07-24 | 154FF |  |  | 2026-07-22 | 2026-07-24 | 0d | 21d |  |
| 156 | 3.5.3.3.6 | Material para entrega ao contrato | 3d | 2026-07-22 | 2026-07-24 | 154FF |  |  | 2026-07-22 | 2026-07-24 | 0d | 21d |  |

| ID | WBS | Task | Type | Duration | Start | Finish | Predecessors | Complete | Remaining | Baseline start | Baseline finish | Baseline duration | Total slack | Free slack | Constraint |
| --- | --- | --- | --- | --- | --- | --- | --- | --- | --- | --- | --- | --- | --- | --- | --- |
| 157 | 3.5.4 | **PCI (Incêndio)** |  | 0d | 2026-06-26 A | 2026-06-26 A |  | 100% |  | 2026-06-01 | 2026-06-22 | 15d |  |  |  |
| 158 | 3.5.4.1 | **LOD 100 — Premissas, diretrizes e interfaces** |  | 0d | 2026-06-26 A | 2026-06-26 A |  | 100% |  | 2026-06-01 | 2026-06-15 | 10d |  |  |  |
| 159 | 3.5.4.1.1 | Estudo e avaliação da arquitetura atendendo as normas competentes de PCI | milestone | 0d | 2026-06-26 A | 2026-06-26 A | 43FS+46d | 100% |  | 2026-06-01 | 2026-06-15 | 10d |  |  |  |
| 160 | 3.5.4.1.2 | Avaliação do espaço para CMI e Central de Gás. | milestone | 0d | 2026-06-26 A | 2026-06-26 A | 43FS+46d | 100% |  | 2026-06-01 | 2026-06-15 | 10d |  |  |  |
| 161 | 3.5.4.1.3 | Pontos locação para seus elementos no projeto arquitetônico | milestone | 0d | 2026-06-26 A | 2026-06-26 A | 43FS+46d | 100% |  | 2026-06-01 | 2026-06-15 | 10d |  |  |  |
| 162 | 3.5.4.2 | **LOD 200 — Validação interdisciplinar e solução preliminar** |  | 0d | 2026-06-26 A | 2026-06-26 A |  | 100% |  | 2026-06-16 | 2026-06-22 | 5d |  |  |  |
| 163 | 3.5.4.2.1 | Definição da classificação da edificação e o risco de incêndio | milestone | 0d | 2026-06-26 A | 2026-06-26 A | 159 | 100% |  | 2026-06-16 | 2026-06-22 | 5d |  |  |  |
| 164 | 3.5.4.2.2 | Cálculos pré-dimensionados dos extintores, hidrantes e bomba. | milestone | 0d | 2026-06-26 A | 2026-06-26 A | 161 | 100% |  | 2026-06-16 | 2026-06-22 | 5d |  |  |  |
| 165 | 3.5.4.2.3 | Avaliação das rotas de fuga, ventilação de CMI e outros elementos de importância para as normas de PCI | milestone | 0d | 2026-06-26 A | 2026-06-26 A | 161 | 100% |  | 2026-06-16 | 2026-06-22 | 5d |  |  |  |
| 166 | 3.5.4.2.4 | Aprovação de Conformidade | milestone | 0d | 2026-06-26 A | 2026-06-26 A | 165FF | 100% |  | 2026-06-18 | 2026-06-22 | 0d |  |  |  |
| 167 | 3.5.4.2.5 | Material para entrega ao contrato | milestone | 0d | 2026-06-26 A | 2026-06-26 A | 165FF | 100% |  | 2026-06-18 | 2026-06-22 | 0d |  |  |  |
| 168 | 3.5.5 | Paisagismo |  | 20d | 2026-06-29 A | 2026-07-24 |  | 77% | 4.6d | 2026-06-01 | 2026-07-24 | 0d | 21d |  | start no earlier than 2026-06-29 |
| 169 | 3.5.6 | Elétrica |  | 20d | 2026-06-29 A | 2026-07-24 |  | 35% | 13d | 2026-06-01 | 2026-07-24 | 0d | 21d |  | start no earlier than 2026-06-29 |
| 170 | 3.5.7 | Subestação |  | 20d | 2026-06-29 A | 2026-07-24 |  | 35% | 13d | 2026-06-01 | 2026-07-24 | 0d | 21d |  | start no earlier than 2026-06-29 |
| 171 | 3.5.8 | Hidráulica (castelo d'água) |  | 20d | 2026-06-29 A | 2026-07-24 |  | 60% | 8d | 2026-06-01 | 2026-07-24 | 0d | 21d |  | start no earlier than 2026-06-29 |
| 172 | 3.6 | **002 - CT Olímpico** |  | 74d | 2026-05-12 A | 2026-08-24 |  | 55% | 33.4d | 2026-05-12 | 2026-07-27 | 54d | 0d |  |  |
| 173 | 3.6.1 | **Arquitetura** |  | 68d | 2026-05-12 A | 2026-08-14 |  | 77% | 15.33d | 2026-05-12 | 2026-07-27 | 54d | 6d |  |  |
| 174 | 3.6.1.1 | **LOD 200 - ESTUDO PRELIMINAR** |  | 48d | 2026-05-12 A | 2026-07-17 |  | 90% | 4.8d | 2026-05-12 | 2026-07-03 | 38d | 26d |  |  |
| 175 | 3.6.1.1.1 | Modelagem das paredes |  | 48d | 2026-05-12 A | 2026-07-17 | 51FS+8d | 90% | 4.8d | 2026-05-12 | 2026-07-03 | 38d | 26d |  |  |
| 176 | 3.6.1.1.2 | Modelagem dos pisos |  | 48d | 2026-05-12 A | 2026-07-17 | 51FS+8d | 90% | 4.8d | 2026-05-12 | 2026-07-03 | 38d | 26d |  |  |
| 177 | 3.6.1.1.3 | Inserção de portas |  | 48d | 2026-05-12 A | 2026-07-17 | 51FS+8d | 90% | 4.8d | 2026-05-12 | 2026-07-03 | 38d | 26d |  |  |
| 178 | 3.6.1.1.4 | Inserção de janelas |  | 48d | 2026-05-12 A | 2026-07-17 | 51FS+8d | 90% | 4.8d | 2026-05-12 | 2026-07-03 | 38d | 26d |  |  |
| 179 | 3.6.1.1.5 | Inserção de escada(s) |  | 48d | 2026-05-12 A | 2026-07-17 | 51FS+8d | 90% | 4.8d | 2026-05-12 | 2026-07-03 | 38d | 26d |  |  |
| 180 | 3.6.1.1.6 | Inserção de elevador(es) |  | 48d | 2026-05-12 A | 2026-07-17 | 51FS+8d | 90% | 4.8d | 2026-05-12 | 2026-07-03 | 38d | 26d |  |  |
| 181 | 3.6.1.1.7 | Inserção de layout |  | 48d | 2026-05-12 A | 2026-07-17 | 51FS+8d | 90% | 4.8d | 2026-05-12 | 2026-07-03 | 38d | 26d |  |  |
| 182 | 3.6.1.1.8 | Identificação dos ambientes |  | 48d | 2026-05-12 A | 2026-07-17 | 51FS+8d | 90% | 4.8d | 2026-05-12 | 2026-07-03 | 38d | 26d |  |  |
| 183 | 3.6.1.1.9 | Espaços de circulação |  | 48d | 2026-05-12 A | 2026-07-17 | 51FS+8d | 90% | 4.8d | 2026-05-12 | 2026-07-03 | 38d | 26d |  |  |
| 184 | 3.6.1.1.10 | Áreas de serviços, funcionais e técnicas |  | 48d | 2026-05-12 A | 2026-07-17 | 51FS+8d | 90% | 4.8d | 2026-05-12 | 2026-07-03 | 38d | 26d |  |  |
| 185 | 3.6.1.1.11 | Projeção de níveis superiores e da cobertura |  | 48d | 2026-05-12 A | 2026-07-17 | 51FS+8d | 90% | 4.8d | 2026-05-12 | 2026-07-03 | 38d | 26d |  |  |
| 186 | 3.6.1.1.12 | Cotas de nível principais |  | 48d | 2026-05-12 A | 2026-07-17 | 51FS+8d | 90% | 4.8d | 2026-05-12 | 2026-07-03 | 38d | 26d | 0d |  |
| 187 | 3.6.1.1.13 | Relatório/Memorial de Projeto Preliminar |  | 48d | 2026-05-12 A | 2026-07-17 | 51FS+8d | 90% | 4.8d | 2026-05-12 | 2026-07-03 | 38d | 6d | 0d |  |

| ID | WBS | Task | Duration | Start | Finish | Predecessors | Baseline start | Baseline finish | Baseline duration | Total slack | Free slack |
| --- | --- | --- | --- | --- | --- | --- | --- | --- | --- | --- | --- |
| 188 | 3.6.1.2 | **LOD 300 - ANTEPROJETO** | 10d | 2026-08-03 | 2026-08-14 |  | 2026-07-06 | 2026-07-27 | 16d | 6d | 0d |
| 189 | 3.6.1.2.1 | **Situação** | 1d | 2026-08-03 | 2026-08-03 |  | 2026-07-06 | 2026-07-07 | 2d | 6d |  |
| 190 | 3.6.1.2.1.1 | Indicar simbologias de representação gráfica, conforme NBR 6492:2021; | 1d | 2026-08-03 | 2026-08-03 | 187FS+10d | 2026-07-06 | 2026-07-07 | 2d | 15d |  |
| 191 | 3.6.1.2.1.2 | Indicação Norte | 1d | 2026-08-03 | 2026-08-03 | 187FS+10d | 2026-07-06 | 2026-07-07 | 2d | 15d |  |
| 192 | 3.6.1.2.1.3 | Analisar, adicionar e fechar - Curvas de nível existentes e projetadas (conforme projetos de topografia e sondagem recebidos); | 1d | 2026-08-03 | 2026-08-03 | 187FS+10d | 2026-07-06 | 2026-07-07 | 2d | 15d |  |
| 193 | 3.6.1.2.1.4 | Indicação de Escala; | 1d | 2026-08-03 | 2026-08-03 | 187FS+10d | 2026-07-06 | 2026-07-07 | 2d | 15d |  |
| 194 | 3.6.1.2.1.5 | Vias de acesso ao conjunto, arruamento, logradouros adjacentes e calçadas com os respectivos equipamentos urbanos; | 1d | 2026-08-03 | 2026-08-03 | 187FS+10d | 2026-07-06 | 2026-07-07 | 2d | 15d |  |
| 195 | 3.6.1.2.1.6 | Platôs e taludes principais; | 1d | 2026-08-03 | 2026-08-03 | 187FS+10d | 2026-07-06 | 2026-07-07 | 2d | 15d |  |
| 196 | 3.6.1.2.1.7 | Perímetro do terreno, recuos e afastamentos; | 1d | 2026-08-03 | 2026-08-03 | 187FS+10d | 2026-07-06 | 2026-07-07 | 2d | 15d |  |
| 197 | 3.6.1.2.1.8 | Indicação das áreas a serem edificadas com o contorno da cobertura das edificações, estacionamentos e áreas permeáveis/impermeáveis; | 1d | 2026-08-03 | 2026-08-03 | 187FS+10d | 2026-07-06 | 2026-07-07 | 2d | 15d |  |
| 198 | 3.6.1.2.1.9 | Denominação das edificações, blocos ou espaços; | 1d | 2026-08-03 | 2026-08-03 | 187FS+10d | 2026-07-06 | 2026-07-07 | 2d | 15d |  |
| 199 | 3.6.1.2.1.10 | Cotas gerais | 1d | 2026-08-03 | 2026-08-03 | 187FS+10d | 2026-07-06 | 2026-07-07 | 2d | 15d |  |
| 200 | 3.6.1.2.1.11 | Cotas de nível principal. | 1d | 2026-08-03 | 2026-08-03 | 187FS+10d | 2026-07-06 | 2026-07-07 | 2d | 15d |  |
| 201 | 3.6.1.2.1.12 | Quadros de áreas | 1d | 2026-08-03 | 2026-08-03 | 187FS+10d | 2026-07-06 | 2026-07-07 | 2d | 15d |  |
| 202 | 3.6.1.2.1.13 | Relatório | 1d | 2026-08-03 | 2026-08-03 | 187FS+10d | 2026-07-06 | 2026-07-07 | 2d | 6d | 0d |
| 203 | 3.6.1.2.2 | Planta com as cotas de nível projetadas e existentes | 1d | 2026-08-04 | 2026-08-04 | 202 | 2026-07-08 | 2026-07-09 | 2d | 6d | 0d |
| 204 | 3.6.1.2.3 | **Plantas baixas (se tiver mais de um pavimento, duplicar bloco)** | 2d | 2026-08-05 | 2026-08-06 |  | 2026-07-10 | 2026-07-13 | 2d | 6d |  |
| 205 | 3.6.1.2.3.1 | Indicar simbologias de representação gráfica, conforme NBR 6492:2021; | 2d | 2026-08-05 | 2026-08-06 | 203 | 2026-07-10 | 2026-07-13 | 2d | 12d |  |
| 206 | 3.6.1.2.3.2 | Compatibilização (verificar se está tudo conforme as normas e alinhar com o restante das disciplinas de engenharia) | 2d | 2026-08-05 | 2026-08-06 | 203 | 2026-07-10 | 2026-07-13 | 2d | 12d |  |
| 207 | 3.6.1.2.3.3 | Compatibilização (deixar tudo conforme padrão Quanta) | 2d | 2026-08-05 | 2026-08-06 | 203 | 2026-07-10 | 2026-07-13 | 2d | 12d |  |
| 208 | 3.6.1.2.3.4 | Indicação de Norte; | 2d | 2026-08-05 | 2026-08-06 | 203 | 2026-07-10 | 2026-07-13 | 2d | 12d |  |
| 209 | 3.6.1.2.3.5 | Indicação de Escala; | 2d | 2026-08-05 | 2026-08-06 | 203 | 2026-07-10 | 2026-07-13 | 2d | 12d |  |
| 210 | 3.6.1.2.3.6 | Indicação de Acessos; | 2d | 2026-08-05 | 2026-08-06 | 203 | 2026-07-10 | 2026-07-13 | 2d | 12d |  |
| 211 | 3.6.1.2.3.7 | Elementos de vedação internos e externos; | 2d | 2026-08-05 | 2026-08-06 | 203 | 2026-07-10 | 2026-07-13 | 2d | 12d |  |
| 212 | 3.6.1.2.3.8 | Esquadrias; | 2d | 2026-08-05 | 2026-08-06 | 203 | 2026-07-10 | 2026-07-13 | 2d | 12d |  |
| 213 | 3.6.1.2.3.9 | Elementos estruturais principais; | 2d | 2026-08-05 | 2026-08-06 | 203 | 2026-07-10 | 2026-07-13 | 2d | 12d |  |
| 214 | 3.6.1.2.3.10 | Identificação dos ambientes e espaços (internos e externos); | 2d | 2026-08-05 | 2026-08-06 | 203 | 2026-07-10 | 2026-07-13 | 2d | 12d |  |
| 215 | 3.6.1.2.3.11 | Espaços de circulação internos e externos; | 2d | 2026-08-05 | 2026-08-06 | 203 | 2026-07-10 | 2026-07-13 | 2d | 12d |  |
| 216 | 3.6.1.2.3.12 | Áreas de serviço, funcionais e técnicas (internos e externos); | 2d | 2026-08-05 | 2026-08-06 | 203 | 2026-07-10 | 2026-07-13 | 2d | 12d |  |
| 217 | 3.6.1.2.3.13 | Projeções de níveis superiores; | 2d | 2026-08-05 | 2026-08-06 | 203 | 2026-07-10 | 2026-07-13 | 2d | 12d |  |
| 218 | 3.6.1.2.3.14 | Cotas gerais | 2d | 2026-08-05 | 2026-08-06 | 203 | 2026-07-10 | 2026-07-13 | 2d | 12d |  |
| 219 | 3.6.1.2.3.15 | Cotas de nível principal. | 2d | 2026-08-05 | 2026-08-06 | 203 | 2026-07-10 | 2026-07-13 | 2d | 12d |  |
| 220 | 3.6.1.2.3.16 | Tabelas de paredes, pisos, esquadrias e plantas | 2d | 2026-08-05 | 2026-08-06 | 203 | 2026-07-10 | 2026-07-13 | 2d | 12d |  |
| 221 | 3.6.1.2.3.17 | Quadro de áreas | 2d | 2026-08-05 | 2026-08-06 | 203 | 2026-07-10 | 2026-07-13 | 2d | 6d | 0d |
| 222 | 3.6.1.2.3.18 | Relatório | 2d | 2026-08-05 | 2026-08-06 | 203 | 2026-07-10 | 2026-07-13 | 2d | 12d |  |

| ID | WBS | Task | Duration | Start | Finish | Predecessors | Baseline start | Baseline finish | Baseline duration | Total slack | Free slack |
| --- | --- | --- | --- | --- | --- | --- | --- | --- | --- | --- | --- |
| 223 | 3.6.1.2.4 | **Planta das coberturas** | 1d | 2026-08-07 | 2026-08-07 |  | 2026-07-14 | 2026-07-15 | 2d | 6d |  |
| 224 | 3.6.1.2.4.1 | Indicação do Norte | 1d | 2026-08-07 | 2026-08-07 | 221 | 2026-07-14 | 2026-07-15 | 2d | 11d |  |
| 225 | 3.6.1.2.4.2 | Indicação de escala | 1d | 2026-08-07 | 2026-08-07 | 221 | 2026-07-14 | 2026-07-15 | 2d | 11d |  |
| 226 | 3.6.1.2.4.3 | Curvas de nível | 1d | 2026-08-07 | 2026-08-07 | 221 | 2026-07-14 | 2026-07-15 | 2d | 11d |  |
| 227 | 3.6.1.2.4.4 | Indicação de Acessos; | 1d | 2026-08-07 | 2026-08-07 | 221 | 2026-07-14 | 2026-07-15 | 2d | 11d |  |
| 228 | 3.6.1.2.4.5 | Estacionamento e áreas cobertas | 1d | 2026-08-07 | 2026-08-07 | 221 | 2026-07-14 | 2026-07-15 | 2d | 11d |  |
| 229 | 3.6.1.2.4.6 | Cobertura das edificações | 1d | 2026-08-07 | 2026-08-07 | 221 | 2026-07-14 | 2026-07-15 | 2d | 11d |  |
| 230 | 3.6.1.2.4.7 | Sentido de escoamento das águas pluviais e inclinação | 1d | 2026-08-07 | 2026-08-07 | 221 | 2026-07-14 | 2026-07-15 | 2d | 11d |  |
| 231 | 3.6.1.2.4.8 | Cotas gerais | 1d | 2026-08-07 | 2026-08-07 | 221 | 2026-07-14 | 2026-07-15 | 2d | 11d |  |
| 232 | 3.6.1.2.4.9 | Cotas de nível principal | 1d | 2026-08-07 | 2026-08-07 | 221 | 2026-07-14 | 2026-07-15 | 2d | 6d | 0d |
| 233 | 3.6.1.2.4.10 | Relatório | 1d | 2026-08-07 | 2026-08-07 | 221 | 2026-07-14 | 2026-07-15 | 2d | 11d |  |
| 234 | 3.6.1.2.5 | **Cortes longitudinais** | 1d | 2026-08-10 | 2026-08-10 |  | 2026-07-16 | 2026-07-17 | 2d | 6d |  |
| 235 | 3.6.1.2.5.1 | Indicar simbologias de representação gráfica, conforme NBR 6492:2021; | 1d | 2026-08-10 | 2026-08-10 | 232 | 2026-07-16 | 2026-07-17 | 2d | 10d |  |
| 236 | 3.6.1.2.5.2 | Indicação de Escala; | 1d | 2026-08-10 | 2026-08-10 | 232 | 2026-07-16 | 2026-07-17 | 2d | 10d |  |
| 237 | 3.6.1.2.5.3 | Elementos estruturais principais; | 1d | 2026-08-10 | 2026-08-10 | 232 | 2026-07-16 | 2026-07-17 | 2d | 10d |  |
| 238 | 3.6.1.2.5.4 | Elementos de vedação internos e externos; | 1d | 2026-08-10 | 2026-08-10 | 232 | 2026-07-16 | 2026-07-17 | 2d | 10d |  |
| 239 | 3.6.1.2.5.5 | Esquadrias; | 1d | 2026-08-10 | 2026-08-10 | 232 | 2026-07-16 | 2026-07-17 | 2d | 10d |  |
| 240 | 3.6.1.2.5.6 | Identificação dos ambientes; | 1d | 2026-08-10 | 2026-08-10 | 232 | 2026-07-16 | 2026-07-17 | 2d | 10d |  |
| 241 | 3.6.1.2.5.7 | Cobertura com indicação da respectiva inclinação; | 1d | 2026-08-10 | 2026-08-10 | 232 | 2026-07-16 | 2026-07-17 | 2d | 10d |  |
| 242 | 3.6.1.2.5.8 | Cotas gerais; | 1d | 2026-08-10 | 2026-08-10 | 232 | 2026-07-16 | 2026-07-17 | 2d | 10d |  |
| 243 | 3.6.1.2.5.9 | Cotas de nível principal; | 1d | 2026-08-10 | 2026-08-10 | 232 | 2026-07-16 | 2026-07-17 | 2d | 10d |  |
| 244 | 3.6.1.2.5.10 | Eixos do projeto; | 1d | 2026-08-10 | 2026-08-10 | 232 | 2026-07-16 | 2026-07-17 | 2d | 10d |  |
| 245 | 3.6.1.2.5.11 | Relevo construído; | 1d | 2026-08-10 | 2026-08-10 | 232 | 2026-07-16 | 2026-07-17 | 2d | 10d |  |
| 246 | 3.6.1.2.5.12 | Projeção da topografia natural. | 1d | 2026-08-10 | 2026-08-10 | 232 | 2026-07-16 | 2026-07-17 | 2d | 6d | 0d |
| 247 | 3.6.1.2.5.13 | Relatório | 1d | 2026-08-10 | 2026-08-10 | 232 | 2026-07-16 | 2026-07-17 | 2d | 10d |  |

| ID | WBS | Task | Duration | Start | Finish | Predecessors | Baseline start | Baseline finish | Baseline duration | Total slack | Free slack |
| --- | --- | --- | --- | --- | --- | --- | --- | --- | --- | --- | --- |
| 248 | 3.6.1.2.6 | **Cortes transversais** | 1d | 2026-08-11 | 2026-08-11 |  | 2026-07-20 | 2026-07-21 | 2d | 6d |  |
| 249 | 3.6.1.2.6.1 | Indicar simbologias de representação gráfica, conforme NBR 6492:2021; | 1d | 2026-08-11 | 2026-08-11 | 246 | 2026-07-20 | 2026-07-21 | 2d | 9d |  |
| 250 | 3.6.1.2.6.2 | Indicação de Escala; | 1d | 2026-08-11 | 2026-08-11 | 246 | 2026-07-20 | 2026-07-21 | 2d | 9d |  |
| 251 | 3.6.1.2.6.3 | Elementos estruturais principais; | 1d | 2026-08-11 | 2026-08-11 | 246 | 2026-07-20 | 2026-07-21 | 2d | 9d |  |
| 252 | 3.6.1.2.6.4 | Elementos de vedação internos e externos; | 1d | 2026-08-11 | 2026-08-11 | 246 | 2026-07-20 | 2026-07-21 | 2d | 9d |  |
| 253 | 3.6.1.2.6.5 | Esquadrias; | 1d | 2026-08-11 | 2026-08-11 | 246 | 2026-07-20 | 2026-07-21 | 2d | 9d |  |
| 254 | 3.6.1.2.6.6 | Identificação dos ambientes; | 1d | 2026-08-11 | 2026-08-11 | 246 | 2026-07-20 | 2026-07-21 | 2d | 9d |  |
| 255 | 3.6.1.2.6.7 | Cobertura com indicação da respectiva inclinação; | 1d | 2026-08-11 | 2026-08-11 | 246 | 2026-07-20 | 2026-07-21 | 2d | 9d |  |
| 256 | 3.6.1.2.6.8 | Cotas gerais; | 1d | 2026-08-11 | 2026-08-11 | 246 | 2026-07-20 | 2026-07-21 | 2d | 9d |  |
| 257 | 3.6.1.2.6.9 | Cotas de nível principal; | 1d | 2026-08-11 | 2026-08-11 | 246 | 2026-07-20 | 2026-07-21 | 2d | 9d |  |
| 258 | 3.6.1.2.6.10 | Eixos do projeto; | 1d | 2026-08-11 | 2026-08-11 | 246 | 2026-07-20 | 2026-07-21 | 2d | 9d |  |
| 259 | 3.6.1.2.6.11 | Relevo construído; | 1d | 2026-08-11 | 2026-08-11 | 246 | 2026-07-20 | 2026-07-21 | 2d | 9d |  |
| 260 | 3.6.1.2.6.12 | Projeção da topografia natural | 1d | 2026-08-11 | 2026-08-11 | 246 | 2026-07-20 | 2026-07-21 | 2d | 6d | 0d |
| 261 | 3.6.1.2.6.13 | Relatório | 1d | 2026-08-11 | 2026-08-11 | 246 | 2026-07-20 | 2026-07-21 | 2d | 9d |  |
| 262 | 3.6.1.2.7 | **Elevações** | 1d | 2026-08-12 | 2026-08-12 |  | 2026-07-22 | 2026-07-23 | 2d | 6d |  |
| 263 | 3.6.1.2.7.1 | Indicar simbologias de representação gráfica, conforme NBR 6492:2021; | 1d | 2026-08-12 | 2026-08-12 | 260 | 2026-07-22 | 2026-07-23 | 2d | 8d |  |
| 264 | 3.6.1.2.7.2 | Indicação de Escala; | 1d | 2026-08-12 | 2026-08-12 | 260 | 2026-07-22 | 2026-07-23 | 2d | 8d |  |
| 265 | 3.6.1.2.7.3 | Elementos estruturais principais; | 1d | 2026-08-12 | 2026-08-12 | 260 | 2026-07-22 | 2026-07-23 | 2d | 8d |  |
| 266 | 3.6.1.2.7.4 | Elementos de vedação internos e externos; | 1d | 2026-08-12 | 2026-08-12 | 260 | 2026-07-22 | 2026-07-23 | 2d | 8d |  |
| 267 | 3.6.1.2.7.5 | Esquadrias; | 1d | 2026-08-12 | 2026-08-12 | 260 | 2026-07-22 | 2026-07-23 | 2d | 8d |  |
| 268 | 3.6.1.2.7.6 | Relevo construído; | 1d | 2026-08-12 | 2026-08-12 | 260 | 2026-07-22 | 2026-07-23 | 2d | 8d |  |
| 269 | 3.6.1.2.7.7 | Cotas gerais; | 1d | 2026-08-12 | 2026-08-12 | 260 | 2026-07-22 | 2026-07-23 | 2d | 8d |  |
| 270 | 3.6.1.2.7.8 | Cotas de nível principais; | 1d | 2026-08-12 | 2026-08-12 | 260 | 2026-07-22 | 2026-07-23 | 2d | 8d |  |
| 271 | 3.6.1.2.7.9 | Cobertura (quando aparente). | 1d | 2026-08-12 | 2026-08-12 | 260 | 2026-07-22 | 2026-07-23 | 2d | 6d | 0d |

| ID | WBS | Task | Duration | Start | Finish | Predecessors | Complete | Remaining | Baseline start | Baseline finish | Baseline duration | Total slack | Free slack |
| --- | --- | --- | --- | --- | --- | --- | --- | --- | --- | --- | --- | --- | --- |
| 272 | 3.6.1.2.8 | **Memorial Descritivo** | 2d | 2026-08-13 | 2026-08-14 |  |  |  | 2026-07-24 | 2026-07-27 | 2d | 6d |  |
| 273 | 3.6.1.2.8.1 | Descrição dos elementos da edificação | 2d | 2026-08-13 | 2026-08-14 | 271 |  |  | 2026-07-24 | 2026-07-27 | 2d | 6d |  |
| 274 | 3.6.1.2.8.2 | Descrição dos componentes construtivos e materiais de construção | 2d | 2026-08-13 | 2026-08-14 | 271 |  |  | 2026-07-24 | 2026-07-27 | 2d | 6d |  |
| 275 | 3.6.1.2.8.3 | Lista de pranchas anexas e documentos | 2d | 2026-08-13 | 2026-08-14 | 271 |  |  | 2026-07-24 | 2026-07-27 | 2d | 6d |  |
| 276 | 3.6.2 | Aprovação de Conformidade | 3d | 2026-08-12 | 2026-08-14 | 188FF |  |  | 2026-07-23 | 2026-07-27 | 0d | 6d |  |
| 277 | 3.6.3 | Material para entrega ao contrato | 3d | 2026-08-12 | 2026-08-14 | 188FF |  |  | 2026-07-23 | 2026-07-27 | 0d | 6d |  |
| 278 | 3.6.4 | **Engenharia** | 60d | 2026-06-01 A | 2026-08-24 |  | 41% | 35.19d | 2026-06-01 | 2026-07-24 | 39d | 0d |  |
| 279 | 3.6.4.1 | **Estrutura** | 49d | 2026-06-01 A | 2026-08-07 |  | 60% | 19.6d | 2026-06-01 | 2026-07-20 | 35d | 11d |  |
| 280 | 3.6.4.1.1 | **LOD 100 — Premissas, diretrizes e interfaces** | 7d | 2026-06-01 A | 2026-06-10 A |  | 100% |  | 2026-06-01 | 2026-06-10 | 7d |  |  |
| 281 | 3.6.4.1.1.1 | Levantamento de tipos de cargas globais estimadas (permanentes, acidentais, vento e especiais). | 2d | 2026-06-01 A | 2026-06-02 A | 186SS+14d | 100% |  | 2026-06-01 | 2026-06-02 | 2d |  |  |
| 282 | 3.6.4.1.1.2 | Estudo volumétrico com modulação inicial de pilares, vigas e lajes. Entendendo vãos e desafios | 5d | 2026-06-01 A | 2026-06-08 A | 186SS+14d | 100% |  | 2026-06-01 | 2026-06-08 | 5d |  |  |
| 283 | 3.6.4.1.1.3 | Localização aproximada de elementos estruturais principais. Avaliando vãos e estudando posições | 2d | 2026-06-01 A | 2026-06-02 A | 186SS+14d | 100% |  | 2026-06-01 | 2026-06-02 | 2d |  |  |
| 284 | 3.6.4.1.1.4 | Estudo de viabilidade técnica e construtiva. | 3d | 2026-06-03 A | 2026-06-08 A | 283 | 100% |  | 2026-06-03 | 2026-06-08 | 3d |  |  |
| 285 | 3.6.4.1.1.5 | Definição preliminar do sistema estrutural (concreto armado, metálica ou mista). | 3d | 2026-06-03 A | 2026-06-08 A | 283 | 100% |  | 2026-06-03 | 2026-06-08 | 3d |  |  |
| 286 | 3.6.4.1.1.6 | Estimativa preliminar de tipologias de fundações (sapatas, blocos, estacas). | 2d | 2026-06-09 A | 2026-06-10 A | 284 | 100% |  | 2026-06-09 | 2026-06-10 | 2d |  |  |
| 287 | 3.6.4.1.1.7 | Previsão de áreas técnicas, casas de máquinas, reservatórios elevados e estrutura de cobertura. | 2d | 2026-06-09 A | 2026-06-10 A | 284 | 100% |  | 2026-06-09 | 2026-06-10 | 2d |  |  |
| 288 | 3.6.4.1.2 | **LOD 200 — Validação interdisciplinar e solução preliminar** | 35d | 2026-06-11 A | 2026-07-29 |  | 88% | 4.15d | 2026-06-11 | 2026-07-08 | 20d | 18d |  |
| 289 | 3.6.4.1.2.1 | Lista preliminar de cargas e ações para dimensionamento. | 10d | 2026-06-11 A | 2026-06-24 A | 287 | 100% |  | 2026-06-11 | 2026-06-17 | 5d |  |  |
| 290 | 3.6.4.1.2.2 | Definição preliminar de alturas de pavimentos e níveis de fundação. | 10d | 2026-06-11 A | 2026-06-24 A | 287 | 100% |  | 2026-06-11 | 2026-06-17 | 5d |  |  |
| 291 | 3.6.4.1.2.3 | Indicação aproximada do sistema de cobertura (tesouras, treliças, vigamento metálico ou concreto). | 10d | 2026-06-11 A | 2026-06-24 A | 287 | 100% |  | 2026-06-11 | 2026-06-17 | 5d |  |  |
| 292 | 3.6.4.1.2.4 | Modelagem genérica de pilares, vigas, lajes e fundações. | 10d | 2026-06-25 A | 2026-07-08 A | 289 | 100% |  | 2026-06-18 | 2026-06-24 | 5d |  |  |
| 293 | 3.6.4.1.2.5 | Traçado preliminar de elementos especiais (escadas, rampas estruturais, reservatórios). | 10d | 2026-06-25 A | 2026-07-08 A | 289 | 100% |  | 2026-06-18 | 2026-06-24 | 5d |  |  |
| 294 | 3.6.4.1.2.6 | Arquivo IFC, plantas de forma e planta de locação | 10d | 2026-06-25 A | 2026-07-08 A | 289 | 100% |  | 2026-06-18 | 2026-06-24 | 5d |  |  |
| 295 | 3.6.4.1.2.7 | Inserção de fundações com tipologia e dimensões preliminares. | 15d | 2026-07-09 A | 2026-07-29 | 293 | 79% | 3.2d | 2026-06-25 | 2026-07-01 | 5d | 18d |  |
| 296 | 3.6.4.1.2.8 | Compatibilização inicial com arquitetura e demais disciplinas. | 15d | 2026-07-09 A | 2026-07-29 | 294 | 79% | 3.2d | 2026-06-25 | 2026-07-01 | 5d | 18d |  |
| 297 | 3.6.4.1.2.9 | Indicação de passagens de infraestrutura (shafts, aberturas em lajes e vigas). | 15d | 2026-07-09 A | 2026-07-29 | 294 | 79% | 3.2d | 2026-06-25 | 2026-07-01 | 5d | 18d |  |
| 298 | 3.6.4.1.2.10 | Modelagem assertiva de elementos principais com dimensões aproximadas (largura, altura, espessura). | 15d | 2026-07-09 A | 2026-07-29 | 294 | 79% | 3.2d | 2026-06-25 | 2026-07-08 | 10d | 11d | 0d |
| 299 | 3.6.4.1.2.11 | Modelagem estimada de armaduras principais (em nível de concepção). | 15d | 2026-07-09 A | 2026-07-29 | 294 | 79% | 3.2d | 2026-06-25 | 2026-07-01 | 5d | 11d | 0d |

| ID | WBS | Task | Duration | Start | Finish | Predecessors | Complete | Remaining | Baseline start | Baseline finish | Baseline duration | Total slack | Free slack |
| --- | --- | --- | --- | --- | --- | --- | --- | --- | --- | --- | --- | --- | --- |
| 300 | 3.6.4.1.3 | **LOD 300 - Consolidação e documentação de entrega** | 7d | 2026-07-30 | 2026-08-07 |  |  |  | 2026-07-09 | 2026-07-20 | 8d | 11d | 0d |
| 301 | 3.6.4.1.3.1 | Indicação de níveis e cotas exatas. | 7d | 2026-07-30 | 2026-08-07 | 298, 299 |  |  | 2026-07-09 | 2026-07-20 | 8d | 11d |  |
| 302 | 3.6.4.1.3.2 | Quadro de cargas atualizado. | 7d | 2026-07-30 | 2026-08-07 | 298, 299 |  |  | 2026-07-09 | 2026-07-20 | 8d | 11d |  |
| 303 | 3.6.4.1.3.3 | Dimensionamento final de fundações conforme sondagem e cálculo estrutural. | 7d | 2026-07-30 | 2026-08-07 | 298, 299 |  |  | 2026-07-09 | 2026-07-20 | 8d | 11d |  |
| 304 | 3.6.4.1.3.4 | Definição final dos elementos da cobertura (treliças, vigas, chapas, purlins). | 7d | 2026-07-30 | 2026-08-07 | 298, 299 |  |  | 2026-07-09 | 2026-07-20 | 8d | 11d |  |
| 305 | 3.6.4.1.3.5 | Compatibilização final com arquitetura e instalações (aberturas, embutidos e passagens). | 7d | 2026-07-30 | 2026-08-07 | 298, 299 |  |  | 2026-07-09 | 2026-07-20 | 8d | 11d |  |
| 306 | 3.6.4.1.3.6 | Modelagem definitiva de pilares, vigas, lajes, blocos, sapatas e estacas. | 7d | 2026-07-30 | 2026-08-07 | 298, 299 |  |  | 2026-07-09 | 2026-07-20 | 8d | 11d |  |
| 307 | 3.6.4.1.3.7 | Planta estrutural com todos os elementos identificados. | 7d | 2026-07-30 | 2026-08-07 | 298, 299 |  |  | 2026-07-09 | 2026-07-20 | 8d | 11d |  |
| 308 | 3.6.4.1.3.8 | Memorial descritivo contendo: objetivos, justificativa, descrição do sistema, concepção de fundações/cobertura, especificações e quadro de cargas. | 7d | 2026-07-30 | 2026-08-07 | 298, 299 |  |  | 2026-07-09 | 2026-07-20 | 8d | 11d |  |
| 309 | 3.6.4.1.3.9 | Normas técnicas utilizadas (NBR 6118, 6120, 6122, 8800, etc.). | 7d | 2026-07-30 | 2026-08-07 | 298, 299 |  |  | 2026-07-09 | 2026-07-20 | 8d | 11d |  |
| 310 | 3.6.4.1.3.10 | Consolidar documentação de entrega e emissão formal da disciplina | 7d | 2026-07-30 | 2026-08-07 | 298, 299 |  |  | 2026-07-09 | 2026-07-20 | 8d | 11d |  |
| 311 | 3.6.4.1.4 | Aprovação de Conformidade | 3d | 2026-08-05 | 2026-08-07 | 300FF |  |  | 2026-07-16 | 2026-07-20 | 0d | 11d |  |
| 312 | 3.6.4.1.5 | Material para entrega ao contrato | 3d | 2026-08-05 | 2026-08-07 | 300FF |  |  | 2026-07-16 | 2026-07-20 | 0d | 11d |  |
| 313 | 3.6.4.2 | **Hidrossanitário** | 60d | 2026-06-01 A | 2026-08-24 |  | 60% | 24d | 2026-06-01 | 2026-07-24 | 39d | 0d |  |
| 314 | 3.6.4.2.1 | **LOD 100 — Premissas, diretrizes e interfaces** | 11d | 2026-06-01 A | 2026-06-16 A |  | 100% |  | 2026-06-01 | 2026-06-16 | 11d |  |  |
| 315 | 3.6.4.2.1.1 | Memorial preliminar | 10d | 2026-06-01 A | 2026-06-15 A | 186SS+14d | 100% |  | 2026-06-01 | 2026-06-15 | 10d |  |  |
| 316 | 3.6.4.2.1.2 | Indicação de áreas técnicas | 6d | 2026-06-09 A | 2026-06-16 A | 186SS+14d, 282 | 100% |  | 2026-06-09 | 2026-06-16 | 6d |  |  |
| 317 | 3.6.4.2.1.3 | Planta baixa com traçado conceitual | 6d | 2026-06-09 A | 2026-06-16 A | 282 | 100% |  | 2026-06-09 | 2026-06-16 | 6d |  |  |
| 318 | 3.6.4.2.1.4 | Pontos de consumo principais e coletas sanitárias | 6d | 2026-06-09 A | 2026-06-16 A | 282 | 100% |  | 2026-06-09 | 2026-06-16 | 6d |  |  |
| 319 | 3.6.4.2.1.5 | Classificação de uso | 10d | 2026-06-02 A | 2026-06-16 A | 318FF | 100% |  | 2026-06-02 | 2026-06-16 | 10d |  |  |
| 320 | 3.6.4.2.1.6 | Diretrizes de espaço | 10d | 2026-06-02 A | 2026-06-16 A | 318FF | 100% |  | 2026-06-02 | 2026-06-16 | 10d |  |  |
| 321 | 3.6.4.2.1.7 | Estimativa de demanda ou população de uso | 10d | 2026-06-02 A | 2026-06-16 A | 318FF | 100% |  | 2026-06-02 | 2026-06-16 | 10d |  |  |
| 322 | 3.6.4.2.1.8 | Levantamento de elementos especiais dentre outras disciplinas de Engenharia e Arquitetura | 10d | 2026-06-02 A | 2026-06-16 A | 318FF | 100% |  | 2026-06-02 | 2026-06-16 | 10d |  |  |
| 323 | 3.6.4.2.2 | **LOD 200 — Validação interdisciplinar e solução preliminar** | 26d | 2026-07-09 A | 2026-08-13 |  | 51% | 12.66d | 2026-06-17 | 2026-07-14 | 20d | 7d |  |
| 324 | 3.6.4.2.2.1 | Critérios normativos adotados (ABNT, concessionárias, etc.) | 26d | 2026-07-09 A | 2026-08-13 | 322FS+16d | 51% | 12.66d | 2026-06-17 | 2026-07-14 | 20d | 7d | 0d |
| 325 | 3.6.4.2.2.2 | Informações de demanda na concessionária (DPE ou AVT Aviso de Viabilidade Técnica) | 26d | 2026-07-09 A | 2026-08-13 | 324SS | 51% | 12.66d | 2026-06-17 | 2026-07-14 | 20d | 7d |  |
| 326 | 3.6.4.2.2.3 | Recebimento e Análise de Sondagem (permeabilidade ou percolação) | 26d | 2026-07-09 A | 2026-08-13 | 324SS | 51% | 12.66d | 2026-06-17 | 2026-07-14 | 20d | 7d |  |
| 327 | 3.6.4.2.2.4 | Recebimento e Análise de Topografia | 26d | 2026-07-09 A | 2026-08-13 | 324SS | 51% | 12.66d | 2026-06-17 | 2026-07-14 | 20d | 7d |  |
| 328 | 3.6.4.2.2.5 | Estudo de viabilidade técnica, econômica e ambiental | 26d | 2026-07-09 A | 2026-08-13 | 324SS | 51% | 12.66d | 2026-06-17 | 2026-07-14 | 20d | 7d |  |
| 329 | 3.6.4.2.2.6 | Lista preliminar de sistemas envolvidos. | 26d | 2026-07-09 A | 2026-08-13 | 324SS | 51% | 12.66d | 2026-06-17 | 2026-07-14 | 20d | 7d |  |
| 330 | 3.6.4.2.2.7 | Planta baixa e cortes estimada contendo: - Traçado preliminar de barrilete, ramais, colunas - Diâmetros estimados - Localização aproximada das bombas e unidades de tratamento e reúso - Localização do ramal predial de água e esgoto - Localização aproximada | 26d | 2026-07-09 A | 2026-08-13 | 324SS | 51% | 12.66d | 2026-06-17 | 2026-07-14 | 20d | 0d |  |

| ID | WBS | Task | Duration | Start | Finish | Predecessors | Complete | Remaining | Baseline start | Baseline finish | Baseline duration | Total slack | Free slack | Text3 |
| --- | --- | --- | --- | --- | --- | --- | --- | --- | --- | --- | --- | --- | --- | --- |
| 331 | 3.6.4.2.3 | **LOD 300 - Consolidação e documentação de entrega** | 7d | 2026-08-14 | 2026-08-24 |  |  |  | 2026-07-15 | 2026-07-24 | 8d | 0d |  |  |
| 332 | 3.6.4.2.3.1 | Planta, corte e detalhe isométrico contendo: - Modelagem detalhada com diâmetros, cotas e inclinações definitivas (barriletes, colunas, ramais) - Quantitativos e especificação técnica dos materiais (tubos, conexões, reservatórios, registros e válvulas com | 7d | 2026-08-14 | 2026-08-24 | 330 |  |  | 2026-07-15 | 2026-07-24 | 8d | 0d |  |  |
| 333 | 3.6.4.2.3.2 | Memorial descritivo | 3d | 2026-08-20 | 2026-08-24 | 332FF |  |  | 2026-07-22 | 2026-07-24 | 3d | 0d |  |  |
| 334 | 3.6.4.2.3.3 | Memória de cálculo (pressão, vazão, diâmetros, perda de carga). | 3d | 2026-08-20 | 2026-08-24 | 330, 332FF |  |  | 2026-07-22 | 2026-07-24 | 3d | 0d |  |  |
| 335 | 3.6.4.2.4 | Aprovação de Conformidade | 3d | 2026-08-20 | 2026-08-24 | 331FF |  |  | 2026-07-22 | 2026-07-24 | 0d | 0d |  |  |
| 336 | 3.6.4.2.5 | Material para entrega ao contrato | 3d | 2026-08-20 | 2026-08-24 | 331FF |  |  | 2026-07-22 | 2026-07-24 | 0d | 0d |  |  |
| 337 | 3.6.4.3 | **AVAC** | 60d | 2026-06-01 A | 2026-08-24 |  | 95% | 3d | 2026-06-01 | 2026-07-24 | 39d | 0d |  |  |
| 338 | 3.6.4.3.1 | **LOD 100 — Premissas, diretrizes e interfaces** | 20d | 2026-06-01 A | 2026-06-29 A |  | 100% |  | 2026-06-01 | 2026-06-29 | 20d |  |  |  |
| 339 | 3.6.4.3.1.1 | Estimativa de carga térmica por ambiente. | 10d | 2026-06-01 A | 2026-06-15 A | 186SS+14d | 100% |  | 2026-06-01 | 2026-06-15 | 10d |  |  |  |
| 340 | 3.6.4.3.1.2 | Localização preliminar de unidades de tratamento de ar, condensadoras e exaustores. | 10d | 2026-06-01 A | 2026-06-15 A | 186SS+14d | 100% |  | 2026-06-01 | 2026-06-15 | 10d |  |  |  |
| 341 | 3.6.4.3.1.3 | Pontos locação para seus elementos no projeto arquitetônico. | 10d | 2026-06-01 A | 2026-06-15 A | 186SS+14d | 100% |  | 2026-06-01 | 2026-06-15 | 10d |  |  |  |
| 342 | 3.6.4.3.1.4 | Estudo de viabilidade e rotas principais de distribuição de ar. | 10d | 2026-06-01 A | 2026-06-15 A | 186SS+14d | 100% |  | 2026-06-01 | 2026-06-15 | 10d |  |  |  |
| 343 | 3.6.4.3.1.5 | Reserva de espaços técnicos e shafts. | 10d | 2026-06-01 A | 2026-06-15 A | 186SS+14d | 100% |  | 2026-06-01 | 2026-06-15 | 10d |  |  |  |
| 344 | 3.6.4.3.1.6 | Levantamento de cargas especiais provenientes de outras disciplinas. | 10d | 2026-06-16 A | 2026-06-29 A | 186SS+14d, 366, 378 | 100% |  | 2026-06-16 | 2026-06-29 | 10d |  |  |  |
| 345 | 3.6.4.3.2 | **LOD 200 — Validação interdisciplinar e solução preliminar** | 34d | 2026-07-08 A | 2026-08-24 |  | 95% | 1.68d | 2026-06-16 | 2026-07-24 | 29d | 0d |  |  |
| 346 | 3.6.4.3.2.1 | Lista preliminar de sistemas HVAC envolvidos (expansão direta, VRF, chillers, ventilação, exaustão). | 34d | 2026-07-08 A | 2026-08-24 | 343FS+16d | 95% | 1.68d | 2026-06-16 | 2026-07-24 | 29d | 0d |  |  |
| 347 | 3.6.4.3.2.2 | Planta baixa estimada contendo: pontos de insuflamento e retorno. | 34d | 2026-07-08 A | 2026-08-24 | 343FS+16d | 95% | 1.68d | 2026-06-16 | 2026-07-24 | 29d | 0d |  |  |
| 348 | 3.6.4.3.2.3 | Rotas iniciais de dutos, tubulações e drenos. | 34d | 2026-07-08 A | 2026-08-24 | 343FS+16d | 95% | 1.68d | 2026-06-16 | 2026-07-24 | 29d | 0d |  |  |
| 349 | 3.6.4.3.2.4 | Planta baixa estimada contendo: unidades internas e externas com posição preliminar. | 34d | 2026-07-08 A | 2026-08-24 | 343FS+16d | 95% | 1.68d | 2026-06-16 | 2026-07-24 | 29d | 0d |  |  |
| 350 | 3.6.4.3.3 | Aprovação de Conformidade | 3d | 2026-08-20 A | 2026-08-24 | 345FF | 44% | 1.68d | 2026-07-22 | 2026-07-24 | 0d | 0d |  |  |
| 351 | 3.6.4.3.4 | Material para entrega ao contrato | 3d | 2026-08-20 A | 2026-08-24 | 345FF | 44% | 1.68d | 2026-07-22 | 2026-07-24 | 0d | 0d |  |  |
| 352 | 3.6.4.4 | **PCI (Incêndio)** | 9d | 2026-08-05 | 2026-08-17 |  |  |  | 2026-06-01 | 2026-06-29 | 20d | 5d |  |  |
| 353 | 3.6.4.4.1 | **LOD 100 — Premissas, diretrizes e interfaces** | 4d | 2026-08-05 | 2026-08-10 |  |  |  | 2026-06-01 | 2026-06-15 | 10d | 5d |  | ܁# |
| 354 | 3.6.4.4.1.1 | Estudo e avaliação da arquitetura atendendo as normas competentes de PCI | 4d | 2026-08-05 | 2026-08-10 | 186SS+60d |  |  | 2026-06-01 | 2026-06-15 | 10d | 10d |  |  |
| 355 | 3.6.4.4.1.2 | Avaliação do espaço para CMI e Central de Gás. | 4d | 2026-08-05 | 2026-08-10 | 186SS+60d |  |  | 2026-06-01 | 2026-06-15 | 10d | 10d |  |  |
| 356 | 3.6.4.4.1.3 | Pontos locação para seus elementos no projeto arquitetônico | 4d | 2026-08-05 | 2026-08-10 | 186SS+60d |  |  | 2026-06-01 | 2026-06-15 | 10d | 5d | 0d |  |

| ID | WBS | Task | Duration | Start | Finish | Predecessors | Baseline start | Baseline finish | Baseline duration | Total slack | Free slack | Text3 |
| --- | --- | --- | --- | --- | --- | --- | --- | --- | --- | --- | --- | --- |
| 357 | 3.6.4.4.2 | **LOD 200 — Validação interdisciplinar e solução preliminar** | 5d | 2026-08-11 | 2026-08-17 |  | 2026-06-16 | 2026-06-29 | 10d | 5d | 0d | ܁# |
| 358 | 3.6.4.4.2.1 | Definição da classificação da edificação e o risco de incêndio | 5d | 2026-08-11 | 2026-08-17 | 356 | 2026-06-16 | 2026-06-29 | 10d | 5d |  |  |
| 359 | 3.6.4.4.2.2 | Cálculos pré-dimensionados dos extintores, hidrantes e bomba. | 5d | 2026-08-11 | 2026-08-17 | 356 | 2026-06-16 | 2026-06-29 | 10d | 5d |  |  |
| 360 | 3.6.4.4.2.3 | Avaliação das rotas de fuga, ventilação de CMI e outros elementos de importância para as normas de PCI | 5d | 2026-08-11 | 2026-08-17 | 356 | 2026-06-16 | 2026-06-29 | 10d | 5d |  |  |
| 361 | 3.6.4.4.3 | Aprovação de Conformidade | 3d | 2026-08-13 | 2026-08-17 | 357FF | 2026-06-25 | 2026-06-29 | 0d | 5d |  |  |
| 362 | 3.6.4.4.4 | Material para entrega ao contrato | 3d | 2026-08-13 | 2026-08-17 | 357FF | 2026-06-25 | 2026-06-29 | 0d | 5d |  |  |
| 363 | 3.6.4.5 | **Elétrica Baixa Tensão** | 49d | 2026-06-01 | 2026-08-07 |  | 2026-06-01 | 2026-07-24 | 39d | 11d |  |  |
| 364 | 3.6.4.5.1 | **LOD 100 — Concepção** | 16d | 2026-06-01 | 2026-06-23 |  | 2026-06-01 | 2026-06-23 | 16d | 21d |  |  |
| 365 | 3.6.4.5.1.1 | Avaliação e Diretrizes Técnicas para Arquitetura | 6d | 2026-06-01 | 2026-06-09 | 186SS+14d | 2026-06-01 | 2026-06-09 | 6d | 54d |  |  |
| 366 | 3.6.4.5.1.2 | Estimativa de Cargas e Demanda | 10d | 2026-06-01 | 2026-06-15 | 186SS+14d | 2026-06-01 | 2026-06-15 | 10d | 22d | 11d |  |
| 367 | 3.6.4.5.1.3 | Levantamento de Equipamentos de Outras Disciplinas | 6d | 2026-06-16 | 2026-06-23 | 341 | 2026-06-16 | 2026-06-23 | 6d | 11d | 0d |  |
| 368 | 3.6.4.5.2 | **LOD 200 — Anteprojeto** | 24d | 2026-07-01 | 2026-08-03 |  | 2026-06-24 | 2026-07-20 | 19d | 11d | 0d |  |
| 369 | 3.6.4.5.2.1 | TUGs Estimados | 24d | 2026-07-01 | 2026-08-03 | 366, 367FS+5d | 2026-06-24 | 2026-07-20 | 19d | 11d |  |  |
| 370 | 3.6.4.5.2.2 | Pontos de Luz Estimados | 24d | 2026-07-01 | 2026-08-03 | 366, 367FS+5d | 2026-06-24 | 2026-07-20 | 19d | 11d |  |  |
| 371 | 3.6.4.5.2.3 | TUEs e Quadros Estimados | 24d | 2026-07-01 | 2026-08-03 | 366, 367FS+5d | 2026-06-24 | 2026-07-20 | 19d | 11d |  |  |
| 372 | 3.6.4.5.3 | LOD 300 - Consolidação e documentação de entrega | 4d | 2026-08-04 | 2026-08-07 | 368 | 2026-07-21 | 2026-07-24 | 4d | 11d | 0d |  |
| 373 | 3.6.4.5.4 | Aprovação de Conformidade | 3d | 2026-08-05 | 2026-08-07 | 372FF | 2026-07-22 | 2026-07-24 | 0d | 11d |  |  |
| 374 | 3.6.4.5.5 | Material para entrega ao contrato | 3d | 2026-08-05 | 2026-08-07 | 372FF | 2026-07-22 | 2026-07-24 | 0d | 11d |  |  |
| 375 | 3.6.4.6 | **Telecom** | 49d | 2026-06-01 | 2026-08-07 |  | 2026-06-01 | 2026-07-17 | 34d | 11d |  |  |
| 376 | 3.6.4.6.1 | **LOD 100 — Concepção** | 10d | 2026-06-01 | 2026-06-15 |  | 2026-06-01 | 2026-06-15 | 10d | 11d |  |  |
| 377 | 3.6.4.6.1.1 | Avaliação e Diretrizes Técnicas para Arquitetura | 10d | 2026-06-01 | 2026-06-15 | 186SS+14d | 2026-06-01 | 2026-06-15 | 10d | 50d |  |  |
| 378 | 3.6.4.6.1.2 | Estimativa de Demanda de Telecomunicações | 10d | 2026-06-01 | 2026-06-15 | 186SS+14d | 2026-06-01 | 2026-06-15 | 10d | 50d |  |  |
| 379 | 3.6.4.6.1.3 | Levantamento de Equipamentos e Interfaces com Outras Disciplinas | 10d | 2026-06-01 | 2026-06-15 | 186SS+14d | 2026-06-01 | 2026-06-15 | 10d | 11d | 0d |  |
| 380 | 3.6.4.6.2 | **LOD 200 — Anteprojeto** | 35d | 2026-06-16 | 2026-08-03 |  | 2026-06-16 | 2026-07-13 | 20d | 11d | 0d |  |
| 381 | 3.6.4.6.2.1 | Pontos de Telecomunicações Estimados (Rede, Voz, CFTV e Demais Sistemas) | 20d | 2026-06-16 | 2026-07-13 | 379 | 2026-06-16 | 2026-06-29 | 10d | 11d | 0d |  |
| 382 | 3.6.4.6.2.2 | Racks Estimados | 10d | 2026-06-16 | 2026-06-29 | 379 | 2026-06-16 | 2026-06-29 | 10d | 26d | 15d |  |
| 383 | 3.6.4.6.2.3 | Infraestrutura de Telecomunicações Preliminar | 10d | 2026-07-21 | 2026-08-03 | 381FS+5d, 382 | 2026-06-30 | 2026-07-13 | 10d | 11d |  |  |
| 384 | 3.6.4.6.3 | LOD 300 - Consolidação e documentação de entrega | 4d | 2026-08-04 | 2026-08-07 | 380 | 2026-07-14 | 2026-07-17 | 4d | 11d | 0d |  |
| 385 | 3.6.4.6.4 | Aprovação de Conformidade | 3d | 2026-08-05 | 2026-08-07 | 384FF | 2026-07-15 | 2026-07-17 | 0d | 11d |  |  |
| 386 | 3.6.4.6.5 | Material para entrega ao contrato | 3d | 2026-08-05 | 2026-08-07 | 384FF | 2026-07-15 | 2026-07-17 | 0d | 11d |  |  |

| ID | WBS | Task | Duration | Start | Finish | Predecessors | Baseline start | Baseline finish | Baseline duration | Total slack | Free slack |
| --- | --- | --- | --- | --- | --- | --- | --- | --- | --- | --- | --- |
| 387 | 3.6.4.7 | **Subestação** | 49d | 2026-06-01 | 2026-08-07 |  | 2026-06-01 | 2026-07-24 | 39d | 11d |  |
| 388 | 3.6.4.7.1 | **LOD 100 — Concepção** | 5d | 2026-06-01 | 2026-06-08 |  | 2026-06-01 | 2026-06-08 | 5d | 11d |  |
| 389 | 3.6.4.7.1.1 | Avaliação e Diretrizes Técnicas para Arquitetura | 5d | 2026-06-01 | 2026-06-08 | 186SS+14d | 2026-06-01 | 2026-06-08 | 5d | 55d |  |
| 390 | 3.6.4.7.1.2 | Levantamento de Demanda, Perfil de Consumo e Ponto de Entrega | 5d | 2026-06-01 | 2026-06-08 | 186SS+14d | 2026-06-01 | 2026-06-08 | 5d | 55d |  |
| 391 | 3.6.4.7.1.3 | Estudo de Viabilidade Técnica e Atendimento ao Padrão da Concessionária | 5d | 2026-06-01 | 2026-06-08 | 186SS+14d | 2026-06-01 | 2026-06-08 | 5d | 11d | 0d |
| 392 | 3.6.4.7.2 | **LOD 200 — Anteprojeto** | 40d | 2026-06-09 | 2026-08-03 |  | 2026-06-09 | 2026-07-20 | 30d | 11d | 0d |
| 393 | 3.6.4.7.2.1 | Definição do Tipo de Subestação e Arranjo Físico Preliminar | 15d | 2026-06-09 | 2026-06-29 | 391 | 2026-06-09 | 2026-06-29 | 15d | 11d | 0d |
| 394 | 3.6.4.7.2.2 | Dimensionamento Preliminar do Transformador e Equipamentos Principais | 20d | 2026-07-07 | 2026-08-03 | 393FS+5d | 2026-06-30 | 2026-07-20 | 15d | 11d |  |
| 395 | 3.6.4.7.2.3 | Diretrizes Preliminares de Aterramento | 20d | 2026-07-07 | 2026-08-03 | 393FS+5d | 2026-06-30 | 2026-07-20 | 15d | 11d |  |
| 396 | 3.6.4.7.3 | LOD 300 - Consolidação e documentação de entrega | 4d | 2026-08-04 | 2026-08-07 | 392 | 2026-07-21 | 2026-07-24 | 4d | 11d | 0d |
| 397 | 3.6.4.7.4 | Aprovação de Conformidade | 3d | 2026-08-05 | 2026-08-07 | 396FF | 2026-07-22 | 2026-07-24 | 0d | 11d |  |
| 398 | 3.6.4.7.5 | Material para entrega ao contrato | 3d | 2026-08-05 | 2026-08-07 | 396FF | 2026-07-22 | 2026-07-24 | 0d | 11d |  |
| 399 | 3.6.4.8 | **SPDA** | 49d | 2026-06-01 | 2026-08-07 |  | 2026-06-01 | 2026-07-24 | 39d | 11d |  |
| 400 | 3.6.4.8.1 | **LOD 100 — Concepção** | 5d | 2026-06-01 | 2026-06-08 |  | 2026-06-01 | 2026-06-08 | 5d | 11d |  |
| 401 | 3.6.4.8.1.1 | Avaliação e Diretrizes Técnicas para Arquitetura | 5d | 2026-06-01 | 2026-06-08 | 186SS+14d | 2026-06-01 | 2026-06-08 | 5d | 55d |  |
| 402 | 3.6.4.8.1.2 | Coleta de Informações da Edificação e Análise de Risco (ABNT NBR 5419-2) | 5d | 2026-06-01 | 2026-06-08 | 186SS+14d | 2026-06-01 | 2026-06-08 | 5d | 55d |  |
| 403 | 3.6.4.8.1.3 | Estudo Preliminar de Necessidade e Nível de Proteção do SPDA | 5d | 2026-06-01 | 2026-06-08 | 186SS+14d | 2026-06-01 | 2026-06-08 | 5d | 11d | 0d |
| 404 | 3.6.4.8.2 | **LOD 200 — Anteprojeto** | 40d | 2026-06-09 | 2026-08-03 |  | 2026-06-09 | 2026-07-20 | 30d | 11d |  |
| 405 | 3.6.4.8.2.1 | Definição da Estratégia de Proteção e Soluções Técnicas | 13d | 2026-06-09 | 2026-06-25 | 403 | 2026-06-09 | 2026-06-22 | 10d | 11d | 0d |
| 406 | 3.6.4.8.2.2 | Zoneamento de Captação, Descida e Traçados Preliminares | 12d | 2026-06-26 | 2026-07-13 | 405 | 2026-06-23 | 2026-07-06 | 10d | 11d | 0d |
| 407 | 3.6.4.8.2.3 | Estudo de Interferências, Compatibilização e Métodos Construtivos | 10d | 2026-07-21 | 2026-08-03 | 406FS+5d | 2026-07-07 | 2026-07-20 | 10d | 11d | 0d |
| 408 | 3.6.4.8.3 | LOD 300 - Consolidação e documentação de entrega | 4d | 2026-08-04 | 2026-08-07 | 407 | 2026-07-21 | 2026-07-24 | 4d | 11d | 0d |
| 409 | 3.6.4.8.4 | Aprovação de Conformidade | 3d | 2026-08-05 | 2026-08-07 | 408FF | 2026-07-22 | 2026-07-24 | 0d | 11d |  |
| 410 | 3.6.4.8.5 | Material para entrega ao contrato | 3d | 2026-08-05 | 2026-08-07 | 408FF | 2026-07-22 | 2026-07-24 | 0d | 11d |  |

| ID | WBS | Task | Duration | Start | Finish | Predecessors | Complete | Remaining | Baseline start | Baseline finish | Baseline duration | Total slack | Free slack |
| --- | --- | --- | --- | --- | --- | --- | --- | --- | --- | --- | --- | --- | --- |
| 411 | 3.6.4.9 | **Energia Renovável** | 49d | 2026-06-01 | 2026-08-07 |  |  |  | 2026-06-01 | 2026-07-17 | 34d | 11d |  |
| 412 | 3.6.4.9.1 | **LOD 100 — Concepção** | 10d | 2026-06-01 | 2026-06-15 |  |  |  | 2026-06-01 | 2026-06-15 | 10d | 11d |  |
| 413 | 3.6.4.9.1.1 | Viabilidade e Premissas de Geração | 10d | 2026-06-01 | 2026-06-15 | 186SS+14d |  |  | 2026-06-01 | 2026-06-15 | 10d | 50d |  |
| 414 | 3.6.4.9.1.2 | Levantamento Preliminar de Áreas e Sombreamento | 10d | 2026-06-01 | 2026-06-15 | 186SS+14d |  |  | 2026-06-01 | 2026-06-15 | 10d | 11d | 0d |
| 415 | 3.6.4.9.1.3 | Avaliação e Diretrizes Técnicas para Arquitetônico | 10d | 2026-06-01 | 2026-06-15 | 186SS+14d |  |  | 2026-06-01 | 2026-06-15 | 10d | 50d |  |
| 416 | 3.6.4.9.2 | **LOD 200 — Anteprojeto** | 30d | 2026-06-23 | 2026-08-03 |  |  |  | 2026-06-16 | 2026-07-13 | 20d | 11d | 0d |
| 417 | 3.6.4.9.2.1 | Layout Preliminar de Módulos, Inversores e String Boxes | 30d | 2026-06-23 | 2026-08-03 | 414FS+5d |  |  | 2026-06-16 | 2026-07-13 | 20d | 11d |  |
| 418 | 3.6.4.9.2.2 | Infraestrutura e Rotas Técnicas Preliminares (DC/AC e Aterramento) | 30d | 2026-06-23 | 2026-08-03 | 414FS+5d |  |  | 2026-06-16 | 2026-07-13 | 20d | 11d |  |
| 419 | 3.6.4.9.2.3 | Critérios Preliminares de Proteção e Estimativa de Quantitativos | 30d | 2026-06-23 | 2026-08-03 | 414FS+5d |  |  | 2026-06-16 | 2026-07-13 | 20d | 11d |  |
| 420 | 3.6.4.9.3 | LOD 300 - Consolidação e documentação de entrega | 4d | 2026-08-04 | 2026-08-07 | 416 |  |  | 2026-07-14 | 2026-07-17 | 4d | 11d | 0d |
| 421 | 3.6.4.9.4 | Aprovação de Conformidade | 3d | 2026-08-05 | 2026-08-07 | 420FF |  |  | 2026-07-15 | 2026-07-17 | 0d | 11d |  |
| 422 | 3.6.4.9.5 | Material para entrega ao contrato | 3d | 2026-08-05 | 2026-08-07 | 420FF |  |  | 2026-07-15 | 2026-07-17 | 0d | 11d |  |
| 423 | 3.7 | **003 - CT Indoor** | 74d | 2026-05-12 A | 2026-08-24 |  | 57% | 31.96d | 2026-05-12 | 2026-07-27 | 54d | 0d |  |
| 424 | 3.7.1 | **Arquitetura** | 58d | 2026-05-12 A | 2026-07-31 |  | 41% | 34.15d | 2026-05-12 | 2026-07-27 | 54d | 16d |  |
| 425 | 3.7.1.1 | **LOD 200 - ESTUDO PRELIMINAR** | 21d | 2026-05-12 A | 2026-06-10 A |  | 100% |  | 2026-05-12 | 2026-07-03 | 38d |  |  |
| 426 | 3.7.1.1.1 | Modelagem das paredes | 21d | 2026-05-12 A | 2026-06-10 A | 57FS+8d | 100% |  | 2026-05-12 | 2026-07-03 | 38d |  |  |
| 427 | 3.7.1.1.2 | Modelagem dos pisos | 21d | 2026-05-12 A | 2026-06-10 A | 57FS+8d | 100% |  | 2026-05-12 | 2026-07-03 | 38d |  |  |
| 428 | 3.7.1.1.3 | Inserção de portas | 21d | 2026-05-12 A | 2026-06-10 A | 57FS+8d | 100% |  | 2026-05-12 | 2026-07-03 | 38d |  |  |
| 429 | 3.7.1.1.4 | Inserção de janelas | 21d | 2026-05-12 A | 2026-06-10 A | 57FS+8d | 100% |  | 2026-05-12 | 2026-07-03 | 38d |  |  |
| 430 | 3.7.1.1.5 | Inserção de escada(s) | 21d | 2026-05-12 A | 2026-06-10 A | 57FS+8d | 100% |  | 2026-05-12 | 2026-07-03 | 38d |  |  |
| 431 | 3.7.1.1.6 | Inserção de elevador(es) | 21d | 2026-05-12 A | 2026-06-10 A | 57FS+8d | 100% |  | 2026-05-12 | 2026-07-03 | 38d |  |  |
| 432 | 3.7.1.1.7 | Inserção de layout | 21d | 2026-05-12 A | 2026-06-10 A | 57FS+8d | 100% |  | 2026-05-12 | 2026-07-03 | 38d |  |  |
| 433 | 3.7.1.1.8 | Identificação dos ambientes | 21d | 2026-05-12 A | 2026-06-10 A | 57FS+8d | 100% |  | 2026-05-12 | 2026-07-03 | 38d |  |  |
| 434 | 3.7.1.1.9 | Espaços de circulação | 21d | 2026-05-12 A | 2026-06-10 A | 57FS+8d | 100% |  | 2026-05-12 | 2026-07-03 | 38d |  |  |
| 435 | 3.7.1.1.10 | Áreas de serviços, funcionais e técnicas | 21d | 2026-05-12 A | 2026-06-10 A | 57FS+8d | 100% |  | 2026-05-12 | 2026-07-03 | 38d |  |  |
| 436 | 3.7.1.1.11 | Projeção de níveis superiores e da cobertura | 21d | 2026-05-12 A | 2026-06-10 A | 57FS+8d | 100% |  | 2026-05-12 | 2026-07-03 | 38d |  |  |
| 437 | 3.7.1.1.12 | Cotas de nível principais | 21d | 2026-05-12 A | 2026-06-10 A | 57FS+8d | 100% |  | 2026-05-12 | 2026-07-03 | 38d |  |  |
| 438 | 3.7.1.1.13 | Relatório/Memorial de Projeto Preliminar | 21d | 2026-05-12 A | 2026-06-10 A | 57FS+8d | 100% |  | 2026-05-12 | 2026-07-03 | 38d |  |  |

| ID | WBS | Task | Duration | Start | Finish | Predecessors | Baseline start | Baseline finish | Baseline duration | Total slack | Free slack |
| --- | --- | --- | --- | --- | --- | --- | --- | --- | --- | --- | --- |
| 439 | 3.7.1.2 | **LOD 300 - ANTEPROJETO** | 37d | 2026-06-11 | 2026-07-31 |  | 2026-07-06 | 2026-07-27 | 16d | 16d | 0d |
| 440 | 3.7.1.2.1 | **Situação** | 5d | 2026-06-11 | 2026-06-17 |  | 2026-07-06 | 2026-07-07 | 2d | 16d |  |
| 441 | 3.7.1.2.1.1 | Indicar simbologias de representação gráfica, conforme NBR 6492:2021; | 5d | 2026-06-11 | 2026-06-17 | 438 | 2026-07-06 | 2026-07-07 | 2d | 48d |  |
| 442 | 3.7.1.2.1.2 | Indicação Norte | 5d | 2026-06-11 | 2026-06-17 | 438 | 2026-07-06 | 2026-07-07 | 2d | 48d |  |
| 443 | 3.7.1.2.1.3 | Analisar, adicionar e fechar - Curvas de nível existentes e projetadas (conforme projetos de topografia e sondagem recebidos); | 5d | 2026-06-11 | 2026-06-17 | 438 | 2026-07-06 | 2026-07-07 | 2d | 48d |  |
| 444 | 3.7.1.2.1.4 | Indicação de Escala; | 5d | 2026-06-11 | 2026-06-17 | 438 | 2026-07-06 | 2026-07-07 | 2d | 48d |  |
| 445 | 3.7.1.2.1.5 | Vias de acesso ao conjunto, arruamento, logradouros adjacentes e calçadas com os respectivos equipamentos urbanos; | 5d | 2026-06-11 | 2026-06-17 | 438 | 2026-07-06 | 2026-07-07 | 2d | 48d |  |
| 446 | 3.7.1.2.1.6 | Platôs e taludes principais; | 5d | 2026-06-11 | 2026-06-17 | 438 | 2026-07-06 | 2026-07-07 | 2d | 48d |  |
| 447 | 3.7.1.2.1.7 | Perímetro do terreno, recuos e afastamentos; | 5d | 2026-06-11 | 2026-06-17 | 438 | 2026-07-06 | 2026-07-07 | 2d | 48d |  |
| 448 | 3.7.1.2.1.8 | Indicação das áreas a serem edificadas com o contorno da cobertura das edificações, estacionamentos e áreas permeáveis/impermeáveis; | 5d | 2026-06-11 | 2026-06-17 | 438 | 2026-07-06 | 2026-07-07 | 2d | 48d |  |
| 449 | 3.7.1.2.1.9 | Denominação das edificações, blocos ou espaços; | 5d | 2026-06-11 | 2026-06-17 | 438 | 2026-07-06 | 2026-07-07 | 2d | 48d |  |
| 450 | 3.7.1.2.1.10 | Cotas gerais | 5d | 2026-06-11 | 2026-06-17 | 438 | 2026-07-06 | 2026-07-07 | 2d | 48d |  |
| 451 | 3.7.1.2.1.11 | Cotas de nível principal. | 5d | 2026-06-11 | 2026-06-17 | 438 | 2026-07-06 | 2026-07-07 | 2d | 48d |  |
| 452 | 3.7.1.2.1.12 | Quadros de áreas | 5d | 2026-06-11 | 2026-06-17 | 438 | 2026-07-06 | 2026-07-07 | 2d | 48d |  |
| 453 | 3.7.1.2.1.13 | Relatório | 5d | 2026-06-11 | 2026-06-17 | 438 | 2026-07-06 | 2026-07-07 | 2d | 16d | 0d |
| 454 | 3.7.1.2.2 | Planta com as cotas de nível projetadas e existentes | 5d | 2026-06-18 | 2026-06-24 | 453 | 2026-07-08 | 2026-07-09 | 2d | 16d | 0d |
| 455 | 3.7.1.2.3 | **Plantas baixas (se tiver mais de um pavimento, duplicar bloco)** | 5d | 2026-06-25 | 2026-07-01 |  | 2026-07-10 | 2026-07-13 | 2d | 16d |  |
| 456 | 3.7.1.2.3.1 | Indicar simbologias de representação gráfica, conforme NBR 6492:2021; | 5d | 2026-06-25 | 2026-07-01 | 454 | 2026-07-10 | 2026-07-13 | 2d | 38d |  |
| 457 | 3.7.1.2.3.2 | Compatibilização (verificar se está tudo conforme as normas e alinhar com o restante das disciplinas de engenharia) | 5d | 2026-06-25 | 2026-07-01 | 454 | 2026-07-10 | 2026-07-13 | 2d | 38d |  |
| 458 | 3.7.1.2.3.3 | Compatibilização (deixar tudo conforme padrão Quanta) | 5d | 2026-06-25 | 2026-07-01 | 454 | 2026-07-10 | 2026-07-13 | 2d | 38d |  |
| 459 | 3.7.1.2.3.4 | Indicação de Norte; | 5d | 2026-06-25 | 2026-07-01 | 454 | 2026-07-10 | 2026-07-13 | 2d | 38d |  |
| 460 | 3.7.1.2.3.5 | Indicação de Escala; | 5d | 2026-06-25 | 2026-07-01 | 454 | 2026-07-10 | 2026-07-13 | 2d | 38d |  |
| 461 | 3.7.1.2.3.6 | Indicação de Acessos; | 5d | 2026-06-25 | 2026-07-01 | 454 | 2026-07-10 | 2026-07-13 | 2d | 38d |  |
| 462 | 3.7.1.2.3.7 | Elementos de vedação internos e externos; | 5d | 2026-06-25 | 2026-07-01 | 454 | 2026-07-10 | 2026-07-13 | 2d | 38d |  |
| 463 | 3.7.1.2.3.8 | Esquadrias; | 5d | 2026-06-25 | 2026-07-01 | 454 | 2026-07-10 | 2026-07-13 | 2d | 38d |  |
| 464 | 3.7.1.2.3.9 | Elementos estruturais principais; | 5d | 2026-06-25 | 2026-07-01 | 454 | 2026-07-10 | 2026-07-13 | 2d | 38d |  |
| 465 | 3.7.1.2.3.10 | Identificação dos ambientes e espaços (internos e externos); | 5d | 2026-06-25 | 2026-07-01 | 454 | 2026-07-10 | 2026-07-13 | 2d | 38d |  |
| 466 | 3.7.1.2.3.11 | Espaços de circulação internos e externos; | 5d | 2026-06-25 | 2026-07-01 | 454 | 2026-07-10 | 2026-07-13 | 2d | 38d |  |
| 467 | 3.7.1.2.3.12 | Áreas de serviço, funcionais e técnicas (internos e externos); | 5d | 2026-06-25 | 2026-07-01 | 454 | 2026-07-10 | 2026-07-13 | 2d | 38d |  |
| 468 | 3.7.1.2.3.13 | Projeções de níveis superiores; | 5d | 2026-06-25 | 2026-07-01 | 454 | 2026-07-10 | 2026-07-13 | 2d | 38d |  |
| 469 | 3.7.1.2.3.14 | Cotas gerais | 5d | 2026-06-25 | 2026-07-01 | 454 | 2026-07-10 | 2026-07-13 | 2d | 38d |  |
| 470 | 3.7.1.2.3.15 | Cotas de nível principal. | 5d | 2026-06-25 | 2026-07-01 | 454 | 2026-07-10 | 2026-07-13 | 2d | 38d |  |
| 471 | 3.7.1.2.3.16 | Tabelas de paredes, pisos, esquadrias e plantas | 5d | 2026-06-25 | 2026-07-01 | 454 | 2026-07-10 | 2026-07-13 | 2d | 38d |  |
| 472 | 3.7.1.2.3.17 | Quadro de áreas | 5d | 2026-06-25 | 2026-07-01 | 454 | 2026-07-10 | 2026-07-13 | 2d | 16d | 0d |
| 473 | 3.7.1.2.3.18 | Relatório | 5d | 2026-06-25 | 2026-07-01 | 454 | 2026-07-10 | 2026-07-13 | 2d | 38d |  |

| ID | WBS | Task | Duration | Start | Finish | Predecessors | Baseline start | Baseline finish | Baseline duration | Total slack | Free slack |
| --- | --- | --- | --- | --- | --- | --- | --- | --- | --- | --- | --- |
| 474 | 3.7.1.2.4 | **Planta das coberturas** | 5d | 2026-07-02 | 2026-07-08 |  | 2026-07-14 | 2026-07-15 | 2d | 16d |  |
| 475 | 3.7.1.2.4.1 | Indicação do Norte | 5d | 2026-07-02 | 2026-07-08 | 472 | 2026-07-14 | 2026-07-15 | 2d | 33d |  |
| 476 | 3.7.1.2.4.2 | Indicação de escala | 5d | 2026-07-02 | 2026-07-08 | 472 | 2026-07-14 | 2026-07-15 | 2d | 33d |  |
| 477 | 3.7.1.2.4.3 | Curvas de nível | 5d | 2026-07-02 | 2026-07-08 | 472 | 2026-07-14 | 2026-07-15 | 2d | 33d |  |
| 478 | 3.7.1.2.4.4 | Indicação de Acessos; | 5d | 2026-07-02 | 2026-07-08 | 472 | 2026-07-14 | 2026-07-15 | 2d | 33d |  |
| 479 | 3.7.1.2.4.5 | Estacionamento e áreas cobertas | 5d | 2026-07-02 | 2026-07-08 | 472 | 2026-07-14 | 2026-07-15 | 2d | 33d |  |
| 480 | 3.7.1.2.4.6 | Cobertura das edificações | 5d | 2026-07-02 | 2026-07-08 | 472 | 2026-07-14 | 2026-07-15 | 2d | 33d |  |
| 481 | 3.7.1.2.4.7 | Sentido de escoamento das águas pluviais e inclinação | 5d | 2026-07-02 | 2026-07-08 | 472 | 2026-07-14 | 2026-07-15 | 2d | 33d |  |
| 482 | 3.7.1.2.4.8 | Cotas gerais | 5d | 2026-07-02 | 2026-07-08 | 472 | 2026-07-14 | 2026-07-15 | 2d | 33d |  |
| 483 | 3.7.1.2.4.9 | Cotas de nível principal | 5d | 2026-07-02 | 2026-07-08 | 472 | 2026-07-14 | 2026-07-15 | 2d | 16d | 0d |
| 484 | 3.7.1.2.4.10 | Relatório | 5d | 2026-07-02 | 2026-07-08 | 472 | 2026-07-14 | 2026-07-15 | 2d | 33d |  |
| 485 | 3.7.1.2.5 | **Cortes longitudinais** | 5d | 2026-07-09 | 2026-07-15 |  | 2026-07-16 | 2026-07-17 | 2d | 16d |  |
| 486 | 3.7.1.2.5.1 | Indicar simbologias de representação gráfica, conforme NBR 6492:2021; | 5d | 2026-07-09 | 2026-07-15 | 483 | 2026-07-16 | 2026-07-17 | 2d | 28d |  |
| 487 | 3.7.1.2.5.2 | Indicação de Escala; | 5d | 2026-07-09 | 2026-07-15 | 483 | 2026-07-16 | 2026-07-17 | 2d | 28d |  |
| 488 | 3.7.1.2.5.3 | Elementos estruturais principais; | 5d | 2026-07-09 | 2026-07-15 | 483 | 2026-07-16 | 2026-07-17 | 2d | 28d |  |
| 489 | 3.7.1.2.5.4 | Elementos de vedação internos e externos; | 5d | 2026-07-09 | 2026-07-15 | 483 | 2026-07-16 | 2026-07-17 | 2d | 28d |  |
| 490 | 3.7.1.2.5.5 | Esquadrias; | 5d | 2026-07-09 | 2026-07-15 | 483 | 2026-07-16 | 2026-07-17 | 2d | 28d |  |
| 491 | 3.7.1.2.5.6 | Identificação dos ambientes; | 5d | 2026-07-09 | 2026-07-15 | 483 | 2026-07-16 | 2026-07-17 | 2d | 28d |  |
| 492 | 3.7.1.2.5.7 | Cobertura com indicação da respectiva inclinação; | 5d | 2026-07-09 | 2026-07-15 | 483 | 2026-07-16 | 2026-07-17 | 2d | 28d |  |
| 493 | 3.7.1.2.5.8 | Cotas gerais; | 5d | 2026-07-09 | 2026-07-15 | 483 | 2026-07-16 | 2026-07-17 | 2d | 28d |  |
| 494 | 3.7.1.2.5.9 | Cotas de nível principal; | 5d | 2026-07-09 | 2026-07-15 | 483 | 2026-07-16 | 2026-07-17 | 2d | 28d |  |
| 495 | 3.7.1.2.5.10 | Eixos do projeto; | 5d | 2026-07-09 | 2026-07-15 | 483 | 2026-07-16 | 2026-07-17 | 2d | 28d |  |
| 496 | 3.7.1.2.5.11 | Relevo construído; | 5d | 2026-07-09 | 2026-07-15 | 483 | 2026-07-16 | 2026-07-17 | 2d | 28d |  |
| 497 | 3.7.1.2.5.12 | Projeção da topografia natural. | 5d | 2026-07-09 | 2026-07-15 | 483 | 2026-07-16 | 2026-07-17 | 2d | 16d | 0d |
| 498 | 3.7.1.2.5.13 | Relatório | 5d | 2026-07-09 | 2026-07-15 | 483 | 2026-07-16 | 2026-07-17 | 2d | 28d |  |

| ID | WBS | Task | Duration | Start | Finish | Predecessors | Baseline start | Baseline finish | Baseline duration | Total slack | Free slack |
| --- | --- | --- | --- | --- | --- | --- | --- | --- | --- | --- | --- |
| 499 | 3.7.1.2.6 | **Cortes transversais** | 5d | 2026-07-16 | 2026-07-22 |  | 2026-07-20 | 2026-07-21 | 2d | 16d |  |
| 500 | 3.7.1.2.6.1 | Indicar simbologias de representação gráfica, conforme NBR 6492:2021; | 5d | 2026-07-16 | 2026-07-22 | 497 | 2026-07-20 | 2026-07-21 | 2d | 23d |  |
| 501 | 3.7.1.2.6.2 | Indicação de Escala; | 5d | 2026-07-16 | 2026-07-22 | 497 | 2026-07-20 | 2026-07-21 | 2d | 23d |  |
| 502 | 3.7.1.2.6.3 | Elementos estruturais principais; | 5d | 2026-07-16 | 2026-07-22 | 497 | 2026-07-20 | 2026-07-21 | 2d | 23d |  |
| 503 | 3.7.1.2.6.4 | Elementos de vedação internos e externos; | 5d | 2026-07-16 | 2026-07-22 | 497 | 2026-07-20 | 2026-07-21 | 2d | 23d |  |
| 504 | 3.7.1.2.6.5 | Esquadrias; | 5d | 2026-07-16 | 2026-07-22 | 497 | 2026-07-20 | 2026-07-21 | 2d | 23d |  |
| 505 | 3.7.1.2.6.6 | Identificação dos ambientes; | 5d | 2026-07-16 | 2026-07-22 | 497 | 2026-07-20 | 2026-07-21 | 2d | 23d |  |
| 506 | 3.7.1.2.6.7 | Cobertura com indicação da respectiva inclinação; | 5d | 2026-07-16 | 2026-07-22 | 497 | 2026-07-20 | 2026-07-21 | 2d | 23d |  |
| 507 | 3.7.1.2.6.8 | Cotas gerais; | 5d | 2026-07-16 | 2026-07-22 | 497 | 2026-07-20 | 2026-07-21 | 2d | 23d |  |
| 508 | 3.7.1.2.6.9 | Cotas de nível principal; | 5d | 2026-07-16 | 2026-07-22 | 497 | 2026-07-20 | 2026-07-21 | 2d | 23d |  |
| 509 | 3.7.1.2.6.10 | Eixos do projeto; | 5d | 2026-07-16 | 2026-07-22 | 497 | 2026-07-20 | 2026-07-21 | 2d | 23d |  |
| 510 | 3.7.1.2.6.11 | Relevo construído; | 5d | 2026-07-16 | 2026-07-22 | 497 | 2026-07-20 | 2026-07-21 | 2d | 23d |  |
| 511 | 3.7.1.2.6.12 | Projeção da topografia natural | 5d | 2026-07-16 | 2026-07-22 | 497 | 2026-07-20 | 2026-07-21 | 2d | 16d | 0d |
| 512 | 3.7.1.2.6.13 | Relatório | 5d | 2026-07-16 | 2026-07-22 | 497 | 2026-07-20 | 2026-07-21 | 2d | 23d |  |
| 513 | 3.7.1.2.7 | **Elevações** | 5d | 2026-07-23 | 2026-07-29 |  | 2026-07-22 | 2026-07-23 | 2d | 16d |  |
| 514 | 3.7.1.2.7.1 | Indicar simbologias de representação gráfica, conforme NBR 6492:2021; | 5d | 2026-07-23 | 2026-07-29 | 511 | 2026-07-22 | 2026-07-23 | 2d | 18d |  |
| 515 | 3.7.1.2.7.2 | Indicação de Escala; | 5d | 2026-07-23 | 2026-07-29 | 511 | 2026-07-22 | 2026-07-23 | 2d | 18d |  |
| 516 | 3.7.1.2.7.3 | Elementos estruturais principais; | 5d | 2026-07-23 | 2026-07-29 | 511 | 2026-07-22 | 2026-07-23 | 2d | 18d |  |
| 517 | 3.7.1.2.7.4 | Elementos de vedação internos e externos; | 5d | 2026-07-23 | 2026-07-29 | 511 | 2026-07-22 | 2026-07-23 | 2d | 18d |  |
| 518 | 3.7.1.2.7.5 | Esquadrias; | 5d | 2026-07-23 | 2026-07-29 | 511 | 2026-07-22 | 2026-07-23 | 2d | 18d |  |
| 519 | 3.7.1.2.7.6 | Relevo construído; | 5d | 2026-07-23 | 2026-07-29 | 511 | 2026-07-22 | 2026-07-23 | 2d | 18d |  |
| 520 | 3.7.1.2.7.7 | Cotas gerais; | 5d | 2026-07-23 | 2026-07-29 | 511 | 2026-07-22 | 2026-07-23 | 2d | 18d |  |
| 521 | 3.7.1.2.7.8 | Cotas de nível principais; | 5d | 2026-07-23 | 2026-07-29 | 511 | 2026-07-22 | 2026-07-23 | 2d | 18d |  |
| 522 | 3.7.1.2.7.9 | Cobertura (quando aparente). | 5d | 2026-07-23 | 2026-07-29 | 511 | 2026-07-22 | 2026-07-23 | 2d | 16d | 0d |

| ID | WBS | Task | Duration | Start | Finish | Predecessors | Complete | Remaining | Baseline start | Baseline finish | Baseline duration | Total slack |
| --- | --- | --- | --- | --- | --- | --- | --- | --- | --- | --- | --- | --- |
| 523 | 3.7.1.2.8 | **Memorial Descritivo** | 2d | 2026-07-30 | 2026-07-31 |  |  |  | 2026-07-24 | 2026-07-27 | 2d | 16d |
| 524 | 3.7.1.2.8.1 | Descrição dos elementos da edificação | 2d | 2026-07-30 | 2026-07-31 | 522 |  |  | 2026-07-24 | 2026-07-27 | 2d | 16d |
| 525 | 3.7.1.2.8.2 | Descrição dos componentes construtivos e materiais de construção | 2d | 2026-07-30 | 2026-07-31 | 522 |  |  | 2026-07-24 | 2026-07-27 | 2d | 16d |
| 526 | 3.7.1.2.8.3 | Lista de pranchas anexas e documentos | 2d | 2026-07-30 | 2026-07-31 | 522 |  |  | 2026-07-24 | 2026-07-27 | 2d | 16d |
| 527 | 3.7.2 | Aprovação de Conformidade | 3d | 2026-07-29 | 2026-07-31 | 439FF |  |  | 2026-07-23 | 2026-07-27 | 0d | 16d |
| 528 | 3.7.3 | Material para entrega ao contrato | 3d | 2026-07-29 | 2026-07-31 | 439FF |  |  | 2026-07-23 | 2026-07-27 | 0d | 16d |
| 529 | 3.7.4 | **Engenharia** | 60d | 2026-06-01 A | 2026-08-24 |  | 67% | 20.05d | 2026-06-01 | 2026-07-24 | 39d | 0d |
| 530 | 3.7.4.1 | **Estrutura** | 49d | 2026-06-01 A | 2026-08-07 |  | 90% | 4.7d | 2026-06-01 | 2026-07-20 | 35d | 11d |
| 531 | 3.7.4.1.1 | **LOD 100 — Premissas, diretrizes e interfaces** | 7d | 2026-06-01 A | 2026-06-10 A |  | 100% |  | 2026-06-01 | 2026-06-10 | 7d |  |
| 532 | 3.7.4.1.1.1 | Levantamento de tipos de cargas globais estimadas (permanentes, acidentais, vento e especiais). | 2d | 2026-06-01 A | 2026-06-02 A | 437SS+14d | 100% |  | 2026-06-01 | 2026-06-02 | 2d |  |
| 533 | 3.7.4.1.1.2 | Estudo volumétrico com modulação inicial de pilares, vigas e lajes. Entendendo vãos e desafios | 5d | 2026-06-01 A | 2026-06-08 A | 437SS+14d | 100% |  | 2026-06-01 | 2026-06-08 | 5d |  |
| 534 | 3.7.4.1.1.3 | Localização aproximada de elementos estruturais principais. Avaliando vãos e estudando posições | 2d | 2026-06-01 A | 2026-06-02 A | 437SS+14d | 100% |  | 2026-06-01 | 2026-06-02 | 2d |  |
| 535 | 3.7.4.1.1.4 | Estudo de viabilidade técnica e construtiva. | 3d | 2026-06-03 A | 2026-06-08 A | 534 | 100% |  | 2026-06-03 | 2026-06-08 | 3d |  |
| 536 | 3.7.4.1.1.5 | Definição preliminar do sistema estrutural (concreto armado, metálica ou mista). | 3d | 2026-06-03 A | 2026-06-08 A | 534 | 100% |  | 2026-06-03 | 2026-06-08 | 3d |  |
| 537 | 3.7.4.1.1.6 | Estimativa preliminar de tipologias de fundações (sapatas, blocos, estacas). | 2d | 2026-06-09 A | 2026-06-10 A | 535 | 100% |  | 2026-06-09 | 2026-06-10 | 2d |  |
| 538 | 3.7.4.1.1.7 | Previsão de áreas técnicas, casas de máquinas, reservatórios elevados e estrutura de cobertura. | 2d | 2026-06-09 A | 2026-06-10 A | 535 | 100% |  | 2026-06-09 | 2026-06-10 | 2d |  |
| 539 | 3.7.4.1.2 | **LOD 200 — Validação interdisciplinar e solução preliminar** | 20d | 2026-06-11 A | 2026-07-08 A |  | 100% |  | 2026-06-11 | 2026-07-08 | 20d |  |
| 540 | 3.7.4.1.2.1 | Lista preliminar de cargas e ações para dimensionamento. | 5d | 2026-06-11 A | 2026-06-17 A | 538 | 100% |  | 2026-06-11 | 2026-06-17 | 5d |  |
| 541 | 3.7.4.1.2.2 | Definição preliminar de alturas de pavimentos e níveis de fundação. | 5d | 2026-06-11 A | 2026-06-17 A | 538 | 100% |  | 2026-06-11 | 2026-06-17 | 5d |  |
| 542 | 3.7.4.1.2.3 | Indicação aproximada do sistema de cobertura (tesouras, treliças, vigamento metálico ou concreto). | 5d | 2026-06-11 A | 2026-06-17 A | 538 | 100% |  | 2026-06-11 | 2026-06-17 | 5d |  |
| 543 | 3.7.4.1.2.4 | Modelagem genérica de pilares, vigas, lajes e fundações. | 5d | 2026-06-18 A | 2026-06-24 A | 540 | 100% |  | 2026-06-18 | 2026-06-24 | 5d |  |
| 544 | 3.7.4.1.2.5 | Traçado preliminar de elementos especiais (escadas, rampas estruturais, reservatórios). | 5d | 2026-06-18 A | 2026-06-24 A | 540 | 100% |  | 2026-06-18 | 2026-06-24 | 5d |  |
| 545 | 3.7.4.1.2.6 | Arquivo IFC, plantas de forma e planta de locação | 5d | 2026-06-18 A | 2026-06-24 A | 540 | 100% |  | 2026-06-18 | 2026-06-24 | 5d |  |
| 546 | 3.7.4.1.2.7 | Inserção de fundações com tipologia e dimensões preliminares. | 5d | 2026-06-25 A | 2026-07-01 A | 544 | 100% |  | 2026-06-25 | 2026-07-01 | 5d |  |
| 547 | 3.7.4.1.2.8 | Compatibilização inicial com arquitetura e demais disciplinas. | 5d | 2026-06-25 A | 2026-07-01 A | 545 | 100% |  | 2026-06-25 | 2026-07-01 | 5d |  |
| 548 | 3.7.4.1.2.9 | Indicação de passagens de infraestrutura (shafts, aberturas em lajes e vigas). | 5d | 2026-06-25 A | 2026-07-01 A | 545 | 100% |  | 2026-06-25 | 2026-07-01 | 5d |  |
| 549 | 3.7.4.1.2.10 | Modelagem assertiva de elementos principais com dimensões aproximadas (largura, altura, espessura). | 10d | 2026-06-25 A | 2026-07-08 A | 545 | 100% |  | 2026-06-25 | 2026-07-08 | 10d |  |
| 550 | 3.7.4.1.2.11 | Modelagem estimada de armaduras principais (em nível de concepção). | 5d | 2026-06-25 A | 2026-07-01 A | 545 | 100% |  | 2026-06-25 | 2026-07-01 | 5d |  |

| ID | WBS | Task | Duration | Start | Finish | Predecessors | Complete | Remaining | Baseline start | Baseline finish | Baseline duration | Total slack | Free slack |
| --- | --- | --- | --- | --- | --- | --- | --- | --- | --- | --- | --- | --- | --- |
| 551 | 3.7.4.1.3 | **LOD 300 - Consolidação e documentação de entrega** | 22d | 2026-07-09 A | 2026-08-07 |  | 89% | 2.46d | 2026-07-09 | 2026-07-20 | 8d | 11d | 0d |
| 552 | 3.7.4.1.3.1 | Indicação de níveis e cotas exatas. | 17d | 2026-07-09 A | 2026-07-31 A | 549, 550 | 100% |  | 2026-07-09 | 2026-07-20 | 8d |  |  |
| 553 | 3.7.4.1.3.2 | Quadro de cargas atualizado. | 17d | 2026-07-09 A | 2026-07-31 A | 549, 550 | 100% |  | 2026-07-09 | 2026-07-20 | 8d |  |  |
| 554 | 3.7.4.1.3.3 | Dimensionamento final de fundações conforme sondagem e cálculo estrutural. | 17d | 2026-07-09 A | 2026-07-31 A | 549, 550 | 100% |  | 2026-07-09 | 2026-07-20 | 8d |  |  |
| 555 | 3.7.4.1.3.4 | Definição final dos elementos da cobertura (treliças, vigas, chapas, purlins). | 17d | 2026-07-09 A | 2026-07-31 A | 549, 550 | 100% |  | 2026-07-09 | 2026-07-20 | 8d |  |  |
| 556 | 3.7.4.1.3.5 | Compatibilização final com arquitetura e instalações (aberturas, embutidos e passagens). | 17d | 2026-07-09 A | 2026-07-31 A | 549, 550 | 100% |  | 2026-07-09 | 2026-07-20 | 8d |  |  |
| 557 | 3.7.4.1.3.6 | Modelagem definitiva de pilares, vigas, lajes, blocos, sapatas e estacas. | 17d | 2026-07-09 A | 2026-07-31 A | 549, 550 | 100% |  | 2026-07-09 | 2026-07-20 | 8d |  |  |
| 558 | 3.7.4.1.3.7 | Planta estrutural com todos os elementos identificados. | 17d | 2026-07-09 A | 2026-07-31 A | 549, 550 | 100% |  | 2026-07-09 | 2026-07-20 | 8d |  |  |
| 559 | 3.7.4.1.3.8 | Memorial descritivo contendo: objetivos, justificativa, descrição do sistema, concepção de fundações/cobertura, especificações e quadro de cargas. | 5d | 2026-08-03 | 2026-08-07 | 557 |  |  | 2026-07-09 | 2026-07-20 | 8d | 11d |  |
| 560 | 3.7.4.1.3.9 | Normas técnicas utilizadas (NBR 6118, 6120, 6122, 8800, etc.). | 5d | 2026-08-03 | 2026-08-07 | 557 |  |  | 2026-07-09 | 2026-07-20 | 8d | 11d |  |
| 561 | 3.7.4.1.3.10 | Consolidar documentação de entrega e emissão formal da disciplina | 5d | 2026-08-03 | 2026-08-07 | 557 |  |  | 2026-07-09 | 2026-07-20 | 8d | 11d |  |
| 562 | 3.7.4.1.4 | Aprovação de Conformidade | 3d | 2026-08-05 | 2026-08-07 | 551FF |  |  | 2026-07-16 | 2026-07-20 | 0d | 11d |  |
| 563 | 3.7.4.1.5 | Material para entrega ao contrato | 3d | 2026-08-05 | 2026-08-07 | 551FF |  |  | 2026-07-16 | 2026-07-20 | 0d | 11d |  |
| 564 | 3.7.4.2 | **Hidrossanitário** | 60d | 2026-06-01 A | 2026-08-24 |  | 74% | 15.84d | 2026-06-01 | 2026-07-24 | 39d | 0d |  |
| 565 | 3.7.4.2.1 | **LOD 100 — Premissas, diretrizes e interfaces** | 11d | 2026-06-01 A | 2026-06-16 A |  | 100% |  | 2026-06-01 | 2026-06-16 | 11d |  |  |
| 566 | 3.7.4.2.1.1 | Memorial preliminar | 10d | 2026-06-01 A | 2026-06-15 A | 437SS+14d | 100% |  | 2026-06-01 | 2026-06-15 | 10d |  |  |
| 567 | 3.7.4.2.1.2 | Indicação de áreas técnicas | 6d | 2026-06-09 A | 2026-06-16 A | 437SS+14d, 533 | 100% |  | 2026-06-09 | 2026-06-16 | 6d |  |  |
| 568 | 3.7.4.2.1.3 | Planta baixa com traçado conceitual | 6d | 2026-06-09 A | 2026-06-16 A | 533 | 100% |  | 2026-06-09 | 2026-06-16 | 6d |  |  |
| 569 | 3.7.4.2.1.4 | Pontos de consumo principais e coletas sanitárias | 6d | 2026-06-09 A | 2026-06-16 A | 533 | 100% |  | 2026-06-09 | 2026-06-16 | 6d |  |  |
| 570 | 3.7.4.2.1.5 | Classificação de uso | 10d | 2026-06-02 A | 2026-06-16 A | 569FF | 100% |  | 2026-06-02 | 2026-06-16 | 10d |  |  |
| 571 | 3.7.4.2.1.6 | Diretrizes de espaço | 10d | 2026-06-02 A | 2026-06-16 A | 569FF | 100% |  | 2026-06-02 | 2026-06-16 | 10d |  |  |
| 572 | 3.7.4.2.1.7 | Estimativa de demanda ou população de uso | 10d | 2026-06-02 A | 2026-06-16 A | 569FF | 100% |  | 2026-06-02 | 2026-06-16 | 10d |  |  |
| 573 | 3.7.4.2.1.8 | Levantamento de elementos especiais dentre outras disciplinas de Engenharia e Arquitetura | 10d | 2026-06-02 A | 2026-06-16 A | 569FF | 100% |  | 2026-06-02 | 2026-06-16 | 10d |  |  |
| 574 | 3.7.4.2.2 | **LOD 200 — Validação interdisciplinar e solução preliminar** | 42d | 2026-06-17 A | 2026-08-13 |  | 71% | 12d | 2026-06-17 | 2026-07-14 | 20d | 7d |  |
| 575 | 3.7.4.2.2.1 | Critérios normativos adotados (ABNT, concessionárias, etc.) | 26d | 2026-06-17 A | 2026-07-22 A | 573 | 100% |  | 2026-06-17 | 2026-07-14 | 20d |  |  |
| 576 | 3.7.4.2.2.2 | Informações de demanda na concessionária (DPE ou AVT Aviso de Viabilidade Técnica) | 26d | 2026-06-17 A | 2026-07-22 A | 575SS | 100% |  | 2026-06-17 | 2026-07-14 | 20d |  |  |
| 577 | 3.7.4.2.2.3 | Recebimento e Análise de Sondagem (permeabilidade ou percolação) | 26d | 2026-06-17 A | 2026-07-22 A | 575SS | 100% |  | 2026-06-17 | 2026-07-14 | 20d |  |  |
| 578 | 3.7.4.2.2.4 | Recebimento e Análise de Topografia | 26d | 2026-06-17 A | 2026-07-22 A | 575SS | 100% |  | 2026-06-17 | 2026-07-14 | 20d |  |  |
| 579 | 3.7.4.2.2.5 | Estudo de viabilidade técnica, econômica e ambiental | 26d | 2026-06-17 A | 2026-07-22 A | 575SS | 100% |  | 2026-06-17 | 2026-07-14 | 20d |  |  |
| 580 | 3.7.4.2.2.6 | Lista preliminar de sistemas envolvidos. | 26d | 2026-07-09 | 2026-08-13 | 573FS+16d |  |  | 2026-06-17 | 2026-07-14 | 20d | 7d |  |
| 581 | 3.7.4.2.2.7 | Planta baixa e cortes estimada contendo: - Traçado preliminar de barrilete, ramais, colunas - Diâmetros estimados - Localização aproximada das bombas e unidades de tratamento e reúso - Localização do ramal predial de água e esgoto - Localização aproximada | 26d | 2026-07-09 | 2026-08-13 | 573FS+16d |  |  | 2026-06-17 | 2026-07-14 | 20d | 0d |  |

| ID | WBS | Task | Duration | Start | Finish | Predecessors | Complete | Remaining | Baseline start | Baseline finish | Baseline duration | Total slack | Constraint | Text3 |
| --- | --- | --- | --- | --- | --- | --- | --- | --- | --- | --- | --- | --- | --- | --- |
| 582 | 3.7.4.2.3 | **LOD 300 - Consolidação e documentação de entrega** | 7d | 2026-08-14 | 2026-08-24 |  |  |  | 2026-07-15 | 2026-07-24 | 8d | 0d |  |  |
| 583 | 3.7.4.2.3.1 | Planta, corte e detalhe isométrico contendo: - Modelagem detalhada com diâmetros, cotas e inclinações definitivas (barriletes, colunas, ramais) - Quantitativos e especificação técnica dos materiais (tubos, conexões, reservatórios, registros e válvulas com | 7d | 2026-08-14 | 2026-08-24 | 581 |  |  | 2026-07-15 | 2026-07-24 | 8d | 0d |  |  |
| 584 | 3.7.4.2.3.2 | Memorial descritivo | 3d | 2026-08-20 | 2026-08-24 | 583FF |  |  | 2026-07-22 | 2026-07-24 | 3d | 0d |  |  |
| 585 | 3.7.4.2.3.3 | Memória de cálculo (pressão, vazão, diâmetros, perda de carga). | 3d | 2026-08-20 | 2026-08-24 | 581, 583FF |  |  | 2026-07-22 | 2026-07-24 | 3d | 0d |  |  |
| 586 | 3.7.4.2.4 | Aprovação de Conformidade | 3d | 2026-08-20 | 2026-08-24 | 582FF |  |  | 2026-07-22 | 2026-07-24 | 0d | 0d |  |  |
| 587 | 3.7.4.2.5 | Material para entrega ao contrato | 3d | 2026-08-20 | 2026-08-24 | 582FF |  |  | 2026-07-22 | 2026-07-24 | 0d | 0d |  |  |
| 588 | 3.7.4.3 | **AVAC** | 60d | 2026-06-01 A | 2026-08-24 |  | 66% | 20.2d | 2026-06-01 | 2026-07-24 | 39d | 0d |  |  |
| 589 | 3.7.4.3.1 | **LOD 100 — Premissas, diretrizes e interfaces** | 20d | 2026-06-01 A | 2026-06-29 A |  | 100% |  | 2026-06-01 | 2026-06-29 | 20d |  |  |  |
| 590 | 3.7.4.3.1.1 | Estimativa de carga térmica por ambiente. | 10d | 2026-06-01 A | 2026-06-15 A | 437SS+14d | 100% |  | 2026-06-01 | 2026-06-15 | 10d |  |  |  |
| 591 | 3.7.4.3.1.2 | Localização preliminar de unidades de tratamento de ar, condensadoras e exaustores. | 10d | 2026-06-01 A | 2026-06-15 A | 437SS+14d | 100% |  | 2026-06-01 | 2026-06-15 | 10d |  |  |  |
| 592 | 3.7.4.3.1.3 | Pontos locação para seus elementos no projeto arquitetônico. | 10d | 2026-06-01 A | 2026-06-15 A | 437SS+14d | 100% |  | 2026-06-01 | 2026-06-15 | 10d |  |  |  |
| 593 | 3.7.4.3.1.4 | Estudo de viabilidade e rotas principais de distribuição de ar. | 10d | 2026-06-01 A | 2026-06-15 A | 437SS+14d | 100% |  | 2026-06-01 | 2026-06-15 | 10d |  |  |  |
| 594 | 3.7.4.3.1.5 | Reserva de espaços técnicos e shafts. | 10d | 2026-06-01 A | 2026-06-15 A | 437SS+14d | 100% |  | 2026-06-01 | 2026-06-15 | 10d |  |  |  |
| 595 | 3.7.4.3.1.6 | Levantamento de cargas especiais provenientes de outras disciplinas. | 10d | 2026-06-16 A | 2026-06-29 A | 437SS+14d, 617, 629 | 100% |  | 2026-06-16 | 2026-06-29 | 10d |  |  |  |
| 596 | 3.7.4.3.2 | **LOD 200 — Validação interdisciplinar e solução preliminar** | 50d | 2026-06-16 A | 2026-08-24 |  | 50% | 25d | 2026-06-16 | 2026-07-24 | 29d | 0d |  |  |
| 597 | 3.7.4.3.2.1 | Lista preliminar de sistemas HVAC envolvidos (expansão direta, VRF, chillers, ventilação, exaustão). | 34d | 2026-06-16 A | 2026-07-31 A | 594FS+16d | 100% |  | 2026-06-16 | 2026-07-24 | 29d |  |  |  |
| 598 | 3.7.4.3.2.2 | Planta baixa estimada contendo: pontos de insuflamento e retorno. | 34d | 2026-06-16 A | 2026-07-31 A | 594FS+16d | 100% |  | 2026-06-16 | 2026-07-24 | 29d |  |  |  |
| 599 | 3.7.4.3.2.3 | Rotas iniciais de dutos, tubulações e drenos. | 34d | 2026-07-08 | 2026-08-24 | 594FS+16d |  |  | 2026-06-16 | 2026-07-24 | 29d | 0d |  |  |
| 600 | 3.7.4.3.2.4 | Planta baixa estimada contendo: unidades internas e externas com posição preliminar. | 34d | 2026-07-08 | 2026-08-24 | 594FS+16d |  |  | 2026-06-16 | 2026-07-24 | 29d | 0d |  |  |
| 601 | 3.7.4.3.3 | Aprovação de Conformidade | 3d | 2026-07-29 A | 2026-07-31 A | 596FF | 100% |  | 2026-07-22 | 2026-07-24 | 0d |  |  |  |
| 602 | 3.7.4.3.4 | Material para entrega ao contrato | 3d | 2026-07-29 A | 2026-07-31 A | 596FF | 100% |  | 2026-07-22 | 2026-07-24 | 0d |  |  |  |
| 603 | 3.7.4.4 | **PCI (Incêndio)** | 9d | 2026-07-21 A | 2026-07-31 |  | 95% | 0.45d | 2026-06-01 | 2026-06-29 | 20d | 16d |  |  |
| 604 | 3.7.4.4.1 | **LOD 100 — Premissas, diretrizes e interfaces** | 4d | 2026-07-21 A | 2026-07-24 A |  | 100% |  | 2026-06-01 | 2026-06-15 | 10d |  |  | ܁# |
| 605 | 3.7.4.4.1.1 | Estudo e avaliação da arquitetura atendendo as normas competentes de PCI | 4d | 2026-07-21 A | 2026-07-24 A | 437SS+14d | 100% |  | 2026-06-01 | 2026-06-15 | 10d |  | start no earlier than 2026-07-21 |  |
| 606 | 3.7.4.4.1.2 | Avaliação do espaço para CMI e Central de Gás. | 4d | 2026-07-21 A | 2026-07-24 A | 437SS+14d | 100% |  | 2026-06-01 | 2026-06-15 | 10d |  | start no earlier than 2026-07-21 |  |
| 607 | 3.7.4.4.1.3 | Pontos locação para seus elementos no projeto arquitetônico | 4d | 2026-07-21 A | 2026-07-24 A | 437SS+14d | 100% |  | 2026-06-01 | 2026-06-15 | 10d |  | start no earlier than 2026-07-21 |  |

| ID | WBS | Task | Duration | Start | Finish | Predecessors | Complete | Remaining | Baseline start | Baseline finish | Baseline duration | Total slack | Free slack | Text3 |
| --- | --- | --- | --- | --- | --- | --- | --- | --- | --- | --- | --- | --- | --- | --- |
| 608 | 3.7.4.4.2 | **LOD 200 — Validação interdisciplinar e solução preliminar** | 5d | 2026-07-27 A | 2026-07-31 |  | 93% | 0.33d | 2026-06-16 | 2026-06-29 | 10d | 16d | 0d | ܁# |
| 609 | 3.7.4.4.2.1 | Definição da classificação da edificação e o risco de incêndio | 5d | 2026-07-27 A | 2026-07-31 | 607 | 93% | 0.33d | 2026-06-16 | 2026-06-29 | 10d | 16d |  |  |
| 610 | 3.7.4.4.2.2 | Cálculos pré-dimensionados dos extintores, hidrantes e bomba. | 5d | 2026-07-27 A | 2026-07-31 | 607 | 93% | 0.33d | 2026-06-16 | 2026-06-29 | 10d | 16d |  |  |
| 611 | 3.7.4.4.2.3 | Avaliação das rotas de fuga, ventilação de CMI e outros elementos de importância para as normas de PCI | 5d | 2026-07-27 A | 2026-07-31 | 607 | 93% | 0.33d | 2026-06-16 | 2026-06-29 | 10d | 16d |  |  |
| 612 | 3.7.4.4.3 | Aprovação de Conformidade | 3d | 2026-07-29 A | 2026-07-31 | 608FF | 89% | 0.33d | 2026-06-25 | 2026-06-29 | 0d | 16d |  |  |
| 613 | 3.7.4.4.4 | Material para entrega ao contrato | 3d | 2026-07-29 A | 2026-07-31 | 608FF | 89% | 0.33d | 2026-06-25 | 2026-06-29 | 0d | 16d |  |  |
| 614 | 3.7.4.5 | **Elétrica Baixa Tensão** | 49d | 2026-06-01 A | 2026-08-07 |  | 30% | 34.22d | 2026-06-01 | 2026-07-24 | 39d | 11d |  |  |
| 615 | 3.7.4.5.1 | **LOD 100 — Concepção** | 16d | 2026-06-01 A | 2026-06-23 A |  | 100% |  | 2026-06-01 | 2026-06-23 | 16d |  |  |  |
| 616 | 3.7.4.5.1.1 | Avaliação e Diretrizes Técnicas para Arquitetura | 6d | 2026-06-01 A | 2026-06-09 A | 437SS+14d | 100% |  | 2026-06-01 | 2026-06-09 | 6d |  |  |  |
| 617 | 3.7.4.5.1.2 | Estimativa de Cargas e Demanda | 10d | 2026-06-01 A | 2026-06-15 A | 437SS+14d | 100% |  | 2026-06-01 | 2026-06-15 | 10d |  |  |  |
| 618 | 3.7.4.5.1.3 | Levantamento de Equipamentos de Outras Disciplinas | 6d | 2026-06-16 A | 2026-06-23 A | 592 | 100% |  | 2026-06-16 | 2026-06-23 | 6d |  |  |  |
| 619 | 3.7.4.5.2 | **LOD 200 — Anteprojeto** | 24d | 2026-07-01 A | 2026-08-03 |  | 13% | 20.88d | 2026-06-24 | 2026-07-20 | 19d | 11d | 0d |  |
| 620 | 3.7.4.5.2.1 | TUGs Estimados | 24d | 2026-07-01 A | 2026-08-03 | 617, 618FS+5d | 13% | 20.88d | 2026-06-24 | 2026-07-20 | 19d | 11d |  |  |
| 621 | 3.7.4.5.2.2 | Pontos de Luz Estimados | 24d | 2026-07-01 A | 2026-08-03 | 617, 618FS+5d | 13% | 20.88d | 2026-06-24 | 2026-07-20 | 19d | 11d |  |  |
| 622 | 3.7.4.5.2.3 | TUEs e Quadros Estimados | 24d | 2026-07-01 A | 2026-08-03 | 617, 618FS+5d | 13% | 20.88d | 2026-06-24 | 2026-07-20 | 19d | 11d |  |  |
| 623 | 3.7.4.5.3 | LOD 300 - Consolidação e documentação de entrega | 4d | 2026-08-04 | 2026-08-07 | 619 |  |  | 2026-07-21 | 2026-07-24 | 4d | 11d | 0d |  |
| 624 | 3.7.4.5.4 | Aprovação de Conformidade | 3d | 2026-08-05 | 2026-08-07 | 623FF |  |  | 2026-07-22 | 2026-07-24 | 0d | 11d |  |  |
| 625 | 3.7.4.5.5 | Material para entrega ao contrato | 3d | 2026-08-05 | 2026-08-07 | 623FF |  |  | 2026-07-22 | 2026-07-24 | 0d | 11d |  |  |
| 626 | 3.7.4.6 | **Telecom** | 49d | 2026-06-01 A | 2026-08-07 |  | 30% | 34.3d | 2026-06-01 | 2026-07-17 | 34d | 11d |  |  |
| 627 | 3.7.4.6.1 | **LOD 100 — Concepção** | 10d | 2026-06-01 A | 2026-06-15 |  | 85% | 1.5d | 2026-06-01 | 2026-06-15 | 10d | 50d |  |  |
| 628 | 3.7.4.6.1.1 | Avaliação e Diretrizes Técnicas para Arquitetura | 10d | 2026-06-01 A | 2026-06-15 | 437SS+14d | 85% | 1.5d | 2026-06-01 | 2026-06-15 | 10d | 50d |  |  |
| 629 | 3.7.4.6.1.2 | Estimativa de Demanda de Telecomunicações | 10d | 2026-06-01 A | 2026-06-15 | 437SS+14d | 85% | 1.5d | 2026-06-01 | 2026-06-15 | 10d | 50d |  |  |
| 630 | 3.7.4.6.1.3 | Levantamento de Equipamentos e Interfaces com Outras Disciplinas | 10d | 2026-06-01 A | 2026-06-15 | 437SS+14d | 85% | 1.5d | 2026-06-01 | 2026-06-15 | 10d | 11d | 0d |  |
| 631 | 3.7.4.6.2 | **LOD 200 — Anteprojeto** | 35d | 2026-06-16 | 2026-08-03 |  |  |  | 2026-06-16 | 2026-07-13 | 20d | 11d | 0d |  |
| 632 | 3.7.4.6.2.1 | Pontos de Telecomunicações Estimados (Rede, Voz, CFTV e Demais Sistemas) | 15d | 2026-06-16 | 2026-07-06 | 630 |  |  | 2026-06-16 | 2026-06-29 | 10d | 16d | 5d |  |
| 633 | 3.7.4.6.2.2 | Racks Estimados | 15d | 2026-06-16 | 2026-07-06 | 630 |  |  | 2026-06-16 | 2026-06-29 | 10d | 11d | 0d |  |
| 634 | 3.7.4.6.2.3 | Infraestrutura de Telecomunicações Preliminar | 15d | 2026-07-14 | 2026-08-03 | 632, 633FS+5d |  |  | 2026-06-30 | 2026-07-13 | 10d | 11d |  |  |
| 635 | 3.7.4.6.3 | LOD 300 - Consolidação e documentação de entrega | 4d | 2026-08-04 | 2026-08-07 | 631 |  |  | 2026-07-14 | 2026-07-17 | 4d | 11d | 0d |  |
| 636 | 3.7.4.6.4 | Aprovação de Conformidade | 3d | 2026-08-05 | 2026-08-07 | 635FF |  |  | 2026-07-15 | 2026-07-17 | 0d | 11d |  |  |
| 637 | 3.7.4.6.5 | Material para entrega ao contrato | 3d | 2026-08-05 | 2026-08-07 | 635FF |  |  | 2026-07-15 | 2026-07-17 | 0d | 11d |  |  |

| ID | WBS | Task | Duration | Start | Finish | Predecessors | Complete | Remaining | Baseline start | Baseline finish | Baseline duration | Total slack | Free slack |
| --- | --- | --- | --- | --- | --- | --- | --- | --- | --- | --- | --- | --- | --- |
| 638 | 3.7.4.7 | **SPDA** | 49d | 2026-06-01 | 2026-08-07 |  |  |  | 2026-06-01 | 2026-07-24 | 39d | 11d |  |
| 639 | 3.7.4.7.1 | **LOD 100 — Concepção** | 5d | 2026-06-01 | 2026-06-08 |  |  |  | 2026-06-01 | 2026-06-08 | 5d | 11d |  |
| 640 | 3.7.4.7.1.1 | Avaliação e Diretrizes Técnicas para Arquitetura | 5d | 2026-06-01 | 2026-06-08 | 437SS+14d |  |  | 2026-06-01 | 2026-06-08 | 5d | 55d |  |
| 641 | 3.7.4.7.1.2 | Coleta de Informações da Edificação e Análise de Risco (ABNT NBR 5419-2) | 5d | 2026-06-01 | 2026-06-08 | 437SS+14d |  |  | 2026-06-01 | 2026-06-08 | 5d | 55d |  |
| 642 | 3.7.4.7.1.3 | Estudo Preliminar de Necessidade e Nível de Proteção do SPDA | 5d | 2026-06-01 | 2026-06-08 | 437SS+14d |  |  | 2026-06-01 | 2026-06-08 | 5d | 11d | 0d |
| 643 | 3.7.4.7.2 | **LOD 200 — Anteprojeto** | 40d | 2026-06-09 | 2026-08-03 |  |  |  | 2026-06-09 | 2026-07-20 | 30d | 11d |  |
| 644 | 3.7.4.7.2.1 | Definição da Estratégia de Proteção e Soluções Técnicas | 15d | 2026-06-09 | 2026-06-29 | 642 |  |  | 2026-06-09 | 2026-06-22 | 10d | 11d | 0d |
| 645 | 3.7.4.7.2.2 | Zoneamento de Captação, Descida e Traçados Preliminares | 10d | 2026-06-30 | 2026-07-13 | 644 |  |  | 2026-06-23 | 2026-07-06 | 10d | 11d | 0d |
| 646 | 3.7.4.7.2.3 | Estudo de Interferências, Compatibilização e Métodos Construtivos | 10d | 2026-07-21 | 2026-08-03 | 645FS+5d |  |  | 2026-07-07 | 2026-07-20 | 10d | 11d | 0d |
| 647 | 3.7.4.7.3 | LOD 300 - Consolidação e documentação de entrega | 4d | 2026-08-04 | 2026-08-07 | 646 |  |  | 2026-07-21 | 2026-07-24 | 4d | 11d | 0d |
| 648 | 3.7.4.7.4 | Aprovação de Conformidade | 3d | 2026-08-05 | 2026-08-07 | 647FF |  |  | 2026-07-22 | 2026-07-24 | 0d | 11d |  |
| 649 | 3.7.4.7.5 | Material para entrega ao contrato | 3d | 2026-08-05 | 2026-08-07 | 647FF |  |  | 2026-07-22 | 2026-07-24 | 0d | 11d |  |
| 650 | 3.7.4.8 | **Energia Renovável** | 49d | 2026-06-01 A | 2026-08-07 |  | 89% | 5.47d | 2026-06-01 | 2026-07-17 | 34d | 11d |  |
| 651 | 3.7.4.8.1 | **LOD 100 — Concepção** | 10d | 2026-06-01 A | 2026-06-15 A |  | 100% |  | 2026-06-01 | 2026-06-15 | 10d |  |  |
| 652 | 3.7.4.8.1.1 | Viabilidade e Premissas de Geração | 10d | 2026-06-01 A | 2026-06-15 A | 437SS+14d | 100% |  | 2026-06-01 | 2026-06-15 | 10d |  |  |
| 653 | 3.7.4.8.1.2 | Levantamento Preliminar de Áreas e Sombreamento | 10d | 2026-06-01 A | 2026-06-15 A | 437SS+14d | 100% |  | 2026-06-01 | 2026-06-15 | 10d |  |  |
| 654 | 3.7.4.8.1.3 | Avaliação e Diretrizes Técnicas para Arquitetônico | 10d | 2026-06-01 A | 2026-06-15 A | 437SS+14d | 100% |  | 2026-06-01 | 2026-06-15 | 10d |  |  |
| 655 | 3.7.4.8.2 | **LOD 200 — Anteprojeto** | 35d | 2026-06-16 A | 2026-08-03 |  | 95% | 1.75d | 2026-06-16 | 2026-07-13 | 20d | 11d | 0d |
| 656 | 3.7.4.8.2.1 | Layout Preliminar de Módulos, Inversores e String Boxes | 30d | 2026-06-16 A | 2026-07-27 | 653 | 95% | 1.5d | 2026-06-16 | 2026-07-13 | 20d | 16d |  |
| 657 | 3.7.4.8.2.2 | Infraestrutura e Rotas Técnicas Preliminares (DC/AC e Aterramento) | 30d | 2026-06-16 A | 2026-07-27 | 653 | 95% | 1.5d | 2026-06-16 | 2026-07-13 | 20d | 16d |  |
| 658 | 3.7.4.8.2.3 | Critérios Preliminares de Proteção e Estimativa de Quantitativos | 30d | 2026-06-23 A | 2026-08-03 | 653FS+5d | 95% | 1.5d | 2026-06-16 | 2026-07-13 | 20d | 11d |  |
| 659 | 3.7.4.8.3 | LOD 300 - Consolidação e documentação de entrega | 4d | 2026-08-04 | 2026-08-07 | 655 |  |  | 2026-07-14 | 2026-07-17 | 4d | 11d | 0d |
| 660 | 3.7.4.8.4 | Aprovação de Conformidade | 3d | 2026-08-05 | 2026-08-07 | 659FF |  |  | 2026-07-15 | 2026-07-17 | 0d | 11d |  |
| 661 | 3.7.4.8.5 | Material para entrega ao contrato | 3d | 2026-08-05 | 2026-08-07 | 659FF |  |  | 2026-07-15 | 2026-07-17 | 0d | 11d |  |

| ID | WBS | Task | Duration | Start | Finish | Predecessors | Complete | Remaining | Baseline start | Baseline finish | Baseline duration | Total slack | Free slack |
| --- | --- | --- | --- | --- | --- | --- | --- | --- | --- | --- | --- | --- | --- |
| 662 | 3.8 | **005 - Centro de Técnologia e Educação** | 74d | 2026-05-12 A | 2026-08-24 |  | 64% | 26.65d | 2026-05-12 | 2026-07-27 | 54d | 0d |  |
| 663 | 3.8.1 | **Arquitetura** | 58d | 2026-05-12 A | 2026-07-31 |  | 72% | 15.99d | 2026-05-12 | 2026-07-27 | 54d | 16d |  |
| 664 | 3.8.1.1 | **LOD 200 - ESTUDO PRELIMINAR** | 38d | 2026-05-12 A | 2026-07-03 A |  | 100% |  | 2026-05-12 | 2026-07-03 | 38d |  |  |
| 665 | 3.8.1.1.1 | Modelagem das paredes | 38d | 2026-05-12 A | 2026-07-03 A | 63FS+8d | 100% |  | 2026-05-12 | 2026-07-03 | 38d |  |  |
| 666 | 3.8.1.1.2 | Modelagem dos pisos | 38d | 2026-05-12 A | 2026-07-03 A | 63FS+8d | 100% |  | 2026-05-12 | 2026-07-03 | 38d |  |  |
| 667 | 3.8.1.1.3 | Inserção de portas | 38d | 2026-05-12 A | 2026-07-03 A | 63FS+8d | 100% |  | 2026-05-12 | 2026-07-03 | 38d |  |  |
| 668 | 3.8.1.1.4 | Inserção de janelas | 38d | 2026-05-12 A | 2026-07-03 A | 63FS+8d | 100% |  | 2026-05-12 | 2026-07-03 | 38d |  |  |
| 669 | 3.8.1.1.5 | Inserção de escada(s) | 38d | 2026-05-12 A | 2026-07-03 A | 63FS+8d | 100% |  | 2026-05-12 | 2026-07-03 | 38d |  |  |
| 670 | 3.8.1.1.6 | Inserção de elevador(es) | 38d | 2026-05-12 A | 2026-07-03 A | 63FS+8d | 100% |  | 2026-05-12 | 2026-07-03 | 38d |  |  |
| 671 | 3.8.1.1.7 | Inserção de layout | 38d | 2026-05-12 A | 2026-07-03 A | 63FS+8d | 100% |  | 2026-05-12 | 2026-07-03 | 38d |  |  |
| 672 | 3.8.1.1.8 | Identificação dos ambientes | 38d | 2026-05-12 A | 2026-07-03 A | 63FS+8d | 100% |  | 2026-05-12 | 2026-07-03 | 38d |  |  |
| 673 | 3.8.1.1.9 | Espaços de circulação | 38d | 2026-05-12 A | 2026-07-03 A | 63FS+8d | 100% |  | 2026-05-12 | 2026-07-03 | 38d |  |  |
| 674 | 3.8.1.1.10 | Áreas de serviços, funcionais e técnicas | 38d | 2026-05-12 A | 2026-07-03 A | 63FS+8d | 100% |  | 2026-05-12 | 2026-07-03 | 38d |  |  |
| 675 | 3.8.1.1.11 | Projeção de níveis superiores e da cobertura | 38d | 2026-05-12 A | 2026-07-03 A | 63FS+8d | 100% |  | 2026-05-12 | 2026-07-03 | 38d |  |  |
| 676 | 3.8.1.1.12 | Cotas de nível principais | 38d | 2026-05-12 A | 2026-07-03 A | 63FS+8d | 100% |  | 2026-05-12 | 2026-07-03 | 38d |  |  |
| 677 | 3.8.1.1.13 | Relatório/Memorial de Projeto Preliminar | 38d | 2026-05-12 A | 2026-07-03 A | 63FS+8d | 100% |  | 2026-05-12 | 2026-07-03 | 38d |  |  |
| 678 | 3.8.1.2 | **LOD 300 - ANTEPROJETO** | 20d | 2026-07-06 | 2026-07-31 |  |  |  | 2026-07-06 | 2026-07-27 | 16d | 16d | 0d |
| 679 | 3.8.1.2.1 | **Situação** | 4d | 2026-07-06 | 2026-07-09 |  |  |  | 2026-07-06 | 2026-07-07 | 2d | 16d |  |
| 680 | 3.8.1.2.1.1 | Indicar simbologias de representação gráfica, conforme NBR 6492:2021; | 4d | 2026-07-06 | 2026-07-09 | 677 |  |  | 2026-07-06 | 2026-07-07 | 2d | 32d |  |
| 681 | 3.8.1.2.1.2 | Indicação Norte | 4d | 2026-07-06 | 2026-07-09 | 677 |  |  | 2026-07-06 | 2026-07-07 | 2d | 32d |  |
| 682 | 3.8.1.2.1.3 | Analisar, adicionar e fechar - Curvas de nível existentes e projetadas (conforme projetos de topografia e sondagem recebidos); | 4d | 2026-07-06 | 2026-07-09 | 677 |  |  | 2026-07-06 | 2026-07-07 | 2d | 32d |  |
| 683 | 3.8.1.2.1.4 | Indicação de Escala; | 4d | 2026-07-06 | 2026-07-09 | 677 |  |  | 2026-07-06 | 2026-07-07 | 2d | 32d |  |
| 684 | 3.8.1.2.1.5 | Vias de acesso ao conjunto, arruamento, logradouros adjacentes e calçadas com os respectivos equipamentos urbanos; | 4d | 2026-07-06 | 2026-07-09 | 677 |  |  | 2026-07-06 | 2026-07-07 | 2d | 32d |  |
| 685 | 3.8.1.2.1.6 | Platôs e taludes principais; | 4d | 2026-07-06 | 2026-07-09 | 677 |  |  | 2026-07-06 | 2026-07-07 | 2d | 32d |  |
| 686 | 3.8.1.2.1.7 | Perímetro do terreno, recuos e afastamentos; | 4d | 2026-07-06 | 2026-07-09 | 677 |  |  | 2026-07-06 | 2026-07-07 | 2d | 32d |  |
| 687 | 3.8.1.2.1.8 | Indicação das áreas a serem edificadas com o contorno da cobertura das edificações, estacionamentos e áreas permeáveis/impermeáveis; | 4d | 2026-07-06 | 2026-07-09 | 677 |  |  | 2026-07-06 | 2026-07-07 | 2d | 32d |  |
| 688 | 3.8.1.2.1.9 | Denominação das edificações, blocos ou espaços; | 4d | 2026-07-06 | 2026-07-09 | 677 |  |  | 2026-07-06 | 2026-07-07 | 2d | 32d |  |
| 689 | 3.8.1.2.1.10 | Cotas gerais | 4d | 2026-07-06 | 2026-07-09 | 677 |  |  | 2026-07-06 | 2026-07-07 | 2d | 32d |  |
| 690 | 3.8.1.2.1.11 | Cotas de nível principal. | 4d | 2026-07-06 | 2026-07-09 | 677 |  |  | 2026-07-06 | 2026-07-07 | 2d | 32d |  |
| 691 | 3.8.1.2.1.12 | Quadros de áreas | 4d | 2026-07-06 | 2026-07-09 | 677 |  |  | 2026-07-06 | 2026-07-07 | 2d | 32d |  |
| 692 | 3.8.1.2.1.13 | Relatório | 4d | 2026-07-06 | 2026-07-09 | 677 |  |  | 2026-07-06 | 2026-07-07 | 2d | 16d | 0d |
| 693 | 3.8.1.2.2 | Planta com as cotas de nível projetadas e existentes | 4d | 2026-07-10 | 2026-07-15 | 692 |  |  | 2026-07-08 | 2026-07-09 | 2d | 16d | 0d |

| ID | WBS | Task | Duration | Start | Finish | Predecessors | Baseline start | Baseline finish | Baseline duration | Total slack | Free slack |
| --- | --- | --- | --- | --- | --- | --- | --- | --- | --- | --- | --- |
| 694 | 3.8.1.2.3 | **Plantas baixas (se tiver mais de um pavimento, duplicar bloco)** | 2d | 2026-07-16 | 2026-07-17 |  | 2026-07-10 | 2026-07-13 | 2d | 16d |  |
| 695 | 3.8.1.2.3.1 | Indicar simbologias de representação gráfica, conforme NBR 6492:2021; | 2d | 2026-07-16 | 2026-07-17 | 693 | 2026-07-10 | 2026-07-13 | 2d | 26d |  |
| 696 | 3.8.1.2.3.2 | Compatibilização (verificar se está tudo conforme as normas e alinhar com o restante das disciplinas de engenharia) | 2d | 2026-07-16 | 2026-07-17 | 693 | 2026-07-10 | 2026-07-13 | 2d | 26d |  |
| 697 | 3.8.1.2.3.3 | Compatibilização (deixar tudo conforme padrão Quanta) | 2d | 2026-07-16 | 2026-07-17 | 693 | 2026-07-10 | 2026-07-13 | 2d | 26d |  |
| 698 | 3.8.1.2.3.4 | Indicação de Norte; | 2d | 2026-07-16 | 2026-07-17 | 693 | 2026-07-10 | 2026-07-13 | 2d | 26d |  |
| 699 | 3.8.1.2.3.5 | Indicação de Escala; | 2d | 2026-07-16 | 2026-07-17 | 693 | 2026-07-10 | 2026-07-13 | 2d | 26d |  |
| 700 | 3.8.1.2.3.6 | Indicação de Acessos; | 2d | 2026-07-16 | 2026-07-17 | 693 | 2026-07-10 | 2026-07-13 | 2d | 26d |  |
| 701 | 3.8.1.2.3.7 | Elementos de vedação internos e externos; | 2d | 2026-07-16 | 2026-07-17 | 693 | 2026-07-10 | 2026-07-13 | 2d | 26d |  |
| 702 | 3.8.1.2.3.8 | Esquadrias; | 2d | 2026-07-16 | 2026-07-17 | 693 | 2026-07-10 | 2026-07-13 | 2d | 26d |  |
| 703 | 3.8.1.2.3.9 | Elementos estruturais principais; | 2d | 2026-07-16 | 2026-07-17 | 693 | 2026-07-10 | 2026-07-13 | 2d | 26d |  |
| 704 | 3.8.1.2.3.10 | Identificação dos ambientes e espaços (internos e externos); | 2d | 2026-07-16 | 2026-07-17 | 693 | 2026-07-10 | 2026-07-13 | 2d | 26d |  |
| 705 | 3.8.1.2.3.11 | Espaços de circulação internos e externos; | 2d | 2026-07-16 | 2026-07-17 | 693 | 2026-07-10 | 2026-07-13 | 2d | 26d |  |
| 706 | 3.8.1.2.3.12 | Áreas de serviço, funcionais e técnicas (internos e externos); | 2d | 2026-07-16 | 2026-07-17 | 693 | 2026-07-10 | 2026-07-13 | 2d | 26d |  |
| 707 | 3.8.1.2.3.13 | Projeções de níveis superiores; | 2d | 2026-07-16 | 2026-07-17 | 693 | 2026-07-10 | 2026-07-13 | 2d | 26d |  |
| 708 | 3.8.1.2.3.14 | Cotas gerais | 2d | 2026-07-16 | 2026-07-17 | 693 | 2026-07-10 | 2026-07-13 | 2d | 26d |  |
| 709 | 3.8.1.2.3.15 | Cotas de nível principal. | 2d | 2026-07-16 | 2026-07-17 | 693 | 2026-07-10 | 2026-07-13 | 2d | 26d |  |
| 710 | 3.8.1.2.3.16 | Tabelas de paredes, pisos, esquadrias e plantas | 2d | 2026-07-16 | 2026-07-17 | 693 | 2026-07-10 | 2026-07-13 | 2d | 26d |  |
| 711 | 3.8.1.2.3.17 | Quadro de áreas | 2d | 2026-07-16 | 2026-07-17 | 693 | 2026-07-10 | 2026-07-13 | 2d | 16d | 0d |
| 712 | 3.8.1.2.3.18 | Relatório | 2d | 2026-07-16 | 2026-07-17 | 693 | 2026-07-10 | 2026-07-13 | 2d | 26d |  |
| 713 | 3.8.1.2.4 | **Planta das coberturas** | 2d | 2026-07-20 | 2026-07-21 |  | 2026-07-14 | 2026-07-15 | 2d | 16d |  |
| 714 | 3.8.1.2.4.1 | Indicação do Norte | 2d | 2026-07-20 | 2026-07-21 | 711 | 2026-07-14 | 2026-07-15 | 2d | 24d |  |
| 715 | 3.8.1.2.4.2 | Indicação de escala | 2d | 2026-07-20 | 2026-07-21 | 711 | 2026-07-14 | 2026-07-15 | 2d | 24d |  |
| 716 | 3.8.1.2.4.3 | Curvas de nível | 2d | 2026-07-20 | 2026-07-21 | 711 | 2026-07-14 | 2026-07-15 | 2d | 24d |  |
| 717 | 3.8.1.2.4.4 | Indicação de Acessos; | 2d | 2026-07-20 | 2026-07-21 | 711 | 2026-07-14 | 2026-07-15 | 2d | 24d |  |
| 718 | 3.8.1.2.4.5 | Estacionamento e áreas cobertas | 2d | 2026-07-20 | 2026-07-21 | 711 | 2026-07-14 | 2026-07-15 | 2d | 24d |  |
| 719 | 3.8.1.2.4.6 | Cobertura das edificações | 2d | 2026-07-20 | 2026-07-21 | 711 | 2026-07-14 | 2026-07-15 | 2d | 24d |  |
| 720 | 3.8.1.2.4.7 | Sentido de escoamento das águas pluviais e inclinação | 2d | 2026-07-20 | 2026-07-21 | 711 | 2026-07-14 | 2026-07-15 | 2d | 24d |  |
| 721 | 3.8.1.2.4.8 | Cotas gerais | 2d | 2026-07-20 | 2026-07-21 | 711 | 2026-07-14 | 2026-07-15 | 2d | 24d |  |
| 722 | 3.8.1.2.4.9 | Cotas de nível principal | 2d | 2026-07-20 | 2026-07-21 | 711 | 2026-07-14 | 2026-07-15 | 2d | 16d | 0d |
| 723 | 3.8.1.2.4.10 | Relatório | 2d | 2026-07-20 | 2026-07-21 | 711 | 2026-07-14 | 2026-07-15 | 2d | 24d |  |

| ID | WBS | Task | Duration | Start | Finish | Predecessors | Baseline start | Baseline finish | Baseline duration | Total slack | Free slack |
| --- | --- | --- | --- | --- | --- | --- | --- | --- | --- | --- | --- |
| 724 | 3.8.1.2.5 | **Cortes longitudinais** | 2d | 2026-07-22 | 2026-07-23 |  | 2026-07-16 | 2026-07-17 | 2d | 16d |  |
| 725 | 3.8.1.2.5.1 | Indicar simbologias de representação gráfica, conforme NBR 6492:2021; | 2d | 2026-07-22 | 2026-07-23 | 722 | 2026-07-16 | 2026-07-17 | 2d | 22d |  |
| 726 | 3.8.1.2.5.2 | Indicação de Escala; | 2d | 2026-07-22 | 2026-07-23 | 722 | 2026-07-16 | 2026-07-17 | 2d | 22d |  |
| 727 | 3.8.1.2.5.3 | Elementos estruturais principais; | 2d | 2026-07-22 | 2026-07-23 | 722 | 2026-07-16 | 2026-07-17 | 2d | 22d |  |
| 728 | 3.8.1.2.5.4 | Elementos de vedação internos e externos; | 2d | 2026-07-22 | 2026-07-23 | 722 | 2026-07-16 | 2026-07-17 | 2d | 22d |  |
| 729 | 3.8.1.2.5.5 | Esquadrias; | 2d | 2026-07-22 | 2026-07-23 | 722 | 2026-07-16 | 2026-07-17 | 2d | 22d |  |
| 730 | 3.8.1.2.5.6 | Identificação dos ambientes; | 2d | 2026-07-22 | 2026-07-23 | 722 | 2026-07-16 | 2026-07-17 | 2d | 22d |  |
| 731 | 3.8.1.2.5.7 | Cobertura com indicação da respectiva inclinação; | 2d | 2026-07-22 | 2026-07-23 | 722 | 2026-07-16 | 2026-07-17 | 2d | 22d |  |
| 732 | 3.8.1.2.5.8 | Cotas gerais; | 2d | 2026-07-22 | 2026-07-23 | 722 | 2026-07-16 | 2026-07-17 | 2d | 22d |  |
| 733 | 3.8.1.2.5.9 | Cotas de nível principal; | 2d | 2026-07-22 | 2026-07-23 | 722 | 2026-07-16 | 2026-07-17 | 2d | 22d |  |
| 734 | 3.8.1.2.5.10 | Eixos do projeto; | 2d | 2026-07-22 | 2026-07-23 | 722 | 2026-07-16 | 2026-07-17 | 2d | 22d |  |
| 735 | 3.8.1.2.5.11 | Relevo construído; | 2d | 2026-07-22 | 2026-07-23 | 722 | 2026-07-16 | 2026-07-17 | 2d | 22d |  |
| 736 | 3.8.1.2.5.12 | Projeção da topografia natural. | 2d | 2026-07-22 | 2026-07-23 | 722 | 2026-07-16 | 2026-07-17 | 2d | 16d | 0d |
| 737 | 3.8.1.2.5.13 | Relatório | 2d | 2026-07-22 | 2026-07-23 | 722 | 2026-07-16 | 2026-07-17 | 2d | 22d |  |
| 738 | 3.8.1.2.6 | **Cortes transversais** | 2d | 2026-07-24 | 2026-07-27 |  | 2026-07-20 | 2026-07-21 | 2d | 16d |  |
| 739 | 3.8.1.2.6.1 | Indicar simbologias de representação gráfica, conforme NBR 6492:2021; | 2d | 2026-07-24 | 2026-07-27 | 736 | 2026-07-20 | 2026-07-21 | 2d | 20d |  |
| 740 | 3.8.1.2.6.2 | Indicação de Escala; | 2d | 2026-07-24 | 2026-07-27 | 736 | 2026-07-20 | 2026-07-21 | 2d | 20d |  |
| 741 | 3.8.1.2.6.3 | Elementos estruturais principais; | 2d | 2026-07-24 | 2026-07-27 | 736 | 2026-07-20 | 2026-07-21 | 2d | 20d |  |
| 742 | 3.8.1.2.6.4 | Elementos de vedação internos e externos; | 2d | 2026-07-24 | 2026-07-27 | 736 | 2026-07-20 | 2026-07-21 | 2d | 20d |  |
| 743 | 3.8.1.2.6.5 | Esquadrias; | 2d | 2026-07-24 | 2026-07-27 | 736 | 2026-07-20 | 2026-07-21 | 2d | 20d |  |
| 744 | 3.8.1.2.6.6 | Identificação dos ambientes; | 2d | 2026-07-24 | 2026-07-27 | 736 | 2026-07-20 | 2026-07-21 | 2d | 20d |  |
| 745 | 3.8.1.2.6.7 | Cobertura com indicação da respectiva inclinação; | 2d | 2026-07-24 | 2026-07-27 | 736 | 2026-07-20 | 2026-07-21 | 2d | 20d |  |
| 746 | 3.8.1.2.6.8 | Cotas gerais; | 2d | 2026-07-24 | 2026-07-27 | 736 | 2026-07-20 | 2026-07-21 | 2d | 20d |  |
| 747 | 3.8.1.2.6.9 | Cotas de nível principal; | 2d | 2026-07-24 | 2026-07-27 | 736 | 2026-07-20 | 2026-07-21 | 2d | 20d |  |
| 748 | 3.8.1.2.6.10 | Eixos do projeto; | 2d | 2026-07-24 | 2026-07-27 | 736 | 2026-07-20 | 2026-07-21 | 2d | 20d |  |
| 749 | 3.8.1.2.6.11 | Relevo construído; | 2d | 2026-07-24 | 2026-07-27 | 736 | 2026-07-20 | 2026-07-21 | 2d | 20d |  |
| 750 | 3.8.1.2.6.12 | Projeção da topografia natural | 2d | 2026-07-24 | 2026-07-27 | 736 | 2026-07-20 | 2026-07-21 | 2d | 16d | 0d |
| 751 | 3.8.1.2.6.13 | Relatório | 2d | 2026-07-24 | 2026-07-27 | 736 | 2026-07-20 | 2026-07-21 | 2d | 20d |  |

| ID | WBS | Task | Duration | Start | Finish | Predecessors | Complete | Remaining | Baseline start | Baseline finish | Baseline duration | Total slack | Free slack |
| --- | --- | --- | --- | --- | --- | --- | --- | --- | --- | --- | --- | --- | --- |
| 752 | 3.8.1.2.7 | **Elevações** | 2d | 2026-07-28 | 2026-07-29 |  |  |  | 2026-07-22 | 2026-07-23 | 2d | 16d |  |
| 753 | 3.8.1.2.7.1 | Indicar simbologias de representação gráfica, conforme NBR 6492:2021; | 2d | 2026-07-28 | 2026-07-29 | 750 |  |  | 2026-07-22 | 2026-07-23 | 2d | 18d |  |
| 754 | 3.8.1.2.7.2 | Indicação de Escala; | 2d | 2026-07-28 | 2026-07-29 | 750 |  |  | 2026-07-22 | 2026-07-23 | 2d | 18d |  |
| 755 | 3.8.1.2.7.3 | Elementos estruturais principais; | 2d | 2026-07-28 | 2026-07-29 | 750 |  |  | 2026-07-22 | 2026-07-23 | 2d | 18d |  |
| 756 | 3.8.1.2.7.4 | Elementos de vedação internos e externos; | 2d | 2026-07-28 | 2026-07-29 | 750 |  |  | 2026-07-22 | 2026-07-23 | 2d | 18d |  |
| 757 | 3.8.1.2.7.5 | Esquadrias; | 2d | 2026-07-28 | 2026-07-29 | 750 |  |  | 2026-07-22 | 2026-07-23 | 2d | 18d |  |
| 758 | 3.8.1.2.7.6 | Relevo construído; | 2d | 2026-07-28 | 2026-07-29 | 750 |  |  | 2026-07-22 | 2026-07-23 | 2d | 18d |  |
| 759 | 3.8.1.2.7.7 | Cotas gerais; | 2d | 2026-07-28 | 2026-07-29 | 750 |  |  | 2026-07-22 | 2026-07-23 | 2d | 18d |  |
| 760 | 3.8.1.2.7.8 | Cotas de nível principais; | 2d | 2026-07-28 | 2026-07-29 | 750 |  |  | 2026-07-22 | 2026-07-23 | 2d | 18d |  |
| 761 | 3.8.1.2.7.9 | Cobertura (quando aparente). | 2d | 2026-07-28 | 2026-07-29 | 750 |  |  | 2026-07-22 | 2026-07-23 | 2d | 16d | 0d |
| 762 | 3.8.1.2.8 | **Memorial Descritivo** | 2d | 2026-07-30 | 2026-07-31 |  |  |  | 2026-07-24 | 2026-07-27 | 2d | 16d |  |
| 763 | 3.8.1.2.8.1 | Descrição dos elementos da edificação | 2d | 2026-07-30 | 2026-07-31 | 761 |  |  | 2026-07-24 | 2026-07-27 | 2d | 16d |  |
| 764 | 3.8.1.2.8.2 | Descrição dos componentes construtivos e materiais de construção | 2d | 2026-07-30 | 2026-07-31 | 761 |  |  | 2026-07-24 | 2026-07-27 | 2d | 16d |  |
| 765 | 3.8.1.2.8.3 | Lista de pranchas anexas e documentos | 2d | 2026-07-30 | 2026-07-31 | 761 |  |  | 2026-07-24 | 2026-07-27 | 2d | 16d |  |
| 766 | 3.8.2 | Aprovação de Conformidade | 3d | 2026-07-29 | 2026-07-31 | 678FF |  |  | 2026-07-23 | 2026-07-27 | 0d | 16d |  |
| 767 | 3.8.3 | Material para entrega ao contrato | 3d | 2026-07-29 | 2026-07-31 | 678FF |  |  | 2026-07-23 | 2026-07-27 | 0d | 16d |  |
| 768 | 3.8.4 | **Engenharia** | 60d | 2026-06-01 A | 2026-08-24 |  | 59% | 24.54d | 2026-06-01 | 2026-07-24 | 39d | 0d |  |
| 769 | 3.8.4.1 | **Estrutura** | 49d | 2026-06-01 A | 2026-08-07 |  | 83% | 8.36d | 2026-06-01 | 2026-07-20 | 35d | 11d |  |
| 770 | 3.8.4.1.1 | **LOD 100 — Premissas, diretrizes e interfaces** | 7d | 2026-06-01 A | 2026-06-10 A |  | 100% |  | 2026-06-01 | 2026-06-10 | 7d |  |  |
| 771 | 3.8.4.1.1.1 | Levantamento de tipos de cargas globais estimadas (permanentes, acidentais, vento e especiais). | 2d | 2026-06-01 A | 2026-06-02 A | 676SS+14d | 100% |  | 2026-06-01 | 2026-06-02 | 2d |  |  |
| 772 | 3.8.4.1.1.2 | Estudo volumétrico com modulação inicial de pilares, vigas e lajes. Entendendo vãos e desafios | 5d | 2026-06-01 A | 2026-06-08 A | 676SS+14d | 100% |  | 2026-06-01 | 2026-06-08 | 5d |  |  |
| 773 | 3.8.4.1.1.3 | Localização aproximada de elementos estruturais principais. Avaliando vãos e estudando posições | 2d | 2026-06-01 A | 2026-06-02 A | 676SS+14d | 100% |  | 2026-06-01 | 2026-06-02 | 2d |  |  |
| 774 | 3.8.4.1.1.4 | Estudo de viabilidade técnica e construtiva. | 3d | 2026-06-03 A | 2026-06-08 A | 773 | 100% |  | 2026-06-03 | 2026-06-08 | 3d |  |  |
| 775 | 3.8.4.1.1.5 | Definição preliminar do sistema estrutural (concreto armado, metálica ou mista). | 3d | 2026-06-03 A | 2026-06-08 A | 773 | 100% |  | 2026-06-03 | 2026-06-08 | 3d |  |  |
| 776 | 3.8.4.1.1.6 | Estimativa preliminar de tipologias de fundações (sapatas, blocos, estacas). | 2d | 2026-06-09 A | 2026-06-10 A | 774 | 100% |  | 2026-06-09 | 2026-06-10 | 2d |  |  |
| 777 | 3.8.4.1.1.7 | Previsão de áreas técnicas, casas de máquinas, reservatórios elevados e estrutura de cobertura. | 2d | 2026-06-09 A | 2026-06-10 A | 774 | 100% |  | 2026-06-09 | 2026-06-10 | 2d |  |  |

| ID | WBS | Task | Duration | Start | Finish | Predecessors | Complete | Remaining | Baseline start | Baseline finish | Baseline duration | Total slack | Free slack |
| --- | --- | --- | --- | --- | --- | --- | --- | --- | --- | --- | --- | --- | --- |
| 778 | 3.8.4.1.2 | **LOD 200 — Validação interdisciplinar e solução preliminar** | 20d | 2026-06-11 A | 2026-07-08 A |  | 100% |  | 2026-06-11 | 2026-07-08 | 20d |  |  |
| 779 | 3.8.4.1.2.1 | Lista preliminar de cargas e ações para dimensionamento. | 5d | 2026-06-11 A | 2026-06-17 A | 777 | 100% |  | 2026-06-11 | 2026-06-17 | 5d |  |  |
| 780 | 3.8.4.1.2.2 | Definição preliminar de alturas de pavimentos e níveis de fundação. | 5d | 2026-06-11 A | 2026-06-17 A | 777 | 100% |  | 2026-06-11 | 2026-06-17 | 5d |  |  |
| 781 | 3.8.4.1.2.3 | Indicação aproximada do sistema de cobertura (tesouras, treliças, vigamento metálico ou concreto). | 5d | 2026-06-11 A | 2026-06-17 A | 777 | 100% |  | 2026-06-11 | 2026-06-17 | 5d |  |  |
| 782 | 3.8.4.1.2.4 | Modelagem genérica de pilares, vigas, lajes e fundações. | 5d | 2026-06-18 A | 2026-06-24 A | 779 | 100% |  | 2026-06-18 | 2026-06-24 | 5d |  |  |
| 783 | 3.8.4.1.2.5 | Traçado preliminar de elementos especiais (escadas, rampas estruturais, reservatórios). | 5d | 2026-06-18 A | 2026-06-24 A | 779 | 100% |  | 2026-06-18 | 2026-06-24 | 5d |  |  |
| 784 | 3.8.4.1.2.6 | Arquivo IFC, plantas de forma e planta de locação | 5d | 2026-06-18 A | 2026-06-24 A | 779 | 100% |  | 2026-06-18 | 2026-06-24 | 5d |  |  |
| 785 | 3.8.4.1.2.7 | Inserção de fundações com tipologia e dimensões preliminares. | 5d | 2026-06-25 A | 2026-07-01 A | 783 | 100% |  | 2026-06-25 | 2026-07-01 | 5d |  |  |
| 786 | 3.8.4.1.2.8 | Compatibilização inicial com arquitetura e demais disciplinas. | 5d | 2026-06-25 A | 2026-07-01 A | 784 | 100% |  | 2026-06-25 | 2026-07-01 | 5d |  |  |
| 787 | 3.8.4.1.2.9 | Indicação de passagens de infraestrutura (shafts, aberturas em lajes e vigas). | 5d | 2026-06-25 A | 2026-07-01 A | 784 | 100% |  | 2026-06-25 | 2026-07-01 | 5d |  |  |
| 788 | 3.8.4.1.2.10 | Modelagem assertiva de elementos principais com dimensões aproximadas (largura, altura, espessura). | 10d | 2026-06-25 A | 2026-07-08 A | 784 | 100% |  | 2026-06-25 | 2026-07-08 | 10d |  |  |
| 789 | 3.8.4.1.2.11 | Modelagem estimada de armaduras principais (em nível de concepção). | 5d | 2026-06-25 A | 2026-07-01 A | 784 | 100% |  | 2026-06-25 | 2026-07-01 | 5d |  |  |
| 790 | 3.8.4.1.3 | **LOD 300 - Consolidação e documentação de entrega** | 22d | 2026-07-09 A | 2026-08-07 |  | 77% | 5.15d | 2026-07-09 | 2026-07-20 | 8d | 11d | 0d |
| 791 | 3.8.4.1.3.1 | Indicação de níveis e cotas exatas. | 17d | 2026-07-09 A | 2026-07-31 | 788, 789 | 77% | 3.99d | 2026-07-09 | 2026-07-20 | 8d | 16d |  |
| 792 | 3.8.4.1.3.2 | Quadro de cargas atualizado. | 17d | 2026-07-09 A | 2026-07-31 | 788, 789 | 77% | 3.99d | 2026-07-09 | 2026-07-20 | 8d | 16d |  |
| 793 | 3.8.4.1.3.3 | Dimensionamento final de fundações conforme sondagem e cálculo estrutural. | 17d | 2026-07-09 A | 2026-07-31 | 788, 789 | 77% | 3.99d | 2026-07-09 | 2026-07-20 | 8d | 16d |  |
| 794 | 3.8.4.1.3.4 | Definição final dos elementos da cobertura (treliças, vigas, chapas, purlins). | 17d | 2026-07-09 A | 2026-07-31 | 788, 789 | 77% | 3.99d | 2026-07-09 | 2026-07-20 | 8d | 16d |  |
| 795 | 3.8.4.1.3.5 | Compatibilização final com arquitetura e instalações (aberturas, embutidos e passagens). | 17d | 2026-07-09 A | 2026-07-31 | 788, 789 | 77% | 3.99d | 2026-07-09 | 2026-07-20 | 8d | 16d |  |
| 796 | 3.8.4.1.3.6 | Modelagem definitiva de pilares, vigas, lajes, blocos, sapatas e estacas. | 17d | 2026-07-09 A | 2026-07-31 | 788, 789 | 77% | 3.99d | 2026-07-09 | 2026-07-20 | 8d | 3.85d | 0d |
| 797 | 3.8.4.1.3.7 | Planta estrutural com todos os elementos identificados. | 17d | 2026-07-09 A | 2026-07-31 | 788, 789 | 77% | 3.99d | 2026-07-09 | 2026-07-20 | 8d | 16d |  |
| 798 | 3.8.4.1.3.8 | Memorial descritivo contendo: objetivos, justificativa, descrição do sistema, concepção de fundações/cobertura, especificações e quadro de cargas. | 5d | 2026-08-03 A | 2026-08-07 | 796 | 77% | 1.15d | 2026-07-09 | 2026-07-20 | 8d | 11d |  |
| 799 | 3.8.4.1.3.9 | Normas técnicas utilizadas (NBR 6118, 6120, 6122, 8800, etc.). | 5d | 2026-08-03 A | 2026-08-07 | 796 | 77% | 1.15d | 2026-07-09 | 2026-07-20 | 8d | 11d |  |
| 800 | 3.8.4.1.3.10 | Consolidar documentação de entrega e emissão formal da disciplina | 5d | 2026-08-03 A | 2026-08-07 | 796 | 77% | 1.15d | 2026-07-09 | 2026-07-20 | 8d | 11d |  |
| 801 | 3.8.4.1.4 | Aprovação de Conformidade | 3d | 2026-08-05 | 2026-08-07 | 790FF |  |  | 2026-07-16 | 2026-07-20 | 0d | 11d |  |
| 802 | 3.8.4.1.5 | Material para entrega ao contrato | 3d | 2026-08-05 | 2026-08-07 | 790FF |  |  | 2026-07-16 | 2026-07-20 | 0d | 11d |  |

| ID | WBS | Task | Duration | Start | Finish | Predecessors | Complete | Remaining | Baseline start | Baseline finish | Baseline duration | Total slack | Free slack |
| --- | --- | --- | --- | --- | --- | --- | --- | --- | --- | --- | --- | --- | --- |
| 803 | 3.8.4.2 | **Hidrossanitário** | 60d | 2026-06-01 A | 2026-08-24 |  | 15% | 51d | 2026-06-01 | 2026-07-24 | 39d | 0d |  |
| 804 | 3.8.4.2.1 | **LOD 100 — Premissas, diretrizes e interfaces** | 11d | 2026-06-01 A | 2026-06-16 |  | 59% | 4.47d | 2026-06-01 | 2026-06-16 | 11d | 49d |  |
| 805 | 3.8.4.2.1.1 | Memorial preliminar | 10d | 2026-06-01 A | 2026-06-15 | 676SS+14d | 74% | 2.58d | 2026-06-01 | 2026-06-15 | 10d | 50d |  |
| 806 | 3.8.4.2.1.2 | Indicação de áreas técnicas | 6d | 2026-06-09 A | 2026-06-16 | 676SS+14d, 772 | 40% | 3.58d | 2026-06-09 | 2026-06-16 | 6d | 49d |  |
| 807 | 3.8.4.2.1.3 | Planta baixa com traçado conceitual | 6d | 2026-06-09 A | 2026-06-16 | 772 | 40% | 3.58d | 2026-06-09 | 2026-06-16 | 6d | 49d |  |
| 808 | 3.8.4.2.1.4 | Pontos de consumo principais e coletas sanitárias | 6d | 2026-06-09 A | 2026-06-16 | 772 | 40% | 3.58d | 2026-06-09 | 2026-06-16 | 6d | 0d |  |
| 809 | 3.8.4.2.1.5 | Classificação de uso | 10d | 2026-06-02 A | 2026-06-16 | 808FF | 64% | 3.58d | 2026-06-02 | 2026-06-16 | 10d | 49d |  |
| 810 | 3.8.4.2.1.6 | Diretrizes de espaço | 10d | 2026-06-02 A | 2026-06-16 | 808FF | 64% | 3.58d | 2026-06-02 | 2026-06-16 | 10d | 49d |  |
| 811 | 3.8.4.2.1.7 | Estimativa de demanda ou população de uso | 10d | 2026-06-02 A | 2026-06-16 | 808FF | 64% | 3.58d | 2026-06-02 | 2026-06-16 | 10d | 49d |  |
| 812 | 3.8.4.2.1.8 | Levantamento de elementos especiais dentre outras disciplinas de Engenharia e Arquitetura | 10d | 2026-06-02 A | 2026-06-16 | 808FF | 64% | 3.58d | 2026-06-02 | 2026-06-16 | 10d | 0d |  |
| 813 | 3.8.4.2.2 | **LOD 200 — Validação interdisciplinar e solução preliminar** | 42d | 2026-06-17 | 2026-08-13 |  |  |  | 2026-06-17 | 2026-07-14 | 20d | 7d |  |
| 814 | 3.8.4.2.2.1 | Critérios normativos adotados (ABNT, concessionárias, etc.) | 26d | 2026-06-17 | 2026-07-22 | 812 |  |  | 2026-06-17 | 2026-07-14 | 20d | 23d | 0d |
| 815 | 3.8.4.2.2.2 | Informações de demanda na concessionária (DPE ou AVT Aviso de Viabilidade Técnica) | 26d | 2026-06-17 | 2026-07-22 | 814SS |  |  | 2026-06-17 | 2026-07-14 | 20d | 23d |  |
| 816 | 3.8.4.2.2.3 | Recebimento e Análise de Sondagem (permeabilidade ou percolação) | 26d | 2026-06-17 | 2026-07-22 | 814SS |  |  | 2026-06-17 | 2026-07-14 | 20d | 23d |  |
| 817 | 3.8.4.2.2.4 | Recebimento e Análise de Topografia | 26d | 2026-06-17 | 2026-07-22 | 814SS |  |  | 2026-06-17 | 2026-07-14 | 20d | 23d |  |
| 818 | 3.8.4.2.2.5 | Estudo de viabilidade técnica, econômica e ambiental | 26d | 2026-06-17 | 2026-07-22 | 814SS |  |  | 2026-06-17 | 2026-07-14 | 20d | 23d |  |
| 819 | 3.8.4.2.2.6 | Lista preliminar de sistemas envolvidos. | 26d | 2026-07-09 | 2026-08-13 | 812FS+16d |  |  | 2026-06-17 | 2026-07-14 | 20d | 7d |  |
| 820 | 3.8.4.2.2.7 | Planta baixa e cortes estimada contendo: - Traçado preliminar de barrilete, ramais, colunas - Diâmetros estimados - Localização aproximada das bombas e unidades de tratamento e reúso - Localização do ramal predial de água e esgoto - Localização aproximada | 26d | 2026-07-09 | 2026-08-13 | 812FS+16d |  |  | 2026-06-17 | 2026-07-14 | 20d | 0d |  |
| 821 | 3.8.4.2.3 | **LOD 300 - Consolidação e documentação de entrega** | 7d | 2026-08-14 | 2026-08-24 |  |  |  | 2026-07-15 | 2026-07-24 | 8d | 0d |  |
| 822 | 3.8.4.2.3.1 | Planta, corte e detalhe isométrico contendo: - Modelagem detalhada com diâmetros, cotas e inclinações definitivas (barriletes, colunas, ramais) - Quantitativos e especificação técnica dos materiais (tubos, conexões, reservatórios, registros e válvulas com | 7d | 2026-08-14 | 2026-08-24 | 820 |  |  | 2026-07-15 | 2026-07-24 | 8d | 0d |  |
| 823 | 3.8.4.2.3.2 | Memorial descritivo | 3d | 2026-08-20 | 2026-08-24 | 822FF |  |  | 2026-07-22 | 2026-07-24 | 3d | 0d |  |
| 824 | 3.8.4.2.3.3 | Memória de cálculo (pressão, vazão, diâmetros, perda de carga). | 3d | 2026-08-20 | 2026-08-24 | 820, 822FF |  |  | 2026-07-22 | 2026-07-24 | 3d | 0d |  |
| 825 | 3.8.4.2.4 | Aprovação de Conformidade | 3d | 2026-08-20 | 2026-08-24 | 821FF |  |  | 2026-07-22 | 2026-07-24 | 0d | 0d |  |
| 826 | 3.8.4.2.5 | Material para entrega ao contrato | 3d | 2026-08-20 | 2026-08-24 | 821FF |  |  | 2026-07-22 | 2026-07-24 | 0d | 0d |  |

| ID | WBS | Task | Duration | Start | Finish | Predecessors | Complete | Remaining | Baseline start | Baseline finish | Baseline duration | Total slack | Free slack | Constraint | Text3 |
| --- | --- | --- | --- | --- | --- | --- | --- | --- | --- | --- | --- | --- | --- | --- | --- |
| 827 | 3.8.4.3 | **AVAC** | 60d | 2026-06-01 A | 2026-08-24 |  | 97% | 1.78d | 2026-06-01 | 2026-07-24 | 39d | 0d |  |  |  |
| 828 | 3.8.4.3.1 | **LOD 100 — Premissas, diretrizes e interfaces** | 20d | 2026-06-01 A | 2026-06-29 A |  | 100% |  | 2026-06-01 | 2026-06-29 | 20d |  |  |  |  |
| 829 | 3.8.4.3.1.1 | Estimativa de carga térmica por ambiente. | 10d | 2026-06-01 A | 2026-06-15 A | 676SS+14d | 100% |  | 2026-06-01 | 2026-06-15 | 10d |  |  |  |  |
| 830 | 3.8.4.3.1.2 | Localização preliminar de unidades de tratamento de ar, condensadoras e exaustores. | 10d | 2026-06-01 A | 2026-06-15 A | 676SS+14d | 100% |  | 2026-06-01 | 2026-06-15 | 10d |  |  |  |  |
| 831 | 3.8.4.3.1.3 | Pontos locação para seus elementos no projeto arquitetônico. | 10d | 2026-06-01 A | 2026-06-15 A | 676SS+14d | 100% |  | 2026-06-01 | 2026-06-15 | 10d |  |  |  |  |
| 832 | 3.8.4.3.1.4 | Estudo de viabilidade e rotas principais de distribuição de ar. | 10d | 2026-06-01 A | 2026-06-15 A | 676SS+14d | 100% |  | 2026-06-01 | 2026-06-15 | 10d |  |  |  |  |
| 833 | 3.8.4.3.1.5 | Reserva de espaços técnicos e shafts. | 10d | 2026-06-01 A | 2026-06-15 A | 676SS+14d | 100% |  | 2026-06-01 | 2026-06-15 | 10d |  |  |  |  |
| 834 | 3.8.4.3.1.6 | Levantamento de cargas especiais provenientes de outras disciplinas. | 10d | 2026-06-16 A | 2026-06-29 A | 676SS+14d, 856, 868 | 100% |  | 2026-06-16 | 2026-06-29 | 10d |  |  |  |  |
| 835 | 3.8.4.3.2 | **LOD 200 — Validação interdisciplinar e solução preliminar** | 34d | 2026-07-08 A | 2026-08-24 A |  | 100% |  | 2026-06-16 | 2026-07-24 | 29d |  |  |  |  |
| 836 | 3.8.4.3.2.1 | Lista preliminar de sistemas HVAC envolvidos (expansão direta, VRF, chillers, ventilação, exaustão). | 34d | 2026-07-08 A | 2026-08-24 A | 833FS+16d | 100% |  | 2026-06-16 | 2026-07-24 | 29d |  |  |  |  |
| 837 | 3.8.4.3.2.2 | Planta baixa estimada contendo: pontos de insuflamento e retorno. | 34d | 2026-07-08 A | 2026-08-24 A | 833FS+16d | 100% |  | 2026-06-16 | 2026-07-24 | 29d |  |  |  |  |
| 838 | 3.8.4.3.2.3 | Rotas iniciais de dutos, tubulações e drenos. | 34d | 2026-07-08 A | 2026-08-24 A | 833FS+16d | 100% |  | 2026-06-16 | 2026-07-24 | 29d |  |  |  |  |
| 839 | 3.8.4.3.2.4 | Planta baixa estimada contendo: unidades internas e externas com posição preliminar. | 34d | 2026-07-08 A | 2026-08-24 A | 833FS+16d | 100% |  | 2026-06-16 | 2026-07-24 | 29d |  |  |  |  |
| 840 | 3.8.4.3.3 | Aprovação de Conformidade | 3d | 2026-08-20 | 2026-08-24 | 835FF |  |  | 2026-07-22 | 2026-07-24 | 0d | 0d |  |  |  |
| 841 | 3.8.4.3.4 | Material para entrega ao contrato | 3d | 2026-08-20 | 2026-08-24 | 835FF |  |  | 2026-07-22 | 2026-07-24 | 0d | 0d |  |  |  |
| 842 | 3.8.4.4 | **PCI (Incêndio)** | 9d | 2026-07-21 A | 2026-07-31 |  | 95% | 0.45d | 2026-06-01 | 2026-06-29 | 20d | 16d |  |  |  |
| 843 | 3.8.4.4.1 | **LOD 100 — Premissas, diretrizes e interfaces** | 4d | 2026-07-21 A | 2026-07-24 A |  | 100% |  | 2026-06-01 | 2026-06-15 | 10d |  |  |  | ܁# |
| 844 | 3.8.4.4.1.1 | Estudo e avaliação da arquitetura atendendo as normas competentes de PCI | 4d | 2026-07-21 A | 2026-07-24 A | 676SS+14d | 100% |  | 2026-06-01 | 2026-06-15 | 10d |  |  | start no earlier than 2026-07-21 |  |
| 845 | 3.8.4.4.1.2 | Avaliação do espaço para CMI e Central de Gás. | 4d | 2026-07-21 A | 2026-07-24 A | 676SS+14d | 100% |  | 2026-06-01 | 2026-06-15 | 10d |  |  | start no earlier than 2026-07-21 |  |
| 846 | 3.8.4.4.1.3 | Pontos locação para seus elementos no projeto arquitetônico | 4d | 2026-07-21 A | 2026-07-24 A | 676SS+14d | 100% |  | 2026-06-01 | 2026-06-15 | 10d |  |  | start no earlier than 2026-07-21 |  |
| 847 | 3.8.4.4.2 | **LOD 200 — Validação interdisciplinar e solução preliminar** | 5d | 2026-07-27 A | 2026-07-31 |  | 93% | 0.33d | 2026-06-16 | 2026-06-29 | 10d | 16d | 0d |  | ܁# |
| 848 | 3.8.4.4.2.1 | Definição da classificação da edificação e o risco de incêndio | 5d | 2026-07-27 A | 2026-07-31 | 846 | 93% | 0.33d | 2026-06-16 | 2026-06-29 | 10d | 16d |  |  |  |
| 849 | 3.8.4.4.2.2 | Cálculos pré-dimensionados dos extintores, hidrantes e bomba. | 5d | 2026-07-27 A | 2026-07-31 | 846 | 93% | 0.33d | 2026-06-16 | 2026-06-29 | 10d | 16d |  |  |  |
| 850 | 3.8.4.4.2.3 | Avaliação das rotas de fuga, ventilação de CMI e outros elementos de importância para as normas de PCI | 5d | 2026-07-27 A | 2026-07-31 | 846 | 93% | 0.33d | 2026-06-16 | 2026-06-29 | 10d | 16d |  |  |  |
| 851 | 3.8.4.4.3 | Aprovação de Conformidade | 3d | 2026-07-29 A | 2026-07-31 | 847FF | 89% | 0.33d | 2026-06-25 | 2026-06-29 | 0d | 16d |  |  |  |
| 852 | 3.8.4.4.4 | Material para entrega ao contrato | 3d | 2026-07-29 A | 2026-07-31 | 847FF | 89% | 0.33d | 2026-06-25 | 2026-06-29 | 0d | 16d |  |  |  |

| ID | WBS | Task | Duration | Start | Finish | Predecessors | Complete | Baseline start | Baseline finish | Baseline duration |
| --- | --- | --- | --- | --- | --- | --- | --- | --- | --- | --- |
| 853 | 3.8.4.5 | **Elétrica Baixa Tensão** | 49d | 2026-06-01 A | 2026-08-07 A |  | 100% | 2026-06-01 | 2026-07-24 | 39d |
| 854 | 3.8.4.5.1 | **LOD 100 — Concepção** | 16d | 2026-06-01 A | 2026-06-23 A |  | 100% | 2026-06-01 | 2026-06-23 | 16d |
| 855 | 3.8.4.5.1.1 | Avaliação e Diretrizes Técnicas para Arquitetura | 6d | 2026-06-01 A | 2026-06-09 A | 676SS+14d | 100% | 2026-06-01 | 2026-06-09 | 6d |
| 856 | 3.8.4.5.1.2 | Estimativa de Cargas e Demanda | 10d | 2026-06-01 A | 2026-06-15 A | 676SS+14d | 100% | 2026-06-01 | 2026-06-15 | 10d |
| 857 | 3.8.4.5.1.3 | Levantamento de Equipamentos de Outras Disciplinas | 6d | 2026-06-16 A | 2026-06-23 A | 831, 846 | 100% | 2026-06-16 | 2026-06-23 | 6d |
| 858 | 3.8.4.5.2 | **LOD 200 — Anteprojeto** | 24d | 2026-07-01 A | 2026-08-03 A |  | 100% | 2026-06-24 | 2026-07-20 | 19d |
| 859 | 3.8.4.5.2.1 | TUGs Estimados | 24d | 2026-07-01 A | 2026-08-03 A | 856, 857FS+5d | 100% | 2026-06-24 | 2026-07-20 | 19d |
| 860 | 3.8.4.5.2.2 | Pontos de Luz Estimados | 24d | 2026-07-01 A | 2026-08-03 A | 856, 857FS+5d | 100% | 2026-06-24 | 2026-07-20 | 19d |
| 861 | 3.8.4.5.2.3 | TUEs e Quadros Estimados | 24d | 2026-07-01 A | 2026-08-03 A | 856, 857FS+5d | 100% | 2026-06-24 | 2026-07-20 | 19d |
| 862 | 3.8.4.5.3 | LOD 300 - Consolidação e documentação de entrega | 4d | 2026-08-04 A | 2026-08-07 A | 858 | 100% | 2026-07-21 | 2026-07-24 | 4d |
| 863 | 3.8.4.5.4 | Aprovação de Conformidade | 3d | 2026-08-05 A | 2026-08-07 A | 862FF | 100% | 2026-07-22 | 2026-07-24 | 0d |
| 864 | 3.8.4.5.5 | Material para entrega ao contrato | 3d | 2026-08-05 A | 2026-08-07 A | 862FF | 100% | 2026-07-22 | 2026-07-24 | 0d |
| 865 | 3.8.4.6 | **Telecom** | 49d | 2026-06-01 A | 2026-08-07 A |  | 100% | 2026-06-01 | 2026-07-17 | 34d |
| 866 | 3.8.4.6.1 | **LOD 100 — Concepção** | 10d | 2026-06-01 A | 2026-06-15 A |  | 100% | 2026-06-01 | 2026-06-15 | 10d |
| 867 | 3.8.4.6.1.1 | Avaliação e Diretrizes Técnicas para Arquitetura | 10d | 2026-06-01 A | 2026-06-15 A | 676SS+14d | 100% | 2026-06-01 | 2026-06-15 | 10d |
| 868 | 3.8.4.6.1.2 | Estimativa de Demanda de Telecomunicações | 10d | 2026-06-01 A | 2026-06-15 A | 676SS+14d | 100% | 2026-06-01 | 2026-06-15 | 10d |
| 869 | 3.8.4.6.1.3 | Levantamento de Equipamentos e Interfaces com Outras Disciplinas | 10d | 2026-06-01 A | 2026-06-15 A | 676SS+14d | 100% | 2026-06-01 | 2026-06-15 | 10d |
| 870 | 3.8.4.6.2 | **LOD 200 — Anteprojeto** | 35d | 2026-06-16 A | 2026-08-03 A |  | 100% | 2026-06-16 | 2026-07-13 | 20d |
| 871 | 3.8.4.6.2.1 | Pontos de Telecomunicações Estimados (Rede, Voz, CFTV e Demais Sistemas) | 15d | 2026-06-16 A | 2026-07-06 A | 869 | 100% | 2026-06-16 | 2026-06-29 | 10d |
| 872 | 3.8.4.6.2.2 | Racks Estimados | 15d | 2026-06-16 A | 2026-07-06 A | 869 | 100% | 2026-06-16 | 2026-06-29 | 10d |
| 873 | 3.8.4.6.2.3 | Infraestrutura de Telecomunicações Preliminar | 15d | 2026-07-14 A | 2026-08-03 A | 871, 872FS+5d | 100% | 2026-06-30 | 2026-07-13 | 10d |
| 874 | 3.8.4.6.3 | LOD 300 - Consolidação e documentação de entrega | 4d | 2026-08-04 A | 2026-08-07 A | 870 | 100% | 2026-07-14 | 2026-07-17 | 4d |
| 875 | 3.8.4.6.4 | Aprovação de Conformidade | 3d | 2026-08-05 A | 2026-08-07 A | 874FF | 100% | 2026-07-15 | 2026-07-17 | 0d |
| 876 | 3.8.4.6.5 | Material para entrega ao contrato | 3d | 2026-08-05 A | 2026-08-07 A | 874FF | 100% | 2026-07-15 | 2026-07-17 | 0d |

| ID | WBS | Task | Duration | Start | Finish | Predecessors | Complete | Remaining | Baseline start | Baseline finish | Baseline duration | Total slack | Free slack |
| --- | --- | --- | --- | --- | --- | --- | --- | --- | --- | --- | --- | --- | --- |
| 877 | 3.8.4.7 | **SPDA** | 49d | 2026-06-01 | 2026-08-07 |  |  |  | 2026-06-01 | 2026-07-24 | 39d | 11d |  |
| 878 | 3.8.4.7.1 | **LOD 100 — Concepção** | 5d | 2026-06-01 | 2026-06-08 |  |  |  | 2026-06-01 | 2026-06-08 | 5d | 11d |  |
| 879 | 3.8.4.7.1.1 | Avaliação e Diretrizes Técnicas para Arquitetura | 5d | 2026-06-01 | 2026-06-08 | 676SS+14d |  |  | 2026-06-01 | 2026-06-08 | 5d | 55d |  |
| 880 | 3.8.4.7.1.2 | Coleta de Informações da Edificação e Análise de Risco (ABNT NBR 5419-2) | 5d | 2026-06-01 | 2026-06-08 | 676SS+14d |  |  | 2026-06-01 | 2026-06-08 | 5d | 55d |  |
| 881 | 3.8.4.7.1.3 | Estudo Preliminar de Necessidade e Nível de Proteção do SPDA | 5d | 2026-06-01 | 2026-06-08 | 676SS+14d |  |  | 2026-06-01 | 2026-06-08 | 5d | 11d | 0d |
| 882 | 3.8.4.7.2 | **LOD 200 — Anteprojeto** | 40d | 2026-06-09 | 2026-08-03 |  |  |  | 2026-06-09 | 2026-07-20 | 30d | 11d |  |
| 883 | 3.8.4.7.2.1 | Definição da Estratégia de Proteção e Soluções Técnicas | 15d | 2026-06-09 | 2026-06-29 | 881 |  |  | 2026-06-09 | 2026-06-22 | 10d | 11d | 0d |
| 884 | 3.8.4.7.2.2 | Zoneamento de Captação, Descida e Traçados Preliminares | 10d | 2026-06-30 | 2026-07-13 | 883 |  |  | 2026-06-23 | 2026-07-06 | 10d | 11d | 0d |
| 885 | 3.8.4.7.2.3 | Estudo de Interferências, Compatibilização e Métodos Construtivos | 10d | 2026-07-21 | 2026-08-03 | 884FS+5d |  |  | 2026-07-07 | 2026-07-20 | 10d | 11d | 0d |
| 886 | 3.8.4.7.3 | LOD 300 - Consolidação e documentação de entrega | 4d | 2026-08-04 | 2026-08-07 | 885 |  |  | 2026-07-21 | 2026-07-24 | 4d | 11d | 0d |
| 887 | 3.8.4.7.4 | Aprovação de Conformidade | 3d | 2026-08-05 | 2026-08-07 | 886FF |  |  | 2026-07-22 | 2026-07-24 | 0d | 11d |  |
| 888 | 3.8.4.7.5 | Material para entrega ao contrato | 3d | 2026-08-05 | 2026-08-07 | 886FF |  |  | 2026-07-22 | 2026-07-24 | 0d | 11d |  |
| 889 | 3.8.4.8 | **Energia Renovável** | 49d | 2026-06-01 A | 2026-08-07 |  | 10% | 44.1d | 2026-06-01 | 2026-07-17 | 34d | 11d |  |
| 890 | 3.8.4.8.1 | **LOD 100 — Concepção** | 10d | 2026-06-01 A | 2026-06-15 |  | 43% | 5.67d | 2026-06-01 | 2026-06-15 | 10d | 50d |  |
| 891 | 3.8.4.8.1.1 | Viabilidade e Premissas de Geração | 10d | 2026-06-01 A | 2026-06-15 | 676SS+14d | 43% | 5.67d | 2026-06-01 | 2026-06-15 | 10d | 50d |  |
| 892 | 3.8.4.8.1.2 | Levantamento Preliminar de Áreas e Sombreamento | 10d | 2026-06-01 A | 2026-06-15 | 676SS+14d | 43% | 5.67d | 2026-06-01 | 2026-06-15 | 10d | 11d | 0d |
| 893 | 3.8.4.8.1.3 | Avaliação e Diretrizes Técnicas para Arquitetônico | 10d | 2026-06-01 A | 2026-06-15 | 676SS+14d | 43% | 5.67d | 2026-06-01 | 2026-06-15 | 10d | 50d |  |
| 894 | 3.8.4.8.2 | **LOD 200 — Anteprojeto** | 35d | 2026-06-16 | 2026-08-03 |  |  |  | 2026-06-16 | 2026-07-13 | 20d | 11d | 0d |
| 895 | 3.8.4.8.2.1 | Layout Preliminar de Módulos, Inversores e String Boxes | 30d | 2026-06-16 | 2026-07-27 | 892 |  |  | 2026-06-16 | 2026-07-13 | 20d | 16d |  |
| 896 | 3.8.4.8.2.2 | Infraestrutura e Rotas Técnicas Preliminares (DC/AC e Aterramento) | 30d | 2026-06-16 | 2026-07-27 | 892 |  |  | 2026-06-16 | 2026-07-13 | 20d | 16d |  |
| 897 | 3.8.4.8.2.3 | Critérios Preliminares de Proteção e Estimativa de Quantitativos | 30d | 2026-06-23 | 2026-08-03 | 892FS+5d |  |  | 2026-06-16 | 2026-07-13 | 20d | 11d |  |
| 898 | 3.8.4.8.3 | LOD 300 - Consolidação e documentação de entrega | 4d | 2026-08-04 | 2026-08-07 | 894 |  |  | 2026-07-14 | 2026-07-17 | 4d | 11d | 0d |
| 899 | 3.8.4.8.4 | Aprovação de Conformidade | 3d | 2026-08-05 | 2026-08-07 | 898FF |  |  | 2026-07-15 | 2026-07-17 | 0d | 11d |  |
| 900 | 3.8.4.8.5 | Material para entrega ao contrato | 3d | 2026-08-05 | 2026-08-07 | 898FF |  |  | 2026-07-15 | 2026-07-17 | 0d | 11d |  |

| ID | WBS | Task | Duration | Start | Finish | Predecessors | Complete | Remaining | Baseline start | Baseline finish | Baseline duration | Total slack | Free slack |
| --- | --- | --- | --- | --- | --- | --- | --- | --- | --- | --- | --- | --- | --- |
| 901 | 3.9 | **004 - Arena Multiuso** | 74d | 2026-05-12 A | 2026-08-24 |  | 61% | 28.67d | 2026-05-12 | 2026-07-27 | 54d | 0d |  |
| 902 | 3.9.1 | **Arquitetura** | 53d | 2026-05-12 A | 2026-07-24 |  | 90% | 5.51d | 2026-05-12 | 2026-07-27 | 54d | 21d |  |
| 903 | 3.9.1.1 | **LOD 200 - ESTUDO PRELIMINAR** | 38d | 2026-05-12 A | 2026-07-03 |  | 99% | 0.38d | 2026-05-12 | 2026-07-03 | 38d | 36d |  |
| 904 | 3.9.1.1.1 | Modelagem das paredes | 38d | 2026-05-12 A | 2026-07-03 | 69FS+8d | 99% | 0.38d | 2026-05-12 | 2026-07-03 | 38d | 36d |  |
| 905 | 3.9.1.1.2 | Modelagem dos pisos | 38d | 2026-05-12 A | 2026-07-03 | 69FS+8d | 99% | 0.38d | 2026-05-12 | 2026-07-03 | 38d | 36d |  |
| 906 | 3.9.1.1.3 | Inserção de portas | 38d | 2026-05-12 A | 2026-07-03 | 69FS+8d | 99% | 0.38d | 2026-05-12 | 2026-07-03 | 38d | 36d |  |
| 907 | 3.9.1.1.4 | Inserção de janelas | 38d | 2026-05-12 A | 2026-07-03 | 69FS+8d | 99% | 0.38d | 2026-05-12 | 2026-07-03 | 38d | 36d |  |
| 908 | 3.9.1.1.5 | Inserção de escada(s) | 38d | 2026-05-12 A | 2026-07-03 | 69FS+8d | 99% | 0.38d | 2026-05-12 | 2026-07-03 | 38d | 36d |  |
| 909 | 3.9.1.1.6 | Inserção de elevador(es) | 38d | 2026-05-12 A | 2026-07-03 | 69FS+8d | 99% | 0.38d | 2026-05-12 | 2026-07-03 | 38d | 36d |  |
| 910 | 3.9.1.1.7 | Inserção de layout | 38d | 2026-05-12 A | 2026-07-03 | 69FS+8d | 99% | 0.38d | 2026-05-12 | 2026-07-03 | 38d | 36d |  |
| 911 | 3.9.1.1.8 | Identificação dos ambientes | 38d | 2026-05-12 A | 2026-07-03 | 69FS+8d | 99% | 0.38d | 2026-05-12 | 2026-07-03 | 38d | 36d |  |
| 912 | 3.9.1.1.9 | Espaços de circulação | 38d | 2026-05-12 A | 2026-07-03 | 69FS+8d | 99% | 0.38d | 2026-05-12 | 2026-07-03 | 38d | 36d |  |
| 913 | 3.9.1.1.10 | Áreas de serviços, funcionais e técnicas | 38d | 2026-05-12 A | 2026-07-03 | 69FS+8d | 99% | 0.38d | 2026-05-12 | 2026-07-03 | 38d | 36d |  |
| 914 | 3.9.1.1.11 | Projeção de níveis superiores e da cobertura | 38d | 2026-05-12 A | 2026-07-03 | 69FS+8d | 99% | 0.38d | 2026-05-12 | 2026-07-03 | 38d | 36d |  |
| 915 | 3.9.1.1.12 | Cotas de nível principais | 38d | 2026-05-12 A | 2026-07-03 | 69FS+8d | 99% | 0.38d | 2026-05-12 | 2026-07-03 | 38d | 36d | 0d |
| 916 | 3.9.1.1.13 | Relatório/Memorial de Projeto Preliminar | 38d | 2026-05-12 A | 2026-07-03 | 69FS+8d | 99% | 0.38d | 2026-05-12 | 2026-07-03 | 38d | 36d |  |
| 917 | 3.9.1.2 | **LOD 300 - ANTEPROJETO** | 15d | 2026-07-06 A | 2026-07-24 |  | 60% | 6d | 2026-07-06 | 2026-07-27 | 16d | 21d | 0d |
| 918 | 3.9.1.2.1 | **Situação** | 2d | 2026-07-06 A | 2026-07-07 A |  | 100% |  | 2026-07-06 | 2026-07-07 | 2d |  |  |
| 919 | 3.9.1.2.1.1 | Indicar simbologias de representação gráfica, conforme NBR 6492:2021; | 2d | 2026-07-06 A | 2026-07-07 A | 916 | 100% |  | 2026-07-06 | 2026-07-07 | 2d |  |  |
| 920 | 3.9.1.2.1.2 | Indicação Norte | 2d | 2026-07-06 A | 2026-07-07 A | 916 | 100% |  | 2026-07-06 | 2026-07-07 | 2d |  |  |
| 921 | 3.9.1.2.1.3 | Analisar, adicionar e fechar - Curvas de nível existentes e projetadas (conforme projetos de topografia e sondagem recebidos); | 2d | 2026-07-06 A | 2026-07-07 A | 916 | 100% |  | 2026-07-06 | 2026-07-07 | 2d |  |  |
| 922 | 3.9.1.2.1.4 | Indicação de Escala; | 2d | 2026-07-06 A | 2026-07-07 A | 916 | 100% |  | 2026-07-06 | 2026-07-07 | 2d |  |  |
| 923 | 3.9.1.2.1.5 | Vias de acesso ao conjunto, arruamento, logradouros adjacentes e calçadas com os respectivos equipamentos urbanos; | 2d | 2026-07-06 A | 2026-07-07 A | 916 | 100% |  | 2026-07-06 | 2026-07-07 | 2d |  |  |
| 924 | 3.9.1.2.1.6 | Platôs e taludes principais; | 2d | 2026-07-06 A | 2026-07-07 A | 916 | 100% |  | 2026-07-06 | 2026-07-07 | 2d |  |  |
| 925 | 3.9.1.2.1.7 | Perímetro do terreno, recuos e afastamentos; | 2d | 2026-07-06 A | 2026-07-07 A | 916 | 100% |  | 2026-07-06 | 2026-07-07 | 2d |  |  |
| 926 | 3.9.1.2.1.8 | Indicação das áreas a serem edificadas com o contorno da cobertura das edificações, estacionamentos e áreas permeáveis/impermeáveis; | 2d | 2026-07-06 A | 2026-07-07 A | 916 | 100% |  | 2026-07-06 | 2026-07-07 | 2d |  |  |
| 927 | 3.9.1.2.1.9 | Denominação das edificações, blocos ou espaços; | 2d | 2026-07-06 A | 2026-07-07 A | 916 | 100% |  | 2026-07-06 | 2026-07-07 | 2d |  |  |
| 928 | 3.9.1.2.1.10 | Cotas gerais | 2d | 2026-07-06 A | 2026-07-07 A | 916 | 100% |  | 2026-07-06 | 2026-07-07 | 2d |  |  |
| 929 | 3.9.1.2.1.11 | Cotas de nível principal. | 2d | 2026-07-06 A | 2026-07-07 A | 916 | 100% |  | 2026-07-06 | 2026-07-07 | 2d |  |  |
| 930 | 3.9.1.2.1.12 | Quadros de áreas | 2d | 2026-07-06 A | 2026-07-07 A | 916 | 100% |  | 2026-07-06 | 2026-07-07 | 2d |  |  |
| 931 | 3.9.1.2.1.13 | Relatório | 2d | 2026-07-06 A | 2026-07-07 A | 916 | 100% |  | 2026-07-06 | 2026-07-07 | 2d |  |  |
| 932 | 3.9.1.2.2 | Planta com as cotas de nível projetadas e existentes | 2d | 2026-07-08 A | 2026-07-09 A | 931 | 100% |  | 2026-07-08 | 2026-07-09 | 2d |  |  |

| ID | WBS | Task | Duration | Start | Finish | Predecessors | Complete | Baseline start | Baseline finish | Baseline duration |
| --- | --- | --- | --- | --- | --- | --- | --- | --- | --- | --- |
| 933 | 3.9.1.2.3 | **Plantas baixas (se tiver mais de um pavimento, duplicar bloco)** | 2d | 2026-07-10 A | 2026-07-13 A |  | 100% | 2026-07-10 | 2026-07-13 | 2d |
| 934 | 3.9.1.2.3.1 | Indicar simbologias de representação gráfica, conforme NBR 6492:2021; | 2d | 2026-07-10 A | 2026-07-13 A | 932 | 100% | 2026-07-10 | 2026-07-13 | 2d |
| 935 | 3.9.1.2.3.2 | Compatibilização (verificar se está tudo conforme as normas e alinhar com o restante das disciplinas de engenharia) | 2d | 2026-07-10 A | 2026-07-13 A | 932 | 100% | 2026-07-10 | 2026-07-13 | 2d |
| 936 | 3.9.1.2.3.3 | Compatibilização (deixar tudo conforme padrão Quanta) | 2d | 2026-07-10 A | 2026-07-13 A | 932 | 100% | 2026-07-10 | 2026-07-13 | 2d |
| 937 | 3.9.1.2.3.4 | Indicação de Norte; | 2d | 2026-07-10 A | 2026-07-13 A | 932 | 100% | 2026-07-10 | 2026-07-13 | 2d |
| 938 | 3.9.1.2.3.5 | Indicação de Escala; | 2d | 2026-07-10 A | 2026-07-13 A | 932 | 100% | 2026-07-10 | 2026-07-13 | 2d |
| 939 | 3.9.1.2.3.6 | Indicação de Acessos; | 2d | 2026-07-10 A | 2026-07-13 A | 932 | 100% | 2026-07-10 | 2026-07-13 | 2d |
| 940 | 3.9.1.2.3.7 | Elementos de vedação internos e externos; | 2d | 2026-07-10 A | 2026-07-13 A | 932 | 100% | 2026-07-10 | 2026-07-13 | 2d |
| 941 | 3.9.1.2.3.8 | Esquadrias; | 2d | 2026-07-10 A | 2026-07-13 A | 932 | 100% | 2026-07-10 | 2026-07-13 | 2d |
| 942 | 3.9.1.2.3.9 | Elementos estruturais principais; | 2d | 2026-07-10 A | 2026-07-13 A | 932 | 100% | 2026-07-10 | 2026-07-13 | 2d |
| 943 | 3.9.1.2.3.10 | Identificação dos ambientes e espaços (internos e externos); | 2d | 2026-07-10 A | 2026-07-13 A | 932 | 100% | 2026-07-10 | 2026-07-13 | 2d |
| 944 | 3.9.1.2.3.11 | Espaços de circulação internos e externos; | 2d | 2026-07-10 A | 2026-07-13 A | 932 | 100% | 2026-07-10 | 2026-07-13 | 2d |
| 945 | 3.9.1.2.3.12 | Áreas de serviço, funcionais e técnicas (internos e externos); | 2d | 2026-07-10 A | 2026-07-13 A | 932 | 100% | 2026-07-10 | 2026-07-13 | 2d |
| 946 | 3.9.1.2.3.13 | Projeções de níveis superiores; | 2d | 2026-07-10 A | 2026-07-13 A | 932 | 100% | 2026-07-10 | 2026-07-13 | 2d |
| 947 | 3.9.1.2.3.14 | Cotas gerais | 2d | 2026-07-10 A | 2026-07-13 A | 932 | 100% | 2026-07-10 | 2026-07-13 | 2d |
| 948 | 3.9.1.2.3.15 | Cotas de nível principal. | 2d | 2026-07-10 A | 2026-07-13 A | 932 | 100% | 2026-07-10 | 2026-07-13 | 2d |
| 949 | 3.9.1.2.3.16 | Tabelas de paredes, pisos, esquadrias e plantas | 2d | 2026-07-10 A | 2026-07-13 A | 932 | 100% | 2026-07-10 | 2026-07-13 | 2d |
| 950 | 3.9.1.2.3.17 | Quadro de áreas | 2d | 2026-07-10 A | 2026-07-13 A | 932 | 100% | 2026-07-10 | 2026-07-13 | 2d |
| 951 | 3.9.1.2.3.18 | Relatório | 2d | 2026-07-10 A | 2026-07-13 A | 932 | 100% | 2026-07-10 | 2026-07-13 | 2d |
| 952 | 3.9.1.2.4 | **Planta das coberturas** | 2d | 2026-07-14 A | 2026-07-15 A |  | 100% | 2026-07-14 | 2026-07-15 | 2d |
| 953 | 3.9.1.2.4.1 | Indicação do Norte | 2d | 2026-07-14 A | 2026-07-15 A | 950 | 100% | 2026-07-14 | 2026-07-15 | 2d |
| 954 | 3.9.1.2.4.2 | Indicação de escala | 2d | 2026-07-14 A | 2026-07-15 A | 950 | 100% | 2026-07-14 | 2026-07-15 | 2d |
| 955 | 3.9.1.2.4.3 | Curvas de nível | 2d | 2026-07-14 A | 2026-07-15 A | 950 | 100% | 2026-07-14 | 2026-07-15 | 2d |
| 956 | 3.9.1.2.4.4 | Indicação de Acessos; | 2d | 2026-07-14 A | 2026-07-15 A | 950 | 100% | 2026-07-14 | 2026-07-15 | 2d |
| 957 | 3.9.1.2.4.5 | Estacionamento e áreas cobertas | 2d | 2026-07-14 A | 2026-07-15 A | 950 | 100% | 2026-07-14 | 2026-07-15 | 2d |
| 958 | 3.9.1.2.4.6 | Cobertura das edificações | 2d | 2026-07-14 A | 2026-07-15 A | 950 | 100% | 2026-07-14 | 2026-07-15 | 2d |
| 959 | 3.9.1.2.4.7 | Sentido de escoamento das águas pluviais e inclinação | 2d | 2026-07-14 A | 2026-07-15 A | 950 | 100% | 2026-07-14 | 2026-07-15 | 2d |
| 960 | 3.9.1.2.4.8 | Cotas gerais | 2d | 2026-07-14 A | 2026-07-15 A | 950 | 100% | 2026-07-14 | 2026-07-15 | 2d |
| 961 | 3.9.1.2.4.9 | Cotas de nível principal | 2d | 2026-07-14 A | 2026-07-15 A | 950 | 100% | 2026-07-14 | 2026-07-15 | 2d |
| 962 | 3.9.1.2.4.10 | Relatório | 2d | 2026-07-14 A | 2026-07-15 A | 950 | 100% | 2026-07-14 | 2026-07-15 | 2d |

| ID | WBS | Task | Duration | Start | Finish | Predecessors | Complete | Remaining | Baseline start | Baseline finish | Baseline duration | Total slack | Free slack |
| --- | --- | --- | --- | --- | --- | --- | --- | --- | --- | --- | --- | --- | --- |
| 963 | 3.9.1.2.5 | **Cortes longitudinais** | 2d | 2026-07-16 A | 2026-07-17 |  | 39% | 1.22d | 2026-07-16 | 2026-07-17 | 2d | 26d |  |
| 964 | 3.9.1.2.5.1 | Indicar simbologias de representação gráfica, conforme NBR 6492:2021; | 2d | 2026-07-16 A | 2026-07-17 | 961 | 39% | 1.22d | 2026-07-16 | 2026-07-17 | 2d | 26d |  |
| 965 | 3.9.1.2.5.2 | Indicação de Escala; | 2d | 2026-07-16 A | 2026-07-17 | 961 | 39% | 1.22d | 2026-07-16 | 2026-07-17 | 2d | 26d |  |
| 966 | 3.9.1.2.5.3 | Elementos estruturais principais; | 2d | 2026-07-16 A | 2026-07-17 | 961 | 39% | 1.22d | 2026-07-16 | 2026-07-17 | 2d | 26d |  |
| 967 | 3.9.1.2.5.4 | Elementos de vedação internos e externos; | 2d | 2026-07-16 A | 2026-07-17 | 961 | 39% | 1.22d | 2026-07-16 | 2026-07-17 | 2d | 26d |  |
| 968 | 3.9.1.2.5.5 | Esquadrias; | 2d | 2026-07-16 A | 2026-07-17 | 961 | 39% | 1.22d | 2026-07-16 | 2026-07-17 | 2d | 26d |  |
| 969 | 3.9.1.2.5.6 | Identificação dos ambientes; | 2d | 2026-07-16 A | 2026-07-17 | 961 | 39% | 1.22d | 2026-07-16 | 2026-07-17 | 2d | 26d |  |
| 970 | 3.9.1.2.5.7 | Cobertura com indicação da respectiva inclinação; | 2d | 2026-07-16 A | 2026-07-17 | 961 | 39% | 1.22d | 2026-07-16 | 2026-07-17 | 2d | 26d |  |
| 971 | 3.9.1.2.5.8 | Cotas gerais; | 2d | 2026-07-16 A | 2026-07-17 | 961 | 39% | 1.22d | 2026-07-16 | 2026-07-17 | 2d | 26d |  |
| 972 | 3.9.1.2.5.9 | Cotas de nível principal; | 2d | 2026-07-16 A | 2026-07-17 | 961 | 39% | 1.22d | 2026-07-16 | 2026-07-17 | 2d | 26d |  |
| 973 | 3.9.1.2.5.10 | Eixos do projeto; | 2d | 2026-07-16 A | 2026-07-17 | 961 | 39% | 1.22d | 2026-07-16 | 2026-07-17 | 2d | 26d |  |
| 974 | 3.9.1.2.5.11 | Relevo construído; | 2d | 2026-07-16 A | 2026-07-17 | 961 | 39% | 1.22d | 2026-07-16 | 2026-07-17 | 2d | 26d |  |
| 975 | 3.9.1.2.5.12 | Projeção da topografia natural. | 2d | 2026-07-16 A | 2026-07-17 | 961 | 39% | 1.22d | 2026-07-16 | 2026-07-17 | 2d | 21d | 0d |
| 976 | 3.9.1.2.5.13 | Relatório | 2d | 2026-07-16 A | 2026-07-17 | 961 | 39% | 1.22d | 2026-07-16 | 2026-07-17 | 2d | 26d |  |
| 977 | 3.9.1.2.6 | **Cortes transversais** | 2d | 2026-07-20 | 2026-07-21 |  |  |  | 2026-07-20 | 2026-07-21 | 2d | 21d |  |
| 978 | 3.9.1.2.6.1 | Indicar simbologias de representação gráfica, conforme NBR 6492:2021; | 2d | 2026-07-20 | 2026-07-21 | 975 |  |  | 2026-07-20 | 2026-07-21 | 2d | 24d |  |
| 979 | 3.9.1.2.6.2 | Indicação de Escala; | 2d | 2026-07-20 | 2026-07-21 | 975 |  |  | 2026-07-20 | 2026-07-21 | 2d | 24d |  |
| 980 | 3.9.1.2.6.3 | Elementos estruturais principais; | 2d | 2026-07-20 | 2026-07-21 | 975 |  |  | 2026-07-20 | 2026-07-21 | 2d | 24d |  |
| 981 | 3.9.1.2.6.4 | Elementos de vedação internos e externos; | 2d | 2026-07-20 | 2026-07-21 | 975 |  |  | 2026-07-20 | 2026-07-21 | 2d | 24d |  |
| 982 | 3.9.1.2.6.5 | Esquadrias; | 2d | 2026-07-20 | 2026-07-21 | 975 |  |  | 2026-07-20 | 2026-07-21 | 2d | 24d |  |
| 983 | 3.9.1.2.6.6 | Identificação dos ambientes; | 2d | 2026-07-20 | 2026-07-21 | 975 |  |  | 2026-07-20 | 2026-07-21 | 2d | 24d |  |
| 984 | 3.9.1.2.6.7 | Cobertura com indicação da respectiva inclinação; | 2d | 2026-07-20 | 2026-07-21 | 975 |  |  | 2026-07-20 | 2026-07-21 | 2d | 24d |  |
| 985 | 3.9.1.2.6.8 | Cotas gerais; | 2d | 2026-07-20 | 2026-07-21 | 975 |  |  | 2026-07-20 | 2026-07-21 | 2d | 24d |  |
| 986 | 3.9.1.2.6.9 | Cotas de nível principal; | 2d | 2026-07-20 | 2026-07-21 | 975 |  |  | 2026-07-20 | 2026-07-21 | 2d | 24d |  |
| 987 | 3.9.1.2.6.10 | Eixos do projeto; | 2d | 2026-07-20 | 2026-07-21 | 975 |  |  | 2026-07-20 | 2026-07-21 | 2d | 24d |  |
| 988 | 3.9.1.2.6.11 | Relevo construído; | 2d | 2026-07-20 | 2026-07-21 | 975 |  |  | 2026-07-20 | 2026-07-21 | 2d | 24d |  |
| 989 | 3.9.1.2.6.12 | Projeção da topografia natural | 2d | 2026-07-20 | 2026-07-21 | 975 |  |  | 2026-07-20 | 2026-07-21 | 2d | 21d | 0d |
| 990 | 3.9.1.2.6.13 | Relatório | 2d | 2026-07-20 | 2026-07-21 | 975 |  |  | 2026-07-20 | 2026-07-21 | 2d | 24d |  |

| ID | WBS | Task | Duration | Start | Finish | Predecessors | Complete | Remaining | Baseline start | Baseline finish | Baseline duration | Total slack | Free slack |
| --- | --- | --- | --- | --- | --- | --- | --- | --- | --- | --- | --- | --- | --- |
| 991 | 3.9.1.2.7 | **Elevações** | 2d | 2026-07-22 | 2026-07-23 |  |  |  | 2026-07-22 | 2026-07-23 | 2d | 21d |  |
| 992 | 3.9.1.2.7.1 | Indicar simbologias de representação gráfica, conforme NBR 6492:2021; | 2d | 2026-07-22 | 2026-07-23 | 989 |  |  | 2026-07-22 | 2026-07-23 | 2d | 22d |  |
| 993 | 3.9.1.2.7.2 | Indicação de Escala; | 2d | 2026-07-22 | 2026-07-23 | 989 |  |  | 2026-07-22 | 2026-07-23 | 2d | 22d |  |
| 994 | 3.9.1.2.7.3 | Elementos estruturais principais; | 2d | 2026-07-22 | 2026-07-23 | 989 |  |  | 2026-07-22 | 2026-07-23 | 2d | 22d |  |
| 995 | 3.9.1.2.7.4 | Elementos de vedação internos e externos; | 2d | 2026-07-22 | 2026-07-23 | 989 |  |  | 2026-07-22 | 2026-07-23 | 2d | 22d |  |
| 996 | 3.9.1.2.7.5 | Esquadrias; | 2d | 2026-07-22 | 2026-07-23 | 989 |  |  | 2026-07-22 | 2026-07-23 | 2d | 22d |  |
| 997 | 3.9.1.2.7.6 | Relevo construído; | 2d | 2026-07-22 | 2026-07-23 | 989 |  |  | 2026-07-22 | 2026-07-23 | 2d | 22d |  |
| 998 | 3.9.1.2.7.7 | Cotas gerais; | 2d | 2026-07-22 | 2026-07-23 | 989 |  |  | 2026-07-22 | 2026-07-23 | 2d | 22d |  |
| 999 | 3.9.1.2.7.8 | Cotas de nível principais; | 2d | 2026-07-22 | 2026-07-23 | 989 |  |  | 2026-07-22 | 2026-07-23 | 2d | 22d |  |
| 1000 | 3.9.1.2.7.9 | Cobertura (quando aparente). | 2d | 2026-07-22 | 2026-07-23 | 989 |  |  | 2026-07-22 | 2026-07-23 | 2d | 21d | 0d |
| 1001 | 3.9.1.2.8 | **Memorial Descritivo** | 1d | 2026-07-24 | 2026-07-24 |  |  |  | 2026-07-24 | 2026-07-27 | 2d | 21d |  |
| 1002 | 3.9.1.2.8.1 | Descrição dos elementos da edificação | 1d | 2026-07-24 | 2026-07-24 | 1000 |  |  | 2026-07-24 | 2026-07-27 | 2d | 21d |  |
| 1003 | 3.9.1.2.8.2 | Descrição dos componentes construtivos e materiais de construção | 1d | 2026-07-24 | 2026-07-24 | 1000 |  |  | 2026-07-24 | 2026-07-27 | 2d | 21d |  |
| 1004 | 3.9.1.2.8.3 | Lista de pranchas anexas e documentos | 1d | 2026-07-24 | 2026-07-24 | 1000 |  |  | 2026-07-24 | 2026-07-27 | 2d | 21d |  |
| 1005 | 3.9.2 | Aprovação de Conformidade | 3d | 2026-07-22 | 2026-07-24 | 917FF |  |  | 2026-07-23 | 2026-07-27 | 0d | 21d |  |
| 1006 | 3.9.3 | Material para entrega ao contrato | 3d | 2026-07-22 | 2026-07-24 | 917FF |  |  | 2026-07-23 | 2026-07-27 | 0d | 21d |  |
| 1007 | 3.9.4 | **Engenharia** | 60d | 2026-06-01 A | 2026-08-24 |  | 45% | 33.09d | 2026-06-01 | 2026-07-24 | 39d | 0d |  |
| 1008 | 3.9.4.1 | **Estrutura** | 49d | 2026-06-01 A | 2026-08-07 |  | 91% | 4.34d | 2026-06-01 | 2026-07-20 | 35d | 11d |  |
| 1009 | 3.9.4.1.1 | **LOD 100 — Premissas, diretrizes e interfaces** | 7d | 2026-06-01 A | 2026-06-10 A |  | 100% |  | 2026-06-01 | 2026-06-10 | 7d |  |  |
| 1010 | 3.9.4.1.1.1 | Levantamento de tipos de cargas globais estimadas (permanentes, acidentais, vento e especiais). | 2d | 2026-06-01 A | 2026-06-02 A | 915SS+14d | 100% |  | 2026-06-01 | 2026-06-02 | 2d |  |  |
| 1011 | 3.9.4.1.1.2 | Estudo volumétrico com modulação inicial de pilares, vigas e lajes. Entendendo vãos e desafios | 5d | 2026-06-01 A | 2026-06-08 A | 915SS+14d | 100% |  | 2026-06-01 | 2026-06-08 | 5d |  |  |
| 1012 | 3.9.4.1.1.3 | Localização aproximada de elementos estruturais principais. Avaliando vãos e estudando posições | 2d | 2026-06-01 A | 2026-06-02 A | 915SS+14d | 100% |  | 2026-06-01 | 2026-06-02 | 2d |  |  |
| 1013 | 3.9.4.1.1.4 | Estudo de viabilidade técnica e construtiva. | 3d | 2026-06-03 A | 2026-06-08 A | 1012 | 100% |  | 2026-06-03 | 2026-06-08 | 3d |  |  |
| 1014 | 3.9.4.1.1.5 | Definição preliminar do sistema estrutural (concreto armado, metálica ou mista). | 3d | 2026-06-03 A | 2026-06-08 A | 1012 | 100% |  | 2026-06-03 | 2026-06-08 | 3d |  |  |
| 1015 | 3.9.4.1.1.6 | Estimativa preliminar de tipologias de fundações (sapatas, blocos, estacas). | 2d | 2026-06-09 A | 2026-06-10 A | 1013 | 100% |  | 2026-06-09 | 2026-06-10 | 2d |  |  |
| 1016 | 3.9.4.1.1.7 | Previsão de áreas técnicas, casas de máquinas, reservatórios elevados e estrutura de cobertura. | 2d | 2026-06-09 A | 2026-06-10 A | 1013 | 100% |  | 2026-06-09 | 2026-06-10 | 2d |  |  |

| ID | WBS | Task | Duration | Start | Finish | Predecessors | Complete | Remaining | Baseline start | Baseline finish | Baseline duration | Total slack | Free slack |
| --- | --- | --- | --- | --- | --- | --- | --- | --- | --- | --- | --- | --- | --- |
| 1017 | 3.9.4.1.2 | **LOD 200 — Validação interdisciplinar e solução preliminar** | 20d | 2026-06-11 A | 2026-07-08 A |  | 100% |  | 2026-06-11 | 2026-07-08 | 20d |  |  |
| 1018 | 3.9.4.1.2.1 | Lista preliminar de cargas e ações para dimensionamento. | 5d | 2026-06-11 A | 2026-06-17 A | 1016 | 100% |  | 2026-06-11 | 2026-06-17 | 5d |  |  |
| 1019 | 3.9.4.1.2.2 | Definição preliminar de alturas de pavimentos e níveis de fundação. | 5d | 2026-06-11 A | 2026-06-17 A | 1016 | 100% |  | 2026-06-11 | 2026-06-17 | 5d |  |  |
| 1020 | 3.9.4.1.2.3 | Indicação aproximada do sistema de cobertura (tesouras, treliças, vigamento metálico ou concreto). | 5d | 2026-06-11 A | 2026-06-17 A | 1016 | 100% |  | 2026-06-11 | 2026-06-17 | 5d |  |  |
| 1021 | 3.9.4.1.2.4 | Modelagem genérica de pilares, vigas, lajes e fundações. | 5d | 2026-06-18 A | 2026-06-24 A | 1018 | 100% |  | 2026-06-18 | 2026-06-24 | 5d |  |  |
| 1022 | 3.9.4.1.2.5 | Traçado preliminar de elementos especiais (escadas, rampas estruturais, reservatórios). | 5d | 2026-06-18 A | 2026-06-24 A | 1018 | 100% |  | 2026-06-18 | 2026-06-24 | 5d |  |  |
| 1023 | 3.9.4.1.2.6 | Arquivo IFC, plantas de forma e planta de locação | 5d | 2026-06-18 A | 2026-06-24 A | 1018 | 100% |  | 2026-06-18 | 2026-06-24 | 5d |  |  |
| 1024 | 3.9.4.1.2.7 | Inserção de fundações com tipologia e dimensões preliminares. | 5d | 2026-06-25 A | 2026-07-01 A | 1022 | 100% |  | 2026-06-25 | 2026-07-01 | 5d |  |  |
| 1025 | 3.9.4.1.2.8 | Compatibilização inicial com arquitetura e demais disciplinas. | 5d | 2026-06-25 A | 2026-07-01 A | 1023 | 100% |  | 2026-06-25 | 2026-07-01 | 5d |  |  |
| 1026 | 3.9.4.1.2.9 | Indicação de passagens de infraestrutura (shafts, aberturas em lajes e vigas). | 5d | 2026-06-25 A | 2026-07-01 A | 1023 | 100% |  | 2026-06-25 | 2026-07-01 | 5d |  |  |
| 1027 | 3.9.4.1.2.10 | Modelagem assertiva de elementos principais com dimensões aproximadas (largura, altura, espessura). | 10d | 2026-06-25 A | 2026-07-08 A | 1023 | 100% |  | 2026-06-25 | 2026-07-08 | 10d |  |  |
| 1028 | 3.9.4.1.2.11 | Modelagem estimada de armaduras principais (em nível de concepção). | 5d | 2026-06-25 A | 2026-07-01 A | 1023 | 100% |  | 2026-06-25 | 2026-07-01 | 5d |  |  |
| 1029 | 3.9.4.1.3 | **LOD 300 - Consolidação e documentação de entrega** | 22d | 2026-07-09 A | 2026-08-07 |  | 90% | 2.2d | 2026-07-09 | 2026-07-20 | 8d | 11d | 0d |
| 1030 | 3.9.4.1.3.1 | Indicação de níveis e cotas exatas. | 17d | 2026-07-09 A | 2026-07-31 | 1027, 1028 | 90% | 1.7d | 2026-07-09 | 2026-07-20 | 8d | 16d |  |
| 1031 | 3.9.4.1.3.2 | Quadro de cargas atualizado. | 17d | 2026-07-09 A | 2026-07-31 | 1027, 1028 | 90% | 1.7d | 2026-07-09 | 2026-07-20 | 8d | 16d |  |
| 1032 | 3.9.4.1.3.3 | Dimensionamento final de fundações conforme sondagem e cálculo estrutural. | 17d | 2026-07-09 A | 2026-07-31 | 1027, 1028 | 90% | 1.7d | 2026-07-09 | 2026-07-20 | 8d | 16d |  |
| 1033 | 3.9.4.1.3.4 | Definição final dos elementos da cobertura (treliças, vigas, chapas, purlins). | 17d | 2026-07-09 A | 2026-07-31 | 1027, 1028 | 90% | 1.7d | 2026-07-09 | 2026-07-20 | 8d | 16d |  |
| 1034 | 3.9.4.1.3.5 | Compatibilização final com arquitetura e instalações (aberturas, embutidos e passagens). | 17d | 2026-07-09 A | 2026-07-31 | 1027, 1028 | 90% | 1.7d | 2026-07-09 | 2026-07-20 | 8d | 16d |  |
| 1035 | 3.9.4.1.3.6 | Modelagem definitiva de pilares, vigas, lajes, blocos, sapatas e estacas. | 17d | 2026-07-09 A | 2026-07-31 | 1027, 1028 | 90% | 1.7d | 2026-07-09 | 2026-07-20 | 8d | 4.5d | 0d |
| 1036 | 3.9.4.1.3.7 | Planta estrutural com todos os elementos identificados. | 17d | 2026-07-09 A | 2026-07-31 | 1027, 1028 | 90% | 1.7d | 2026-07-09 | 2026-07-20 | 8d | 16d |  |
| 1037 | 3.9.4.1.3.8 | Memorial descritivo contendo: objetivos, justificativa, descrição do sistema, concepção de fundações/cobertura, especificações e quadro de cargas. | 5d | 2026-08-03 A | 2026-08-07 | 1035 | 90% | 0.5d | 2026-07-09 | 2026-07-20 | 8d | 11d |  |
| 1038 | 3.9.4.1.3.9 | Normas técnicas utilizadas (NBR 6118, 6120, 6122, 8800, etc.). | 5d | 2026-08-03 A | 2026-08-07 | 1035 | 90% | 0.5d | 2026-07-09 | 2026-07-20 | 8d | 11d |  |
| 1039 | 3.9.4.1.3.10 | Consolidar documentação de entrega e emissão formal da disciplina | 5d | 2026-08-03 A | 2026-08-07 | 1035 | 90% | 0.5d | 2026-07-09 | 2026-07-20 | 8d | 11d |  |
| 1040 | 3.9.4.1.4 | Aprovação de Conformidade | 3d | 2026-08-05 | 2026-08-07 | 1029FF |  |  | 2026-07-16 | 2026-07-20 | 0d | 11d |  |
| 1041 | 3.9.4.1.5 | Material para entrega ao contrato | 3d | 2026-08-05 | 2026-08-07 | 1029FF |  |  | 2026-07-16 | 2026-07-20 | 0d | 11d |  |

| ID | WBS | Task | Duration | Start | Finish | Predecessors | Complete | Remaining | Baseline start | Baseline finish | Baseline duration | Total slack | Free slack |
| --- | --- | --- | --- | --- | --- | --- | --- | --- | --- | --- | --- | --- | --- |
| 1042 | 3.9.4.2 | **Hidrossanitário** | 60d | 2026-06-01 A | 2026-08-24 |  | 15% | 51d | 2026-06-01 | 2026-07-24 | 39d | 0d |  |
| 1043 | 3.9.4.2.1 | **LOD 100 — Premissas, diretrizes e interfaces** | 11d | 2026-06-01 A | 2026-06-16 |  | 59% | 4.47d | 2026-06-01 | 2026-06-16 | 11d | 49d |  |
| 1044 | 3.9.4.2.1.1 | Memorial preliminar | 10d | 2026-06-01 A | 2026-06-15 | 915SS+14d | 74% | 2.58d | 2026-06-01 | 2026-06-15 | 10d | 50d |  |
| 1045 | 3.9.4.2.1.2 | Indicação de áreas técnicas | 6d | 2026-06-09 A | 2026-06-16 | 915SS+14d, 1011 | 40% | 3.58d | 2026-06-09 | 2026-06-16 | 6d | 49d |  |
| 1046 | 3.9.4.2.1.3 | Planta baixa com traçado conceitual | 6d | 2026-06-09 A | 2026-06-16 | 1011 | 40% | 3.58d | 2026-06-09 | 2026-06-16 | 6d | 49d |  |
| 1047 | 3.9.4.2.1.4 | Pontos de consumo principais e coletas sanitárias | 6d | 2026-06-09 A | 2026-06-16 | 1011 | 40% | 3.58d | 2026-06-09 | 2026-06-16 | 6d | 0d |  |
| 1048 | 3.9.4.2.1.5 | Classificação de uso | 10d | 2026-06-02 A | 2026-06-16 | 1047FF | 64% | 3.58d | 2026-06-02 | 2026-06-16 | 10d | 49d |  |
| 1049 | 3.9.4.2.1.6 | Diretrizes de espaço | 10d | 2026-06-02 A | 2026-06-16 | 1047FF | 64% | 3.58d | 2026-06-02 | 2026-06-16 | 10d | 49d |  |
| 1050 | 3.9.4.2.1.7 | Estimativa de demanda ou população de uso | 10d | 2026-06-02 A | 2026-06-16 | 1047FF | 64% | 3.58d | 2026-06-02 | 2026-06-16 | 10d | 49d |  |
| 1051 | 3.9.4.2.1.8 | Levantamento de elementos especiais dentre outras disciplinas de Engenharia e Arquitetura | 10d | 2026-06-02 A | 2026-06-16 | 1047FF | 64% | 3.58d | 2026-06-02 | 2026-06-16 | 10d | 0d |  |
| 1052 | 3.9.4.2.2 | **LOD 200 — Validação interdisciplinar e solução preliminar** | 42d | 2026-06-17 | 2026-08-13 |  |  |  | 2026-06-17 | 2026-07-14 | 20d | 7d |  |
| 1053 | 3.9.4.2.2.1 | Critérios normativos adotados (ABNT, concessionárias, etc.) | 26d | 2026-06-17 | 2026-07-22 | 1051 |  |  | 2026-06-17 | 2026-07-14 | 20d | 23d | 0d |
| 1054 | 3.9.4.2.2.2 | Informações de demanda na concessionária (DPE ou AVT Aviso de Viabilidade Técnica) | 26d | 2026-06-17 | 2026-07-22 | 1053SS |  |  | 2026-06-17 | 2026-07-14 | 20d | 23d |  |
| 1055 | 3.9.4.2.2.3 | Recebimento e Análise de Sondagem (permeabilidade ou percolação) | 26d | 2026-06-17 | 2026-07-22 | 1053SS |  |  | 2026-06-17 | 2026-07-14 | 20d | 23d |  |
| 1056 | 3.9.4.2.2.4 | Recebimento e Análise de Topografia | 26d | 2026-06-17 | 2026-07-22 | 1053SS |  |  | 2026-06-17 | 2026-07-14 | 20d | 23d |  |
| 1057 | 3.9.4.2.2.5 | Estudo de viabilidade técnica, econômica e ambiental | 26d | 2026-06-17 | 2026-07-22 | 1053SS |  |  | 2026-06-17 | 2026-07-14 | 20d | 23d |  |
| 1058 | 3.9.4.2.2.6 | Lista preliminar de sistemas envolvidos. | 26d | 2026-07-09 | 2026-08-13 | 1051FS+16d |  |  | 2026-06-17 | 2026-07-14 | 20d | 7d |  |
| 1059 | 3.9.4.2.2.7 | Planta baixa e cortes estimada contendo: - Traçado preliminar de barrilete, ramais, colunas - Diâmetros estimados - Localização aproximada das bombas e unidades de tratamento e reúso - Localização do ramal predial de água e esgoto - Localização aproximada | 26d | 2026-07-09 | 2026-08-13 | 1051FS+16d |  |  | 2026-06-17 | 2026-07-14 | 20d | 0d |  |
| 1060 | 3.9.4.2.3 | **LOD 300 - Consolidação e documentação de entrega** | 7d | 2026-08-14 | 2026-08-24 |  |  |  | 2026-07-15 | 2026-07-24 | 8d | 0d |  |
| 1061 | 3.9.4.2.3.1 | Planta, corte e detalhe isométrico contendo: - Modelagem detalhada com diâmetros, cotas e inclinações definitivas (barriletes, colunas, ramais) - Quantitativos e especificação técnica dos materiais (tubos, conexões, reservatórios, registros e válvulas com | 7d | 2026-08-14 | 2026-08-24 | 1059 |  |  | 2026-07-15 | 2026-07-24 | 8d | 0d |  |
| 1062 | 3.9.4.2.3.2 | Memorial descritivo | 3d | 2026-08-20 | 2026-08-24 | 1061FF |  |  | 2026-07-22 | 2026-07-24 | 3d | 0d |  |
| 1063 | 3.9.4.2.3.3 | Memória de cálculo (pressão, vazão, diâmetros, perda de carga). | 3d | 2026-08-20 | 2026-08-24 | 1059, 1061FF |  |  | 2026-07-22 | 2026-07-24 | 3d | 0d |  |
| 1064 | 3.9.4.2.4 | Aprovação de Conformidade | 3d | 2026-08-20 | 2026-08-24 | 1060FF |  |  | 2026-07-22 | 2026-07-24 | 0d | 0d |  |
| 1065 | 3.9.4.2.5 | Material para entrega ao contrato | 3d | 2026-08-20 | 2026-08-24 | 1060FF |  |  | 2026-07-22 | 2026-07-24 | 0d | 0d |  |

| ID | WBS | Task | Duration | Start | Finish | Predecessors | Complete | Remaining | Baseline start | Baseline finish | Baseline duration | Total slack | Free slack | Constraint | Text3 |
| --- | --- | --- | --- | --- | --- | --- | --- | --- | --- | --- | --- | --- | --- | --- | --- |
| 1066 | 3.9.4.3 | **AVAC** | 60d | 2026-06-01 A | 2026-08-24 |  | 73% | 15.92d | 2026-06-01 | 2026-07-24 | 39d | 0d |  |  |  |
| 1067 | 3.9.4.3.1 | **LOD 100 — Premissas, diretrizes e interfaces** | 20d | 2026-06-01 A | 2026-06-29 A |  | 100% |  | 2026-06-01 | 2026-06-29 | 20d |  |  |  |  |
| 1068 | 3.9.4.3.1.1 | Estimativa de carga térmica por ambiente. | 10d | 2026-06-01 A | 2026-06-15 A | 915SS+14d | 100% |  | 2026-06-01 | 2026-06-15 | 10d |  |  |  |  |
| 1069 | 3.9.4.3.1.2 | Localização preliminar de unidades de tratamento de ar, condensadoras e exaustores. | 10d | 2026-06-01 A | 2026-06-15 A | 915SS+14d | 100% |  | 2026-06-01 | 2026-06-15 | 10d |  |  |  |  |
| 1070 | 3.9.4.3.1.3 | Pontos locação para seus elementos no projeto arquitetônico. | 10d | 2026-06-01 A | 2026-06-15 A | 915SS+14d | 100% |  | 2026-06-01 | 2026-06-15 | 10d |  |  |  |  |
| 1071 | 3.9.4.3.1.4 | Estudo de viabilidade e rotas principais de distribuição de ar. | 10d | 2026-06-01 A | 2026-06-15 A | 915SS+14d | 100% |  | 2026-06-01 | 2026-06-15 | 10d |  |  |  |  |
| 1072 | 3.9.4.3.1.5 | Reserva de espaços técnicos e shafts. | 10d | 2026-06-01 A | 2026-06-15 A | 915SS+14d | 100% |  | 2026-06-01 | 2026-06-15 | 10d |  |  |  |  |
| 1073 | 3.9.4.3.1.6 | Levantamento de cargas especiais provenientes de outras disciplinas. | 10d | 2026-06-16 A | 2026-06-29 A | 915SS+14d, 1095, 1107 | 100% |  | 2026-06-16 | 2026-06-29 | 10d |  |  |  |  |
| 1074 | 3.9.4.3.2 | **LOD 200 — Validação interdisciplinar e solução preliminar** | 34d | 2026-07-08 A | 2026-08-24 |  | 65% | 11.9d | 2026-06-16 | 2026-07-24 | 29d | 0d |  |  |  |
| 1075 | 3.9.4.3.2.1 | Lista preliminar de sistemas HVAC envolvidos (expansão direta, VRF, chillers, ventilação, exaustão). | 34d | 2026-07-08 A | 2026-08-24 A | 1072FS+16d | 100% |  | 2026-06-16 | 2026-07-24 | 29d |  |  |  |  |
| 1076 | 3.9.4.3.2.2 | Planta baixa estimada contendo: pontos de insuflamento e retorno. | 34d | 2026-07-08 A | 2026-08-24 A | 1072FS+16d | 100% |  | 2026-06-16 | 2026-07-24 | 29d |  |  |  |  |
| 1077 | 3.9.4.3.2.3 | Rotas iniciais de dutos, tubulações e drenos. | 34d | 2026-07-08 A | 2026-08-24 | 1072FS+16d | 30% | 23.8d | 2026-06-16 | 2026-07-24 | 29d | 0d |  |  |  |
| 1078 | 3.9.4.3.2.4 | Planta baixa estimada contendo: unidades internas e externas com posição preliminar. | 34d | 2026-07-08 A | 2026-08-24 | 1072FS+16d | 30% | 23.8d | 2026-06-16 | 2026-07-24 | 29d | 0d |  |  |  |
| 1079 | 3.9.4.3.3 | Aprovação de Conformidade | 3d | 2026-08-20 | 2026-08-24 | 1074FF |  |  | 2026-07-22 | 2026-07-24 | 0d | 0d |  |  |  |
| 1080 | 3.9.4.3.4 | Material para entrega ao contrato | 3d | 2026-08-20 | 2026-08-24 | 1074FF |  |  | 2026-07-22 | 2026-07-24 | 0d | 0d |  |  |  |
| 1081 | 3.9.4.4 | **PCI (Incêndio)** | 9d | 2026-07-21 A | 2026-07-31 |  | 95% | 0.45d | 2026-06-01 | 2026-06-29 | 20d | 16d |  |  |  |
| 1082 | 3.9.4.4.1 | **LOD 100 — Premissas, diretrizes e interfaces** | 4d | 2026-07-21 A | 2026-07-24 A |  | 100% |  | 2026-06-01 | 2026-06-15 | 10d |  |  |  | ܁# |
| 1083 | 3.9.4.4.1.1 | Estudo e avaliação da arquitetura atendendo as normas competentes de PCI | 4d | 2026-07-21 A | 2026-07-24 A | 915SS+14d | 100% |  | 2026-06-01 | 2026-06-15 | 10d |  |  | start no earlier than 2026-07-21 |  |
| 1084 | 3.9.4.4.1.2 | Avaliação do espaço para CMI e Central de Gás. | 4d | 2026-07-21 A | 2026-07-24 A | 915SS+14d | 100% |  | 2026-06-01 | 2026-06-15 | 10d |  |  | start no earlier than 2026-07-21 |  |
| 1085 | 3.9.4.4.1.3 | Pontos locação para seus elementos no projeto arquitetônico | 4d | 2026-07-21 A | 2026-07-24 A | 915SS+14d | 100% |  | 2026-06-01 | 2026-06-15 | 10d |  |  | start no earlier than 2026-07-21 |  |
| 1086 | 3.9.4.4.2 | **LOD 200 — Validação interdisciplinar e solução preliminar** | 5d | 2026-07-27 A | 2026-07-31 |  | 93% | 0.33d | 2026-06-16 | 2026-06-29 | 10d | 16d | 0d |  | ܁# |
| 1087 | 3.9.4.4.2.1 | Definição da classificação da edificação e o risco de incêndio | 5d | 2026-07-27 A | 2026-07-31 | 1085 | 93% | 0.33d | 2026-06-16 | 2026-06-29 | 10d | 16d |  |  |  |
| 1088 | 3.9.4.4.2.2 | Cálculos pré-dimensionados dos extintores, hidrantes e bomba. | 5d | 2026-07-27 A | 2026-07-31 | 1085 | 93% | 0.33d | 2026-06-16 | 2026-06-29 | 10d | 16d |  |  |  |
| 1089 | 3.9.4.4.2.3 | Avaliação das rotas de fuga, ventilação de CMI e outros elementos de importância para as normas de PCI | 5d | 2026-07-27 A | 2026-07-31 | 1085 | 93% | 0.33d | 2026-06-16 | 2026-06-29 | 10d | 16d |  |  |  |
| 1090 | 3.9.4.4.3 | Aprovação de Conformidade | 3d | 2026-07-29 A | 2026-07-31 | 1086FF | 89% | 0.33d | 2026-06-25 | 2026-06-29 | 0d | 16d |  |  |  |
| 1091 | 3.9.4.4.4 | Material para entrega ao contrato | 3d | 2026-07-29 A | 2026-07-31 | 1086FF | 89% | 0.33d | 2026-06-25 | 2026-06-29 | 0d | 16d |  |  |  |

| ID | WBS | Task | Duration | Start | Finish | Predecessors | Complete | Remaining | Baseline start | Baseline finish | Baseline duration | Total slack | Free slack |
| --- | --- | --- | --- | --- | --- | --- | --- | --- | --- | --- | --- | --- | --- |
| 1092 | 3.9.4.5 | **Elétrica Baixa Tensão** | 49d | 2026-06-01 A | 2026-08-07 |  | 25% | 36.6d | 2026-06-01 | 2026-07-24 | 39d | 11d |  |
| 1093 | 3.9.4.5.1 | **LOD 100 — Concepção** | 16d | 2026-06-01 A | 2026-06-23 A |  | 100% |  | 2026-06-01 | 2026-06-23 | 16d |  |  |
| 1094 | 3.9.4.5.1.1 | Avaliação e Diretrizes Técnicas para Arquitetura | 6d | 2026-06-01 A | 2026-06-09 A | 915SS+14d | 100% |  | 2026-06-01 | 2026-06-09 | 6d |  |  |
| 1095 | 3.9.4.5.1.2 | Estimativa de Cargas e Demanda | 10d | 2026-06-01 A | 2026-06-15 A | 915SS+14d | 100% |  | 2026-06-01 | 2026-06-15 | 10d |  |  |
| 1096 | 3.9.4.5.1.3 | Levantamento de Equipamentos de Outras Disciplinas | 6d | 2026-06-16 A | 2026-06-23 A | 1070, 1085 | 100% |  | 2026-06-16 | 2026-06-23 | 6d |  |  |
| 1097 | 3.9.4.5.2 | **LOD 200 — Anteprojeto** | 24d | 2026-07-01 A | 2026-08-03 |  | 6% | 22.56d | 2026-06-24 | 2026-07-20 | 19d | 11d | 0d |
| 1098 | 3.9.4.5.2.1 | TUGs Estimados | 24d | 2026-07-01 A | 2026-08-03 | 1095, 1096FS+5d | 6% | 22.56d | 2026-06-24 | 2026-07-20 | 19d | 11d |  |
| 1099 | 3.9.4.5.2.2 | Pontos de Luz Estimados | 24d | 2026-07-01 A | 2026-08-03 | 1095, 1096FS+5d | 6% | 22.56d | 2026-06-24 | 2026-07-20 | 19d | 11d |  |
| 1100 | 3.9.4.5.2.3 | TUEs e Quadros Estimados | 24d | 2026-07-01 A | 2026-08-03 | 1095, 1096FS+5d | 6% | 22.56d | 2026-06-24 | 2026-07-20 | 19d | 11d |  |
| 1101 | 3.9.4.5.3 | LOD 300 - Consolidação e documentação de entrega | 4d | 2026-08-04 | 2026-08-07 | 1097 |  |  | 2026-07-21 | 2026-07-24 | 4d | 11d | 0d |
| 1102 | 3.9.4.5.4 | Aprovação de Conformidade | 3d | 2026-08-05 | 2026-08-07 | 1101FF |  |  | 2026-07-22 | 2026-07-24 | 0d | 11d |  |
| 1103 | 3.9.4.5.5 | Material para entrega ao contrato | 3d | 2026-08-05 | 2026-08-07 | 1101FF |  |  | 2026-07-22 | 2026-07-24 | 0d | 11d |  |
| 1104 | 3.9.4.6 | **Telecom** | 49d | 2026-06-01 A | 2026-08-07 |  | 43% | 27.93d | 2026-06-01 | 2026-07-17 | 34d | 11d |  |
| 1105 | 3.9.4.6.1 | **LOD 100 — Concepção** | 10d | 2026-06-01 A | 2026-06-15 A |  | 100% |  | 2026-06-01 | 2026-06-15 | 10d |  |  |
| 1106 | 3.9.4.6.1.1 | Avaliação e Diretrizes Técnicas para Arquitetura | 10d | 2026-06-01 A | 2026-06-15 A | 915SS+14d | 100% |  | 2026-06-01 | 2026-06-15 | 10d |  |  |
| 1107 | 3.9.4.6.1.2 | Estimativa de Demanda de Telecomunicações | 10d | 2026-06-01 A | 2026-06-15 A | 915SS+14d | 100% |  | 2026-06-01 | 2026-06-15 | 10d |  |  |
| 1108 | 3.9.4.6.1.3 | Levantamento de Equipamentos e Interfaces com Outras Disciplinas | 10d | 2026-06-01 A | 2026-06-15 A | 915SS+14d | 100% |  | 2026-06-01 | 2026-06-15 | 10d |  |  |
| 1109 | 3.9.4.6.2 | **LOD 200 — Anteprojeto** | 35d | 2026-06-16 A | 2026-08-03 |  | 15% | 29.91d | 2026-06-16 | 2026-07-13 | 20d | 11d | 0d |
| 1110 | 3.9.4.6.2.1 | Pontos de Telecomunicações Estimados (Rede, Voz, CFTV e Demais Sistemas) | 15d | 2026-06-16 A | 2026-07-06 | 1108 | 22% | 11.72d | 2026-06-16 | 2026-06-29 | 10d | 16d | 5d |
| 1111 | 3.9.4.6.2.2 | Racks Estimados | 15d | 2026-06-16 A | 2026-07-06 | 1108 | 22% | 11.72d | 2026-06-16 | 2026-06-29 | 10d | 11d | 0d |
| 1112 | 3.9.4.6.2.3 | Infraestrutura de Telecomunicações Preliminar | 15d | 2026-07-14 | 2026-08-03 | 1110, 1111FS+5d |  |  | 2026-06-30 | 2026-07-13 | 10d | 11d |  |
| 1113 | 3.9.4.6.3 | LOD 300 - Consolidação e documentação de entrega | 4d | 2026-08-04 | 2026-08-07 | 1109 |  |  | 2026-07-14 | 2026-07-17 | 4d | 11d | 0d |
| 1114 | 3.9.4.6.4 | Aprovação de Conformidade | 3d | 2026-08-05 | 2026-08-07 | 1113FF |  |  | 2026-07-15 | 2026-07-17 | 0d | 11d |  |
| 1115 | 3.9.4.6.5 | Material para entrega ao contrato | 3d | 2026-08-05 | 2026-08-07 | 1113FF |  |  | 2026-07-15 | 2026-07-17 | 0d | 11d |  |

| ID | WBS | Task | Duration | Start | Finish | Predecessors | Complete | Remaining | Baseline start | Baseline finish | Baseline duration | Total slack | Free slack |
| --- | --- | --- | --- | --- | --- | --- | --- | --- | --- | --- | --- | --- | --- |
| 1116 | 3.9.4.7 | **SPDA** | 49d | 2026-06-01 | 2026-08-07 |  |  |  | 2026-06-01 | 2026-07-24 | 39d | 11d |  |
| 1117 | 3.9.4.7.1 | **LOD 100 — Concepção** | 5d | 2026-06-01 | 2026-06-08 |  |  |  | 2026-06-01 | 2026-06-08 | 5d | 11d |  |
| 1118 | 3.9.4.7.1.1 | Avaliação e Diretrizes Técnicas para Arquitetura | 5d | 2026-06-01 | 2026-06-08 | 915SS+14d |  |  | 2026-06-01 | 2026-06-08 | 5d | 55d |  |
| 1119 | 3.9.4.7.1.2 | Coleta de Informações da Edificação e Análise de Risco (ABNT NBR 5419-2) | 5d | 2026-06-01 | 2026-06-08 | 915SS+14d |  |  | 2026-06-01 | 2026-06-08 | 5d | 55d |  |
| 1120 | 3.9.4.7.1.3 | Estudo Preliminar de Necessidade e Nível de Proteção do SPDA | 5d | 2026-06-01 | 2026-06-08 | 915SS+14d |  |  | 2026-06-01 | 2026-06-08 | 5d | 11d | 0d |
| 1121 | 3.9.4.7.2 | **LOD 200 — Anteprojeto** | 40d | 2026-06-09 | 2026-08-03 |  |  |  | 2026-06-09 | 2026-07-20 | 30d | 11d |  |
| 1122 | 3.9.4.7.2.1 | Definição da Estratégia de Proteção e Soluções Técnicas | 15d | 2026-06-09 | 2026-06-29 | 1120 |  |  | 2026-06-09 | 2026-06-22 | 10d | 11d | 0d |
| 1123 | 3.9.4.7.2.2 | Zoneamento de Captação, Descida e Traçados Preliminares | 10d | 2026-06-30 | 2026-07-13 | 1122 |  |  | 2026-06-23 | 2026-07-06 | 10d | 11d | 0d |
| 1124 | 3.9.4.7.2.3 | Estudo de Interferências, Compatibilização e Métodos Construtivos | 10d | 2026-07-21 | 2026-08-03 | 1123FS+5d |  |  | 2026-07-07 | 2026-07-20 | 10d | 11d | 0d |
| 1125 | 3.9.4.7.3 | LOD 300 - Consolidação e documentação de entrega | 4d | 2026-08-04 | 2026-08-07 | 1124 |  |  | 2026-07-21 | 2026-07-24 | 4d | 11d | 0d |
| 1126 | 3.9.4.7.4 | Aprovação de Conformidade | 3d | 2026-08-05 | 2026-08-07 | 1125FF |  |  | 2026-07-22 | 2026-07-24 | 0d | 11d |  |
| 1127 | 3.9.4.7.5 | Material para entrega ao contrato | 3d | 2026-08-05 | 2026-08-07 | 1125FF |  |  | 2026-07-22 | 2026-07-24 | 0d | 11d |  |
| 1128 | 3.9.4.8 | **Energia Renovável** | 49d | 2026-06-01 A | 2026-08-07 |  | 9% | 44.59d | 2026-06-01 | 2026-07-17 | 34d | 11d |  |
| 1129 | 3.9.4.8.1 | **LOD 100 — Concepção** | 10d | 2026-06-01 A | 2026-06-15 |  | 39% | 6.1d | 2026-06-01 | 2026-06-15 | 10d | 50d |  |
| 1130 | 3.9.4.8.1.1 | Viabilidade e Premissas de Geração | 10d | 2026-06-01 A | 2026-06-15 | 915SS+14d | 39% | 6.1d | 2026-06-01 | 2026-06-15 | 10d | 50d |  |
| 1131 | 3.9.4.8.1.2 | Levantamento Preliminar de Áreas e Sombreamento | 10d | 2026-06-01 A | 2026-06-15 | 915SS+14d | 39% | 6.1d | 2026-06-01 | 2026-06-15 | 10d | 11d | 0d |
| 1132 | 3.9.4.8.1.3 | Avaliação e Diretrizes Técnicas para Arquitetônico | 10d | 2026-06-01 A | 2026-06-15 | 915SS+14d | 39% | 6.1d | 2026-06-01 | 2026-06-15 | 10d | 50d |  |
| 1133 | 3.9.4.8.2 | **LOD 200 — Anteprojeto** | 35d | 2026-06-16 | 2026-08-03 |  |  |  | 2026-06-16 | 2026-07-13 | 20d | 11d | 0d |
| 1134 | 3.9.4.8.2.1 | Layout Preliminar de Módulos, Inversores e String Boxes | 30d | 2026-06-16 | 2026-07-27 | 1131 |  |  | 2026-06-16 | 2026-07-13 | 20d | 16d |  |
| 1135 | 3.9.4.8.2.2 | Infraestrutura e Rotas Técnicas Preliminares (DC/AC e Aterramento) | 30d | 2026-06-16 | 2026-07-27 | 1131 |  |  | 2026-06-16 | 2026-07-13 | 20d | 16d |  |
| 1136 | 3.9.4.8.2.3 | Critérios Preliminares de Proteção e Estimativa de Quantitativos | 30d | 2026-06-23 | 2026-08-03 | 1131FS+5d |  |  | 2026-06-16 | 2026-07-13 | 20d | 11d |  |
| 1137 | 3.9.4.8.3 | LOD 300 - Consolidação e documentação de entrega | 4d | 2026-08-04 | 2026-08-07 | 1133 |  |  | 2026-07-14 | 2026-07-17 | 4d | 11d | 0d |
| 1138 | 3.9.4.8.4 | Aprovação de Conformidade | 3d | 2026-08-05 | 2026-08-07 | 1137FF |  |  | 2026-07-15 | 2026-07-17 | 0d | 11d |  |
| 1139 | 3.9.4.8.5 | Material para entrega ao contrato | 3d | 2026-08-05 | 2026-08-07 | 1137FF |  |  | 2026-07-15 | 2026-07-17 | 0d | 11d |  |

| ID | WBS | Task | Duration | Start | Finish | Predecessors | Complete | Remaining | Baseline start | Baseline finish | Baseline duration | Total slack | Free slack |
| --- | --- | --- | --- | --- | --- | --- | --- | --- | --- | --- | --- | --- | --- |
| 1140 | 3.10 | **006 - Flow/Surfskate** | 74d | 2026-05-12 A | 2026-08-24 |  | 56% | 32.28d | 2026-05-12 | 2026-07-27 | 54d | 0d |  |
| 1141 | 3.10.1 | **Arquitetura** | 58d | 2026-05-12 A | 2026-07-31 |  | 72% | 15.99d | 2026-05-12 | 2026-07-27 | 54d | 16d |  |
| 1142 | 3.10.1.1 | **LOD 200 - ESTUDO PRELIMINAR** | 38d | 2026-05-12 A | 2026-07-03 A |  | 100% |  | 2026-05-12 | 2026-07-03 | 38d |  |  |
| 1143 | 3.10.1.1.1 | Modelagem das paredes | 38d | 2026-05-12 A | 2026-07-03 A | 75FS+8d | 100% |  | 2026-05-12 | 2026-07-03 | 38d |  |  |
| 1144 | 3.10.1.1.2 | Modelagem dos pisos | 38d | 2026-05-12 A | 2026-07-03 A | 75FS+8d | 100% |  | 2026-05-12 | 2026-07-03 | 38d |  |  |
| 1145 | 3.10.1.1.3 | Inserção de portas | 38d | 2026-05-12 A | 2026-07-03 A | 75FS+8d | 100% |  | 2026-05-12 | 2026-07-03 | 38d |  |  |
| 1146 | 3.10.1.1.4 | Inserção de janelas | 38d | 2026-05-12 A | 2026-07-03 A | 75FS+8d | 100% |  | 2026-05-12 | 2026-07-03 | 38d |  |  |
| 1147 | 3.10.1.1.5 | Inserção de escada(s) | 38d | 2026-05-12 A | 2026-07-03 A | 75FS+8d | 100% |  | 2026-05-12 | 2026-07-03 | 38d |  |  |
| 1148 | 3.10.1.1.6 | Inserção de elevador(es) | 38d | 2026-05-12 A | 2026-07-03 A | 75FS+8d | 100% |  | 2026-05-12 | 2026-07-03 | 38d |  |  |
| 1149 | 3.10.1.1.7 | Inserção de layout | 38d | 2026-05-12 A | 2026-07-03 A | 75FS+8d | 100% |  | 2026-05-12 | 2026-07-03 | 38d |  |  |
| 1150 | 3.10.1.1.8 | Identificação dos ambientes | 38d | 2026-05-12 A | 2026-07-03 A | 75FS+8d | 100% |  | 2026-05-12 | 2026-07-03 | 38d |  |  |
| 1151 | 3.10.1.1.9 | Espaços de circulação | 38d | 2026-05-12 A | 2026-07-03 A | 75FS+8d | 100% |  | 2026-05-12 | 2026-07-03 | 38d |  |  |
| 1152 | 3.10.1.1.10 | Áreas de serviços, funcionais e técnicas | 38d | 2026-05-12 A | 2026-07-03 A | 75FS+8d | 100% |  | 2026-05-12 | 2026-07-03 | 38d |  |  |
| 1153 | 3.10.1.1.11 | Projeção de níveis superiores e da cobertura | 38d | 2026-05-12 A | 2026-07-03 A | 75FS+8d | 100% |  | 2026-05-12 | 2026-07-03 | 38d |  |  |
| 1154 | 3.10.1.1.12 | Cotas de nível principais | 38d | 2026-05-12 A | 2026-07-03 A | 75FS+8d | 100% |  | 2026-05-12 | 2026-07-03 | 38d |  |  |
| 1155 | 3.10.1.1.13 | Relatório/Memorial de Projeto Preliminar | 38d | 2026-05-12 A | 2026-07-03 A | 75FS+8d | 100% |  | 2026-05-12 | 2026-07-03 | 38d |  |  |
| 1156 | 3.10.1.2 | **LOD 300 - ANTEPROJETO** | 20d | 2026-07-06 | 2026-07-31 |  |  |  | 2026-07-06 | 2026-07-27 | 16d | 16d | 0d |
| 1157 | 3.10.1.2.1 | **Situação** | 4d | 2026-07-06 | 2026-07-09 |  |  |  | 2026-07-06 | 2026-07-07 | 2d | 16d |  |
| 1158 | 3.10.1.2.1.1 | Indicar simbologias de representação gráfica, conforme NBR 6492:2021; | 4d | 2026-07-06 | 2026-07-09 | 1155 |  |  | 2026-07-06 | 2026-07-07 | 2d | 32d |  |
| 1159 | 3.10.1.2.1.2 | Indicação Norte | 4d | 2026-07-06 | 2026-07-09 | 1155 |  |  | 2026-07-06 | 2026-07-07 | 2d | 32d |  |
| 1160 | 3.10.1.2.1.3 | Analisar, adicionar e fechar - Curvas de nível existentes e projetadas (conforme projetos de topografia e sondagem recebidos); | 4d | 2026-07-06 | 2026-07-09 | 1155 |  |  | 2026-07-06 | 2026-07-07 | 2d | 32d |  |
| 1161 | 3.10.1.2.1.4 | Indicação de Escala; | 4d | 2026-07-06 | 2026-07-09 | 1155 |  |  | 2026-07-06 | 2026-07-07 | 2d | 32d |  |
| 1162 | 3.10.1.2.1.5 | Vias de acesso ao conjunto, arruamento, logradouros adjacentes e calçadas com os respectivos equipamentos urbanos; | 4d | 2026-07-06 | 2026-07-09 | 1155 |  |  | 2026-07-06 | 2026-07-07 | 2d | 32d |  |
| 1163 | 3.10.1.2.1.6 | Platôs e taludes principais; | 4d | 2026-07-06 | 2026-07-09 | 1155 |  |  | 2026-07-06 | 2026-07-07 | 2d | 32d |  |
| 1164 | 3.10.1.2.1.7 | Perímetro do terreno, recuos e afastamentos; | 4d | 2026-07-06 | 2026-07-09 | 1155 |  |  | 2026-07-06 | 2026-07-07 | 2d | 32d |  |
| 1165 | 3.10.1.2.1.8 | Indicação das áreas a serem edificadas com o contorno da cobertura das edificações, estacionamentos e áreas permeáveis/impermeáveis; | 4d | 2026-07-06 | 2026-07-09 | 1155 |  |  | 2026-07-06 | 2026-07-07 | 2d | 32d |  |
| 1166 | 3.10.1.2.1.9 | Denominação das edificações, blocos ou espaços; | 4d | 2026-07-06 | 2026-07-09 | 1155 |  |  | 2026-07-06 | 2026-07-07 | 2d | 32d |  |
| 1167 | 3.10.1.2.1.10 | Cotas gerais | 4d | 2026-07-06 | 2026-07-09 | 1155 |  |  | 2026-07-06 | 2026-07-07 | 2d | 32d |  |
| 1168 | 3.10.1.2.1.11 | Cotas de nível principal. | 4d | 2026-07-06 | 2026-07-09 | 1155 |  |  | 2026-07-06 | 2026-07-07 | 2d | 32d |  |
| 1169 | 3.10.1.2.1.12 | Quadros de áreas | 4d | 2026-07-06 | 2026-07-09 | 1155 |  |  | 2026-07-06 | 2026-07-07 | 2d | 32d |  |
| 1170 | 3.10.1.2.1.13 | Relatório | 4d | 2026-07-06 | 2026-07-09 | 1155 |  |  | 2026-07-06 | 2026-07-07 | 2d | 16d | 0d |
| 1171 | 3.10.1.2.2 | Planta com as cotas de nível projetadas e existentes | 4d | 2026-07-10 | 2026-07-15 | 1170 |  |  | 2026-07-08 | 2026-07-09 | 2d | 16d | 0d |

| ID | WBS | Task | Duration | Start | Finish | Predecessors | Baseline start | Baseline finish | Baseline duration | Total slack | Free slack |
| --- | --- | --- | --- | --- | --- | --- | --- | --- | --- | --- | --- |
| 1172 | 3.10.1.2.3 | **Plantas baixas (se tiver mais de um pavimento, duplicar bloco)** | 2d | 2026-07-16 | 2026-07-17 |  | 2026-07-10 | 2026-07-13 | 2d | 16d |  |
| 1173 | 3.10.1.2.3.1 | Indicar simbologias de representação gráfica, conforme NBR 6492:2021; | 2d | 2026-07-16 | 2026-07-17 | 1171 | 2026-07-10 | 2026-07-13 | 2d | 26d |  |
| 1174 | 3.10.1.2.3.2 | Compatibilização (verificar se está tudo conforme as normas e alinhar com o restante das disciplinas de engenharia) | 2d | 2026-07-16 | 2026-07-17 | 1171 | 2026-07-10 | 2026-07-13 | 2d | 26d |  |
| 1175 | 3.10.1.2.3.3 | Compatibilização (deixar tudo conforme padrão Quanta) | 2d | 2026-07-16 | 2026-07-17 | 1171 | 2026-07-10 | 2026-07-13 | 2d | 26d |  |
| 1176 | 3.10.1.2.3.4 | Indicação de Norte; | 2d | 2026-07-16 | 2026-07-17 | 1171 | 2026-07-10 | 2026-07-13 | 2d | 26d |  |
| 1177 | 3.10.1.2.3.5 | Indicação de Escala; | 2d | 2026-07-16 | 2026-07-17 | 1171 | 2026-07-10 | 2026-07-13 | 2d | 26d |  |
| 1178 | 3.10.1.2.3.6 | Indicação de Acessos; | 2d | 2026-07-16 | 2026-07-17 | 1171 | 2026-07-10 | 2026-07-13 | 2d | 26d |  |
| 1179 | 3.10.1.2.3.7 | Elementos de vedação internos e externos; | 2d | 2026-07-16 | 2026-07-17 | 1171 | 2026-07-10 | 2026-07-13 | 2d | 26d |  |
| 1180 | 3.10.1.2.3.8 | Esquadrias; | 2d | 2026-07-16 | 2026-07-17 | 1171 | 2026-07-10 | 2026-07-13 | 2d | 26d |  |
| 1181 | 3.10.1.2.3.9 | Elementos estruturais principais; | 2d | 2026-07-16 | 2026-07-17 | 1171 | 2026-07-10 | 2026-07-13 | 2d | 26d |  |
| 1182 | 3.10.1.2.3.10 | Identificação dos ambientes e espaços (internos e externos); | 2d | 2026-07-16 | 2026-07-17 | 1171 | 2026-07-10 | 2026-07-13 | 2d | 26d |  |
| 1183 | 3.10.1.2.3.11 | Espaços de circulação internos e externos; | 2d | 2026-07-16 | 2026-07-17 | 1171 | 2026-07-10 | 2026-07-13 | 2d | 26d |  |
| 1184 | 3.10.1.2.3.12 | Áreas de serviço, funcionais e técnicas (internos e externos); | 2d | 2026-07-16 | 2026-07-17 | 1171 | 2026-07-10 | 2026-07-13 | 2d | 26d |  |
| 1185 | 3.10.1.2.3.13 | Projeções de níveis superiores; | 2d | 2026-07-16 | 2026-07-17 | 1171 | 2026-07-10 | 2026-07-13 | 2d | 26d |  |
| 1186 | 3.10.1.2.3.14 | Cotas gerais | 2d | 2026-07-16 | 2026-07-17 | 1171 | 2026-07-10 | 2026-07-13 | 2d | 26d |  |
| 1187 | 3.10.1.2.3.15 | Cotas de nível principal. | 2d | 2026-07-16 | 2026-07-17 | 1171 | 2026-07-10 | 2026-07-13 | 2d | 26d |  |
| 1188 | 3.10.1.2.3.16 | Tabelas de paredes, pisos, esquadrias e plantas | 2d | 2026-07-16 | 2026-07-17 | 1171 | 2026-07-10 | 2026-07-13 | 2d | 26d |  |
| 1189 | 3.10.1.2.3.17 | Quadro de áreas | 2d | 2026-07-16 | 2026-07-17 | 1171 | 2026-07-10 | 2026-07-13 | 2d | 16d | 0d |
| 1190 | 3.10.1.2.3.18 | Relatório | 2d | 2026-07-16 | 2026-07-17 | 1171 | 2026-07-10 | 2026-07-13 | 2d | 26d |  |
| 1191 | 3.10.1.2.4 | **Planta das coberturas** | 2d | 2026-07-20 | 2026-07-21 |  | 2026-07-14 | 2026-07-15 | 2d | 16d |  |
| 1192 | 3.10.1.2.4.1 | Indicação do Norte | 2d | 2026-07-20 | 2026-07-21 | 1189 | 2026-07-14 | 2026-07-15 | 2d | 24d |  |
| 1193 | 3.10.1.2.4.2 | Indicação de escala | 2d | 2026-07-20 | 2026-07-21 | 1189 | 2026-07-14 | 2026-07-15 | 2d | 24d |  |
| 1194 | 3.10.1.2.4.3 | Curvas de nível | 2d | 2026-07-20 | 2026-07-21 | 1189 | 2026-07-14 | 2026-07-15 | 2d | 24d |  |
| 1195 | 3.10.1.2.4.4 | Indicação de Acessos; | 2d | 2026-07-20 | 2026-07-21 | 1189 | 2026-07-14 | 2026-07-15 | 2d | 24d |  |
| 1196 | 3.10.1.2.4.5 | Estacionamento e áreas cobertas | 2d | 2026-07-20 | 2026-07-21 | 1189 | 2026-07-14 | 2026-07-15 | 2d | 24d |  |
| 1197 | 3.10.1.2.4.6 | Cobertura das edificações | 2d | 2026-07-20 | 2026-07-21 | 1189 | 2026-07-14 | 2026-07-15 | 2d | 24d |  |
| 1198 | 3.10.1.2.4.7 | Sentido de escoamento das águas pluviais e inclinação | 2d | 2026-07-20 | 2026-07-21 | 1189 | 2026-07-14 | 2026-07-15 | 2d | 24d |  |
| 1199 | 3.10.1.2.4.8 | Cotas gerais | 2d | 2026-07-20 | 2026-07-21 | 1189 | 2026-07-14 | 2026-07-15 | 2d | 24d |  |
| 1200 | 3.10.1.2.4.9 | Cotas de nível principal | 2d | 2026-07-20 | 2026-07-21 | 1189 | 2026-07-14 | 2026-07-15 | 2d | 16d | 0d |
| 1201 | 3.10.1.2.4.10 | Relatório | 2d | 2026-07-20 | 2026-07-21 | 1189 | 2026-07-14 | 2026-07-15 | 2d | 24d |  |

| ID | WBS | Task | Duration | Start | Finish | Predecessors | Baseline start | Baseline finish | Baseline duration | Total slack | Free slack |
| --- | --- | --- | --- | --- | --- | --- | --- | --- | --- | --- | --- |
| 1202 | 3.10.1.2.5 | **Cortes longitudinais** | 2d | 2026-07-22 | 2026-07-23 |  | 2026-07-16 | 2026-07-17 | 2d | 16d |  |
| 1203 | 3.10.1.2.5.1 | Indicar simbologias de representação gráfica, conforme NBR 6492:2021; | 2d | 2026-07-22 | 2026-07-23 | 1200 | 2026-07-16 | 2026-07-17 | 2d | 22d |  |
| 1204 | 3.10.1.2.5.2 | Indicação de Escala; | 2d | 2026-07-22 | 2026-07-23 | 1200 | 2026-07-16 | 2026-07-17 | 2d | 22d |  |
| 1205 | 3.10.1.2.5.3 | Elementos estruturais principais; | 2d | 2026-07-22 | 2026-07-23 | 1200 | 2026-07-16 | 2026-07-17 | 2d | 22d |  |
| 1206 | 3.10.1.2.5.4 | Elementos de vedação internos e externos; | 2d | 2026-07-22 | 2026-07-23 | 1200 | 2026-07-16 | 2026-07-17 | 2d | 22d |  |
| 1207 | 3.10.1.2.5.5 | Esquadrias; | 2d | 2026-07-22 | 2026-07-23 | 1200 | 2026-07-16 | 2026-07-17 | 2d | 22d |  |
| 1208 | 3.10.1.2.5.6 | Identificação dos ambientes; | 2d | 2026-07-22 | 2026-07-23 | 1200 | 2026-07-16 | 2026-07-17 | 2d | 22d |  |
| 1209 | 3.10.1.2.5.7 | Cobertura com indicação da respectiva inclinação; | 2d | 2026-07-22 | 2026-07-23 | 1200 | 2026-07-16 | 2026-07-17 | 2d | 22d |  |
| 1210 | 3.10.1.2.5.8 | Cotas gerais; | 2d | 2026-07-22 | 2026-07-23 | 1200 | 2026-07-16 | 2026-07-17 | 2d | 22d |  |
| 1211 | 3.10.1.2.5.9 | Cotas de nível principal; | 2d | 2026-07-22 | 2026-07-23 | 1200 | 2026-07-16 | 2026-07-17 | 2d | 22d |  |
| 1212 | 3.10.1.2.5.10 | Eixos do projeto; | 2d | 2026-07-22 | 2026-07-23 | 1200 | 2026-07-16 | 2026-07-17 | 2d | 22d |  |
| 1213 | 3.10.1.2.5.11 | Relevo construído; | 2d | 2026-07-22 | 2026-07-23 | 1200 | 2026-07-16 | 2026-07-17 | 2d | 22d |  |
| 1214 | 3.10.1.2.5.12 | Projeção da topografia natural. | 2d | 2026-07-22 | 2026-07-23 | 1200 | 2026-07-16 | 2026-07-17 | 2d | 16d | 0d |
| 1215 | 3.10.1.2.5.13 | Relatório | 2d | 2026-07-22 | 2026-07-23 | 1200 | 2026-07-16 | 2026-07-17 | 2d | 22d |  |
| 1216 | 3.10.1.2.6 | **Cortes transversais** | 2d | 2026-07-24 | 2026-07-27 |  | 2026-07-20 | 2026-07-21 | 2d | 16d |  |
| 1217 | 3.10.1.2.6.1 | Indicar simbologias de representação gráfica, conforme NBR 6492:2021; | 2d | 2026-07-24 | 2026-07-27 | 1214 | 2026-07-20 | 2026-07-21 | 2d | 20d |  |
| 1218 | 3.10.1.2.6.2 | Indicação de Escala; | 2d | 2026-07-24 | 2026-07-27 | 1214 | 2026-07-20 | 2026-07-21 | 2d | 20d |  |
| 1219 | 3.10.1.2.6.3 | Elementos estruturais principais; | 2d | 2026-07-24 | 2026-07-27 | 1214 | 2026-07-20 | 2026-07-21 | 2d | 20d |  |
| 1220 | 3.10.1.2.6.4 | Elementos de vedação internos e externos; | 2d | 2026-07-24 | 2026-07-27 | 1214 | 2026-07-20 | 2026-07-21 | 2d | 20d |  |
| 1221 | 3.10.1.2.6.5 | Esquadrias; | 2d | 2026-07-24 | 2026-07-27 | 1214 | 2026-07-20 | 2026-07-21 | 2d | 20d |  |
| 1222 | 3.10.1.2.6.6 | Identificação dos ambientes; | 2d | 2026-07-24 | 2026-07-27 | 1214 | 2026-07-20 | 2026-07-21 | 2d | 20d |  |
| 1223 | 3.10.1.2.6.7 | Cobertura com indicação da respectiva inclinação; | 2d | 2026-07-24 | 2026-07-27 | 1214 | 2026-07-20 | 2026-07-21 | 2d | 20d |  |
| 1224 | 3.10.1.2.6.8 | Cotas gerais; | 2d | 2026-07-24 | 2026-07-27 | 1214 | 2026-07-20 | 2026-07-21 | 2d | 20d |  |
| 1225 | 3.10.1.2.6.9 | Cotas de nível principal; | 2d | 2026-07-24 | 2026-07-27 | 1214 | 2026-07-20 | 2026-07-21 | 2d | 20d |  |
| 1226 | 3.10.1.2.6.10 | Eixos do projeto; | 2d | 2026-07-24 | 2026-07-27 | 1214 | 2026-07-20 | 2026-07-21 | 2d | 20d |  |
| 1227 | 3.10.1.2.6.11 | Relevo construído; | 2d | 2026-07-24 | 2026-07-27 | 1214 | 2026-07-20 | 2026-07-21 | 2d | 20d |  |
| 1228 | 3.10.1.2.6.12 | Projeção da topografia natural | 2d | 2026-07-24 | 2026-07-27 | 1214 | 2026-07-20 | 2026-07-21 | 2d | 16d | 0d |
| 1229 | 3.10.1.2.6.13 | Relatório | 2d | 2026-07-24 | 2026-07-27 | 1214 | 2026-07-20 | 2026-07-21 | 2d | 20d |  |

| ID | WBS | Task | Duration | Start | Finish | Predecessors | Complete | Remaining | Baseline start | Baseline finish | Baseline duration | Total slack | Free slack |
| --- | --- | --- | --- | --- | --- | --- | --- | --- | --- | --- | --- | --- | --- |
| 1230 | 3.10.1.2.7 | **Elevações** | 2d | 2026-07-28 | 2026-07-29 |  |  |  | 2026-07-22 | 2026-07-23 | 2d | 16d |  |
| 1231 | 3.10.1.2.7.1 | Indicar simbologias de representação gráfica, conforme NBR 6492:2021; | 2d | 2026-07-28 | 2026-07-29 | 1228 |  |  | 2026-07-22 | 2026-07-23 | 2d | 18d |  |
| 1232 | 3.10.1.2.7.2 | Indicação de Escala; | 2d | 2026-07-28 | 2026-07-29 | 1228 |  |  | 2026-07-22 | 2026-07-23 | 2d | 18d |  |
| 1233 | 3.10.1.2.7.3 | Elementos estruturais principais; | 2d | 2026-07-28 | 2026-07-29 | 1228 |  |  | 2026-07-22 | 2026-07-23 | 2d | 18d |  |
| 1234 | 3.10.1.2.7.4 | Elementos de vedação internos e externos; | 2d | 2026-07-28 | 2026-07-29 | 1228 |  |  | 2026-07-22 | 2026-07-23 | 2d | 18d |  |
| 1235 | 3.10.1.2.7.5 | Esquadrias; | 2d | 2026-07-28 | 2026-07-29 | 1228 |  |  | 2026-07-22 | 2026-07-23 | 2d | 18d |  |
| 1236 | 3.10.1.2.7.6 | Relevo construído; | 2d | 2026-07-28 | 2026-07-29 | 1228 |  |  | 2026-07-22 | 2026-07-23 | 2d | 18d |  |
| 1237 | 3.10.1.2.7.7 | Cotas gerais; | 2d | 2026-07-28 | 2026-07-29 | 1228 |  |  | 2026-07-22 | 2026-07-23 | 2d | 18d |  |
| 1238 | 3.10.1.2.7.8 | Cotas de nível principais; | 2d | 2026-07-28 | 2026-07-29 | 1228 |  |  | 2026-07-22 | 2026-07-23 | 2d | 18d |  |
| 1239 | 3.10.1.2.7.9 | Cobertura (quando aparente). | 2d | 2026-07-28 | 2026-07-29 | 1228 |  |  | 2026-07-22 | 2026-07-23 | 2d | 16d | 0d |
| 1240 | 3.10.1.2.8 | **Memorial Descritivo** | 2d | 2026-07-30 | 2026-07-31 |  |  |  | 2026-07-24 | 2026-07-27 | 2d | 16d |  |
| 1241 | 3.10.1.2.8.1 | Descrição dos elementos da edificação | 2d | 2026-07-30 | 2026-07-31 | 1239 |  |  | 2026-07-24 | 2026-07-27 | 2d | 16d |  |
| 1242 | 3.10.1.2.8.2 | Descrição dos componentes construtivos e materiais de construção | 2d | 2026-07-30 | 2026-07-31 | 1239 |  |  | 2026-07-24 | 2026-07-27 | 2d | 16d |  |
| 1243 | 3.10.1.2.8.3 | Lista de pranchas anexas e documentos | 2d | 2026-07-30 | 2026-07-31 | 1239 |  |  | 2026-07-24 | 2026-07-27 | 2d | 16d |  |
| 1244 | 3.10.2 | Aprovação de Conformidade | 3d | 2026-07-29 | 2026-07-31 | 1156FF |  |  | 2026-07-23 | 2026-07-27 | 0d | 16d |  |
| 1245 | 3.10.3 | Material para entrega ao contrato | 3d | 2026-07-29 | 2026-07-31 | 1156FF |  |  | 2026-07-23 | 2026-07-27 | 0d | 16d |  |
| 1246 | 3.10.4 | **Engenharia** | 60d | 2026-06-01 A | 2026-08-24 |  | 5% | 57.22d | 2026-06-01 | 2026-07-24 | 39d | 0d |  |
| 1247 | 3.10.4.1 | **Estrutura Pista** | 60d | 2026-06-01 A | 2026-08-24 |  | 5% | 57.22d | 2026-06-01 | 2026-07-20 | 35d | 0d |  |
| 1248 | 3.10.4.1.1 | **LOD 100 — Premissas, diretrizes e interfaces** | 7d | 2026-06-01 A | 2026-06-10 |  | 50% | 3.5d | 2026-06-01 | 2026-06-10 | 7d | 53d |  |
| 1249 | 3.10.4.1.1.1 | Levantamento de tipos de cargas globais estimadas (permanentes, acidentais, vento e especiais). | 2d | 2026-06-01 A | 2026-06-02 A | 1154SS+14d | 100% |  | 2026-06-01 | 2026-06-02 | 2d |  |  |
| 1250 | 3.10.4.1.1.2 | Estudo volumétrico com modulação inicial de pilares, vigas e lajes. Entendendo vãos e desafios | 5d | 2026-06-01 A | 2026-06-08 | 1154SS+14d | 63% | 1.83d | 2026-06-01 | 2026-06-08 | 5d | 55d |  |
| 1251 | 3.10.4.1.1.3 | Localização aproximada de elementos estruturais principais. Avaliando vãos e estudando posições | 2d | 2026-06-01 A | 2026-06-02 A | 1154SS+14d | 100% |  | 2026-06-01 | 2026-06-02 | 2d |  |  |
| 1252 | 3.10.4.1.1.4 | Estudo de viabilidade técnica e construtiva. | 3d | 2026-06-03 A | 2026-06-08 | 1251 | 39% | 1.83d | 2026-06-03 | 2026-06-08 | 3d | 0d |  |
| 1253 | 3.10.4.1.1.5 | Definição preliminar do sistema estrutural (concreto armado, metálica ou mista). | 3d | 2026-06-03 A | 2026-06-08 | 1251 | 39% | 1.83d | 2026-06-03 | 2026-06-08 | 3d | 55d |  |
| 1254 | 3.10.4.1.1.6 | Estimativa preliminar de tipologias de fundações (sapatas, blocos, estacas). | 2d | 2026-06-09 | 2026-06-10 | 1252 |  |  | 2026-06-09 | 2026-06-10 | 2d | 53d |  |
| 1255 | 3.10.4.1.1.7 | Previsão de áreas técnicas, casas de máquinas, reservatórios elevados e estrutura de cobertura. | 2d | 2026-06-09 | 2026-06-10 | 1252 |  |  | 2026-06-09 | 2026-06-10 | 2d | 0d |  |

| ID | WBS | Task | Duration | Start | Finish | Predecessors | Baseline start | Baseline finish | Baseline duration | Total slack | Free slack |
| --- | --- | --- | --- | --- | --- | --- | --- | --- | --- | --- | --- |
| 1256 | 3.10.4.1.2 | **LOD 200 — Validação interdisciplinar e solução preliminar** | 30d | 2026-06-11 | 2026-07-22 |  | 2026-06-11 | 2026-07-08 | 20d | 0d |  |
| 1257 | 3.10.4.1.2.1 | Lista preliminar de cargas e ações para dimensionamento. | 10d | 2026-06-11 | 2026-06-24 | 1255 | 2026-06-11 | 2026-06-17 | 5d | 0d |  |
| 1258 | 3.10.4.1.2.2 | Definição preliminar de alturas de pavimentos e níveis de fundação. | 10d | 2026-06-11 | 2026-06-24 | 1255 | 2026-06-11 | 2026-06-17 | 5d | 43d |  |
| 1259 | 3.10.4.1.2.3 | Indicação aproximada do sistema de cobertura (tesouras, treliças, vigamento metálico ou concreto). | 10d | 2026-06-11 | 2026-06-24 | 1255 | 2026-06-11 | 2026-06-17 | 5d | 43d |  |
| 1260 | 3.10.4.1.2.4 | Modelagem genérica de pilares, vigas, lajes e fundações. | 10d | 2026-06-25 | 2026-07-08 | 1257 | 2026-06-18 | 2026-06-24 | 5d | 33d |  |
| 1261 | 3.10.4.1.2.5 | Traçado preliminar de elementos especiais (escadas, rampas estruturais, reservatórios). | 10d | 2026-06-25 | 2026-07-08 | 1257 | 2026-06-18 | 2026-06-24 | 5d | 23d | 0d |
| 1262 | 3.10.4.1.2.6 | Arquivo IFC, plantas de forma e planta de locação | 10d | 2026-06-25 | 2026-07-08 | 1257 | 2026-06-18 | 2026-06-24 | 5d | 0d |  |
| 1263 | 3.10.4.1.2.7 | Inserção de fundações com tipologia e dimensões preliminares. | 10d | 2026-07-09 | 2026-07-22 | 1261 | 2026-06-25 | 2026-07-01 | 5d | 23d |  |
| 1264 | 3.10.4.1.2.8 | Compatibilização inicial com arquitetura e demais disciplinas. | 10d | 2026-07-09 | 2026-07-22 | 1262 | 2026-06-25 | 2026-07-01 | 5d | 23d |  |
| 1265 | 3.10.4.1.2.9 | Indicação de passagens de infraestrutura (shafts, aberturas em lajes e vigas). | 10d | 2026-07-09 | 2026-07-22 | 1262 | 2026-06-25 | 2026-07-01 | 5d | 23d |  |
| 1266 | 3.10.4.1.2.10 | Modelagem assertiva de elementos principais com dimensões aproximadas (largura, altura, espessura). | 10d | 2026-07-09 | 2026-07-22 | 1262 | 2026-06-25 | 2026-07-08 | 10d | 0d |  |
| 1267 | 3.10.4.1.2.11 | Modelagem estimada de armaduras principais (em nível de concepção). | 10d | 2026-07-09 | 2026-07-22 | 1262 | 2026-06-25 | 2026-07-01 | 5d | 16d |  |
| 1268 | 3.10.4.1.3 | **LOD 300 - Consolidação e documentação de entrega** | 7d | 2026-08-14 | 2026-08-24 |  | 2026-07-09 | 2026-07-20 | 8d | 0d |  |
| 1269 | 3.10.4.1.3.1 | Indicação de níveis e cotas exatas. | 7d | 2026-08-14 | 2026-08-24 | 1266FS+16d, 1267 | 2026-07-09 | 2026-07-20 | 8d | 0d |  |
| 1270 | 3.10.4.1.3.2 | Quadro de cargas atualizado. | 7d | 2026-08-14 | 2026-08-24 | 1266FS+16d, 1267 | 2026-07-09 | 2026-07-20 | 8d | 0d |  |
| 1271 | 3.10.4.1.3.3 | Dimensionamento final de fundações conforme sondagem e cálculo estrutural. | 7d | 2026-08-14 | 2026-08-24 | 1266FS+16d, 1267 | 2026-07-09 | 2026-07-20 | 8d | 0d |  |
| 1272 | 3.10.4.1.3.4 | Definição final dos elementos da cobertura (treliças, vigas, chapas, purlins). | 7d | 2026-08-14 | 2026-08-24 | 1266FS+16d, 1267 | 2026-07-09 | 2026-07-20 | 8d | 0d |  |
| 1273 | 3.10.4.1.3.5 | Compatibilização final com arquitetura e instalações (aberturas, embutidos e passagens). | 7d | 2026-08-14 | 2026-08-24 | 1266FS+16d, 1267 | 2026-07-09 | 2026-07-20 | 8d | 0d |  |
| 1274 | 3.10.4.1.3.6 | Modelagem definitiva de pilares, vigas, lajes, blocos, sapatas e estacas. | 7d | 2026-08-14 | 2026-08-24 | 1266FS+16d, 1267 | 2026-07-09 | 2026-07-20 | 8d | 0d |  |
| 1275 | 3.10.4.1.3.7 | Planta estrutural com todos os elementos identificados. | 7d | 2026-08-14 | 2026-08-24 | 1266FS+16d, 1267 | 2026-07-09 | 2026-07-20 | 8d | 0d |  |
| 1276 | 3.10.4.1.3.8 | Memorial descritivo contendo: objetivos, justificativa, descrição do sistema, concepção de fundações/cobertura, especificações e quadro de cargas. | 7d | 2026-08-14 | 2026-08-24 | 1266FS+16d, 1267 | 2026-07-09 | 2026-07-20 | 8d | 0d |  |
| 1277 | 3.10.4.1.3.9 | Normas técnicas utilizadas (NBR 6118, 6120, 6122, 8800, etc.). | 7d | 2026-08-14 | 2026-08-24 | 1266FS+16d, 1267 | 2026-07-09 | 2026-07-20 | 8d | 0d |  |
| 1278 | 3.10.4.1.3.10 | Consolidar documentação de entrega e emissão formal da disciplina | 7d | 2026-08-14 | 2026-08-24 | 1266FS+16d, 1267 | 2026-07-09 | 2026-07-20 | 8d | 0d |  |
| 1279 | 3.10.4.1.4 | Aprovação de Conformidade | 3d | 2026-08-20 | 2026-08-24 | 1268FF | 2026-07-16 | 2026-07-20 | 0d | 0d |  |
| 1280 | 3.10.4.1.5 | Material para entrega ao contrato | 3d | 2026-08-20 | 2026-08-24 | 1268FF | 2026-07-16 | 2026-07-20 | 0d | 0d |  |

| ID | WBS | Task | Duration | Start | Finish | Predecessors | Complete | Remaining | Baseline start | Baseline finish | Baseline duration | Total slack | Free slack |
| --- | --- | --- | --- | --- | --- | --- | --- | --- | --- | --- | --- | --- | --- |
| 1281 | 3.11 | **007 - Skatepark Outdoor** | 74d | 2026-05-12 A | 2026-08-24 |  | 51% | 36.37d | 2026-05-12 | 2026-07-27 | 54d | 0d |  |
| 1282 | 3.11.1 | **Arquitetura** | 58d | 2026-05-12 A | 2026-07-31 |  | 65% | 20.19d | 2026-05-12 | 2026-07-27 | 54d | 16d |  |
| 1283 | 3.11.1.1 | **LOD 200 - ESTUDO PRELIMINAR** | 38d | 2026-05-12 A | 2026-07-03 |  | 90% | 3.8d | 2026-05-12 | 2026-07-03 | 38d | 36d |  |
| 1284 | 3.11.1.1.1 | Modelagem das paredes | 38d | 2026-05-12 A | 2026-07-03 | 81FS+8d | 90% | 3.8d | 2026-05-12 | 2026-07-03 | 38d | 36d |  |
| 1285 | 3.11.1.1.2 | Modelagem dos pisos | 38d | 2026-05-12 A | 2026-07-03 | 81FS+8d | 90% | 3.8d | 2026-05-12 | 2026-07-03 | 38d | 36d |  |
| 1286 | 3.11.1.1.3 | Inserção de portas | 38d | 2026-05-12 A | 2026-07-03 | 81FS+8d | 90% | 3.8d | 2026-05-12 | 2026-07-03 | 38d | 36d |  |
| 1287 | 3.11.1.1.4 | Inserção de janelas | 38d | 2026-05-12 A | 2026-07-03 | 81FS+8d | 90% | 3.8d | 2026-05-12 | 2026-07-03 | 38d | 36d |  |
| 1288 | 3.11.1.1.5 | Inserção de escada(s) | 38d | 2026-05-12 A | 2026-07-03 | 81FS+8d | 90% | 3.8d | 2026-05-12 | 2026-07-03 | 38d | 36d |  |
| 1289 | 3.11.1.1.6 | Inserção de elevador(es) | 38d | 2026-05-12 A | 2026-07-03 | 81FS+8d | 90% | 3.8d | 2026-05-12 | 2026-07-03 | 38d | 36d |  |
| 1290 | 3.11.1.1.7 | Inserção de layout | 38d | 2026-05-12 A | 2026-07-03 | 81FS+8d | 90% | 3.8d | 2026-05-12 | 2026-07-03 | 38d | 36d |  |
| 1291 | 3.11.1.1.8 | Identificação dos ambientes | 38d | 2026-05-12 A | 2026-07-03 | 81FS+8d | 90% | 3.8d | 2026-05-12 | 2026-07-03 | 38d | 36d |  |
| 1292 | 3.11.1.1.9 | Espaços de circulação | 38d | 2026-05-12 A | 2026-07-03 | 81FS+8d | 90% | 3.8d | 2026-05-12 | 2026-07-03 | 38d | 36d |  |
| 1293 | 3.11.1.1.10 | Áreas de serviços, funcionais e técnicas | 38d | 2026-05-12 A | 2026-07-03 | 81FS+8d | 90% | 3.8d | 2026-05-12 | 2026-07-03 | 38d | 36d |  |
| 1294 | 3.11.1.1.11 | Projeção de níveis superiores e da cobertura | 38d | 2026-05-12 A | 2026-07-03 | 81FS+8d | 90% | 3.8d | 2026-05-12 | 2026-07-03 | 38d | 36d |  |
| 1295 | 3.11.1.1.12 | Cotas de nível principais | 38d | 2026-05-12 A | 2026-07-03 | 81FS+8d | 90% | 3.8d | 2026-05-12 | 2026-07-03 | 38d | 36d | 0d |
| 1296 | 3.11.1.1.13 | Relatório/Memorial de Projeto Preliminar | 38d | 2026-05-12 A | 2026-07-03 | 81FS+8d | 90% | 3.8d | 2026-05-12 | 2026-07-03 | 38d | 16d | 0d |
| 1297 | 3.11.1.2 | **LOD 300 - ANTEPROJETO** | 20d | 2026-07-06 | 2026-07-31 |  |  |  | 2026-07-06 | 2026-07-27 | 16d | 16d | 0d |
| 1298 | 3.11.1.2.1 | **Situação** | 4d | 2026-07-06 | 2026-07-09 |  |  |  | 2026-07-06 | 2026-07-07 | 2d | 16d |  |
| 1299 | 3.11.1.2.1.1 | Indicar simbologias de representação gráfica, conforme NBR 6492:2021; | 4d | 2026-07-06 | 2026-07-09 | 1296 |  |  | 2026-07-06 | 2026-07-07 | 2d | 32d |  |
| 1300 | 3.11.1.2.1.2 | Indicação Norte | 4d | 2026-07-06 | 2026-07-09 | 1296 |  |  | 2026-07-06 | 2026-07-07 | 2d | 32d |  |
| 1301 | 3.11.1.2.1.3 | Analisar, adicionar e fechar - Curvas de nível existentes e projetadas (conforme projetos de topografia e sondagem recebidos); | 4d | 2026-07-06 | 2026-07-09 | 1296 |  |  | 2026-07-06 | 2026-07-07 | 2d | 32d |  |
| 1302 | 3.11.1.2.1.4 | Indicação de Escala; | 4d | 2026-07-06 | 2026-07-09 | 1296 |  |  | 2026-07-06 | 2026-07-07 | 2d | 32d |  |
| 1303 | 3.11.1.2.1.5 | Vias de acesso ao conjunto, arruamento, logradouros adjacentes e calçadas com os respectivos equipamentos urbanos; | 4d | 2026-07-06 | 2026-07-09 | 1296 |  |  | 2026-07-06 | 2026-07-07 | 2d | 32d |  |
| 1304 | 3.11.1.2.1.6 | Platôs e taludes principais; | 4d | 2026-07-06 | 2026-07-09 | 1296 |  |  | 2026-07-06 | 2026-07-07 | 2d | 32d |  |
| 1305 | 3.11.1.2.1.7 | Perímetro do terreno, recuos e afastamentos; | 4d | 2026-07-06 | 2026-07-09 | 1296 |  |  | 2026-07-06 | 2026-07-07 | 2d | 32d |  |
| 1306 | 3.11.1.2.1.8 | Indicação das áreas a serem edificadas com o contorno da cobertura das edificações, estacionamentos e áreas permeáveis/impermeáveis; | 4d | 2026-07-06 | 2026-07-09 | 1296 |  |  | 2026-07-06 | 2026-07-07 | 2d | 32d |  |
| 1307 | 3.11.1.2.1.9 | Denominação das edificações, blocos ou espaços; | 4d | 2026-07-06 | 2026-07-09 | 1296 |  |  | 2026-07-06 | 2026-07-07 | 2d | 32d |  |
| 1308 | 3.11.1.2.1.10 | Cotas gerais | 4d | 2026-07-06 | 2026-07-09 | 1296 |  |  | 2026-07-06 | 2026-07-07 | 2d | 32d |  |
| 1309 | 3.11.1.2.1.11 | Cotas de nível principal. | 4d | 2026-07-06 | 2026-07-09 | 1296 |  |  | 2026-07-06 | 2026-07-07 | 2d | 32d |  |
| 1310 | 3.11.1.2.1.12 | Quadros de áreas | 4d | 2026-07-06 | 2026-07-09 | 1296 |  |  | 2026-07-06 | 2026-07-07 | 2d | 32d |  |
| 1311 | 3.11.1.2.1.13 | Relatório | 4d | 2026-07-06 | 2026-07-09 | 1296 |  |  | 2026-07-06 | 2026-07-07 | 2d | 16d | 0d |
| 1312 | 3.11.1.2.2 | Planta com as cotas de nível projetadas e existentes | 4d | 2026-07-10 | 2026-07-15 | 1311 |  |  | 2026-07-08 | 2026-07-09 | 2d | 16d | 0d |

| ID | WBS | Task | Duration | Start | Finish | Predecessors | Baseline start | Baseline finish | Baseline duration | Total slack | Free slack |
| --- | --- | --- | --- | --- | --- | --- | --- | --- | --- | --- | --- |
| 1313 | 3.11.1.2.3 | **Plantas baixas (se tiver mais de um pavimento, duplicar bloco)** | 2d | 2026-07-16 | 2026-07-17 |  | 2026-07-10 | 2026-07-13 | 2d | 16d |  |
| 1314 | 3.11.1.2.3.1 | Indicar simbologias de representação gráfica, conforme NBR 6492:2021; | 2d | 2026-07-16 | 2026-07-17 | 1312 | 2026-07-10 | 2026-07-13 | 2d | 26d |  |
| 1315 | 3.11.1.2.3.2 | Compatibilização (verificar se está tudo conforme as normas e alinhar com o restante das disciplinas de engenharia) | 2d | 2026-07-16 | 2026-07-17 | 1312 | 2026-07-10 | 2026-07-13 | 2d | 26d |  |
| 1316 | 3.11.1.2.3.3 | Compatibilização (deixar tudo conforme padrão Quanta) | 2d | 2026-07-16 | 2026-07-17 | 1312 | 2026-07-10 | 2026-07-13 | 2d | 26d |  |
| 1317 | 3.11.1.2.3.4 | Indicação de Norte; | 2d | 2026-07-16 | 2026-07-17 | 1312 | 2026-07-10 | 2026-07-13 | 2d | 26d |  |
| 1318 | 3.11.1.2.3.5 | Indicação de Escala; | 2d | 2026-07-16 | 2026-07-17 | 1312 | 2026-07-10 | 2026-07-13 | 2d | 26d |  |
| 1319 | 3.11.1.2.3.6 | Indicação de Acessos; | 2d | 2026-07-16 | 2026-07-17 | 1312 | 2026-07-10 | 2026-07-13 | 2d | 26d |  |
| 1320 | 3.11.1.2.3.7 | Elementos de vedação internos e externos; | 2d | 2026-07-16 | 2026-07-17 | 1312 | 2026-07-10 | 2026-07-13 | 2d | 26d |  |
| 1321 | 3.11.1.2.3.8 | Esquadrias; | 2d | 2026-07-16 | 2026-07-17 | 1312 | 2026-07-10 | 2026-07-13 | 2d | 26d |  |
| 1322 | 3.11.1.2.3.9 | Elementos estruturais principais; | 2d | 2026-07-16 | 2026-07-17 | 1312 | 2026-07-10 | 2026-07-13 | 2d | 26d |  |
| 1323 | 3.11.1.2.3.10 | Identificação dos ambientes e espaços (internos e externos); | 2d | 2026-07-16 | 2026-07-17 | 1312 | 2026-07-10 | 2026-07-13 | 2d | 26d |  |
| 1324 | 3.11.1.2.3.11 | Espaços de circulação internos e externos; | 2d | 2026-07-16 | 2026-07-17 | 1312 | 2026-07-10 | 2026-07-13 | 2d | 26d |  |
| 1325 | 3.11.1.2.3.12 | Áreas de serviço, funcionais e técnicas (internos e externos); | 2d | 2026-07-16 | 2026-07-17 | 1312 | 2026-07-10 | 2026-07-13 | 2d | 26d |  |
| 1326 | 3.11.1.2.3.13 | Projeções de níveis superiores; | 2d | 2026-07-16 | 2026-07-17 | 1312 | 2026-07-10 | 2026-07-13 | 2d | 26d |  |
| 1327 | 3.11.1.2.3.14 | Cotas gerais | 2d | 2026-07-16 | 2026-07-17 | 1312 | 2026-07-10 | 2026-07-13 | 2d | 26d |  |
| 1328 | 3.11.1.2.3.15 | Cotas de nível principal. | 2d | 2026-07-16 | 2026-07-17 | 1312 | 2026-07-10 | 2026-07-13 | 2d | 26d |  |
| 1329 | 3.11.1.2.3.16 | Tabelas de paredes, pisos, esquadrias e plantas | 2d | 2026-07-16 | 2026-07-17 | 1312 | 2026-07-10 | 2026-07-13 | 2d | 26d |  |
| 1330 | 3.11.1.2.3.17 | Quadro de áreas | 2d | 2026-07-16 | 2026-07-17 | 1312 | 2026-07-10 | 2026-07-13 | 2d | 16d | 0d |
| 1331 | 3.11.1.2.3.18 | Relatório | 2d | 2026-07-16 | 2026-07-17 | 1312 | 2026-07-10 | 2026-07-13 | 2d | 26d |  |
| 1332 | 3.11.1.2.4 | **Planta das coberturas** | 2d | 2026-07-20 | 2026-07-21 |  | 2026-07-14 | 2026-07-15 | 2d | 16d |  |
| 1333 | 3.11.1.2.4.1 | Indicação do Norte | 2d | 2026-07-20 | 2026-07-21 | 1330 | 2026-07-14 | 2026-07-15 | 2d | 24d |  |
| 1334 | 3.11.1.2.4.2 | Indicação de escala | 2d | 2026-07-20 | 2026-07-21 | 1330 | 2026-07-14 | 2026-07-15 | 2d | 24d |  |
| 1335 | 3.11.1.2.4.3 | Curvas de nível | 2d | 2026-07-20 | 2026-07-21 | 1330 | 2026-07-14 | 2026-07-15 | 2d | 24d |  |
| 1336 | 3.11.1.2.4.4 | Indicação de Acessos; | 2d | 2026-07-20 | 2026-07-21 | 1330 | 2026-07-14 | 2026-07-15 | 2d | 24d |  |
| 1337 | 3.11.1.2.4.5 | Estacionamento e áreas cobertas | 2d | 2026-07-20 | 2026-07-21 | 1330 | 2026-07-14 | 2026-07-15 | 2d | 24d |  |
| 1338 | 3.11.1.2.4.6 | Cobertura das edificações | 2d | 2026-07-20 | 2026-07-21 | 1330 | 2026-07-14 | 2026-07-15 | 2d | 24d |  |
| 1339 | 3.11.1.2.4.7 | Sentido de escoamento das águas pluviais e inclinação | 2d | 2026-07-20 | 2026-07-21 | 1330 | 2026-07-14 | 2026-07-15 | 2d | 24d |  |
| 1340 | 3.11.1.2.4.8 | Cotas gerais | 2d | 2026-07-20 | 2026-07-21 | 1330 | 2026-07-14 | 2026-07-15 | 2d | 24d |  |
| 1341 | 3.11.1.2.4.9 | Cotas de nível principal | 2d | 2026-07-20 | 2026-07-21 | 1330 | 2026-07-14 | 2026-07-15 | 2d | 16d | 0d |
| 1342 | 3.11.1.2.4.10 | Relatório | 2d | 2026-07-20 | 2026-07-21 | 1330 | 2026-07-14 | 2026-07-15 | 2d | 24d |  |

| ID | WBS | Task | Duration | Start | Finish | Predecessors | Baseline start | Baseline finish | Baseline duration | Total slack | Free slack |
| --- | --- | --- | --- | --- | --- | --- | --- | --- | --- | --- | --- |
| 1343 | 3.11.1.2.5 | **Cortes longitudinais** | 2d | 2026-07-22 | 2026-07-23 |  | 2026-07-16 | 2026-07-17 | 2d | 16d |  |
| 1344 | 3.11.1.2.5.1 | Indicar simbologias de representação gráfica, conforme NBR 6492:2021; | 2d | 2026-07-22 | 2026-07-23 | 1341 | 2026-07-16 | 2026-07-17 | 2d | 22d |  |
| 1345 | 3.11.1.2.5.2 | Indicação de Escala; | 2d | 2026-07-22 | 2026-07-23 | 1341 | 2026-07-16 | 2026-07-17 | 2d | 22d |  |
| 1346 | 3.11.1.2.5.3 | Elementos estruturais principais; | 2d | 2026-07-22 | 2026-07-23 | 1341 | 2026-07-16 | 2026-07-17 | 2d | 22d |  |
| 1347 | 3.11.1.2.5.4 | Elementos de vedação internos e externos; | 2d | 2026-07-22 | 2026-07-23 | 1341 | 2026-07-16 | 2026-07-17 | 2d | 22d |  |
| 1348 | 3.11.1.2.5.5 | Esquadrias; | 2d | 2026-07-22 | 2026-07-23 | 1341 | 2026-07-16 | 2026-07-17 | 2d | 22d |  |
| 1349 | 3.11.1.2.5.6 | Identificação dos ambientes; | 2d | 2026-07-22 | 2026-07-23 | 1341 | 2026-07-16 | 2026-07-17 | 2d | 22d |  |
| 1350 | 3.11.1.2.5.7 | Cobertura com indicação da respectiva inclinação; | 2d | 2026-07-22 | 2026-07-23 | 1341 | 2026-07-16 | 2026-07-17 | 2d | 22d |  |
| 1351 | 3.11.1.2.5.8 | Cotas gerais; | 2d | 2026-07-22 | 2026-07-23 | 1341 | 2026-07-16 | 2026-07-17 | 2d | 22d |  |
| 1352 | 3.11.1.2.5.9 | Cotas de nível principal; | 2d | 2026-07-22 | 2026-07-23 | 1341 | 2026-07-16 | 2026-07-17 | 2d | 22d |  |
| 1353 | 3.11.1.2.5.10 | Eixos do projeto; | 2d | 2026-07-22 | 2026-07-23 | 1341 | 2026-07-16 | 2026-07-17 | 2d | 22d |  |
| 1354 | 3.11.1.2.5.11 | Relevo construído; | 2d | 2026-07-22 | 2026-07-23 | 1341 | 2026-07-16 | 2026-07-17 | 2d | 22d |  |
| 1355 | 3.11.1.2.5.12 | Projeção da topografia natural. | 2d | 2026-07-22 | 2026-07-23 | 1341 | 2026-07-16 | 2026-07-17 | 2d | 16d | 0d |
| 1356 | 3.11.1.2.5.13 | Relatório | 2d | 2026-07-22 | 2026-07-23 | 1341 | 2026-07-16 | 2026-07-17 | 2d | 22d |  |
| 1357 | 3.11.1.2.6 | **Cortes transversais** | 2d | 2026-07-24 | 2026-07-27 |  | 2026-07-20 | 2026-07-21 | 2d | 16d |  |
| 1358 | 3.11.1.2.6.1 | Indicar simbologias de representação gráfica, conforme NBR 6492:2021; | 2d | 2026-07-24 | 2026-07-27 | 1355 | 2026-07-20 | 2026-07-21 | 2d | 20d |  |
| 1359 | 3.11.1.2.6.2 | Indicação de Escala; | 2d | 2026-07-24 | 2026-07-27 | 1355 | 2026-07-20 | 2026-07-21 | 2d | 20d |  |
| 1360 | 3.11.1.2.6.3 | Elementos estruturais principais; | 2d | 2026-07-24 | 2026-07-27 | 1355 | 2026-07-20 | 2026-07-21 | 2d | 20d |  |
| 1361 | 3.11.1.2.6.4 | Elementos de vedação internos e externos; | 2d | 2026-07-24 | 2026-07-27 | 1355 | 2026-07-20 | 2026-07-21 | 2d | 20d |  |
| 1362 | 3.11.1.2.6.5 | Esquadrias; | 2d | 2026-07-24 | 2026-07-27 | 1355 | 2026-07-20 | 2026-07-21 | 2d | 20d |  |
| 1363 | 3.11.1.2.6.6 | Identificação dos ambientes; | 2d | 2026-07-24 | 2026-07-27 | 1355 | 2026-07-20 | 2026-07-21 | 2d | 20d |  |
| 1364 | 3.11.1.2.6.7 | Cobertura com indicação da respectiva inclinação; | 2d | 2026-07-24 | 2026-07-27 | 1355 | 2026-07-20 | 2026-07-21 | 2d | 20d |  |
| 1365 | 3.11.1.2.6.8 | Cotas gerais; | 2d | 2026-07-24 | 2026-07-27 | 1355 | 2026-07-20 | 2026-07-21 | 2d | 20d |  |
| 1366 | 3.11.1.2.6.9 | Cotas de nível principal; | 2d | 2026-07-24 | 2026-07-27 | 1355 | 2026-07-20 | 2026-07-21 | 2d | 20d |  |
| 1367 | 3.11.1.2.6.10 | Eixos do projeto; | 2d | 2026-07-24 | 2026-07-27 | 1355 | 2026-07-20 | 2026-07-21 | 2d | 20d |  |
| 1368 | 3.11.1.2.6.11 | Relevo construído; | 2d | 2026-07-24 | 2026-07-27 | 1355 | 2026-07-20 | 2026-07-21 | 2d | 20d |  |
| 1369 | 3.11.1.2.6.12 | Projeção da topografia natural | 2d | 2026-07-24 | 2026-07-27 | 1355 | 2026-07-20 | 2026-07-21 | 2d | 16d | 0d |
| 1370 | 3.11.1.2.6.13 | Relatório | 2d | 2026-07-24 | 2026-07-27 | 1355 | 2026-07-20 | 2026-07-21 | 2d | 20d |  |

| ID | WBS | Task | Duration | Start | Finish | Predecessors | Complete | Remaining | Baseline start | Baseline finish | Baseline duration | Total slack | Free slack |
| --- | --- | --- | --- | --- | --- | --- | --- | --- | --- | --- | --- | --- | --- |
| 1371 | 3.11.1.2.7 | **Elevações** | 2d | 2026-07-28 | 2026-07-29 |  |  |  | 2026-07-22 | 2026-07-23 | 2d | 16d |  |
| 1372 | 3.11.1.2.7.1 | Indicar simbologias de representação gráfica, conforme NBR 6492:2021; | 2d | 2026-07-28 | 2026-07-29 | 1369 |  |  | 2026-07-22 | 2026-07-23 | 2d | 18d |  |
| 1373 | 3.11.1.2.7.2 | Indicação de Escala; | 2d | 2026-07-28 | 2026-07-29 | 1369 |  |  | 2026-07-22 | 2026-07-23 | 2d | 18d |  |
| 1374 | 3.11.1.2.7.3 | Elementos estruturais principais; | 2d | 2026-07-28 | 2026-07-29 | 1369 |  |  | 2026-07-22 | 2026-07-23 | 2d | 18d |  |
| 1375 | 3.11.1.2.7.4 | Elementos de vedação internos e externos; | 2d | 2026-07-28 | 2026-07-29 | 1369 |  |  | 2026-07-22 | 2026-07-23 | 2d | 18d |  |
| 1376 | 3.11.1.2.7.5 | Esquadrias; | 2d | 2026-07-28 | 2026-07-29 | 1369 |  |  | 2026-07-22 | 2026-07-23 | 2d | 18d |  |
| 1377 | 3.11.1.2.7.6 | Relevo construído; | 2d | 2026-07-28 | 2026-07-29 | 1369 |  |  | 2026-07-22 | 2026-07-23 | 2d | 18d |  |
| 1378 | 3.11.1.2.7.7 | Cotas gerais; | 2d | 2026-07-28 | 2026-07-29 | 1369 |  |  | 2026-07-22 | 2026-07-23 | 2d | 18d |  |
| 1379 | 3.11.1.2.7.8 | Cotas de nível principais; | 2d | 2026-07-28 | 2026-07-29 | 1369 |  |  | 2026-07-22 | 2026-07-23 | 2d | 18d |  |
| 1380 | 3.11.1.2.7.9 | Cobertura (quando aparente). | 2d | 2026-07-28 | 2026-07-29 | 1369 |  |  | 2026-07-22 | 2026-07-23 | 2d | 16d | 0d |
| 1381 | 3.11.1.2.8 | **Memorial Descritivo** | 2d | 2026-07-30 | 2026-07-31 |  |  |  | 2026-07-24 | 2026-07-27 | 2d | 16d |  |
| 1382 | 3.11.1.2.8.1 | Descrição dos elementos da edificação | 2d | 2026-07-30 | 2026-07-31 | 1380 |  |  | 2026-07-24 | 2026-07-27 | 2d | 16d |  |
| 1383 | 3.11.1.2.8.2 | Descrição dos componentes construtivos e materiais de construção | 2d | 2026-07-30 | 2026-07-31 | 1380 |  |  | 2026-07-24 | 2026-07-27 | 2d | 16d |  |
| 1384 | 3.11.1.2.8.3 | Lista de pranchas anexas e documentos | 2d | 2026-07-30 | 2026-07-31 | 1380 |  |  | 2026-07-24 | 2026-07-27 | 2d | 16d |  |
| 1385 | 3.11.2 | Aprovação de Conformidade | 3d | 2026-07-29 | 2026-07-31 | 1297FF |  |  | 2026-07-23 | 2026-07-27 | 0d | 16d |  |
| 1386 | 3.11.3 | Material para entrega ao contrato | 3d | 2026-07-29 | 2026-07-31 | 1297FF |  |  | 2026-07-23 | 2026-07-27 | 0d | 16d |  |
| 1387 | 3.11.4 | **Engenharia** | 60d | 2026-06-01 A | 2026-08-24 |  | 5% | 57.22d | 2026-06-01 | 2026-07-24 | 39d | 0d |  |
| 1388 | 3.11.4.1 | **Estrutura Pista** | 60d | 2026-06-01 A | 2026-08-24 |  | 5% | 57.22d | 2026-06-01 | 2026-07-20 | 35d | 0d |  |
| 1389 | 3.11.4.1.1 | **LOD 100 — Premissas, diretrizes e interfaces** | 7d | 2026-06-01 A | 2026-06-10 |  | 50% | 3.5d | 2026-06-01 | 2026-06-10 | 7d | 53d |  |
| 1390 | 3.11.4.1.1.1 | Levantamento de tipos de cargas globais estimadas (permanentes, acidentais, vento e especiais). | 2d | 2026-06-01 A | 2026-06-02 A | 1295SS+14d | 100% |  | 2026-06-01 | 2026-06-02 | 2d |  |  |
| 1391 | 3.11.4.1.1.2 | Estudo volumétrico com modulação inicial de pilares, vigas e lajes. Entendendo vãos e desafios | 5d | 2026-06-01 A | 2026-06-08 | 1295SS+14d | 63% | 1.83d | 2026-06-01 | 2026-06-08 | 5d | 55d |  |
| 1392 | 3.11.4.1.1.3 | Localização aproximada de elementos estruturais principais. Avaliando vãos e estudando posições | 2d | 2026-06-01 A | 2026-06-02 A | 1295SS+14d | 100% |  | 2026-06-01 | 2026-06-02 | 2d |  |  |
| 1393 | 3.11.4.1.1.4 | Estudo de viabilidade técnica e construtiva. | 3d | 2026-06-03 A | 2026-06-08 | 1392 | 39% | 1.83d | 2026-06-03 | 2026-06-08 | 3d | 0d |  |
| 1394 | 3.11.4.1.1.5 | Definição preliminar do sistema estrutural (concreto armado, metálica ou mista). | 3d | 2026-06-03 A | 2026-06-08 | 1392 | 39% | 1.83d | 2026-06-03 | 2026-06-08 | 3d | 55d |  |
| 1395 | 3.11.4.1.1.6 | Estimativa preliminar de tipologias de fundações (sapatas, blocos, estacas). | 2d | 2026-06-09 | 2026-06-10 | 1393 |  |  | 2026-06-09 | 2026-06-10 | 2d | 53d |  |
| 1396 | 3.11.4.1.1.7 | Previsão de áreas técnicas, casas de máquinas, reservatórios elevados e estrutura de cobertura. | 2d | 2026-06-09 | 2026-06-10 | 1393 |  |  | 2026-06-09 | 2026-06-10 | 2d | 0d |  |

| ID | WBS | Task | Duration | Start | Finish | Predecessors | Baseline start | Baseline finish | Baseline duration | Total slack | Free slack |
| --- | --- | --- | --- | --- | --- | --- | --- | --- | --- | --- | --- |
| 1397 | 3.11.4.1.2 | **LOD 200 — Validação interdisciplinar e solução preliminar** | 30d | 2026-06-11 | 2026-07-22 |  | 2026-06-11 | 2026-07-08 | 20d | 0d |  |
| 1398 | 3.11.4.1.2.1 | Lista preliminar de cargas e ações para dimensionamento. | 10d | 2026-06-11 | 2026-06-24 | 1396 | 2026-06-11 | 2026-06-17 | 5d | 0d |  |
| 1399 | 3.11.4.1.2.2 | Definição preliminar de alturas de pavimentos e níveis de fundação. | 10d | 2026-06-11 | 2026-06-24 | 1396 | 2026-06-11 | 2026-06-17 | 5d | 43d |  |
| 1400 | 3.11.4.1.2.3 | Indicação aproximada do sistema de cobertura (tesouras, treliças, vigamento metálico ou concreto). | 10d | 2026-06-11 | 2026-06-24 | 1396 | 2026-06-11 | 2026-06-17 | 5d | 43d |  |
| 1401 | 3.11.4.1.2.4 | Modelagem genérica de pilares, vigas, lajes e fundações. | 10d | 2026-06-25 | 2026-07-08 | 1398 | 2026-06-18 | 2026-06-24 | 5d | 33d |  |
| 1402 | 3.11.4.1.2.5 | Traçado preliminar de elementos especiais (escadas, rampas estruturais, reservatórios). | 10d | 2026-06-25 | 2026-07-08 | 1398 | 2026-06-18 | 2026-06-24 | 5d | 23d | 0d |
| 1403 | 3.11.4.1.2.6 | Arquivo IFC, plantas de forma e planta de locação | 10d | 2026-06-25 | 2026-07-08 | 1398 | 2026-06-18 | 2026-06-24 | 5d | 0d |  |
| 1404 | 3.11.4.1.2.7 | Inserção de fundações com tipologia e dimensões preliminares. | 10d | 2026-07-09 | 2026-07-22 | 1402 | 2026-06-25 | 2026-07-01 | 5d | 23d |  |
| 1405 | 3.11.4.1.2.8 | Compatibilização inicial com arquitetura e demais disciplinas. | 10d | 2026-07-09 | 2026-07-22 | 1403 | 2026-06-25 | 2026-07-01 | 5d | 23d |  |
| 1406 | 3.11.4.1.2.9 | Indicação de passagens de infraestrutura (shafts, aberturas em lajes e vigas). | 10d | 2026-07-09 | 2026-07-22 | 1403 | 2026-06-25 | 2026-07-01 | 5d | 23d |  |
| 1407 | 3.11.4.1.2.10 | Modelagem assertiva de elementos principais com dimensões aproximadas (largura, altura, espessura). | 10d | 2026-07-09 | 2026-07-22 | 1403 | 2026-06-25 | 2026-07-08 | 10d | 0d |  |
| 1408 | 3.11.4.1.2.11 | Modelagem estimada de armaduras principais (em nível de concepção). | 10d | 2026-07-09 | 2026-07-22 | 1403 | 2026-06-25 | 2026-07-01 | 5d | 16d |  |
| 1409 | 3.11.4.1.3 | **LOD 300 - Consolidação e documentação de entrega** | 7d | 2026-08-14 | 2026-08-24 |  | 2026-07-09 | 2026-07-20 | 8d | 0d |  |
| 1410 | 3.11.4.1.3.1 | Indicação de níveis e cotas exatas. | 7d | 2026-08-14 | 2026-08-24 | 1407FS+16d, 1408 | 2026-07-09 | 2026-07-20 | 8d | 0d |  |
| 1411 | 3.11.4.1.3.2 | Quadro de cargas atualizado. | 7d | 2026-08-14 | 2026-08-24 | 1407FS+16d, 1408 | 2026-07-09 | 2026-07-20 | 8d | 0d |  |
| 1412 | 3.11.4.1.3.3 | Dimensionamento final de fundações conforme sondagem e cálculo estrutural. | 7d | 2026-08-14 | 2026-08-24 | 1407FS+16d, 1408 | 2026-07-09 | 2026-07-20 | 8d | 0d |  |
| 1413 | 3.11.4.1.3.4 | Definição final dos elementos da cobertura (treliças, vigas, chapas, purlins). | 7d | 2026-08-14 | 2026-08-24 | 1407FS+16d, 1408 | 2026-07-09 | 2026-07-20 | 8d | 0d |  |
| 1414 | 3.11.4.1.3.5 | Compatibilização final com arquitetura e instalações (aberturas, embutidos e passagens). | 7d | 2026-08-14 | 2026-08-24 | 1407FS+16d, 1408 | 2026-07-09 | 2026-07-20 | 8d | 0d |  |
| 1415 | 3.11.4.1.3.6 | Modelagem definitiva de pilares, vigas, lajes, blocos, sapatas e estacas. | 7d | 2026-08-14 | 2026-08-24 | 1407FS+16d, 1408 | 2026-07-09 | 2026-07-20 | 8d | 0d |  |
| 1416 | 3.11.4.1.3.7 | Planta estrutural com todos os elementos identificados. | 7d | 2026-08-14 | 2026-08-24 | 1407FS+16d, 1408 | 2026-07-09 | 2026-07-20 | 8d | 0d |  |
| 1417 | 3.11.4.1.3.8 | Memorial descritivo contendo: objetivos, justificativa, descrição do sistema, concepção de fundações/cobertura, especificações e quadro de cargas. | 7d | 2026-08-14 | 2026-08-24 | 1407FS+16d, 1408 | 2026-07-09 | 2026-07-20 | 8d | 0d |  |
| 1418 | 3.11.4.1.3.9 | Normas técnicas utilizadas (NBR 6118, 6120, 6122, 8800, etc.). | 7d | 2026-08-14 | 2026-08-24 | 1407FS+16d, 1408 | 2026-07-09 | 2026-07-20 | 8d | 0d |  |
| 1419 | 3.11.4.1.3.10 | Consolidar documentação de entrega e emissão formal da disciplina | 7d | 2026-08-14 | 2026-08-24 | 1407FS+16d, 1408 | 2026-07-09 | 2026-07-20 | 8d | 0d |  |
| 1420 | 3.11.4.1.4 | Aprovação de Conformidade | 3d | 2026-08-20 | 2026-08-24 | 1409FF | 2026-07-16 | 2026-07-20 | 0d | 0d |  |
| 1421 | 3.11.4.1.5 | Material para entrega ao contrato | 3d | 2026-08-20 | 2026-08-24 | 1409FF | 2026-07-16 | 2026-07-20 | 0d | 0d |  |

| ID | WBS | Task | Duration | Start | Finish | Predecessors | Complete | Remaining | Baseline start | Baseline finish | Baseline duration | Total slack | Free slack |
| --- | --- | --- | --- | --- | --- | --- | --- | --- | --- | --- | --- | --- | --- |
| 1422 | 3.12 | **008 - Alojamento** | 74d | 2026-05-12 A | 2026-08-24 |  | 41% | 43.34d | 2026-05-12 | 2026-07-27 | 0d | 0d |  |
| 1423 | 3.12.1 | **Arquitetura** | 58d | 2026-05-12 A | 2026-07-31 |  | 52% | 27.95d | 2026-05-12 | 2026-07-27 | 54d | 16d |  |
| 1424 | 3.12.1.1 | **LOD 200 - ESTUDO PRELIMINAR** | 32d | 2026-05-12 A | 2026-06-25 A |  | 100% |  | 2026-05-12 | 2026-07-03 | 38d |  |  |
| 1425 | 3.12.1.1.1 | Modelagem das paredes | 32d | 2026-05-12 A | 2026-06-25 A | 81FS+8d | 100% |  | 2026-05-12 | 2026-07-03 | 38d |  |  |
| 1426 | 3.12.1.1.2 | Modelagem dos pisos | 26d | 2026-05-12 A | 2026-06-17 A | 81FS+8d | 100% |  | 2026-05-12 | 2026-07-03 | 38d |  |  |
| 1427 | 3.12.1.1.3 | Inserção de portas | 26d | 2026-05-12 A | 2026-06-17 A | 81FS+8d | 100% |  | 2026-05-12 | 2026-07-03 | 38d |  |  |
| 1428 | 3.12.1.1.4 | Inserção de janelas | 26d | 2026-05-12 A | 2026-06-17 A | 81FS+8d | 100% |  | 2026-05-12 | 2026-07-03 | 38d |  |  |
| 1429 | 3.12.1.1.5 | Inserção de escada(s) | 26d | 2026-05-12 A | 2026-06-17 A | 81FS+8d | 100% |  | 2026-05-12 | 2026-07-03 | 38d |  |  |
| 1430 | 3.12.1.1.6 | Inserção de elevador(es) | 26d | 2026-05-12 A | 2026-06-17 A | 81FS+8d | 100% |  | 2026-05-12 | 2026-07-03 | 38d |  |  |
| 1431 | 3.12.1.1.7 | Inserção de layout | 26d | 2026-05-12 A | 2026-06-17 A | 81FS+8d | 100% |  | 2026-05-12 | 2026-07-03 | 38d |  |  |
| 1432 | 3.12.1.1.8 | Identificação dos ambientes | 26d | 2026-05-12 A | 2026-06-17 A | 81FS+8d | 100% |  | 2026-05-12 | 2026-07-03 | 38d |  |  |
| 1433 | 3.12.1.1.9 | Espaços de circulação | 26d | 2026-05-12 A | 2026-06-17 A | 81FS+8d | 100% |  | 2026-05-12 | 2026-07-03 | 38d |  |  |
| 1434 | 3.12.1.1.10 | Áreas de serviços, funcionais e técnicas | 26d | 2026-05-12 A | 2026-06-17 A | 81FS+8d | 100% |  | 2026-05-12 | 2026-07-03 | 38d |  |  |
| 1435 | 3.12.1.1.11 | Projeção de níveis superiores e da cobertura | 26d | 2026-05-12 A | 2026-06-17 A | 81FS+8d | 100% |  | 2026-05-12 | 2026-07-03 | 38d |  |  |
| 1436 | 3.12.1.1.12 | Cotas de nível principais | 26d | 2026-05-12 A | 2026-06-17 A | 81FS+8d | 100% |  | 2026-05-12 | 2026-07-03 | 38d |  |  |
| 1437 | 3.12.1.1.13 | Relatório/Memorial de Projeto Preliminar | 26d | 2026-05-12 A | 2026-06-17 A | 81FS+8d | 100% |  | 2026-05-12 | 2026-07-03 | 38d |  |  |
| 1438 | 3.12.1.2 | **LOD 300 - ANTEPROJETO** | 32d | 2026-06-18 | 2026-07-31 |  |  |  | 2026-07-06 | 2026-07-27 | 16d | 16d | 0d |
| 1439 | 3.12.1.2.1 | **Situação** | 4d | 2026-06-18 | 2026-06-23 |  |  |  | 2026-07-06 | 2026-07-07 | 2d | 16d |  |
| 1440 | 3.12.1.2.1.1 | Indicar simbologias de representação gráfica, conforme NBR 6492:2021; | 4d | 2026-06-18 | 2026-06-23 | 1437 |  |  | 2026-07-06 | 2026-07-07 | 2d | 44d |  |
| 1441 | 3.12.1.2.1.2 | Indicação Norte | 4d | 2026-06-18 | 2026-06-23 | 1437 |  |  | 2026-07-06 | 2026-07-07 | 2d | 44d |  |
| 1442 | 3.12.1.2.1.3 | Analisar, adicionar e fechar - Curvas de nível existentes e projetadas (conforme projetos de topografia e sondagem recebidos); | 4d | 2026-06-18 | 2026-06-23 | 1437 |  |  | 2026-07-06 | 2026-07-07 | 2d | 44d |  |
| 1443 | 3.12.1.2.1.4 | Indicação de Escala; | 4d | 2026-06-18 | 2026-06-23 | 1437 |  |  | 2026-07-06 | 2026-07-07 | 2d | 44d |  |
| 1444 | 3.12.1.2.1.5 | Vias de acesso ao conjunto, arruamento, logradouros adjacentes e calçadas com os respectivos equipamentos urbanos; | 4d | 2026-06-18 | 2026-06-23 | 1437 |  |  | 2026-07-06 | 2026-07-07 | 2d | 44d |  |
| 1445 | 3.12.1.2.1.6 | Platôs e taludes principais; | 4d | 2026-06-18 | 2026-06-23 | 1437 |  |  | 2026-07-06 | 2026-07-07 | 2d | 44d |  |
| 1446 | 3.12.1.2.1.7 | Perímetro do terreno, recuos e afastamentos; | 4d | 2026-06-18 | 2026-06-23 | 1437 |  |  | 2026-07-06 | 2026-07-07 | 2d | 44d |  |
| 1447 | 3.12.1.2.1.8 | Indicação das áreas a serem edificadas com o contorno da cobertura das edificações, estacionamentos e áreas permeáveis/impermeáveis; | 4d | 2026-06-18 | 2026-06-23 | 1437 |  |  | 2026-07-06 | 2026-07-07 | 2d | 44d |  |
| 1448 | 3.12.1.2.1.9 | Denominação das edificações, blocos ou espaços; | 4d | 2026-06-18 | 2026-06-23 | 1437 |  |  | 2026-07-06 | 2026-07-07 | 2d | 44d |  |
| 1449 | 3.12.1.2.1.10 | Cotas gerais | 4d | 2026-06-18 | 2026-06-23 | 1437 |  |  | 2026-07-06 | 2026-07-07 | 2d | 44d |  |
| 1450 | 3.12.1.2.1.11 | Cotas de nível principal. | 4d | 2026-06-18 | 2026-06-23 | 1437 |  |  | 2026-07-06 | 2026-07-07 | 2d | 44d |  |
| 1451 | 3.12.1.2.1.12 | Quadros de áreas | 4d | 2026-06-18 | 2026-06-23 | 1437 |  |  | 2026-07-06 | 2026-07-07 | 2d | 44d |  |
| 1452 | 3.12.1.2.1.13 | Relatório | 4d | 2026-06-18 | 2026-06-23 | 1437 |  |  | 2026-07-06 | 2026-07-07 | 2d | 16d | 0d |
| 1453 | 3.12.1.2.2 | Planta com as cotas de nível projetadas e existentes | 4d | 2026-06-24 | 2026-06-29 | 1452 |  |  | 2026-07-08 | 2026-07-09 | 2d | 16d | 0d |

| ID | WBS | Task | Duration | Start | Finish | Predecessors | Baseline start | Baseline finish | Baseline duration | Total slack | Free slack |
| --- | --- | --- | --- | --- | --- | --- | --- | --- | --- | --- | --- |
| 1454 | 3.12.1.2.3 | **Plantas baixas (se tiver mais de um pavimento, duplicar bloco)** | 4d | 2026-06-30 | 2026-07-03 |  | 2026-07-10 | 2026-07-13 | 2d | 16d |  |
| 1455 | 3.12.1.2.3.1 | Indicar simbologias de representação gráfica, conforme NBR 6492:2021; | 4d | 2026-06-30 | 2026-07-03 | 1453 | 2026-07-10 | 2026-07-13 | 2d | 36d |  |
| 1456 | 3.12.1.2.3.2 | Compatibilização (verificar se está tudo conforme as normas e alinhar com o restante das disciplinas de engenharia) | 4d | 2026-06-30 | 2026-07-03 | 1453 | 2026-07-10 | 2026-07-13 | 2d | 36d |  |
| 1457 | 3.12.1.2.3.3 | Compatibilização (deixar tudo conforme padrão Quanta) | 4d | 2026-06-30 | 2026-07-03 | 1453 | 2026-07-10 | 2026-07-13 | 2d | 36d |  |
| 1458 | 3.12.1.2.3.4 | Indicação de Norte; | 4d | 2026-06-30 | 2026-07-03 | 1453 | 2026-07-10 | 2026-07-13 | 2d | 36d |  |
| 1459 | 3.12.1.2.3.5 | Indicação de Escala; | 4d | 2026-06-30 | 2026-07-03 | 1453 | 2026-07-10 | 2026-07-13 | 2d | 36d |  |
| 1460 | 3.12.1.2.3.6 | Indicação de Acessos; | 4d | 2026-06-30 | 2026-07-03 | 1453 | 2026-07-10 | 2026-07-13 | 2d | 36d |  |
| 1461 | 3.12.1.2.3.7 | Elementos de vedação internos e externos; | 4d | 2026-06-30 | 2026-07-03 | 1453 | 2026-07-10 | 2026-07-13 | 2d | 36d |  |
| 1462 | 3.12.1.2.3.8 | Esquadrias; | 4d | 2026-06-30 | 2026-07-03 | 1453 | 2026-07-10 | 2026-07-13 | 2d | 36d |  |
| 1463 | 3.12.1.2.3.9 | Elementos estruturais principais; | 4d | 2026-06-30 | 2026-07-03 | 1453 | 2026-07-10 | 2026-07-13 | 2d | 36d |  |
| 1464 | 3.12.1.2.3.10 | Identificação dos ambientes e espaços (internos e externos); | 4d | 2026-06-30 | 2026-07-03 | 1453 | 2026-07-10 | 2026-07-13 | 2d | 36d |  |
| 1465 | 3.12.1.2.3.11 | Espaços de circulação internos e externos; | 4d | 2026-06-30 | 2026-07-03 | 1453 | 2026-07-10 | 2026-07-13 | 2d | 36d |  |
| 1466 | 3.12.1.2.3.12 | Áreas de serviço, funcionais e técnicas (internos e externos); | 4d | 2026-06-30 | 2026-07-03 | 1453 | 2026-07-10 | 2026-07-13 | 2d | 36d |  |
| 1467 | 3.12.1.2.3.13 | Projeções de níveis superiores; | 4d | 2026-06-30 | 2026-07-03 | 1453 | 2026-07-10 | 2026-07-13 | 2d | 36d |  |
| 1468 | 3.12.1.2.3.14 | Cotas gerais | 4d | 2026-06-30 | 2026-07-03 | 1453 | 2026-07-10 | 2026-07-13 | 2d | 36d |  |
| 1469 | 3.12.1.2.3.15 | Cotas de nível principal. | 4d | 2026-06-30 | 2026-07-03 | 1453 | 2026-07-10 | 2026-07-13 | 2d | 36d |  |
| 1470 | 3.12.1.2.3.16 | Tabelas de paredes, pisos, esquadrias e plantas | 4d | 2026-06-30 | 2026-07-03 | 1453 | 2026-07-10 | 2026-07-13 | 2d | 36d |  |
| 1471 | 3.12.1.2.3.17 | Quadro de áreas | 4d | 2026-06-30 | 2026-07-03 | 1453 | 2026-07-10 | 2026-07-13 | 2d | 16d | 0d |
| 1472 | 3.12.1.2.3.18 | Relatório | 4d | 2026-06-30 | 2026-07-03 | 1453 | 2026-07-10 | 2026-07-13 | 2d | 36d |  |
| 1473 | 3.12.1.2.4 | **Planta das coberturas** | 4d | 2026-07-06 | 2026-07-09 |  | 2026-07-14 | 2026-07-15 | 2d | 16d |  |
| 1474 | 3.12.1.2.4.1 | Indicação do Norte | 4d | 2026-07-06 | 2026-07-09 | 1471 | 2026-07-14 | 2026-07-15 | 2d | 32d |  |
| 1475 | 3.12.1.2.4.2 | Indicação de escala | 4d | 2026-07-06 | 2026-07-09 | 1471 | 2026-07-14 | 2026-07-15 | 2d | 32d |  |
| 1476 | 3.12.1.2.4.3 | Curvas de nível | 4d | 2026-07-06 | 2026-07-09 | 1471 | 2026-07-14 | 2026-07-15 | 2d | 32d |  |
| 1477 | 3.12.1.2.4.4 | Indicação de Acessos; | 4d | 2026-07-06 | 2026-07-09 | 1471 | 2026-07-14 | 2026-07-15 | 2d | 32d |  |
| 1478 | 3.12.1.2.4.5 | Estacionamento e áreas cobertas | 4d | 2026-07-06 | 2026-07-09 | 1471 | 2026-07-14 | 2026-07-15 | 2d | 32d |  |
| 1479 | 3.12.1.2.4.6 | Cobertura das edificações | 4d | 2026-07-06 | 2026-07-09 | 1471 | 2026-07-14 | 2026-07-15 | 2d | 32d |  |
| 1480 | 3.12.1.2.4.7 | Sentido de escoamento das águas pluviais e inclinação | 4d | 2026-07-06 | 2026-07-09 | 1471 | 2026-07-14 | 2026-07-15 | 2d | 32d |  |
| 1481 | 3.12.1.2.4.8 | Cotas gerais | 4d | 2026-07-06 | 2026-07-09 | 1471 | 2026-07-14 | 2026-07-15 | 2d | 32d |  |
| 1482 | 3.12.1.2.4.9 | Cotas de nível principal | 4d | 2026-07-06 | 2026-07-09 | 1471 | 2026-07-14 | 2026-07-15 | 2d | 16d | 0d |
| 1483 | 3.12.1.2.4.10 | Relatório | 4d | 2026-07-06 | 2026-07-09 | 1471 | 2026-07-14 | 2026-07-15 | 2d | 32d |  |

| ID | WBS | Task | Duration | Start | Finish | Predecessors | Baseline start | Baseline finish | Baseline duration | Total slack | Free slack |
| --- | --- | --- | --- | --- | --- | --- | --- | --- | --- | --- | --- |
| 1484 | 3.12.1.2.5 | **Cortes longitudinais** | 4d | 2026-07-10 | 2026-07-15 |  | 2026-07-16 | 2026-07-17 | 2d | 16d |  |
| 1485 | 3.12.1.2.5.1 | Indicar simbologias de representação gráfica, conforme NBR 6492:2021; | 4d | 2026-07-10 | 2026-07-15 | 1482 | 2026-07-16 | 2026-07-17 | 2d | 28d |  |
| 1486 | 3.12.1.2.5.2 | Indicação de Escala; | 4d | 2026-07-10 | 2026-07-15 | 1482 | 2026-07-16 | 2026-07-17 | 2d | 28d |  |
| 1487 | 3.12.1.2.5.3 | Elementos estruturais principais; | 4d | 2026-07-10 | 2026-07-15 | 1482 | 2026-07-16 | 2026-07-17 | 2d | 28d |  |
| 1488 | 3.12.1.2.5.4 | Elementos de vedação internos e externos; | 4d | 2026-07-10 | 2026-07-15 | 1482 | 2026-07-16 | 2026-07-17 | 2d | 28d |  |
| 1489 | 3.12.1.2.5.5 | Esquadrias; | 4d | 2026-07-10 | 2026-07-15 | 1482 | 2026-07-16 | 2026-07-17 | 2d | 28d |  |
| 1490 | 3.12.1.2.5.6 | Identificação dos ambientes; | 4d | 2026-07-10 | 2026-07-15 | 1482 | 2026-07-16 | 2026-07-17 | 2d | 28d |  |
| 1491 | 3.12.1.2.5.7 | Cobertura com indicação da respectiva inclinação; | 4d | 2026-07-10 | 2026-07-15 | 1482 | 2026-07-16 | 2026-07-17 | 2d | 28d |  |
| 1492 | 3.12.1.2.5.8 | Cotas gerais; | 4d | 2026-07-10 | 2026-07-15 | 1482 | 2026-07-16 | 2026-07-17 | 2d | 28d |  |
| 1493 | 3.12.1.2.5.9 | Cotas de nível principal; | 4d | 2026-07-10 | 2026-07-15 | 1482 | 2026-07-16 | 2026-07-17 | 2d | 28d |  |
| 1494 | 3.12.1.2.5.10 | Eixos do projeto; | 4d | 2026-07-10 | 2026-07-15 | 1482 | 2026-07-16 | 2026-07-17 | 2d | 28d |  |
| 1495 | 3.12.1.2.5.11 | Relevo construído; | 4d | 2026-07-10 | 2026-07-15 | 1482 | 2026-07-16 | 2026-07-17 | 2d | 28d |  |
| 1496 | 3.12.1.2.5.12 | Projeção da topografia natural. | 4d | 2026-07-10 | 2026-07-15 | 1482 | 2026-07-16 | 2026-07-17 | 2d | 16d | 0d |
| 1497 | 3.12.1.2.5.13 | Relatório | 4d | 2026-07-10 | 2026-07-15 | 1482 | 2026-07-16 | 2026-07-17 | 2d | 28d |  |
| 1498 | 3.12.1.2.6 | **Cortes transversais** | 4d | 2026-07-16 | 2026-07-21 |  | 2026-07-20 | 2026-07-21 | 2d | 16d |  |
| 1499 | 3.12.1.2.6.1 | Indicar simbologias de representação gráfica, conforme NBR 6492:2021; | 4d | 2026-07-16 | 2026-07-21 | 1496 | 2026-07-20 | 2026-07-21 | 2d | 24d |  |
| 1500 | 3.12.1.2.6.2 | Indicação de Escala; | 4d | 2026-07-16 | 2026-07-21 | 1496 | 2026-07-20 | 2026-07-21 | 2d | 24d |  |
| 1501 | 3.12.1.2.6.3 | Elementos estruturais principais; | 4d | 2026-07-16 | 2026-07-21 | 1496 | 2026-07-20 | 2026-07-21 | 2d | 24d |  |
| 1502 | 3.12.1.2.6.4 | Elementos de vedação internos e externos; | 4d | 2026-07-16 | 2026-07-21 | 1496 | 2026-07-20 | 2026-07-21 | 2d | 24d |  |
| 1503 | 3.12.1.2.6.5 | Esquadrias; | 4d | 2026-07-16 | 2026-07-21 | 1496 | 2026-07-20 | 2026-07-21 | 2d | 24d |  |
| 1504 | 3.12.1.2.6.6 | Identificação dos ambientes; | 4d | 2026-07-16 | 2026-07-21 | 1496 | 2026-07-20 | 2026-07-21 | 2d | 24d |  |
| 1505 | 3.12.1.2.6.7 | Cobertura com indicação da respectiva inclinação; | 4d | 2026-07-16 | 2026-07-21 | 1496 | 2026-07-20 | 2026-07-21 | 2d | 24d |  |
| 1506 | 3.12.1.2.6.8 | Cotas gerais; | 4d | 2026-07-16 | 2026-07-21 | 1496 | 2026-07-20 | 2026-07-21 | 2d | 24d |  |
| 1507 | 3.12.1.2.6.9 | Cotas de nível principal; | 4d | 2026-07-16 | 2026-07-21 | 1496 | 2026-07-20 | 2026-07-21 | 2d | 24d |  |
| 1508 | 3.12.1.2.6.10 | Eixos do projeto; | 4d | 2026-07-16 | 2026-07-21 | 1496 | 2026-07-20 | 2026-07-21 | 2d | 24d |  |
| 1509 | 3.12.1.2.6.11 | Relevo construído; | 4d | 2026-07-16 | 2026-07-21 | 1496 | 2026-07-20 | 2026-07-21 | 2d | 24d |  |
| 1510 | 3.12.1.2.6.12 | Projeção da topografia natural | 4d | 2026-07-16 | 2026-07-21 | 1496 | 2026-07-20 | 2026-07-21 | 2d | 16d | 0d |
| 1511 | 3.12.1.2.6.13 | Relatório | 4d | 2026-07-16 | 2026-07-21 | 1496 | 2026-07-20 | 2026-07-21 | 2d | 24d |  |

| ID | WBS | Task | Duration | Start | Finish | Predecessors | Complete | Remaining | Baseline start | Baseline finish | Baseline duration | Total slack | Free slack |
| --- | --- | --- | --- | --- | --- | --- | --- | --- | --- | --- | --- | --- | --- |
| 1512 | 3.12.1.2.7 | **Elevações** | 4d | 2026-07-22 | 2026-07-27 |  |  |  | 2026-07-22 | 2026-07-23 | 2d | 16d |  |
| 1513 | 3.12.1.2.7.1 | Indicar simbologias de representação gráfica, conforme NBR 6492:2021; | 4d | 2026-07-22 | 2026-07-27 | 1510 |  |  | 2026-07-22 | 2026-07-23 | 2d | 20d |  |
| 1514 | 3.12.1.2.7.2 | Indicação de Escala; | 4d | 2026-07-22 | 2026-07-27 | 1510 |  |  | 2026-07-22 | 2026-07-23 | 2d | 20d |  |
| 1515 | 3.12.1.2.7.3 | Elementos estruturais principais; | 4d | 2026-07-22 | 2026-07-27 | 1510 |  |  | 2026-07-22 | 2026-07-23 | 2d | 20d |  |
| 1516 | 3.12.1.2.7.4 | Elementos de vedação internos e externos; | 4d | 2026-07-22 | 2026-07-27 | 1510 |  |  | 2026-07-22 | 2026-07-23 | 2d | 20d |  |
| 1517 | 3.12.1.2.7.5 | Esquadrias; | 4d | 2026-07-22 | 2026-07-27 | 1510 |  |  | 2026-07-22 | 2026-07-23 | 2d | 20d |  |
| 1518 | 3.12.1.2.7.6 | Relevo construído; | 4d | 2026-07-22 | 2026-07-27 | 1510 |  |  | 2026-07-22 | 2026-07-23 | 2d | 20d |  |
| 1519 | 3.12.1.2.7.7 | Cotas gerais; | 4d | 2026-07-22 | 2026-07-27 | 1510 |  |  | 2026-07-22 | 2026-07-23 | 2d | 20d |  |
| 1520 | 3.12.1.2.7.8 | Cotas de nível principais; | 4d | 2026-07-22 | 2026-07-27 | 1510 |  |  | 2026-07-22 | 2026-07-23 | 2d | 20d |  |
| 1521 | 3.12.1.2.7.9 | Cobertura (quando aparente). | 4d | 2026-07-22 | 2026-07-27 | 1510 |  |  | 2026-07-22 | 2026-07-23 | 2d | 16d | 0d |
| 1522 | 3.12.1.2.8 | **Memorial Descritivo** | 4d | 2026-07-28 | 2026-07-31 |  |  |  | 2026-07-24 | 2026-07-27 | 2d | 16d |  |
| 1523 | 3.12.1.2.8.1 | Descrição dos elementos da edificação | 4d | 2026-07-28 | 2026-07-31 | 1521 |  |  | 2026-07-24 | 2026-07-27 | 2d | 16d |  |
| 1524 | 3.12.1.2.8.2 | Descrição dos componentes construtivos e materiais de construção | 4d | 2026-07-28 | 2026-07-31 | 1521 |  |  | 2026-07-24 | 2026-07-27 | 2d | 16d |  |
| 1525 | 3.12.1.2.8.3 | Lista de pranchas anexas e documentos | 4d | 2026-07-28 | 2026-07-31 | 1521 |  |  | 2026-07-24 | 2026-07-27 | 2d | 16d |  |
| 1526 | 3.12.2 | Aprovação de Conformidade | 3d | 2026-07-29 | 2026-07-31 | 1438FF |  |  | 2026-07-23 | 2026-07-27 | 0d | 16d |  |
| 1527 | 3.12.3 | Material para entrega ao contrato | 3d | 2026-07-29 | 2026-07-31 | 1438FF |  |  | 2026-07-23 | 2026-07-27 | 0d | 16d |  |
| 1528 | 3.12.4 | **Engenharia** | 60d | 2026-06-01 A | 2026-08-24 |  | 35% | 38.76d | 2026-06-01 | 2026-07-24 | 39d | 0d |  |
| 1529 | 3.12.4.1 | **Estrutura** | 49d | 2026-06-01 A | 2026-08-07 |  | 90% | 4.7d | 2026-06-01 | 2026-07-20 | 35d | 11d |  |
| 1530 | 3.12.4.1.1 | **LOD 100 — Premissas, diretrizes e interfaces** | 7d | 2026-06-01 A | 2026-06-10 A |  | 100% |  | 2026-06-01 | 2026-06-10 | 7d |  |  |
| 1531 | 3.12.4.1.1.1 | Levantamento de tipos de cargas globais estimadas (permanentes, acidentais, vento e especiais). | 2d | 2026-06-01 A | 2026-06-02 A | 1436SS+14d | 100% |  | 2026-06-01 | 2026-06-02 | 2d |  |  |
| 1532 | 3.12.4.1.1.2 | Estudo volumétrico com modulação inicial de pilares, vigas e lajes. Entendendo vãos e desafios | 5d | 2026-06-01 A | 2026-06-08 A | 1436SS+14d | 100% |  | 2026-06-01 | 2026-06-08 | 5d |  |  |
| 1533 | 3.12.4.1.1.3 | Localização aproximada de elementos estruturais principais. Avaliando vãos e estudando posições | 2d | 2026-06-01 A | 2026-06-02 A | 1436SS+14d | 100% |  | 2026-06-01 | 2026-06-02 | 2d |  |  |
| 1534 | 3.12.4.1.1.4 | Estudo de viabilidade técnica e construtiva. | 3d | 2026-06-03 A | 2026-06-08 A | 1533 | 100% |  | 2026-06-03 | 2026-06-08 | 3d |  |  |
| 1535 | 3.12.4.1.1.5 | Definição preliminar do sistema estrutural (concreto armado, metálica ou mista). | 3d | 2026-06-03 A | 2026-06-08 A | 1533 | 100% |  | 2026-06-03 | 2026-06-08 | 3d |  |  |
| 1536 | 3.12.4.1.1.6 | Estimativa preliminar de tipologias de fundações (sapatas, blocos, estacas). | 2d | 2026-06-09 A | 2026-06-10 A | 1534 | 100% |  | 2026-06-09 | 2026-06-10 | 2d |  |  |
| 1537 | 3.12.4.1.1.7 | Previsão de áreas técnicas, casas de máquinas, reservatórios elevados e estrutura de cobertura. | 2d | 2026-06-09 A | 2026-06-10 A | 1534 | 100% |  | 2026-06-09 | 2026-06-10 | 2d |  |  |

| ID | WBS | Task | Duration | Start | Finish | Predecessors | Complete | Remaining | Baseline start | Baseline finish | Baseline duration | Total slack | Free slack |
| --- | --- | --- | --- | --- | --- | --- | --- | --- | --- | --- | --- | --- | --- |
| 1538 | 3.12.4.1.2 | **LOD 200 — Validação interdisciplinar e solução preliminar** | 20d | 2026-06-11 A | 2026-07-08 A |  | 100% |  | 2026-06-11 | 2026-07-08 | 20d |  |  |
| 1539 | 3.12.4.1.2.1 | Lista preliminar de cargas e ações para dimensionamento. | 5d | 2026-06-11 A | 2026-06-17 A | 1537 | 100% |  | 2026-06-11 | 2026-06-17 | 5d |  |  |
| 1540 | 3.12.4.1.2.2 | Definição preliminar de alturas de pavimentos e níveis de fundação. | 5d | 2026-06-11 A | 2026-06-17 A | 1537 | 100% |  | 2026-06-11 | 2026-06-17 | 5d |  |  |
| 1541 | 3.12.4.1.2.3 | Indicação aproximada do sistema de cobertura (tesouras, treliças, vigamento metálico ou concreto). | 5d | 2026-06-11 A | 2026-06-17 A | 1537 | 100% |  | 2026-06-11 | 2026-06-17 | 5d |  |  |
| 1542 | 3.12.4.1.2.4 | Modelagem genérica de pilares, vigas, lajes e fundações. | 5d | 2026-06-18 A | 2026-06-24 A | 1539 | 100% |  | 2026-06-18 | 2026-06-24 | 5d |  |  |
| 1543 | 3.12.4.1.2.5 | Traçado preliminar de elementos especiais (escadas, rampas estruturais, reservatórios). | 5d | 2026-06-18 A | 2026-06-24 A | 1539 | 100% |  | 2026-06-18 | 2026-06-24 | 5d |  |  |
| 1544 | 3.12.4.1.2.6 | Arquivo IFC, plantas de forma e planta de locação | 5d | 2026-06-18 A | 2026-06-24 A | 1539 | 100% |  | 2026-06-18 | 2026-06-24 | 5d |  |  |
| 1545 | 3.12.4.1.2.7 | Inserção de fundações com tipologia e dimensões preliminares. | 5d | 2026-06-25 A | 2026-07-01 A | 1543 | 100% |  | 2026-06-25 | 2026-07-01 | 5d |  |  |
| 1546 | 3.12.4.1.2.8 | Compatibilização inicial com arquitetura e demais disciplinas. | 5d | 2026-06-25 A | 2026-07-01 A | 1544 | 100% |  | 2026-06-25 | 2026-07-01 | 5d |  |  |
| 1547 | 3.12.4.1.2.9 | Indicação de passagens de infraestrutura (shafts, aberturas em lajes e vigas). | 5d | 2026-06-25 A | 2026-07-01 A | 1544 | 100% |  | 2026-06-25 | 2026-07-01 | 5d |  |  |
| 1548 | 3.12.4.1.2.10 | Modelagem assertiva de elementos principais com dimensões aproximadas (largura, altura, espessura). | 10d | 2026-06-25 A | 2026-07-08 A | 1544 | 100% |  | 2026-06-25 | 2026-07-08 | 10d |  |  |
| 1549 | 3.12.4.1.2.11 | Modelagem estimada de armaduras principais (em nível de concepção). | 5d | 2026-06-25 A | 2026-07-01 A | 1544 | 100% |  | 2026-06-25 | 2026-07-01 | 5d |  |  |
| 1550 | 3.12.4.1.3 | **LOD 300 - Consolidação e documentação de entrega** | 22d | 2026-07-09 A | 2026-08-07 |  | 89% | 2.46d | 2026-07-09 | 2026-07-20 | 8d | 11d | 0d |
| 1551 | 3.12.4.1.3.1 | Indicação de níveis e cotas exatas. | 17d | 2026-07-09 A | 2026-07-31 A | 1548, 1549 | 100% |  | 2026-07-09 | 2026-07-20 | 8d |  |  |
| 1552 | 3.12.4.1.3.2 | Quadro de cargas atualizado. | 17d | 2026-07-09 A | 2026-07-31 A | 1548, 1549 | 100% |  | 2026-07-09 | 2026-07-20 | 8d |  |  |
| 1553 | 3.12.4.1.3.3 | Dimensionamento final de fundações conforme sondagem e cálculo estrutural. | 17d | 2026-07-09 A | 2026-07-31 A | 1548, 1549 | 100% |  | 2026-07-09 | 2026-07-20 | 8d |  |  |
| 1554 | 3.12.4.1.3.4 | Definição final dos elementos da cobertura (treliças, vigas, chapas, purlins). | 17d | 2026-07-09 A | 2026-07-31 A | 1548, 1549 | 100% |  | 2026-07-09 | 2026-07-20 | 8d |  |  |
| 1555 | 3.12.4.1.3.5 | Compatibilização final com arquitetura e instalações (aberturas, embutidos e passagens). | 17d | 2026-07-09 A | 2026-07-31 A | 1548, 1549 | 100% |  | 2026-07-09 | 2026-07-20 | 8d |  |  |
| 1556 | 3.12.4.1.3.6 | Modelagem definitiva de pilares, vigas, lajes, blocos, sapatas e estacas. | 17d | 2026-07-09 A | 2026-07-31 A | 1548, 1549 | 100% |  | 2026-07-09 | 2026-07-20 | 8d |  |  |
| 1557 | 3.12.4.1.3.7 | Planta estrutural com todos os elementos identificados. | 17d | 2026-07-09 A | 2026-07-31 A | 1548, 1549 | 100% |  | 2026-07-09 | 2026-07-20 | 8d |  |  |
| 1558 | 3.12.4.1.3.8 | Memorial descritivo contendo: objetivos, justificativa, descrição do sistema, concepção de fundações/cobertura, especificações e quadro de cargas. | 5d | 2026-08-03 | 2026-08-07 | 1556, 1548, 1549 |  |  | 2026-07-09 | 2026-07-20 | 8d | 11d |  |
| 1559 | 3.12.4.1.3.9 | Normas técnicas utilizadas (NBR 6118, 6120, 6122, 8800, etc.). | 5d | 2026-08-03 | 2026-08-07 | 1556, 1548, 1549 |  |  | 2026-07-09 | 2026-07-20 | 8d | 11d |  |
| 1560 | 3.12.4.1.3.10 | Consolidar documentação de entrega e emissão formal da disciplina | 5d | 2026-08-03 | 2026-08-07 | 1556, 1548, 1549 |  |  | 2026-07-09 | 2026-07-20 | 8d | 11d |  |
| 1561 | 3.12.4.1.4 | Aprovação de Conformidade | 3d | 2026-08-05 | 2026-08-07 | 1550FF |  |  | 2026-07-16 | 2026-07-20 | 0d | 11d |  |
| 1562 | 3.12.4.1.5 | Material para entrega ao contrato | 3d | 2026-08-05 | 2026-08-07 | 1550FF |  |  | 2026-07-16 | 2026-07-20 | 0d | 11d |  |

| ID | WBS | Task | Duration | Start | Finish | Predecessors | Complete | Remaining | Baseline start | Baseline finish | Baseline duration | Total slack | Free slack |
| --- | --- | --- | --- | --- | --- | --- | --- | --- | --- | --- | --- | --- | --- |
| 1563 | 3.12.4.2 | **Hidrossanitário** | 60d | 2026-06-01 A | 2026-08-24 |  | 15% | 51d | 2026-06-01 | 2026-07-24 | 39d | 0d |  |
| 1564 | 3.12.4.2.1 | **LOD 100 — Premissas, diretrizes e interfaces** | 11d | 2026-06-01 A | 2026-06-16 |  | 59% | 4.47d | 2026-06-01 | 2026-06-16 | 11d | 49d |  |
| 1565 | 3.12.4.2.1.1 | Memorial preliminar | 10d | 2026-06-01 A | 2026-06-15 | 1436SS+14d | 74% | 2.58d | 2026-06-01 | 2026-06-15 | 10d | 50d |  |
| 1566 | 3.12.4.2.1.2 | Indicação de áreas técnicas | 6d | 2026-06-09 A | 2026-06-16 | 1436SS+14d, 1532 | 40% | 3.58d | 2026-06-09 | 2026-06-16 | 6d | 49d |  |
| 1567 | 3.12.4.2.1.3 | Planta baixa com traçado conceitual | 6d | 2026-06-09 A | 2026-06-16 | 1532 | 40% | 3.58d | 2026-06-09 | 2026-06-16 | 6d | 49d |  |
| 1568 | 3.12.4.2.1.4 | Pontos de consumo principais e coletas sanitárias | 6d | 2026-06-09 A | 2026-06-16 | 1532 | 40% | 3.58d | 2026-06-09 | 2026-06-16 | 6d | 0d |  |
| 1569 | 3.12.4.2.1.5 | Classificação de uso | 10d | 2026-06-02 A | 2026-06-16 | 1568FF | 64% | 3.58d | 2026-06-02 | 2026-06-16 | 10d | 49d |  |
| 1570 | 3.12.4.2.1.6 | Diretrizes de espaço | 10d | 2026-06-02 A | 2026-06-16 | 1568FF | 64% | 3.58d | 2026-06-02 | 2026-06-16 | 10d | 49d |  |
| 1571 | 3.12.4.2.1.7 | Estimativa de demanda ou população de uso | 10d | 2026-06-02 A | 2026-06-16 | 1568FF | 64% | 3.58d | 2026-06-02 | 2026-06-16 | 10d | 49d |  |
| 1572 | 3.12.4.2.1.8 | Levantamento de elementos especiais dentre outras disciplinas de Engenharia e Arquitetura | 10d | 2026-06-02 A | 2026-06-16 | 1568FF | 64% | 3.58d | 2026-06-02 | 2026-06-16 | 10d | 0d |  |
| 1573 | 3.12.4.2.2 | **LOD 200 — Validação interdisciplinar e solução preliminar** | 42d | 2026-06-17 | 2026-08-13 |  |  |  | 2026-06-17 | 2026-07-14 | 20d | 7d |  |
| 1574 | 3.12.4.2.2.1 | Critérios normativos adotados (ABNT, concessionárias, etc.) | 26d | 2026-06-17 | 2026-07-22 | 1572 |  |  | 2026-06-17 | 2026-07-14 | 20d | 23d | 0d |
| 1575 | 3.12.4.2.2.2 | Informações de demanda na concessionária (DPE ou AVT Aviso de Viabilidade Técnica) | 26d | 2026-06-17 | 2026-07-22 | 1574SS |  |  | 2026-06-17 | 2026-07-14 | 20d | 23d |  |
| 1576 | 3.12.4.2.2.3 | Recebimento e Análise de Sondagem (permeabilidade ou percolação) | 26d | 2026-06-17 | 2026-07-22 | 1574SS |  |  | 2026-06-17 | 2026-07-14 | 20d | 23d |  |
| 1577 | 3.12.4.2.2.4 | Recebimento e Análise de Topografia | 26d | 2026-06-17 | 2026-07-22 | 1574SS |  |  | 2026-06-17 | 2026-07-14 | 20d | 23d |  |
| 1578 | 3.12.4.2.2.5 | Estudo de viabilidade técnica, econômica e ambiental | 26d | 2026-06-17 | 2026-07-22 | 1574SS |  |  | 2026-06-17 | 2026-07-14 | 20d | 23d |  |
| 1579 | 3.12.4.2.2.6 | Lista preliminar de sistemas envolvidos. | 26d | 2026-07-09 | 2026-08-13 | 1572FS+16d |  |  | 2026-06-17 | 2026-07-14 | 20d | 7d |  |
| 1580 | 3.12.4.2.2.7 | Planta baixa e cortes estimada contendo: - Traçado preliminar de barrilete, ramais, colunas - Diâmetros estimados - Localização aproximada das bombas e unidades de tratamento e reúso - Localização do ramal predial de água e esgoto - Localização aproximada | 26d | 2026-07-09 | 2026-08-13 | 1572FS+16d |  |  | 2026-06-17 | 2026-07-14 | 20d | 0d |  |
| 1581 | 3.12.4.2.3 | **LOD 300 - Consolidação e documentação de entrega** | 7d | 2026-08-14 | 2026-08-24 |  |  |  | 2026-07-15 | 2026-07-24 | 8d | 0d |  |
| 1582 | 3.12.4.2.3.1 | Planta, corte e detalhe isométrico contendo: - Modelagem detalhada com diâmetros, cotas e inclinações definitivas (barriletes, colunas, ramais) - Quantitativos e especificação técnica dos materiais (tubos, conexões, reservatórios, registros e válvulas com | 7d | 2026-08-14 | 2026-08-24 | 1580 |  |  | 2026-07-15 | 2026-07-24 | 8d | 0d |  |
| 1583 | 3.12.4.2.3.2 | Memorial descritivo | 3d | 2026-08-20 | 2026-08-24 | 1582FF |  |  | 2026-07-22 | 2026-07-24 | 3d | 0d |  |
| 1584 | 3.12.4.2.3.3 | Memória de cálculo (pressão, vazão, diâmetros, perda de carga). | 3d | 2026-08-20 | 2026-08-24 | 1580, 1582FF |  |  | 2026-07-22 | 2026-07-24 | 3d | 0d |  |
| 1585 | 3.12.4.2.4 | Aprovação de Conformidade | 3d | 2026-08-20 | 2026-08-24 | 1581FF |  |  | 2026-07-22 | 2026-07-24 | 0d | 0d |  |
| 1586 | 3.12.4.2.5 | Material para entrega ao contrato | 3d | 2026-08-20 | 2026-08-24 | 1581FF |  |  | 2026-07-22 | 2026-07-24 | 0d | 0d |  |

| ID | WBS | Task | Duration | Start | Finish | Predecessors | Complete | Remaining | Baseline start | Baseline finish | Baseline duration | Total slack | Free slack | Constraint | Text3 |
| --- | --- | --- | --- | --- | --- | --- | --- | --- | --- | --- | --- | --- | --- | --- | --- |
| 1587 | 3.12.4.3 | **AVAC** | 60d | 2026-06-01 A | 2026-08-24 |  | 30% | 42.18d | 2026-06-01 | 2026-07-24 | 39d | 0d |  |  |  |
| 1588 | 3.12.4.3.1 | **LOD 100 — Premissas, diretrizes e interfaces** | 20d | 2026-06-01 A | 2026-06-29 A |  | 100% |  | 2026-06-01 | 2026-06-29 | 20d |  |  |  |  |
| 1589 | 3.12.4.3.1.1 | Estimativa de carga térmica por ambiente. | 10d | 2026-06-01 A | 2026-06-15 A | 1436SS+14d | 100% |  | 2026-06-01 | 2026-06-15 | 10d |  |  |  |  |
| 1590 | 3.12.4.3.1.2 | Localização preliminar de unidades de tratamento de ar, condensadoras e exaustores. | 10d | 2026-06-01 A | 2026-06-15 A | 1436SS+14d | 100% |  | 2026-06-01 | 2026-06-15 | 10d |  |  |  |  |
| 1591 | 3.12.4.3.1.3 | Pontos locação para seus elementos no projeto arquitetônico. | 10d | 2026-06-01 A | 2026-06-15 A | 1436SS+14d | 100% |  | 2026-06-01 | 2026-06-15 | 10d |  |  |  |  |
| 1592 | 3.12.4.3.1.4 | Estudo de viabilidade e rotas principais de distribuição de ar. | 10d | 2026-06-01 A | 2026-06-15 A | 1436SS+14d | 100% |  | 2026-06-01 | 2026-06-15 | 10d |  |  |  |  |
| 1593 | 3.12.4.3.1.5 | Reserva de espaços técnicos e shafts. | 10d | 2026-06-01 A | 2026-06-15 A | 1436SS+14d | 100% |  | 2026-06-01 | 2026-06-15 | 10d |  |  |  |  |
| 1594 | 3.12.4.3.1.6 | Levantamento de cargas especiais provenientes de outras disciplinas. | 10d | 2026-06-16 A | 2026-06-29 A | 1436SS+14d, 1616, 1628 | 100% |  | 2026-06-16 | 2026-06-29 | 10d |  |  |  |  |
| 1595 | 3.12.4.3.2 | **LOD 200 — Validação interdisciplinar e solução preliminar** | 34d | 2026-07-08 | 2026-08-24 |  |  |  | 2026-06-16 | 2026-07-24 | 29d | 0d |  |  |  |
| 1596 | 3.12.4.3.2.1 | Lista preliminar de sistemas HVAC envolvidos (expansão direta, VRF, chillers, ventilação, exaustão). | 34d | 2026-07-08 | 2026-08-24 | 1593FS+16d |  |  | 2026-06-16 | 2026-07-24 | 29d | 0d |  |  |  |
| 1597 | 3.12.4.3.2.2 | Planta baixa estimada contendo: pontos de insuflamento e retorno. | 34d | 2026-07-08 | 2026-08-24 | 1593FS+16d |  |  | 2026-06-16 | 2026-07-24 | 29d | 0d |  |  |  |
| 1598 | 3.12.4.3.2.3 | Rotas iniciais de dutos, tubulações e drenos. | 34d | 2026-07-08 | 2026-08-24 | 1593FS+16d |  |  | 2026-06-16 | 2026-07-24 | 29d | 0d |  |  |  |
| 1599 | 3.12.4.3.2.4 | Planta baixa estimada contendo: unidades internas e externas com posição preliminar. | 34d | 2026-07-08 | 2026-08-24 | 1593FS+16d |  |  | 2026-06-16 | 2026-07-24 | 29d | 0d |  |  |  |
| 1600 | 3.12.4.3.3 | Aprovação de Conformidade | 3d | 2026-08-20 | 2026-08-24 | 1595FF |  |  | 2026-07-22 | 2026-07-24 | 0d | 0d |  |  |  |
| 1601 | 3.12.4.3.4 | Material para entrega ao contrato | 3d | 2026-08-20 | 2026-08-24 | 1595FF |  |  | 2026-07-22 | 2026-07-24 | 0d | 0d |  |  |  |
| 1602 | 3.12.4.4 | **PCI (Incêndio)** | 9d | 2026-07-21 A | 2026-07-31 |  | 95% | 0.45d | 2026-06-01 | 2026-06-29 | 20d | 16d |  |  |  |
| 1603 | 3.12.4.4.1 | **LOD 100 — Premissas, diretrizes e interfaces** | 4d | 2026-07-21 A | 2026-07-24 A |  | 100% |  | 2026-06-01 | 2026-06-15 | 10d |  |  |  | ܁# |
| 1604 | 3.12.4.4.1.1 | Estudo e avaliação da arquitetura atendendo as normas competentes de PCI | 4d | 2026-07-21 A | 2026-07-24 A | 1436SS+14d | 100% |  | 2026-06-01 | 2026-06-15 | 10d |  |  | start no earlier than 2026-07-21 |  |
| 1605 | 3.12.4.4.1.2 | Avaliação do espaço para CMI e Central de Gás. | 4d | 2026-07-21 A | 2026-07-24 A | 1436SS+14d | 100% |  | 2026-06-01 | 2026-06-15 | 10d |  |  | start no earlier than 2026-07-21 |  |
| 1606 | 3.12.4.4.1.3 | Pontos locação para seus elementos no projeto arquitetônico | 4d | 2026-07-21 A | 2026-07-24 A | 1436SS+14d | 100% |  | 2026-06-01 | 2026-06-15 | 10d |  |  | start no earlier than 2026-07-21 |  |
| 1607 | 3.12.4.4.2 | **LOD 200 — Validação interdisciplinar e solução preliminar** | 5d | 2026-07-27 A | 2026-07-31 |  | 93% | 0.33d | 2026-06-16 | 2026-06-29 | 10d | 16d | 0d |  | ܁# |
| 1608 | 3.12.4.4.2.1 | Definição da classificação da edificação e o risco de incêndio | 5d | 2026-07-27 A | 2026-07-31 | 1606 | 93% | 0.33d | 2026-06-16 | 2026-06-29 | 10d | 16d |  |  |  |
| 1609 | 3.12.4.4.2.2 | Cálculos pré-dimensionados dos extintores, hidrantes e bomba. | 5d | 2026-07-27 A | 2026-07-31 | 1606 | 93% | 0.33d | 2026-06-16 | 2026-06-29 | 10d | 16d |  |  |  |
| 1610 | 3.12.4.4.2.3 | Avaliação das rotas de fuga, ventilação de CMI e outros elementos de importância para as normas de PCI | 5d | 2026-07-27 A | 2026-07-31 | 1606 | 93% | 0.33d | 2026-06-16 | 2026-06-29 | 10d | 16d |  |  |  |
| 1611 | 3.12.4.4.3 | Aprovação de Conformidade | 3d | 2026-07-29 A | 2026-07-31 | 1607FF | 89% | 0.33d | 2026-06-25 | 2026-06-29 | 0d | 16d |  |  |  |
| 1612 | 3.12.4.4.4 | Material para entrega ao contrato | 3d | 2026-07-29 A | 2026-07-31 | 1607FF | 89% | 0.33d | 2026-06-25 | 2026-06-29 | 0d | 16d |  |  |  |

| ID | WBS | Task | Duration | Start | Finish | Predecessors | Complete | Remaining | Baseline start | Baseline finish | Baseline duration | Total slack | Free slack |
| --- | --- | --- | --- | --- | --- | --- | --- | --- | --- | --- | --- | --- | --- |
| 1613 | 3.12.4.5 | **Elétrica Baixa Tensão** | 49d | 2026-06-01 A | 2026-08-07 |  | 21% | 38.63d | 2026-06-01 | 2026-07-24 | 39d | 11d |  |
| 1614 | 3.12.4.5.1 | **LOD 100 — Concepção** | 16d | 2026-06-01 A | 2026-06-23 A |  | 100% |  | 2026-06-01 | 2026-06-23 | 16d |  |  |
| 1615 | 3.12.4.5.1.1 | Avaliação e Diretrizes Técnicas para Arquitetura | 6d | 2026-06-01 A | 2026-06-09 A | 1436SS+14d | 100% |  | 2026-06-01 | 2026-06-09 | 6d |  |  |
| 1616 | 3.12.4.5.1.2 | Estimativa de Cargas e Demanda | 10d | 2026-06-01 A | 2026-06-15 A | 1436SS+14d | 100% |  | 2026-06-01 | 2026-06-15 | 10d |  |  |
| 1617 | 3.12.4.5.1.3 | Levantamento de Equipamentos de Outras Disciplinas | 6d | 2026-06-16 A | 2026-06-23 A | 1591, 1606 | 100% |  | 2026-06-16 | 2026-06-23 | 6d |  |  |
| 1618 | 3.12.4.5.2 | **LOD 200 — Anteprojeto** | 24d | 2026-07-01 | 2026-08-03 |  |  |  | 2026-06-24 | 2026-07-20 | 19d | 11d | 0d |
| 1619 | 3.12.4.5.2.1 | TUGs Estimados | 24d | 2026-07-01 | 2026-08-03 | 1616, 1617FS+5d |  |  | 2026-06-24 | 2026-07-20 | 19d | 11d |  |
| 1620 | 3.12.4.5.2.2 | Pontos de Luz Estimados | 24d | 2026-07-01 | 2026-08-03 | 1616, 1617FS+5d |  |  | 2026-06-24 | 2026-07-20 | 19d | 11d |  |
| 1621 | 3.12.4.5.2.3 | TUEs e Quadros Estimados | 24d | 2026-07-01 | 2026-08-03 | 1616, 1617FS+5d |  |  | 2026-06-24 | 2026-07-20 | 19d | 11d |  |
| 1622 | 3.12.4.5.3 | LOD 300 - Consolidação e documentação de entrega | 4d | 2026-08-04 | 2026-08-07 | 1618 |  |  | 2026-07-21 | 2026-07-24 | 4d | 11d | 0d |
| 1623 | 3.12.4.5.4 | Aprovação de Conformidade | 3d | 2026-08-05 | 2026-08-07 | 1622FF |  |  | 2026-07-22 | 2026-07-24 | 0d | 11d |  |
| 1624 | 3.12.4.5.5 | Material para entrega ao contrato | 3d | 2026-08-05 | 2026-08-07 | 1622FF |  |  | 2026-07-22 | 2026-07-24 | 0d | 11d |  |
| 1625 | 3.12.4.6 | **Telecom** | 49d | 2026-06-01 A | 2026-08-07 |  | 30% | 34.3d | 2026-06-01 | 2026-07-17 | 34d | 11d |  |
| 1626 | 3.12.4.6.1 | **LOD 100 — Concepção** | 10d | 2026-06-01 A | 2026-06-15 |  | 85% | 1.5d | 2026-06-01 | 2026-06-15 | 10d | 50d |  |
| 1627 | 3.12.4.6.1.1 | Avaliação e Diretrizes Técnicas para Arquitetura | 10d | 2026-06-01 A | 2026-06-15 | 1436SS+14d | 85% | 1.5d | 2026-06-01 | 2026-06-15 | 10d | 50d |  |
| 1628 | 3.12.4.6.1.2 | Estimativa de Demanda de Telecomunicações | 10d | 2026-06-01 A | 2026-06-15 | 1436SS+14d | 85% | 1.5d | 2026-06-01 | 2026-06-15 | 10d | 50d |  |
| 1629 | 3.12.4.6.1.3 | Levantamento de Equipamentos e Interfaces com Outras Disciplinas | 10d | 2026-06-01 A | 2026-06-15 | 1436SS+14d | 85% | 1.5d | 2026-06-01 | 2026-06-15 | 10d | 11d | 0d |
| 1630 | 3.12.4.6.2 | **LOD 200 — Anteprojeto** | 35d | 2026-06-16 | 2026-08-03 |  |  |  | 2026-06-16 | 2026-07-13 | 20d | 11d | 0d |
| 1631 | 3.12.4.6.2.1 | Pontos de Telecomunicações Estimados (Rede, Voz, CFTV e Demais Sistemas) | 15d | 2026-06-16 | 2026-07-06 | 1629 |  |  | 2026-06-16 | 2026-06-29 | 10d | 16d | 5d |
| 1632 | 3.12.4.6.2.2 | Racks Estimados | 15d | 2026-06-16 | 2026-07-06 | 1629 |  |  | 2026-06-16 | 2026-06-29 | 10d | 11d | 0d |
| 1633 | 3.12.4.6.2.3 | Infraestrutura de Telecomunicações Preliminar | 15d | 2026-07-14 | 2026-08-03 | 1631, 1632FS+5d |  |  | 2026-06-30 | 2026-07-13 | 10d | 11d |  |
| 1634 | 3.12.4.6.3 | LOD 300 - Consolidação e documentação de entrega | 4d | 2026-08-04 | 2026-08-07 | 1630 |  |  | 2026-07-14 | 2026-07-17 | 4d | 11d | 0d |
| 1635 | 3.12.4.6.4 | Aprovação de Conformidade | 3d | 2026-08-05 | 2026-08-07 | 1634FF |  |  | 2026-07-15 | 2026-07-17 | 0d | 11d |  |
| 1636 | 3.12.4.6.5 | Material para entrega ao contrato | 3d | 2026-08-05 | 2026-08-07 | 1634FF |  |  | 2026-07-15 | 2026-07-17 | 0d | 11d |  |

| ID | WBS | Task | Type | Duration | Start | Finish | Predecessors | Complete | Remaining | Baseline start | Baseline finish | Baseline duration | Total slack | Free slack |
| --- | --- | --- | --- | --- | --- | --- | --- | --- | --- | --- | --- | --- | --- | --- |
| 1637 | 3.12.4.7 | **SPDA** |  | 49d | 2026-06-01 | 2026-08-07 |  |  |  | 2026-06-01 | 2026-07-24 | 39d | 11d |  |
| 1638 | 3.12.4.7.1 | **LOD 100 — Concepção** |  | 5d | 2026-06-01 | 2026-06-08 |  |  |  | 2026-06-01 | 2026-06-08 | 5d | 11d |  |
| 1639 | 3.12.4.7.1.1 | Avaliação e Diretrizes Técnicas para Arquitetura |  | 5d | 2026-06-01 | 2026-06-08 | 1436SS+14d |  |  | 2026-06-01 | 2026-06-08 | 5d | 55d |  |
| 1640 | 3.12.4.7.1.2 | Coleta de Informações da Edificação e Análise de Risco (ABNT NBR 5419-2) |  | 5d | 2026-06-01 | 2026-06-08 | 1436SS+14d |  |  | 2026-06-01 | 2026-06-08 | 5d | 55d |  |
| 1641 | 3.12.4.7.1.3 | Estudo Preliminar de Necessidade e Nível de Proteção do SPDA |  | 5d | 2026-06-01 | 2026-06-08 | 1436SS+14d |  |  | 2026-06-01 | 2026-06-08 | 5d | 11d | 0d |
| 1642 | 3.12.4.7.2 | **LOD 200 — Anteprojeto** |  | 40d | 2026-06-09 | 2026-08-03 |  |  |  | 2026-06-09 | 2026-07-20 | 30d | 11d |  |
| 1643 | 3.12.4.7.2.1 | Definição da Estratégia de Proteção e Soluções Técnicas |  | 15d | 2026-06-09 | 2026-06-29 | 1641 |  |  | 2026-06-09 | 2026-06-22 | 10d | 11d | 0d |
| 1644 | 3.12.4.7.2.2 | Zoneamento de Captação, Descida e Traçados Preliminares |  | 10d | 2026-06-30 | 2026-07-13 | 1643 |  |  | 2026-06-23 | 2026-07-06 | 10d | 11d | 0d |
| 1645 | 3.12.4.7.2.3 | Estudo de Interferências, Compatibilização e Métodos Construtivos |  | 10d | 2026-07-21 | 2026-08-03 | 1644FS+5d |  |  | 2026-07-07 | 2026-07-20 | 10d | 11d | 0d |
| 1646 | 3.12.4.7.3 | LOD 300 - Consolidação e documentação de entrega |  | 4d | 2026-08-04 | 2026-08-07 | 1645 |  |  | 2026-07-21 | 2026-07-24 | 4d | 11d | 0d |
| 1647 | 3.12.4.7.4 | Aprovação de Conformidade |  | 3d | 2026-08-05 | 2026-08-07 | 1646FF |  |  | 2026-07-22 | 2026-07-24 | 0d | 11d |  |
| 1648 | 3.12.4.7.5 | Material para entrega ao contrato |  | 3d | 2026-08-05 | 2026-08-07 | 1646FF |  |  | 2026-07-22 | 2026-07-24 | 0d | 11d |  |
| 1649 | 3.12.4.8 | **Energia Renovável** |  | 49d | 2026-06-01 A | 2026-08-07 |  | 10% | 44.1d | 2026-06-01 | 2026-07-17 | 34d | 11d |  |
| 1650 | 3.12.4.8.1 | **LOD 100 — Concepção** |  | 10d | 2026-06-01 A | 2026-06-15 |  | 43% | 5.67d | 2026-06-01 | 2026-06-15 | 10d | 50d |  |
| 1651 | 3.12.4.8.1.1 | Viabilidade e Premissas de Geração |  | 10d | 2026-06-01 A | 2026-06-15 | 1436SS+14d | 43% | 5.67d | 2026-06-01 | 2026-06-15 | 10d | 50d |  |
| 1652 | 3.12.4.8.1.2 | Levantamento Preliminar de Áreas e Sombreamento |  | 10d | 2026-06-01 A | 2026-06-15 | 1436SS+14d | 43% | 5.67d | 2026-06-01 | 2026-06-15 | 10d | 11d | 0d |
| 1653 | 3.12.4.8.1.3 | Avaliação e Diretrizes Técnicas para Arquitetônico |  | 10d | 2026-06-01 A | 2026-06-15 | 1436SS+14d | 43% | 5.67d | 2026-06-01 | 2026-06-15 | 10d | 50d |  |
| 1654 | 3.12.4.8.2 | **LOD 200 — Anteprojeto** |  | 35d | 2026-06-16 | 2026-08-03 |  |  |  | 2026-06-16 | 2026-07-13 | 20d | 11d | 0d |
| 1655 | 3.12.4.8.2.1 | Layout Preliminar de Módulos, Inversores e String Boxes |  | 30d | 2026-06-16 | 2026-07-27 | 1652 |  |  | 2026-06-16 | 2026-07-13 | 20d | 16d |  |
| 1656 | 3.12.4.8.2.2 | Infraestrutura e Rotas Técnicas Preliminares (DC/AC e Aterramento) |  | 30d | 2026-06-16 | 2026-07-27 | 1652 |  |  | 2026-06-16 | 2026-07-13 | 20d | 16d |  |
| 1657 | 3.12.4.8.2.3 | Critérios Preliminares de Proteção e Estimativa de Quantitativos |  | 30d | 2026-06-23 | 2026-08-03 | 1652FS+5d |  |  | 2026-06-16 | 2026-07-13 | 20d | 11d |  |
| 1658 | 3.12.4.8.3 | LOD 300 - Consolidação e documentação de entrega |  | 4d | 2026-08-04 | 2026-08-07 | 1654 |  |  | 2026-07-14 | 2026-07-17 | 4d | 11d | 0d |
| 1659 | 3.12.4.8.4 | Aprovação de Conformidade |  | 3d | 2026-08-05 | 2026-08-07 | 1658FF |  |  | 2026-07-15 | 2026-07-17 | 0d | 11d |  |
| 1660 | 3.12.4.8.5 | Material para entrega ao contrato |  | 3d | 2026-08-05 | 2026-08-07 | 1658FF |  |  | 2026-07-15 | 2026-07-17 | 0d | 11d |  |
| 1661 | 4 | Renderizações do complexo |  | 8d | 2026-08-13 | 2026-08-24 | 30FF |  |  | 2026-07-16 | 2026-07-27 | 0d | 20d |  |
| 1662 | 5 | P2 - Orçamento/Cronograma |  | 20d | 2026-08-25 | 2026-09-22 | 30 |  |  | 2026-07-28 | 2026-08-24 | 20d | 0d |  |
| 1663 | 6 | P3 - Modelagem Econômico Financeira |  | 10d | 2026-09-09 | 2026-09-22 | 1662FF |  |  | 2026-08-11 | 2026-08-24 | 10d | 0d |  |
| 1664 | 7 | P4 - Modelagem Jurídica |  | 10d | 2026-09-09 | 2026-09-22 | 1662FF |  |  | 2026-08-11 | 2026-08-24 | 10d | 0d |  |
| 1665 | 8 | Periodo de revisão se necessário | milestone | 0d | 2026-03-02 | 2026-03-02 |  |  |  | 2026-03-02 | 2026-03-02 | 0d | 142d |  |
