# OS 060 - PROJETO BÁSICO DA NOVA IMPLANTAÇÃO DA MARIA FUMAÇA

Schedule from MS Project, 2026-03-02 to 2026-09-15, status date 2026-08-11, A marks actual dates.

## Calendars

- Calendário 1: Mon-Fri 09:00-12:00, 13:00-18:00; Sat-Sun off. Exceptions (off unless hours are given): 2026-04-03 (Feriado Sexta-Feira Santa), 2026-04-21 (Feriado Tiradentes), 2026-05-01 (Feriado Dia do Trabalho), 2026-06-04 (Feriado Corpus Christi), 2026-09-07 (Feriado Independencia do Brasil).

## Resources

| Resource | Group |
| --- | --- |
| SMI Engenharia | SMI |
| Rui Raoli BIM |  |
| Tecra Engenharia | Tecra |
| Dorothea Heirichs | Dorothea |
| Yuka Ogawa | Yuka |
| Jurídico Quanta |  |
| Priscila Abreu EST |  |
| Leomar Delgado | Leomar |
| Limonge de Almeida | Limonge |
| AeB Engenharia | AeB engenharia |
| Fernanda Garruti EST |  |
| Rodrigo Goes EST |  |
| Nous Engenharia (Wanessa) | Nous Engenharia |
| Abel Lopes HID |  |
| Matheus Ferreira HID |  |
| Kayke Cheli PROJ |  |
| João Gabriel PROJ |  |
| Alan Albuquerque ELE |  |
| Leo Ferrari ELE |  |
| Marcelo Ricardo ELE |  |
| Gabriel Caurim | Gcaurin |
| MOB Eng | MOB |
| Heitor Rubio ELE |  |
| Paulo G. ELE |  |
| Thaíza Rodrig. ELE |  |
| Rafael Menna ENE |  |
| Lucas Pacheco ENE |  |
| Lucas Silva ENE Estag |  |
| Amanda W. HID |  |
| Neemias PCI/GAS |  |
| Anderson F. HVAC |  |
| Alexandre Blumel |  |
| Vanessa Maia ORC |  |
| Bruno Souza ORC |  |
| Romulo Santos ORC |  |
| Diego Bieger | Diego Bieger |
| Tiago Carlos TER |  |
| Raquel Morano |  |
| Guilherme ECO |  |
| Setor Jurídico |  |
| Vinicius Delgado |  |
| Morena Braga |  |
| P/ TERCEIRIZAR |  |
| MAFRA | MAFRA |
| BLR | BLR |
| COTRAL | COTRAL |
| Prime | PRIME |
| CODEMAR | Cliente |
| SEMED | Cliente |
| Carlos Alberto (Casoba) |  |
| Cezar Augusto ELE |  |
| Carlos Santos TER |  |
| Maíra Rocha |  |
| Jairo Diniz |  |
| Eloá Honaiser |  |
| Erick Lima |  |
| Tarcísio Marques CPT |  |
| Igor Freire DADOS |  |
| Hagata Oliveira DADOS |  |
| Marcel Silva CNF |  |
| Gustavo Oliveira CNF |  |
| Letícia Gonç. CNF |  |
| Equipe Energia |  |
| Petras |  |
| Pilotis |  |
| Rodofer |  |
| TMSilva |  |
| STCGEO |  |
| Vitor Sales GEO |  |
| Prossema | Prossema |
| Proseng | Prosseng |
| Pamplona | Pamplona |
| PeX | PeX |
| Eoliver | Eoliver |
| Aleff Moura |  |
| S&A Engenharia |  |
| Matheus Barboza MOBILIDADE |  |
| Neemias Eloy PCI/GAS |  |
| TecTON |  |
| Anderson F. HVAC |  |
| Gabriela Gama ARQ |  |
| Bruno Almeida ARQ |  |
| Richard Marx ARQ |  |
| Lorena ARQ |  |
| Camila ARQ |  |
| Mariana ARQ |  |
| Érica ARQ |  |
| Maria Lis ARQ |  |
| Antônio Alves ARQ |  |
| Juliana ARQ |  |
| Caio Ary ARQ |  |
| Roberto Mattos ARQ |  |
| Camilla Bessa CNF |  |
| Alex Matoso SUP |  |
| Aline Bonsanto CPT |  |
| Pavanello |  |
| AKKERMAN |  |
| RiO RAMP |  |

## Schedule

| ID | WBS | Task | Type | Duration | Start | Finish | Predecessors | Complete | Baseline start | Baseline finish | Baseline duration | Constraint |
| --- | --- | --- | --- | --- | --- | --- | --- | --- | --- | --- | --- | --- |
| 1 | 1 | **P0 - Estudos Iniciais/Plano de Trabalho** |  | 67d | 2026-03-02 A | 2026-06-08 A |  | 100% | 2026-03-02 | 2026-06-08 | 67d |  |
| 2 | 1.1 | Marco de Abertura de OS |  | 1d | 2026-03-02 A | 2026-03-02 A |  | 100% | 2026-03-02 | 2026-03-02 | 1d | start no earlier than 2026-03-02 |
| 3 | 1.2 | Recebimento de dados da contratante |  | 1d | 2026-03-02 A | 2026-03-02 A |  | 100% | 2026-03-02 | 2026-03-02 | 1d | start no earlier than 2026-03-02 |
| 4 | 1.3 | Recebimento de dados do projeto |  | 1d | 2026-03-02 A | 2026-03-02 A |  | 100% | 2026-03-02 | 2026-03-02 | 1d | start no earlier than 2026-03-02 |
| 5 | 1.4 | **Definições do projeto** |  | 0d | 2026-05-11 A | 2026-05-11 A |  | 100% | 2026-05-11 | 2026-05-11 | 0d |  |
| 6 | 1.4.1 | Definição de escopo | milestone | 0d | 2026-05-11 A | 2026-05-11 A |  | 100% | 2026-05-11 | 2026-05-11 | 0d | start no earlier than 2026-05-11 |
| 7 | 1.4.2 | Aprovação do escopo (contrato) | milestone | 0d | 2026-05-11 A | 2026-05-11 A |  | 100% | 2026-05-11 | 2026-05-11 | 0d | start no earlier than 2026-05-11 |
| 8 | 1.4.3 | Definição de responsabilidades | milestone | 0d | 2026-05-11 A | 2026-05-11 A |  | 100% | 2026-05-11 | 2026-05-11 | 0d | start no earlier than 2026-05-11 |
| 9 | 1.4.4 | Definição de comunicação | milestone | 0d | 2026-05-11 A | 2026-05-11 A |  | 100% | 2026-05-11 | 2026-05-11 | 0d | start no earlier than 2026-05-11 |
| 10 | 1.4.5 | Forma de gerenciamento do escopo | milestone | 0d | 2026-05-11 A | 2026-05-11 A |  | 100% | 2026-05-11 | 2026-05-11 | 0d | start no earlier than 2026-05-11 |
| 11 | 1.4.6 | Requisitos de qualidade | milestone | 0d | 2026-05-11 A | 2026-05-11 A |  | 100% | 2026-05-11 | 2026-05-11 | 0d | start no earlier than 2026-05-11 |
| 12 | 1.4.7 | Forma de gerenciamento da qualidade | milestone | 0d | 2026-05-11 A | 2026-05-11 A |  | 100% | 2026-05-11 | 2026-05-11 | 0d | start no earlier than 2026-05-11 |
| 13 | 1.5 | **Definição de Subcontratadas necessárias** |  | 8d | 2026-05-27 A | 2026-06-08 A |  | 100% | 2026-05-27 | 2026-06-08 | 8d |  |
| 14 | 1.5.1 | Definir quais diciplinas e edificações devem ser cotadas externamente |  | 2d | 2026-05-27 A | 2026-05-28 A |  | 100% | 2026-05-27 | 2026-05-28 | 2d | start no earlier than 2026-05-27 |
| 15 | 1.5.2 | Envio e Resposta dos fornecedores |  | 2d | 2026-05-29 A | 2026-06-01 A | 14 | 100% | 2026-05-29 | 2026-06-01 | 2d |  |
| 16 | 1.5.3 | Seleção das subcontratações |  | 2d | 2026-06-02 A | 2026-06-03 A | 15 | 100% | 2026-06-02 | 2026-06-03 | 2d |  |
| 17 | 1.5.4 | Reunião Kickoff - Subcontratadas |  | 2d | 2026-06-05 A | 2026-06-08 A | 16 | 100% | 2026-06-05 | 2026-06-08 | 2d |  |
| 18 | 1.6 | **Elaborar/Ajustar Cronograma - compatível com o escopo do projeto** |  | 20d | 2026-05-11 A | 2026-06-08 A |  | 100% | 2026-05-11 | 2026-06-08 | 20d |  |
| 19 | 1.6.1 | Estruturação da EAP |  | 5d | 2026-05-11 A | 2026-05-15 A |  | 100% | 2026-05-11 | 2026-05-15 | 5d |  |
| 20 | 1.6.2 | Ajuste de prazos |  | 8d | 2026-05-18 A | 2026-05-27 A | 19 | 100% | 2026-05-18 | 2026-05-27 | 8d |  |
| 21 | 1.6.3 | Inclusão de recursos |  | 7d | 2026-05-28 A | 2026-06-08 A | 20 | 100% | 2026-05-28 | 2026-06-08 | 7d |  |
| 22 | 2 | **P0 - Serviços de campo** |  | 76d | 2026-03-02 A | 2026-06-19 A |  | 100% | 2026-03-02 | 2026-06-19 | 76d |  |
| 23 | 2.1 | Sondagem |  | 14d | 2026-06-01 A | 2026-06-19 A |  | 100% | 2026-06-01 | 2026-06-19 | 14d |  |
| 24 | 2.2 | **Topografia** |  | 2d | 2026-03-02 A | 2026-03-03 A |  | 100% | 2026-03-02 | 2026-03-03 | 2d |  |
| 25 | 2.2.1 | Levantamento topográfico |  | 2d | 2026-03-02 A | 2026-03-03 A |  | 100% | 2026-03-02 | 2026-03-03 | 2d |  |
| 26 | 2.2.2 | Processamento |  | 2d | 2026-03-02 A | 2026-03-03 A |  | 100% | 2026-03-02 | 2026-03-03 | 2d |  |
| 27 | 2.2.3 | Finalização do projeto topográfico |  | 2d | 2026-03-02 A | 2026-03-03 A |  | 100% | 2026-03-02 | 2026-03-03 | 2d |  |
| 28 | 2.2.4 | Levantamento de Dados e Visita de Campo (arquitetônico, scanner, legislação, entrevistas...) |  | 2d | 2026-03-02 A | 2026-03-03 A |  | 100% | 2026-03-02 | 2026-03-03 | 2d |  |
| 29 | 2.3 | Estudos/Laudo Ambiental |  | 1d | 2026-03-02 A | 2026-03-02 A |  | 100% | 2026-03-02 | 2026-03-02 | 1d |  |

| ID | WBS | Task | Duration | Start | Finish | Predecessors | Complete | Remaining | Baseline start | Baseline finish | Baseline duration | Total slack | Free slack | Constraint |
| --- | --- | --- | --- | --- | --- | --- | --- | --- | --- | --- | --- | --- | --- | --- |
| 30 | 3 | **P3 - Projeto Básico** | 75d | 2026-05-04 A | 2026-08-17 |  | 35% | 48.83d | 2026-05-04 | 2026-07-27 | 60d? | 0d |  |  |
| 31 | 3.1 | **Fase de Preparação** | 25d | 2026-05-04 A | 2026-06-08 A |  | 100% |  | 2026-05-04 | 2026-06-08 | 25d |  |  |  |
| 32 | 3.1.1 | **Serviços de Campo** | 25d | 2026-05-04 A | 2026-06-08 A |  | 100% |  | 2026-05-04 | 2026-06-08 | 25d |  |  |  |
| 33 | 3.1.1.1 | Analisar topografia (Entender nova topografia e implantação) | 25d | 2026-05-04 A | 2026-06-08 A |  | 100% |  | 2026-05-04 | 2026-06-08 | 25d |  |  | start no earlier than 2026-05-04 |
| 34 | 3.1.1.2 | Analisar situação Viária para acesso a nova implantação | 25d | 2026-05-04 A | 2026-06-08 A |  | 100% |  | 2026-05-04 | 2026-06-08 | 25d |  |  | start no earlier than 2026-05-04 |
| 35 | 3.1.1.3 | Adaptar desenho da praça para nova implantação | 25d | 2026-05-04 A | 2026-06-08 A |  | 100% |  | 2026-05-04 | 2026-06-08 | 25d |  |  | start no earlier than 2026-05-04 |
| 36 | 3.1.1.4 | Adaptar desenho da praça para nova implantação | 25d | 2026-05-04 A | 2026-06-08 A |  | 100% |  | 2026-05-04 | 2026-06-08 | 25d |  |  | start no earlier than 2026-05-04 |
| 37 | 3.1.1.5 | Analisar e adaptar traçado da Maria Fumaça | 25d | 2026-05-04 A | 2026-06-08 A |  | 100% |  | 2026-05-04 | 2026-06-08 | 25d |  |  | start no earlier than 2026-05-04 |
| 38 | 3.2 | **Implantação** | 60d | 2026-05-25 A | 2026-08-17 |  | 64% | 21.36d | 2026-05-25 | 2026-07-27 | 45d | 0d |  |  |
| 39 | 3.2.1 | **LOD 350 - Projeto Básico** | 10d | 2026-06-09 A | 2026-06-22 |  | 88% | 1.21d | 2026-06-09 | 2026-06-22 | 10d | 40d |  |  |
| 40 | 3.2.1.1 | Indicar simbologias de representação gráfica, conforme NBR 6492:2021; | 10d | 2026-06-09 A | 2026-06-22 | 37 | 91% | 0.91d | 2026-06-09 | 2026-06-22 | 10d | 40d |  |  |
| 41 | 3.2.1.2 | Compatibilização (verificar se está tudo conforme as normas e alinhar com o restante das disciplinas de engenharia) | 10d | 2026-06-09 A | 2026-06-22 | 37 | 91% | 0.91d | 2026-06-09 | 2026-06-22 | 10d | 40d |  |  |
| 42 | 3.2.1.3 | Compatibilização (deixar tudo conforme padrão Quanta) | 10d | 2026-06-09 A | 2026-06-22 | 37 | 91% | 0.91d | 2026-06-09 | 2026-06-22 | 10d | 40d |  |  |
| 43 | 3.2.1.4 | Indicação de Norte; | 10d | 2026-06-09 A | 2026-06-22 | 37 | 91% | 0.91d | 2026-06-09 | 2026-06-22 | 10d | 40d |  |  |
| 44 | 3.2.1.5 | Indicação de Escala; | 10d | 2026-06-09 A | 2026-06-22 | 37 | 91% | 0.91d | 2026-06-09 | 2026-06-22 | 10d | 40d |  |  |
| 45 | 3.2.1.6 | Vias de acesso e calçadas; | 10d | 2026-06-09 A | 2026-06-22 | 37 | 91% | 0.91d | 2026-06-09 | 2026-06-22 | 10d | 40d |  |  |
| 46 | 3.2.1.7 | Definição dos Percursos e caminhos | 10d | 2026-06-09 A | 2026-06-22 | 37 | 91% | 0.91d | 2026-06-09 | 2026-06-22 | 10d | 40d |  |  |
| 47 | 3.2.1.8 | Definição de desenhos de canteiros | 10d | 2026-06-09 A | 2026-06-22 | 37 | 91% | 0.91d | 2026-06-09 | 2026-06-22 | 10d | 40d |  |  |
| 48 | 3.2.1.9 | Localização de Mobiliário | 10d | 2026-06-09 A | 2026-06-22 | 37 | 91% | 0.91d | 2026-06-09 | 2026-06-22 | 10d | 40d |  |  |
| 49 | 3.2.1.10 | Acesso principal do objeto arquitetônico; | 10d | 2026-06-09 A | 2026-06-22 | 37 | 91% | 0.91d | 2026-06-09 | 2026-06-22 | 10d | 40d |  |  |
| 50 | 3.2.1.11 | Definição de localização de rampas e escadarias | 10d | 2026-06-09 A | 2026-06-22 | 37 | 91% | 0.91d | 2026-06-09 | 2026-06-22 | 10d | 40d |  |  |
| 51 | 3.2.1.12 | Platôs e taludes; | 10d | 2026-06-09 A | 2026-06-22 | 37 | 91% | 0.91d | 2026-06-09 | 2026-06-22 | 10d | 40d |  |  |
| 52 | 3.2.1.13 | Perímetro do terreno, recuos e afastamentos; | 10d | 2026-06-09 A | 2026-06-22 | 37 | 91% | 0.91d | 2026-06-09 | 2026-06-22 | 10d | 40d |  |  |
| 53 | 3.2.1.14 | Eixos do projeto com respectivo ponto de referência; | 10d | 2026-06-09 A | 2026-06-22 | 37 | 91% | 0.91d | 2026-06-09 | 2026-06-22 | 10d | 40d |  |  |
| 54 | 3.2.1.15 | Denominação das edificações, blocos ou espaços; | 10d | 2026-06-09 A | 2026-06-22 | 37 | 91% | 0.91d | 2026-06-09 | 2026-06-22 | 10d | 40d |  |  |
| 55 | 3.2.1.16 | Indicação de áreas cobertas e estacionamentos; | 10d | 2026-06-09 A | 2026-06-22 | 37 | 91% | 0.91d | 2026-06-09 | 2026-06-22 | 10d | 40d |  |  |
| 56 | 3.2.1.17 | Cotas gerais | 10d | 2026-06-09 A | 2026-06-22 | 37 | 91% | 0.91d | 2026-06-09 | 2026-06-22 | 10d | 40d |  |  |
| 57 | 3.2.1.18 | Cotas de nível principais | 10d | 2026-06-09 A | 2026-06-22 | 37 | 91% | 0.91d | 2026-06-09 | 2026-06-22 | 10d | 40d |  |  |
| 58 | 3.2.1.19 | Quadro de áreas | 10d | 2026-06-09 A | 2026-06-22 | 37 | 91% | 0.91d | 2026-06-09 | 2026-06-22 | 10d | 40d | 0d |  |
| 59 | 3.2.1.20 | Relatório | 5d | 2026-06-16 A | 2026-06-22 | 58FF | 82% | 0.91d | 2026-06-16 | 2026-06-22 | 5d | 40d | 0d |  |
| 60 | 3.2.1.21 | Aprovação de Conformidade | 3d | 2026-06-18 | 2026-06-22 | 59FF |  |  | 2026-06-18 | 2026-06-22 | 3d | 40d |  |  |
| 61 | 3.2.1.22 | Material para entrega ao contrato | 3d | 2026-06-18 | 2026-06-22 | 59FF |  |  | 2026-06-18 | 2026-06-22 | 3d | 40d |  |  |
| 62 | 3.2.2 | Revisão de Projeto Geométrico | 30d | 2026-05-25 A | 2026-07-06 A | 37FS-10d | 100% |  | 2026-05-25 | 2026-07-06 | 30d |  |  | start no earlier than 2026-05-04 |

| ID | WBS | Task | Duration | Start | Finish | Predecessors | Complete | Remaining | Baseline start | Baseline finish | Baseline duration | Total slack | Constraint | Text3 |
| --- | --- | --- | --- | --- | --- | --- | --- | --- | --- | --- | --- | --- | --- | --- |
| 63 | 3.2.3 | **Terraplanagem / Pavimentação** | 55d | 2026-06-01 A | 2026-08-17 |  | 80% | 11d | 2026-06-01 | 2026-07-24 | 39d | 0d |  |  |
| 64 | 3.2.3.1 | **LOD 100 — Premissas, diretrizes e interfaces** | 10d | 2026-06-01 A | 2026-06-15 A |  | 100% |  | 2026-06-01 | 2026-06-15 | 10d |  |  | ܁$ |
| 65 | 3.2.3.1.1 | Avaliação geral de interferências e topografia local. | 5d | 2026-06-01 A | 2026-06-08 A |  | 100% |  | 2026-06-01 | 2026-06-08 | 5d |  | start no earlier than 2026-06-01 |  |
| 66 | 3.2.3.1.2 | Curvas de nível preliminares (quando disponíveis). | 5d | 2026-06-01 A | 2026-06-08 A | 65SS | 100% |  | 2026-06-01 | 2026-06-08 | 5d |  |  |  |
| 67 | 3.2.3.1.3 | Levantamento topográfico inicial com representação genérica da área. | 5d | 2026-06-01 A | 2026-06-08 A | 65SS | 100% |  | 2026-06-01 | 2026-06-08 | 5d |  |  |  |
| 68 | 3.2.3.1.4 | Análise estimativa de movimentação de terra. | 5d | 2026-06-09 A | 2026-06-15 A | 66 | 100% |  | 2026-06-09 | 2026-06-15 | 5d |  |  |  |
| 69 | 3.2.3.1.5 | Estudos de viabilidade | 5d | 2026-06-09 A | 2026-06-15 A | 66 | 100% |  | 2026-06-09 | 2026-06-15 | 5d |  |  |  |
| 70 | 3.2.3.1.6 | Elementos representados de forma simbólica sem georreferenciamento preciso. | 5d | 2026-06-09 A | 2026-06-15 A | 67 | 100% |  | 2026-06-09 | 2026-06-15 | 5d |  |  |  |
| 71 | 3.2.3.1.7 | Superfície genérica do terreno. | 5d | 2026-06-09 A | 2026-06-15 A | 67 | 100% |  | 2026-06-09 | 2026-06-15 | 5d |  |  |  |
| 72 | 3.2.3.2 | **LOD 200 — Validação interdisciplinar e solução preliminar** | 19d | 2026-06-16 A | 2026-07-10 A |  | 100% |  | 2026-06-16 | 2026-07-10 | 19d |  |  | ܁$ |
| 73 | 3.2.3.2.1 | Avaliação técnica detalhada. | 19d | 2026-06-16 A | 2026-07-10 A | 71 | 100% |  | 2026-06-16 | 2026-07-10 | 19d |  |  |  |
| 74 | 3.2.3.2.2 | Compatibilização inicial com drenagem, fundações e geometria. | 19d | 2026-06-16 A | 2026-07-10 A | 71 | 100% |  | 2026-06-16 | 2026-07-10 | 19d |  |  |  |
| 75 | 3.2.3.2.3 | Indicação dos pontos de sondagem em planta georreferenciada. | 19d | 2026-06-16 A | 2026-07-10 A | 71 | 100% |  | 2026-06-16 | 2026-07-10 | 19d |  |  |  |
| 76 | 3.2.3.2.4 | Sondagens geotécnicas: Cronograma de execução com áreas e quantidade de perfurações; Boletins informativos com planta de localização dos furos, profundidades e descrição estratigráfica (solo). | 19d | 2026-06-16 A | 2026-07-10 A | 71 | 100% |  | 2026-06-16 | 2026-07-10 | 19d |  |  |  |
| 77 | 3.2.3.2.5 | Levantamento topográfico: Arquivo em formato.dwg, com coordenadas georreferenciadas (latitude/longitude), curvas de nível, ortofoto e base planimétrica. | 19d | 2026-06-16 A | 2026-07-10 A | 71 | 100% |  | 2026-06-16 | 2026-07-10 | 19d |  |  |  |
| 78 | 3.2.3.2.6 | Planta topográfica com triangulação real (MDT). | 19d | 2026-06-16 A | 2026-07-10 A | 71 | 100% |  | 2026-06-16 | 2026-07-10 | 19d |  |  |  |
| 79 | 3.2.3.3 | **LOD 300 - Consolidação e documentação de entrega** | 26d | 2026-07-13 A | 2026-08-17 |  | 58% | 10.9d | 2026-07-13 | 2026-07-24 | 10d | 0d |  | ܁$ |
| 80 | 3.2.3.3.1 | Alinhamentos de estaqueamento longitudinal e transversal. | 26d | 2026-07-13 A | 2026-08-17 | 78 | 61% | 10.2d | 2026-07-13 | 2026-07-24 | 10d | 0d |  |  |
| 81 | 3.2.3.3.2 | Análise integrada dos dados topográficos e de sondagem. | 26d | 2026-07-13 A | 2026-08-17 | 78 | 61% | 10.2d | 2026-07-13 | 2026-07-24 | 10d | 0d |  |  |
| 82 | 3.2.3.3.3 | Planta baixa georreferenciada com projeção de cortes e aterros. | 26d | 2026-07-13 A | 2026-08-17 | 78 | 61% | 10.2d | 2026-07-13 | 2026-07-24 | 10d | 0d |  |  |
| 83 | 3.2.3.3.4 | Perfis longitudinais e transversais do terreno na situação atual e projetada. | 26d | 2026-07-13 A | 2026-08-17 | 78 | 61% | 10.2d | 2026-07-13 | 2026-07-24 | 10d | 0d |  |  |
| 84 | 3.2.3.3.5 | Tabelas com variações altimétricas de corte e aterro. | 26d | 2026-07-13 A | 2026-08-17 | 78 | 61% | 10.2d | 2026-07-13 | 2026-07-24 | 10d | 0d |  |  |
| 85 | 3.2.3.3.6 | Aprovação de Conformidade | 3d | 2026-08-13 | 2026-08-17 | 82FF |  |  | 2026-07-22 | 2026-07-24 | 3d | 0d |  |  |
| 86 | 3.2.3.3.7 | Material para entrega ao contrato | 3d | 2026-08-13 | 2026-08-17 | 82FF |  |  | 2026-07-22 | 2026-07-24 | 3d | 0d |  |  |
| 87 | 3.2.4 | Terraplanagem da linha ferrea | 55d | 2026-06-01 | 2026-08-17 |  |  |  | 2026-06-01 | 2026-07-24 | 39d | 0d | start no earlier than 2026-06-01 |  |

| ID | WBS | Task | Duration | Start | Finish | Predecessors | Complete | Remaining | Baseline start | Baseline finish | Baseline duration | Total slack | Constraint |
| --- | --- | --- | --- | --- | --- | --- | --- | --- | --- | --- | --- | --- | --- |
| 88 | 3.2.5 | **Drenagem** | 45d | 2026-06-16 A | 2026-08-17 |  | 80% | 9d | 2026-06-16 | 2026-07-27 | 30d | 0d |  |
| 89 | 3.2.5.1 | **LOD 100 — Premissas, diretrizes e interfaces** | 5d | 2026-06-16 A | 2026-06-22 A |  | 100% |  | 2026-06-16 | 2026-06-22 | 5d |  |  |
| 90 | 3.2.5.1.1 | Diretrizes de espaço | 5d | 2026-06-16 A | 2026-06-22 A | 71 | 100% |  | 2026-06-16 | 2026-06-22 | 5d |  |  |
| 91 | 3.2.5.1.2 | Memorial preliminar | 5d | 2026-06-16 A | 2026-06-22 A | 71 | 100% |  | 2026-06-16 | 2026-06-22 | 5d |  |  |
| 92 | 3.2.5.1.3 | Análise climatológica | 5d | 2026-06-16 A | 2026-06-22 A | 71 | 100% |  | 2026-06-16 | 2026-06-22 | 5d |  |  |
| 93 | 3.2.5.1.4 | Delimitação de área de contribuição | 5d | 2026-06-16 A | 2026-06-22 A | 71 | 100% |  | 2026-06-16 | 2026-06-22 | 5d |  |  |
| 94 | 3.2.5.1.5 | Levantamento de elementos especiais dentre outras disciplinas de Engenharia e Arquitetura | 5d | 2026-06-16 A | 2026-06-22 A | 71 | 100% |  | 2026-06-16 | 2026-06-22 | 5d |  |  |
| 95 | 3.2.5.1.6 | Indicação de áreas técnicas | 5d | 2026-06-16 A | 2026-06-22 A | 71 | 100% |  | 2026-06-16 | 2026-06-22 | 5d |  |  |
| 96 | 3.2.5.1.7 | Planta baixa com traçado conceitual | 5d | 2026-06-16 A | 2026-06-22 A | 71 | 100% |  | 2026-06-16 | 2026-06-22 | 5d |  |  |
| 97 | 3.2.5.1.8 | Traçado geral de descidas pluviais | 5d | 2026-06-16 A | 2026-06-22 A | 71 | 100% |  | 2026-06-16 | 2026-06-22 | 5d |  |  |
| 98 | 3.2.5.2 | **LOD 200 — Validação interdisciplinar e solução preliminar** | 20d | 2026-06-23 A | 2026-07-20 A |  | 100% |  | 2026-06-23 | 2026-07-20 | 20d |  |  |
| 99 | 3.2.5.2.1 | Critérios normativos adotados (ABNT, concessionárias, etc.) | 10d | 2026-06-23 A | 2026-07-06 A | 97 | 100% |  | 2026-06-23 | 2026-07-06 | 10d |  |  |
| 100 | 3.2.5.2.2 | Lista preliminar de sistemas e interfaces envolvidos | 10d | 2026-06-23 A | 2026-07-06 A | 97 | 100% |  | 2026-06-23 | 2026-07-06 | 10d |  |  |
| 101 | 3.2.5.2.3 | Planta baixa e cortes estimada contendo: - Traçado preliminar de condutores verticais e horizontais - Dimensionamento inicial de calhas e condutores - Localização de elementos ou redes de drenagem existente - Indicação de áreas técnicas | 10d | 2026-06-23 A | 2026-07-06 A | 97 | 100% |  | 2026-06-23 | 2026-07-06 | 10d |  |  |
| 102 | 3.2.5.2.4 | Estudo de viabilidade técnica, econômica e ambiental | 10d | 2026-07-07 A | 2026-07-20 A | 99, 100 | 100% |  | 2026-07-07 | 2026-07-20 | 10d |  |  |
| 103 | 3.2.5.2.5 | Levantamento topográfico da área de contribuição e elementos existentes | 10d | 2026-07-07 A | 2026-07-20 A | 99, 100 | 100% |  | 2026-07-07 | 2026-07-20 | 10d |  |  |
| 104 | 3.2.5.2.6 | Sondagem (permeabilidade ou percolação) | 10d | 2026-07-07 A | 2026-07-20 A | 99, 100 | 100% |  | 2026-07-07 | 2026-07-20 | 10d |  |  |
| 105 | 3.2.5.3 | **LOD 300 - Consolidação e documentação de entrega** | 20d | 2026-07-21 A | 2026-08-17 |  | 57% | 8.65d | 2026-07-21 | 2026-07-27 | 5d | 0d |  |
| 106 | 3.2.5.3.1 | Memorial descritivo | 20d | 2026-07-21 A | 2026-08-17 | 103 | 61% | 7.8d | 2026-07-21 | 2026-07-27 | 5d | 0d |  |
| 107 | 3.2.5.3.2 | Memória de cálculo | 20d | 2026-07-21 A | 2026-08-17 | 103 | 61% | 7.8d | 2026-07-21 | 2026-07-27 | 5d | 0d |  |
| 108 | 3.2.5.3.3 | Planta, corte e detalhe isométrico contendo: - Detalhamento dos condutores com diâmetros, cotas e inclinações definitivas (condutores pluviais) - Calhas, bocas de lobo, dissipadores de energia e demais elementos/equipamentos definitivos | 20d | 2026-07-21 A | 2026-08-17 | 103 | 61% | 7.8d | 2026-07-21 | 2026-07-27 | 5d | 0d |  |
| 109 | 3.2.5.3.4 | Quantitativos e especificação técnica dos materiais | 20d | 2026-07-21 A | 2026-08-17 | 103 | 61% | 7.8d | 2026-07-21 | 2026-07-24 | 4d | 0d |  |
| 110 | 3.2.5.3.5 | Aprovação de Conformidade | 3d | 2026-08-13 | 2026-08-17 | 109FF |  |  | 2026-07-22 | 2026-07-24 | 3d | 0d |  |
| 111 | 3.2.5.3.6 | Material para entrega ao contrato | 3d | 2026-08-13 | 2026-08-17 | 109FF |  |  | 2026-07-22 | 2026-07-24 | 3d | 0d |  |
| 112 | 3.2.6 | Drenagem da linha ferrea | 55d | 2026-06-01 | 2026-08-17 |  |  |  | 2026-06-01 | 2026-07-24 | 39d | 0d | start no earlier than 2026-06-01 |
| 113 | 3.2.7 | Contenção | 55d | 2026-06-01 | 2026-08-17 |  |  |  | 2026-06-01 | 2026-07-24 | 39d | 0d | start no earlier than 2026-06-01 |
| 114 | 3.2.8 | Elétrica BT | 39d | 2026-06-24 | 2026-08-17 |  |  |  | 2026-06-24 | 2026-07-24 | 23d | 0d | start no earlier than 2026-06-24 |

| ID | WBS | Task | Duration | Start | Finish | Predecessors | Complete | Remaining | Baseline start | Baseline finish | Baseline duration | Total slack | Free slack | Constraint |
| --- | --- | --- | --- | --- | --- | --- | --- | --- | --- | --- | --- | --- | --- | --- |
| 115 | 3.3 | **Revisões** | 69d | 2026-05-12 A | 2026-08-17 |  | 27% | 50.56d | 2026-05-08 | 2026-07-24 | 55d? | 0d |  |  |
| 116 | 3.3.1 | **Arquitetura** | 58d | 2026-05-12 A | 2026-07-31 |  | 81% | 11.05d | 2026-05-08 | 2026-07-21 | 52d? | 11d |  |  |
| 117 | 3.3.1.1 | 02 - Implantação da Praça Inicial | 58d | 2026-05-12 A | 2026-07-31 |  | 82% | 10.44d | 2026-05-12 | 2026-07-24 | 1d? | 11d | 0d |  |
| 118 | 3.3.1.2 | 03 - Implantação Estação Final | 58d | 2026-05-12 A | 2026-07-31 |  | 82% | 10.44d | 2026-05-12 | 2026-07-24 | 50d | 11d |  |  |
| 119 | 3.3.1.3 | 04 - Impantação Pátio de Manutenção | 58d | 2026-05-12 A | 2026-07-31 |  | 82% | 10.44d | 2026-05-12 | 2026-07-24 | 50d | 11d |  |  |
| 120 | 3.3.1.4 | 05 - Implantação Alameda | 58d | 2026-05-12 A | 2026-07-31 |  | 82% | 10.44d | 2026-05-12 | 2026-07-24 | 50d | 11d |  |  |
| 121 | 3.3.1.5 | 06 - Estação Inicial | 58d | 2026-05-12 A | 2026-07-31 |  | 82% | 10.44d | 2026-05-12 | 2026-07-24 | 50d | 11d |  |  |
| 122 | 3.3.1.6 | 07 - Quiosques Estação Inicial e Alameda | 58d | 2026-05-12 A | 2026-07-31 |  | 82% | 10.44d | 2026-05-12 | 2026-07-24 | 50d | 11d |  |  |
| 123 | 3.3.1.7 | 08 - Pátio de Manutenções | 58d | 2026-05-12 A | 2026-07-31 |  | 82% | 10.44d | 2026-05-12 | 2026-07-24 | 50d | 11d |  |  |
| 124 | 3.3.1.8 | 09 - Quiosques Estação Final | 58d | 2026-05-12 A | 2026-07-31 |  | 82% | 10.44d | 2026-05-12 | 2026-07-24 | 50d | 11d |  |  |
| 125 | 3.3.1.9 | Aprovação de Conformidade | 3d | 2026-07-29 | 2026-07-31 | 117FF |  |  | 2026-07-21 | 2026-07-24 | 3d | 11d | 0d |  |
| 126 | 3.3.1.10 | Material para entrega ao contrato | 3d | 2026-07-29 | 2026-07-31 | 125FF |  |  | 2026-07-21 | 2026-07-24 | 3d | 11d |  |  |
| 127 | 3.3.2 | **Engenharia** | 55d | 2026-06-01 A | 2026-08-17 |  | 20% | 44d | 2026-06-01 | 2026-07-24 | 39d | 0d |  |  |
| 128 | 3.3.2.1 | **Estrutura** | 55d | 2026-06-01 A | 2026-08-17 |  | 20% | 43.99d | 2026-06-01 | 2026-07-24 | 39d | 0d |  |  |
| 129 | 3.3.2.1.1 | 02 - Implantação da Praça Inicial | 55d | 2026-06-01 A | 2026-08-17 |  | 20% | 43.84d | 2026-06-01 | 2026-07-24 | 39d | 0d |  | start no earlier than 2026-06-01 |
| 130 | 3.3.2.1.2 | 03 - Implantação Estação Final | 55d | 2026-06-01 A | 2026-08-17 |  | 20% | 43.84d | 2026-06-01 | 2026-07-24 | 39d | 0d |  | start no earlier than 2026-06-01 |
| 131 | 3.3.2.1.3 | 04 - Impantação Pátio de Manutenção | 55d | 2026-06-01 A | 2026-08-17 |  | 20% | 43.84d | 2026-06-01 | 2026-07-24 | 39d | 0d |  | start no earlier than 2026-06-01 |
| 132 | 3.3.2.1.4 | 05 - Implantação Alameda | 55d | 2026-06-01 A | 2026-08-17 |  | 20% | 43.84d | 2026-06-01 | 2026-07-24 | 39d | 0d |  | start no earlier than 2026-06-01 |
| 133 | 3.3.2.1.5 | 06 - Estação Inicial | 55d | 2026-06-01 A | 2026-08-17 |  | 20% | 43.84d | 2026-06-01 | 2026-07-24 | 39d | 0d |  | start no earlier than 2026-06-01 |
| 134 | 3.3.2.1.6 | 07 - Quiosques Estação Inicial e Alameda | 55d | 2026-06-01 A | 2026-08-17 |  | 20% | 43.84d | 2026-06-01 | 2026-07-24 | 39d | 0d |  | start no earlier than 2026-06-01 |
| 135 | 3.3.2.1.7 | 08 - Pátio de Manutenções | 55d | 2026-06-01 A | 2026-08-17 |  | 20% | 43.84d | 2026-06-01 | 2026-07-24 | 39d | 0d |  | start no earlier than 2026-06-01 |
| 136 | 3.3.2.1.8 | 09 - Quiosques Estação Final | 55d | 2026-06-01 A | 2026-08-17 |  | 20% | 43.84d | 2026-06-01 | 2026-07-24 | 39d | 0d |  | start no earlier than 2026-06-01 |
| 137 | 3.3.2.1.9 | Aprovação de Conformidade | 3d | 2026-08-13 | 2026-08-17 | 129FF |  |  | 2026-07-22 | 2026-07-24 | 3d | 0d |  |  |
| 138 | 3.3.2.1.10 | Material para entrega ao contrato | 3d | 2026-08-13 | 2026-08-17 | 137FF |  |  | 2026-07-22 | 2026-07-24 | 3d | 0d |  |  |

| ID | WBS | Task | Duration | Start | Finish | Predecessors | Complete | Remaining | Baseline start | Baseline finish | Baseline duration | Total slack | Constraint |
| --- | --- | --- | --- | --- | --- | --- | --- | --- | --- | --- | --- | --- | --- |
| 139 | 3.3.2.2 | **Hidrossanitário (a principio ajuste de documentos, avaliação aline)** | 55d | 2026-06-01 A | 2026-08-17 |  | 20% | 43.99d | 2026-06-01 | 2026-07-24 | 39d | 0d |  |
| 140 | 3.3.2.2.1 | 02 - Implantação da Praça Inicial | 55d | 2026-06-01 A | 2026-08-17 |  | 20% | 43.84d | 2026-06-01 | 2026-07-24 | 39d | 0d | start no earlier than 2026-06-01 |
| 141 | 3.3.2.2.2 | 03 - Implantação Estação Final | 55d | 2026-06-01 A | 2026-08-17 |  | 20% | 43.84d | 2026-06-01 | 2026-07-24 | 39d | 0d | start no earlier than 2026-06-01 |
| 142 | 3.3.2.2.3 | 04 - Impantação Pátio de Manutenção | 55d | 2026-06-01 A | 2026-08-17 |  | 20% | 43.84d | 2026-06-01 | 2026-07-24 | 39d | 0d | start no earlier than 2026-06-01 |
| 143 | 3.3.2.2.4 | 05 - Implantação Alameda | 55d | 2026-06-01 A | 2026-08-17 |  | 20% | 43.84d | 2026-06-01 | 2026-07-24 | 39d | 0d | start no earlier than 2026-06-01 |
| 144 | 3.3.2.2.5 | 06 - Estação Inicial | 55d | 2026-06-01 A | 2026-08-17 |  | 20% | 43.84d | 2026-06-01 | 2026-07-24 | 39d | 0d | start no earlier than 2026-06-01 |
| 145 | 3.3.2.2.6 | 07 - Quiosques Estação Inicial e Alameda | 55d | 2026-06-01 A | 2026-08-17 |  | 20% | 43.84d | 2026-06-01 | 2026-07-24 | 39d | 0d | start no earlier than 2026-06-01 |
| 146 | 3.3.2.2.7 | 08 - Pátio de Manutenções | 55d | 2026-06-01 A | 2026-08-17 |  | 20% | 43.84d | 2026-06-01 | 2026-07-24 | 39d | 0d | start no earlier than 2026-06-01 |
| 147 | 3.3.2.2.8 | 09 - Quiosques Estação Final | 55d | 2026-06-01 A | 2026-08-17 |  | 20% | 43.84d | 2026-06-01 | 2026-07-24 | 39d | 0d | start no earlier than 2026-06-01 |
| 148 | 3.3.2.2.9 | Aprovação de Conformidade | 3d | 2026-08-13 | 2026-08-17 | 140FF |  |  | 2026-07-22 | 2026-07-24 | 3d | 0d |  |
| 149 | 3.3.2.2.10 | Material para entrega ao contrato | 3d | 2026-08-13 | 2026-08-17 | 148FF |  |  | 2026-07-22 | 2026-07-24 | 3d | 0d |  |
| 150 | 3.3.2.3 | **AVAC** | 55d | 2026-06-01 A | 2026-08-17 |  | 20% | 43.99d | 2026-06-01 | 2026-07-24 | 39d | 0d |  |
| 151 | 3.3.2.3.1 | 02 - Implantação da Praça Inicial | 55d | 2026-06-01 A | 2026-08-17 |  | 20% | 43.84d | 2026-06-01 | 2026-07-24 | 39d | 0d | start no earlier than 2026-06-01 |
| 152 | 3.3.2.3.2 | 03 - Implantação Estação Final | 55d | 2026-06-01 A | 2026-08-17 |  | 20% | 43.84d | 2026-06-01 | 2026-07-24 | 39d | 0d | start no earlier than 2026-06-01 |
| 153 | 3.3.2.3.3 | 04 - Impantação Pátio de Manutenção | 55d | 2026-06-01 A | 2026-08-17 |  | 20% | 43.84d | 2026-06-01 | 2026-07-24 | 39d | 0d | start no earlier than 2026-06-01 |
| 154 | 3.3.2.3.4 | 05 - Implantação Alameda | 55d | 2026-06-01 A | 2026-08-17 |  | 20% | 43.84d | 2026-06-01 | 2026-07-24 | 39d | 0d | start no earlier than 2026-06-01 |
| 155 | 3.3.2.3.5 | 06 - Estação Inicial | 55d | 2026-06-01 A | 2026-08-17 |  | 20% | 43.84d | 2026-06-01 | 2026-07-24 | 39d | 0d | start no earlier than 2026-06-01 |
| 156 | 3.3.2.3.6 | 07 - Quiosques Estação Inicial e Alameda | 55d | 2026-06-01 A | 2026-08-17 |  | 20% | 43.84d | 2026-06-01 | 2026-07-24 | 39d | 0d | start no earlier than 2026-06-01 |
| 157 | 3.3.2.3.7 | 08 - Pátio de Manutenções | 55d | 2026-06-01 A | 2026-08-17 |  | 20% | 43.84d | 2026-06-01 | 2026-07-24 | 39d | 0d | start no earlier than 2026-06-01 |
| 158 | 3.3.2.3.8 | 09 - Quiosques Estação Final | 55d | 2026-06-01 A | 2026-08-17 |  | 20% | 43.84d | 2026-06-01 | 2026-07-24 | 39d | 0d | start no earlier than 2026-06-01 |
| 159 | 3.3.2.3.9 | Aprovação de Conformidade | 3d | 2026-08-13 | 2026-08-17 | 151FF |  |  | 2026-07-22 | 2026-07-24 | 3d | 0d |  |
| 160 | 3.3.2.3.10 | Material para entrega ao contrato | 3d | 2026-08-13 | 2026-08-17 | 159FF |  |  | 2026-07-22 | 2026-07-24 | 3d | 0d |  |
| 161 | 3.3.2.4 | **PCI (Incêndio)** | 55d | 2026-06-01 A | 2026-08-17 |  | 20% | 43.99d | 2026-06-01 | 2026-07-24 | 39d | 0d |  |
| 162 | 3.3.2.4.1 | 02 - Implantação da Praça Inicial | 55d | 2026-06-01 A | 2026-08-17 |  | 20% | 43.84d | 2026-06-01 | 2026-07-24 | 39d | 0d | start no earlier than 2026-06-01 |
| 163 | 3.3.2.4.2 | 03 - Implantação Estação Final | 55d | 2026-06-01 A | 2026-08-17 |  | 20% | 43.84d | 2026-06-01 | 2026-07-24 | 39d | 0d | start no earlier than 2026-06-01 |
| 164 | 3.3.2.4.3 | 04 - Impantação Pátio de Manutenção | 55d | 2026-06-01 A | 2026-08-17 |  | 20% | 43.84d | 2026-06-01 | 2026-07-24 | 39d | 0d | start no earlier than 2026-06-01 |
| 165 | 3.3.2.4.4 | 05 - Implantação Alameda | 55d | 2026-06-01 A | 2026-08-17 |  | 20% | 43.84d | 2026-06-01 | 2026-07-24 | 39d | 0d | start no earlier than 2026-06-01 |
| 166 | 3.3.2.4.5 | 06 - Estação Inicial | 55d | 2026-06-01 A | 2026-08-17 |  | 20% | 43.84d | 2026-06-01 | 2026-07-24 | 39d | 0d | start no earlier than 2026-06-01 |
| 167 | 3.3.2.4.6 | 07 - Quiosques Estação Inicial e Alameda | 55d | 2026-06-01 A | 2026-08-17 |  | 20% | 43.84d | 2026-06-01 | 2026-07-24 | 39d | 0d | start no earlier than 2026-06-01 |
| 168 | 3.3.2.4.7 | 08 - Pátio de Manutenções | 55d | 2026-06-01 A | 2026-08-17 |  | 20% | 43.84d | 2026-06-01 | 2026-07-24 | 39d | 0d | start no earlier than 2026-06-01 |
| 169 | 3.3.2.4.8 | 09 - Quiosques Estação Final | 55d | 2026-06-01 A | 2026-08-17 |  | 20% | 43.84d | 2026-06-01 | 2026-07-24 | 39d | 0d | start no earlier than 2026-06-01 |
| 170 | 3.3.2.4.9 | Aprovação de Conformidade | 3d | 2026-08-13 | 2026-08-17 | 162FF |  |  | 2026-07-22 | 2026-07-24 | 3d | 0d |  |
| 171 | 3.3.2.4.10 | Material para entrega ao contrato | 3d | 2026-08-13 | 2026-08-17 | 170FF |  |  | 2026-07-22 | 2026-07-24 | 3d | 0d |  |

| ID | WBS | Task | Duration | Start | Finish | Predecessors | Complete | Remaining | Baseline start | Baseline finish | Baseline duration | Total slack | Constraint |
| --- | --- | --- | --- | --- | --- | --- | --- | --- | --- | --- | --- | --- | --- |
| 172 | 3.3.2.5 | **Elétrica Baixa Tensão** | 55d | 2026-06-01 A | 2026-08-17 |  | 20% | 43.99d | 2026-06-01 | 2026-07-24 | 39d | 0d |  |
| 173 | 3.3.2.5.1 | 02 - Implantação da Praça Inicial | 55d | 2026-06-01 A | 2026-08-17 |  | 20% | 43.84d | 2026-06-01 | 2026-07-24 | 39d | 0d | start no earlier than 2026-06-01 |
| 174 | 3.3.2.5.2 | 03 - Implantação Estação Final | 55d | 2026-06-01 A | 2026-08-17 |  | 20% | 43.84d | 2026-06-01 | 2026-07-24 | 39d | 0d | start no earlier than 2026-06-01 |
| 175 | 3.3.2.5.3 | 04 - Impantação Pátio de Manutenção | 55d | 2026-06-01 A | 2026-08-17 |  | 20% | 43.84d | 2026-06-01 | 2026-07-24 | 39d | 0d | start no earlier than 2026-06-01 |
| 176 | 3.3.2.5.4 | 05 - Implantação Alameda | 55d | 2026-06-01 A | 2026-08-17 |  | 20% | 43.84d | 2026-06-01 | 2026-07-24 | 39d | 0d | start no earlier than 2026-06-01 |
| 177 | 3.3.2.5.5 | 06 - Estação Inicial | 55d | 2026-06-01 A | 2026-08-17 |  | 20% | 43.84d | 2026-06-01 | 2026-07-24 | 39d | 0d | start no earlier than 2026-06-01 |
| 178 | 3.3.2.5.6 | 07 - Quiosques Estação Inicial e Alameda | 55d | 2026-06-01 A | 2026-08-17 |  | 20% | 43.84d | 2026-06-01 | 2026-07-24 | 39d | 0d | start no earlier than 2026-06-01 |
| 179 | 3.3.2.5.7 | 08 - Pátio de Manutenções | 55d | 2026-06-01 A | 2026-08-17 |  | 20% | 43.84d | 2026-06-01 | 2026-07-24 | 39d | 0d | start no earlier than 2026-06-01 |
| 180 | 3.3.2.5.8 | 09 - Quiosques Estação Final | 55d | 2026-06-01 A | 2026-08-17 |  | 20% | 43.84d | 2026-06-01 | 2026-07-24 | 39d | 0d | start no earlier than 2026-06-01 |
| 181 | 3.3.2.5.9 | Aprovação de Conformidade | 3d | 2026-08-13 | 2026-08-17 | 173FF |  |  | 2026-07-22 | 2026-07-24 | 3d | 0d |  |
| 182 | 3.3.2.5.10 | Material para entrega ao contrato | 3d | 2026-08-13 | 2026-08-17 | 181FF |  |  | 2026-07-22 | 2026-07-24 | 3d | 0d |  |
| 183 | 3.3.2.6 | **Telecom** | 55d | 2026-06-01 A | 2026-08-17 |  | 20% | 43.99d | 2026-06-01 | 2026-07-24 | 39d | 0d |  |
| 184 | 3.3.2.6.1 | 02 - Implantação da Praça Inicial | 55d | 2026-06-01 A | 2026-08-17 |  | 20% | 43.84d | 2026-06-01 | 2026-07-24 | 39d | 0d | start no earlier than 2026-06-01 |
| 185 | 3.3.2.6.2 | 03 - Implantação Estação Final | 55d | 2026-06-01 A | 2026-08-17 |  | 20% | 43.84d | 2026-06-01 | 2026-07-24 | 39d | 0d | start no earlier than 2026-06-01 |
| 186 | 3.3.2.6.3 | 04 - Impantação Pátio de Manutenção | 55d | 2026-06-01 A | 2026-08-17 |  | 20% | 43.84d | 2026-06-01 | 2026-07-24 | 39d | 0d | start no earlier than 2026-06-01 |
| 187 | 3.3.2.6.4 | 05 - Implantação Alameda | 55d | 2026-06-01 A | 2026-08-17 |  | 20% | 43.84d | 2026-06-01 | 2026-07-24 | 39d | 0d | start no earlier than 2026-06-01 |
| 188 | 3.3.2.6.5 | 06 - Estação Inicial | 55d | 2026-06-01 A | 2026-08-17 |  | 20% | 43.84d | 2026-06-01 | 2026-07-24 | 39d | 0d | start no earlier than 2026-06-01 |
| 189 | 3.3.2.6.6 | 07 - Quiosques Estação Inicial e Alameda | 55d | 2026-06-01 A | 2026-08-17 |  | 20% | 43.84d | 2026-06-01 | 2026-07-24 | 39d | 0d | start no earlier than 2026-06-01 |
| 190 | 3.3.2.6.7 | 08 - Pátio de Manutenções | 55d | 2026-06-01 A | 2026-08-17 |  | 20% | 43.84d | 2026-06-01 | 2026-07-24 | 39d | 0d | start no earlier than 2026-06-01 |
| 191 | 3.3.2.6.8 | 09 - Quiosques Estação Final | 55d | 2026-06-01 A | 2026-08-17 |  | 20% | 43.84d | 2026-06-01 | 2026-07-24 | 39d | 0d | start no earlier than 2026-06-01 |
| 192 | 3.3.2.6.9 | Aprovação de Conformidade | 3d | 2026-08-13 | 2026-08-17 | 184FF |  |  | 2026-07-22 | 2026-07-24 | 3d | 0d |  |
| 193 | 3.3.2.6.10 | Material para entrega ao contrato | 3d | 2026-08-13 | 2026-08-17 | 192FF |  |  | 2026-07-22 | 2026-07-24 | 3d | 0d |  |
| 194 | 3.3.2.7 | **Subestação** | 55d | 2026-06-01 A | 2026-08-17 |  | 20% | 43.99d | 2026-06-01 | 2026-07-24 | 39d | 0d |  |
| 195 | 3.3.2.7.1 | 02 - Implantação da Praça Inicial | 55d | 2026-06-01 A | 2026-08-17 |  | 20% | 43.84d | 2026-06-01 | 2026-07-24 | 39d | 0d | start no earlier than 2026-06-01 |
| 196 | 3.3.2.7.2 | 03 - Implantação Estação Final | 55d | 2026-06-01 A | 2026-08-17 |  | 20% | 43.84d | 2026-06-01 | 2026-07-24 | 39d | 0d | start no earlier than 2026-06-01 |
| 197 | 3.3.2.7.3 | 04 - Impantação Pátio de Manutenção | 55d | 2026-06-01 A | 2026-08-17 |  | 20% | 43.84d | 2026-06-01 | 2026-07-24 | 39d | 0d | start no earlier than 2026-06-01 |
| 198 | 3.3.2.7.4 | 05 - Implantação Alameda | 55d | 2026-06-01 A | 2026-08-17 |  | 20% | 43.84d | 2026-06-01 | 2026-07-24 | 39d | 0d | start no earlier than 2026-06-01 |
| 199 | 3.3.2.7.5 | 06 - Estação Inicial | 55d | 2026-06-01 A | 2026-08-17 |  | 20% | 43.84d | 2026-06-01 | 2026-07-24 | 39d | 0d | start no earlier than 2026-06-01 |
| 200 | 3.3.2.7.6 | 07 - Quiosques Estação Inicial e Alameda | 55d | 2026-06-01 A | 2026-08-17 |  | 20% | 43.84d | 2026-06-01 | 2026-07-24 | 39d | 0d | start no earlier than 2026-06-01 |
| 201 | 3.3.2.7.7 | 08 - Pátio de Manutenções | 55d | 2026-06-01 A | 2026-08-17 |  | 20% | 43.84d | 2026-06-01 | 2026-07-24 | 39d | 0d | start no earlier than 2026-06-01 |
| 202 | 3.3.2.7.8 | 09 - Quiosques Estação Final | 55d | 2026-06-01 A | 2026-08-17 |  | 20% | 43.84d | 2026-06-01 | 2026-07-24 | 39d | 0d | start no earlier than 2026-06-01 |
| 203 | 3.3.2.7.9 | Aprovação de Conformidade | 3d | 2026-08-13 | 2026-08-17 | 195FF |  |  | 2026-07-22 | 2026-07-24 | 3d | 0d |  |
| 204 | 3.3.2.7.10 | Material para entrega ao contrato | 3d | 2026-08-13 | 2026-08-17 | 203FF |  |  | 2026-07-22 | 2026-07-24 | 3d | 0d |  |

| ID | WBS | Task | Duration | Start | Finish | Predecessors | Complete | Remaining | Baseline start | Baseline finish | Baseline duration | Total slack | Constraint |
| --- | --- | --- | --- | --- | --- | --- | --- | --- | --- | --- | --- | --- | --- |
| 205 | 3.3.2.8 | **SPDA** | 55d | 2026-06-01 A | 2026-08-17 |  | 20% | 43.99d | 2026-06-01 | 2026-07-24 | 39d | 0d |  |
| 206 | 3.3.2.8.1 | 02 - Implantação da Praça Inicial | 55d | 2026-06-01 A | 2026-08-17 |  | 20% | 43.84d | 2026-06-01 | 2026-07-24 | 39d | 0d | start no earlier than 2026-06-01 |
| 207 | 3.3.2.8.2 | 03 - Implantação Estação Final | 55d | 2026-06-01 A | 2026-08-17 |  | 20% | 43.84d | 2026-06-01 | 2026-07-24 | 39d | 0d | start no earlier than 2026-06-01 |
| 208 | 3.3.2.8.3 | 04 - Impantação Pátio de Manutenção | 55d | 2026-06-01 A | 2026-08-17 |  | 20% | 43.84d | 2026-06-01 | 2026-07-24 | 39d | 0d | start no earlier than 2026-06-01 |
| 209 | 3.3.2.8.4 | 05 - Implantação Alameda | 55d | 2026-06-01 A | 2026-08-17 |  | 20% | 43.84d | 2026-06-01 | 2026-07-24 | 39d | 0d | start no earlier than 2026-06-01 |
| 210 | 3.3.2.8.5 | 06 - Estação Inicial | 55d | 2026-06-01 A | 2026-08-17 |  | 20% | 43.84d | 2026-06-01 | 2026-07-24 | 39d | 0d | start no earlier than 2026-06-01 |
| 211 | 3.3.2.8.6 | 07 - Quiosques Estação Inicial e Alameda | 55d | 2026-06-01 A | 2026-08-17 |  | 20% | 43.84d | 2026-06-01 | 2026-07-24 | 39d | 0d | start no earlier than 2026-06-01 |
| 212 | 3.3.2.8.7 | 08 - Pátio de Manutenções | 55d | 2026-06-01 A | 2026-08-17 |  | 20% | 43.84d | 2026-06-01 | 2026-07-24 | 39d | 0d | start no earlier than 2026-06-01 |
| 213 | 3.3.2.8.8 | 09 - Quiosques Estação Final | 55d | 2026-06-01 A | 2026-08-17 |  | 20% | 43.84d | 2026-06-01 | 2026-07-24 | 39d | 0d | start no earlier than 2026-06-01 |
| 214 | 3.3.2.8.9 | Aprovação de Conformidade | 3d | 2026-08-13 | 2026-08-17 | 206FF |  |  | 2026-07-22 | 2026-07-24 | 3d | 0d |  |
| 215 | 3.3.2.8.10 | Material para entrega ao contrato | 3d | 2026-08-13 | 2026-08-17 | 214FF |  |  | 2026-07-22 | 2026-07-24 | 3d | 0d |  |
| 216 | 3.3.2.9 | **Energia Renovável** | 55d | 2026-06-01 A | 2026-08-17 |  | 20% | 44.14d | 2026-06-01 | 2026-07-24 | 39d | 0d |  |
| 217 | 3.3.2.9.1 | 02 - Implantação da Praça Inicial | 55d | 2026-06-01 A | 2026-08-17 |  | 20% | 43.84d | 2026-06-01 | 2026-07-24 | 39d | 0d | start no earlier than 2026-06-01 |
| 218 | 3.3.2.9.2 | 03 - Implantação Estação Final | 55d | 2026-06-01 A | 2026-08-17 |  | 20% | 43.84d | 2026-06-01 | 2026-07-24 | 39d | 0d | start no earlier than 2026-06-01 |
| 219 | 3.3.2.9.3 | 04 - Impantação Pátio de Manutenção | 55d | 2026-06-01 A | 2026-08-17 |  | 20% | 43.84d | 2026-06-01 | 2026-07-24 | 39d | 0d | start no earlier than 2026-06-01 |
| 220 | 3.3.2.9.4 | 06 - Estação Inicial | 55d | 2026-06-01 A | 2026-08-17 |  | 20% | 43.84d | 2026-06-01 | 2026-07-24 | 39d | 0d | start no earlier than 2026-06-01 |
| 221 | 3.3.2.9.5 | Aprovação de Conformidade | 3d | 2026-08-13 | 2026-08-17 | 217FF |  |  | 2026-07-22 | 2026-07-24 | 3d | 0d |  |
| 222 | 3.3.2.9.6 | Material para entrega ao contrato | 3d | 2026-08-13 | 2026-08-17 | 221FF |  |  | 2026-07-22 | 2026-07-24 | 3d | 0d |  |
| 223 | 4 | P4 - Orçamento/Cronograma | 20d | 2026-08-18 | 2026-09-15 | 30 |  |  | 2026-07-28 | 2026-08-24 | 20d | 0d |  |
| 224 | 5 | P5 - Modelagem Econômico Financeira | 10d | 2026-09-01 | 2026-09-15 | 223FF |  |  | 2026-08-11 | 2026-08-24 | 10d | 0d |  |
| 225 | 6 | P6 - Modelagem Jurídica | 10d | 2026-09-01 | 2026-09-15 | 223FF |  |  | 2026-08-11 | 2026-08-24 | 10d | 0d |  |
