# OS 067 - ANTEPROJETO ESCOLA DE CINEMA

Schedule from MS Project, 2026-05-04 to 2026-09-25, status date 2026-08-11, A marks actual dates.

## Calendars

- Calendário 1: Mon-Fri 09:00-12:00, 13:00-18:00; Sat-Sun off. Exceptions (off unless hours are given): 2026-06-04 (Feriado Corpus Christi), 2026-09-07 (Feriado Independencia do Brasil).

## Resources

| Resource | Group |
| --- | --- |
| SMI Engenharia | SMI |
| Rui Raoli BIM |  |
| Tecra Engenharia | Tecra |
| Dorothea Heirichs | Dorothea |
| Yuka Ogawa | Yuka |
| Jurídico Quanta |  |
| Priscila Abreu EST |  |
| Leomar Delgado | Leomar |
| Limonge de Almeida | Limonge |
| AeB Engenharia | AeB engenharia |
| Fernanda Garruti EST |  |
| Rodrigo Goes EST |  |
| Nous Engenharia (Wanessa) | Nous Engenharia |
| Abel Lopes HID |  |
| Matheus Ferreira HID |  |
| Kayke Cheli PROJ |  |
| João Gabriel PROJ |  |
| Alan Albuquerque ELE |  |
| Leo Ferrari ELE |  |
| Marcelo Ricardo ELE |  |
| Gabriel Caurim | Gcaurin |
| MOB Eng | MOB |
| Heitor Rubio ELE |  |
| Paulo G. ELE |  |
| Thaíza Rodrig. ELE |  |
| Rafael Menna ENE |  |
| Lucas Pacheco ENE |  |
| Lucas Silva ENE Estag |  |
| Amanda W. HID |  |
| Neemias PCI/GAS |  |
| Anderson F. HVAC |  |
| Alexandre Blumel |  |
| Vanessa Maia ORC |  |
| Bruno Souza ORC |  |
| Romulo Santos ORC |  |
| Diego Bieger | Diego Bieger |
| Tiago Carlos TER |  |
| Raquel Morano |  |
| Guilherme ECO |  |
| Setor Jurídico |  |
| Vinicius Delgado |  |
| Morena Braga |  |
| P/ TERCEIRIZAR |  |
| MAFRA | MAFRA |
| BLR | BLR |
| COTRAL | COTRAL |
| Prime | PRIME |
| CODEMAR | Cliente |
| SEMED | Cliente |
| Carlos Alberto (Casoba) |  |
| Cezar Augusto ELE |  |
| Carlos Santos TER |  |
| Maíra Rocha |  |
| Jairo Diniz |  |
| Eloá Honaiser |  |
| Erick Lima |  |
| Tarcísio Marques CPT |  |
| Igor Freire DADOS |  |
| Hagata Oliveira DADOS |  |
| Marcel Silva CNF |  |
| Gustavo Oliveira CNF |  |
| Letícia Gonç. CNF |  |
| Equipe Energia |  |
| Petras |  |
| Pilotis |  |
| Rodofer |  |
| TMSilva |  |
| STCGEO |  |
| Vitor Sales GEO |  |
| Prossema | Prossema |
| Proseng | Prosseng |
| Pamplona | Pamplona |
| PeX | PeX |
| Eoliver | Eoliver |
| Aleff Moura |  |
| S&A Engenharia |  |
| Matheus Barboza MOBILIDADE |  |
| Neemias Eloy PCI/GAS |  |
| TecTON |  |
| Anderson F. HVAC |  |
| Gabriela Gama ARQ |  |
| Bruno Almeida ARQ |  |
| Richard Marx ARQ |  |
| Lorena ARQ |  |
| Camila ARQ |  |
| Mariana ARQ |  |
| Érica ARQ |  |
| Maria Lis ARQ |  |
| Antônio Alves ARQ |  |
| Juliana ARQ |  |
| Caio Ary ARQ |  |
| Roberto Mattos ARQ |  |
| Camilla Bessa CNF |  |
| Alex Matoso SUP |  |
| Aline Bonsanto CPT |  |
| Pavanello |  |
| AKKERMAN |  |
| RiO RAMP |  |

## Schedule

| ID | WBS | Task | Type | Duration | Start | Finish | Predecessors | Complete | Remaining | Baseline start | Baseline finish | Baseline duration | Total slack | Constraint |
| --- | --- | --- | --- | --- | --- | --- | --- | --- | --- | --- | --- | --- | --- | --- |
| 1 | 1 | **P0 - Estudos Iniciais/Plano de Trabalho** |  | 64d | 2026-05-04 A | 2026-07-31 A |  | 100% |  | 2026-05-04 | 2026-07-31 | 64d |  |  |
| 2 | 1.1 | Marco de Abertura de OS |  | 1d | 2026-05-04 A | 2026-05-04 A |  | 100% |  | 2026-05-04 | 2026-05-04 | 1d |  | start no earlier than 2026-05-04 |
| 3 | 1.2 | Recebimento de dados da contratante |  | 1d | 2026-05-04 A | 2026-05-04 A |  | 100% |  | 2026-05-04 | 2026-05-04 | 1d |  | start no earlier than 2026-05-04 |
| 4 | 1.3 | Recebimento de dados do projeto |  | 6d | 2026-06-09 A | 2026-06-16 A |  | 100% |  | 2026-06-09 | 2026-06-16 | 6d |  | start no earlier than 2026-06-09 |
| 5 | 1.4 | **Definições do projeto** |  | 0d | 2026-06-09 A | 2026-06-09 A |  | 100% |  | 2026-06-09 | 2026-06-09 | 0d |  |  |
| 6 | 1.4.1 | Definição de escopo | milestone | 0d | 2026-06-09 A | 2026-06-09 A |  | 100% |  | 2026-06-09 | 2026-06-09 | 0d |  | start no earlier than 2026-06-09 |
| 7 | 1.4.2 | Aprovação do escopo (contrato) | milestone | 0d | 2026-06-09 A | 2026-06-09 A |  | 100% |  | 2026-06-09 | 2026-06-09 | 0d |  | start no earlier than 2026-06-09 |
| 8 | 1.4.3 | Definição de responsabilidades | milestone | 0d | 2026-06-09 A | 2026-06-09 A |  | 100% |  | 2026-06-09 | 2026-06-09 | 0d |  | start no earlier than 2026-06-09 |
| 9 | 1.4.4 | Definição de comunicação | milestone | 0d | 2026-06-09 A | 2026-06-09 A |  | 100% |  | 2026-06-09 | 2026-06-09 | 0d |  | start no earlier than 2026-06-09 |
| 10 | 1.4.5 | Forma de gerenciamento do escopo | milestone | 0d | 2026-06-09 A | 2026-06-09 A |  | 100% |  | 2026-06-09 | 2026-06-09 | 0d |  | start no earlier than 2026-06-09 |
| 11 | 1.4.6 | Requisitos de qualidade | milestone | 0d | 2026-06-09 A | 2026-06-09 A |  | 100% |  | 2026-06-09 | 2026-06-09 | 0d |  | start no earlier than 2026-06-09 |
| 12 | 1.4.7 | Forma de gerenciamento da qualidade | milestone | 0d | 2026-06-09 A | 2026-06-09 A |  | 100% |  | 2026-06-09 | 2026-06-09 | 0d |  | start no earlier than 2026-06-09 |
| 13 | 1.5 | **Definição de Subcontratadas necessárias** |  | 12d | 2026-07-06 A | 2026-07-21 A |  | 100% |  | 2026-07-06 | 2026-07-21 | 12d |  |  |
| 14 | 1.5.1 | Definir quais diciplinas e edificações devem ser cotadas externamente |  | 3d | 2026-07-06 A | 2026-07-08 A |  | 100% |  | 2026-07-06 | 2026-07-08 | 3d |  | start no earlier than 2026-07-06 |
| 15 | 1.5.2 | Envio e Resposta dos fornecedores |  | 3d | 2026-07-09 A | 2026-07-13 A | 14 | 100% |  | 2026-07-09 | 2026-07-13 | 3d |  |  |
| 16 | 1.5.3 | Seleção das subcontratações |  | 3d | 2026-07-14 A | 2026-07-16 A | 15 | 100% |  | 2026-07-14 | 2026-07-16 | 3d |  |  |
| 17 | 1.5.4 | Reunião Kickoff - Subcontratadas |  | 3d | 2026-07-17 A | 2026-07-21 A | 16 | 100% |  | 2026-07-17 | 2026-07-21 | 3d |  |  |
| 18 | 1.6 | **Elaborar/Ajustar Cronograma - compatível com o escopo do projeto** |  | 25d | 2026-06-29 A | 2026-07-31 A |  | 100% |  | 2026-06-29 | 2026-07-31 | 25d |  |  |
| 19 | 1.6.1 | Estruturação da EAP |  | 5d | 2026-06-29 A | 2026-07-03 A |  | 100% |  | 2026-06-29 | 2026-07-03 | 5d |  | start no earlier than 2026-06-29 |
| 20 | 1.6.2 | Ajuste de prazos |  | 5d | 2026-07-06 A | 2026-07-10 A | 19 | 100% |  | 2026-07-06 | 2026-07-10 | 5d |  |  |
| 21 | 1.6.3 | Inclusão de recursos |  | 5d | 2026-07-27 A | 2026-07-31 A | 20FS+10d | 100% |  | 2026-07-27 | 2026-07-31 | 5d |  |  |
| 22 | 2 | **P0 - Serviços de campo** |  | 40d | 2026-06-09 A | 2026-08-03 |  | 96% | 1.74d | 2026-06-09 | 2026-07-06 | 20d | 38d |  |
| 23 | 2.1 | Sondagem |  | 20d | 2026-06-09 A | 2026-07-06 A |  | 100% |  | 2026-06-09 | 2026-07-06 | 20d |  | start no earlier than 2026-06-09 |
| 24 | 2.2 | **Topografia** |  | 4d | 2026-06-29 A | 2026-07-02 A |  | 100% |  | 2026-06-29 | 2026-07-02 | 4d |  |  |
| 25 | 2.2.1 | Levantamento topográfico |  | 1d | 2026-06-29 A | 2026-06-29 A |  | 100% |  | 2026-06-29 | 2026-06-29 | 1d |  | start no earlier than 2026-06-29 |
| 26 | 2.2.2 | Processamento |  | 1d | 2026-06-30 A | 2026-06-30 A | 25 | 100% |  | 2026-06-30 | 2026-06-30 | 1d |  |  |
| 27 | 2.2.3 | Finalização do projeto topográfico |  | 2d | 2026-07-01 A | 2026-07-02 A | 26 | 100% |  | 2026-07-01 | 2026-07-02 | 2d |  |  |
| 28 | 2.3 | Estudos iniciais |  | 20d | 2026-06-09 A | 2026-07-06 A |  | 100% |  | 2026-06-09 | 2026-07-06 | 20d |  | start no earlier than 2026-06-09 |
| 29 | 2.4 | Estudo de inundação |  | 2d | 2026-07-31 | 2026-08-03 |  |  |  | 2026-06-09 | 2026-07-06 | 0d | 38d | start no earlier than 2026-07-31 |

| ID | WBS | Task | Duration | Start | Finish | Predecessors | Complete | Remaining | Baseline start | Baseline finish | Baseline duration | Total slack | Free slack | Constraint |
| --- | --- | --- | --- | --- | --- | --- | --- | --- | --- | --- | --- | --- | --- | --- |
| 30 | 3 | **P2 - Anteprojeto** | 45d | 2026-07-10 A | 2026-09-11 |  | 18% | 37d | 2026-07-10 | 2026-09-11 | 46d | 0d |  |  |
| 31 | 3.1 | **001 - Implantação** | 39d | 2026-07-20 A | 2026-09-11 |  | 3% | 37.9d | 2026-07-20 | 2026-09-11 | 40d | 0d |  |  |
| 32 | 3.1.1 | **LOD 300 - ANTEPROJETO** | 35d | 2026-07-20 | 2026-09-04 |  |  |  | 2026-07-20 | 2026-09-04 | 35d | 4d |  |  |
| 33 | 3.1.1.1 | Indicar simbologias de representação gráfica, conforme NBR 6492:2021; | 35d | 2026-07-20 | 2026-09-04 | 55SS |  |  | 2026-07-20 | 2026-09-04 | 35d | 4d |  | start no earlier than 2026-06-01 |
| 34 | 3.1.1.2 | Compatibilização (verificar se está tudo conforme as normas e alinhar com o restante das disciplinas de engenharia) | 35d | 2026-07-20 | 2026-09-04 | 55SS |  |  | 2026-07-20 | 2026-09-04 | 35d | 4d |  | start no earlier than 2026-06-01 |
| 35 | 3.1.1.3 | Compatibilização (deixar tudo conforme padrão Quanta) | 35d | 2026-07-20 | 2026-09-04 | 55SS |  |  | 2026-07-20 | 2026-09-04 | 35d | 4d |  | start no earlier than 2026-06-01 |
| 36 | 3.1.1.4 | Indicação de Norte; | 35d | 2026-07-20 | 2026-09-04 | 55SS |  |  | 2026-07-20 | 2026-09-04 | 35d | 4d |  | start no earlier than 2026-06-01 |
| 37 | 3.1.1.5 | Indicação de Escala; | 35d | 2026-07-20 | 2026-09-04 | 55SS |  |  | 2026-07-20 | 2026-09-04 | 35d | 4d |  | start no earlier than 2026-06-01 |
| 38 | 3.1.1.6 | Vias de acesso e calçadas; | 35d | 2026-07-20 | 2026-09-04 | 55SS |  |  | 2026-07-20 | 2026-09-04 | 35d | 4d |  | start no earlier than 2026-06-01 |
| 39 | 3.1.1.7 | Definição dos Percursos e caminhos | 35d | 2026-07-20 | 2026-09-04 | 55SS |  |  | 2026-07-20 | 2026-09-04 | 35d | 4d |  | start no earlier than 2026-06-01 |
| 40 | 3.1.1.8 | Definição de desenhos de canteiros | 35d | 2026-07-20 | 2026-09-04 | 55SS |  |  | 2026-07-20 | 2026-09-04 | 35d | 4d |  | start no earlier than 2026-06-01 |
| 41 | 3.1.1.9 | Localização de Mobiliário | 35d | 2026-07-20 | 2026-09-04 | 55SS |  |  | 2026-07-20 | 2026-09-04 | 35d | 4d |  | start no earlier than 2026-06-01 |
| 42 | 3.1.1.10 | Acesso principal do objeto arquitetônico; | 35d | 2026-07-20 | 2026-09-04 | 55SS |  |  | 2026-07-20 | 2026-09-04 | 35d | 4d |  | start no earlier than 2026-06-01 |
| 43 | 3.1.1.11 | Definição de localização de rampas e escadarias | 35d | 2026-07-20 | 2026-09-04 | 55SS |  |  | 2026-07-20 | 2026-09-04 | 35d | 4d |  | start no earlier than 2026-06-01 |
| 44 | 3.1.1.12 | Platôs e taludes; | 35d | 2026-07-20 | 2026-09-04 | 55SS |  |  | 2026-07-20 | 2026-09-04 | 35d | 4d |  | start no earlier than 2026-06-01 |
| 45 | 3.1.1.13 | Perímetro do terreno, recuos e afastamentos; | 35d | 2026-07-20 | 2026-09-04 | 55SS |  |  | 2026-07-20 | 2026-09-04 | 35d | 4d |  | start no earlier than 2026-06-01 |
| 46 | 3.1.1.14 | Eixos do projeto com respectivo ponto de referência; | 35d | 2026-07-20 | 2026-09-04 | 55SS |  |  | 2026-07-20 | 2026-09-04 | 35d | 4d |  | start no earlier than 2026-06-01 |
| 47 | 3.1.1.15 | Denominação das edificações, blocos ou espaços; | 35d | 2026-07-20 | 2026-09-04 | 55SS |  |  | 2026-07-20 | 2026-09-04 | 35d | 4d |  | start no earlier than 2026-06-01 |
| 48 | 3.1.1.16 | Indicação de áreas cobertas e estacionamentos; | 35d | 2026-07-20 | 2026-09-04 | 55SS |  |  | 2026-07-20 | 2026-09-04 | 35d | 4d |  | start no earlier than 2026-06-01 |
| 49 | 3.1.1.17 | Cotas gerais | 35d | 2026-07-20 | 2026-09-04 | 55SS |  |  | 2026-07-20 | 2026-09-04 | 35d | 4d |  | start no earlier than 2026-06-01 |
| 50 | 3.1.1.18 | Cotas de nível principais | 35d | 2026-07-20 | 2026-09-04 | 55SS |  |  | 2026-07-20 | 2026-09-04 | 35d | 4d |  | start no earlier than 2026-06-01 |
| 51 | 3.1.1.19 | Quadro de áreas | 35d | 2026-07-20 | 2026-09-04 | 55SS |  |  | 2026-07-20 | 2026-09-04 | 35d | 4d | 0d | start no earlier than 2026-06-01 |
| 52 | 3.1.1.20 | Aprovação de Conformidade | 3d | 2026-09-02 | 2026-09-04 | 51FF |  |  | 2026-09-02 | 2026-09-04 | 3d | 4d |  |  |
| 53 | 3.1.1.21 | Material para entrega ao contrato | 3d | 2026-09-02 | 2026-09-04 | 51FF |  |  | 2026-09-02 | 2026-09-04 | 3d | 4d |  |  |

| ID | WBS | Task | Duration | Start | Finish | Predecessors | Complete | Remaining | Baseline start | Baseline finish | Baseline duration | Total slack | Free slack | Constraint | Text3 |
| --- | --- | --- | --- | --- | --- | --- | --- | --- | --- | --- | --- | --- | --- | --- | --- |
| 54 | 3.1.2 | **Terraplanagem / Pavimentação** | 39d | 2026-07-20 A | 2026-09-11 |  | 5% | 37.05d | 2026-07-20 | 2026-09-11 | 39d | 0d |  |  |  |
| 55 | 3.1.2.1 | **LOD 100 — Premissas, diretrizes e interfaces** | 10d | 2026-07-20 A | 2026-07-31 |  | 26% | 7.36d | 2026-07-20 | 2026-07-31 | 10d | 29d | 0d |  | ܁$ |
| 56 | 3.1.2.1.1 | Avaliação geral de interferências e topografia local. | 5d | 2026-07-20 A | 2026-07-24 |  | 62% | 1.92d | 2026-07-20 | 2026-07-24 | 5d | 34d | 0d | start no earlier than 2026-07-20 |  |
| 57 | 3.1.2.1.2 | Curvas de nível preliminares (quando disponíveis). | 5d | 2026-07-20 A | 2026-07-24 | 56SS | 62% | 1.92d | 2026-07-20 | 2026-07-24 | 5d | 29d | 0d |  |  |
| 58 | 3.1.2.1.3 | Levantamento topográfico inicial com representação genérica da área. | 5d | 2026-07-20 A | 2026-07-24 | 56SS | 62% | 1.92d | 2026-07-20 | 2026-07-24 | 5d | 0d |  |  |  |
| 59 | 3.1.2.1.4 | Análise estimativa de movimentação de terra. | 5d | 2026-07-27 | 2026-07-31 | 57 |  |  | 2026-07-27 | 2026-07-31 | 5d | 29d |  |  |  |
| 60 | 3.1.2.1.5 | Estudos de viabilidade | 5d | 2026-07-27 | 2026-07-31 | 57 |  |  | 2026-07-27 | 2026-07-31 | 5d | 29d |  |  |  |
| 61 | 3.1.2.1.6 | Elementos representados de forma simbólica sem georreferenciamento preciso. | 5d | 2026-07-27 | 2026-07-31 | 58 |  |  | 2026-07-27 | 2026-07-31 | 5d | 29d |  |  |  |
| 62 | 3.1.2.1.7 | Superfície genérica do terreno. | 5d | 2026-07-27 | 2026-07-31 | 58 |  |  | 2026-07-27 | 2026-07-31 | 5d | 0d |  |  |  |
| 63 | 3.1.2.2 | **LOD 200 — Validação interdisciplinar e solução preliminar** | 19d | 2026-08-03 | 2026-08-27 |  |  |  | 2026-08-03 | 2026-08-27 | 19d | 0d |  |  | ܁$ |
| 64 | 3.1.2.2.1 | Avaliação técnica detalhada. | 19d | 2026-08-03 | 2026-08-27 | 62 |  |  | 2026-08-03 | 2026-08-27 | 19d | 10d |  |  |  |
| 65 | 3.1.2.2.2 | Compatibilização inicial com drenagem, fundações e geometria. | 19d | 2026-08-03 | 2026-08-27 | 62 |  |  | 2026-08-03 | 2026-08-27 | 19d | 10d |  |  |  |
| 66 | 3.1.2.2.3 | Indicação dos pontos de sondagem em planta georreferenciada. | 19d | 2026-08-03 | 2026-08-27 | 62 |  |  | 2026-08-03 | 2026-08-27 | 19d | 10d |  |  |  |
| 67 | 3.1.2.2.4 | Sondagens geotécnicas: Cronograma de execução com áreas e quantidade de perfurações; Boletins informativos com planta de localização dos furos, profundidades e descrição estratigráfica (solo). | 19d | 2026-08-03 | 2026-08-27 | 62 |  |  | 2026-08-03 | 2026-08-27 | 19d | 10d |  |  |  |
| 68 | 3.1.2.2.5 | Levantamento topográfico: Arquivo em formato.dwg, com coordenadas georreferenciadas (latitude/longitude), curvas de nível, ortofoto e base planimétrica. | 19d | 2026-08-03 | 2026-08-27 | 62 |  |  | 2026-08-03 | 2026-08-27 | 19d | 10d |  |  |  |
| 69 | 3.1.2.2.6 | Planta topográfica com triangulação real (MDT). | 19d | 2026-08-03 | 2026-08-27 | 62 |  |  | 2026-08-03 | 2026-08-27 | 19d | 0d |  |  |  |
| 70 | 3.1.2.3 | **LOD 300 - Consolidação e documentação de entrega** | 10d | 2026-08-28 | 2026-09-11 |  |  |  | 2026-08-28 | 2026-09-11 | 10d | 0d |  |  | ܁$ |
| 71 | 3.1.2.3.1 | Alinhamentos de estaqueamento longitudinal e transversal. | 5d | 2026-08-28 | 2026-09-03 | 69 |  |  | 2026-08-28 | 2026-09-03 | 5d | 5d |  |  |  |
| 72 | 3.1.2.3.2 | Análise integrada dos dados topográficos e de sondagem. | 5d | 2026-08-28 | 2026-09-03 | 69 |  |  | 2026-08-28 | 2026-09-03 | 5d | 5d |  |  |  |
| 73 | 3.1.2.3.3 | Planta baixa georreferenciada com projeção de cortes e aterros. | 10d | 2026-08-28 | 2026-09-11 | 69 |  |  | 2026-08-28 | 2026-09-11 | 10d | 0d |  |  |  |
| 74 | 3.1.2.3.4 | Perfis longitudinais e transversais do terreno na situação atual e projetada. | 5d | 2026-08-28 | 2026-09-03 | 69 |  |  | 2026-08-28 | 2026-09-03 | 5d | 5d |  |  |  |
| 75 | 3.1.2.3.5 | Tabelas com variações altimétricas de corte e aterro. | 5d | 2026-09-04 | 2026-09-11 | 73FF |  |  | 2026-09-04 | 2026-09-11 | 5d | 0d |  |  |  |
| 76 | 3.1.2.3.6 | Aprovação de Conformidade | 3d | 2026-09-09 | 2026-09-11 | 73FF |  |  | 2026-09-09 | 2026-09-11 | 3d | 0d |  |  | ܁8 |
| 77 | 3.1.2.3.7 | Material para entrega ao contrato | 3d | 2026-09-09 | 2026-09-11 | 73FF |  |  | 2026-09-09 | 2026-09-11 | 3d | 0d |  |  | ܁8 |

| ID | WBS | Task | Duration | Start | Finish | Predecessors | Complete | Remaining | Baseline start | Baseline finish | Baseline duration | Total slack | Text3 |
| --- | --- | --- | --- | --- | --- | --- | --- | --- | --- | --- | --- | --- | --- |
| 78 | 3.1.3 | **Drenagem** | 29d | 2026-08-03 A | 2026-09-11 |  | 5% | 27.55d | 2026-08-03 | 2026-09-11 | 30d | 0d |  |
| 79 | 3.1.3.1 | **LOD 100 — Premissas, diretrizes e interfaces** | 5d | 2026-08-03 A | 2026-08-07 |  | 12% | 4.39d | 2026-08-03 | 2026-08-07 | 5d | 24d |  |
| 80 | 3.1.3.1.1 | Diretrizes de espaço | 5d | 2026-08-03 A | 2026-08-07 | 62 | 12% | 4.39d | 2026-08-03 | 2026-08-07 | 5d | 24d |  |
| 81 | 3.1.3.1.2 | Memorial preliminar | 5d | 2026-08-03 A | 2026-08-07 | 62 | 12% | 4.39d | 2026-08-03 | 2026-08-07 | 5d | 24d |  |
| 82 | 3.1.3.1.3 | Análise climatológica | 5d | 2026-08-03 A | 2026-08-07 | 62 | 12% | 4.39d | 2026-08-03 | 2026-08-07 | 5d | 24d |  |
| 83 | 3.1.3.1.4 | Delimitação de área de contribuição | 5d | 2026-08-03 A | 2026-08-07 | 62 | 12% | 4.39d | 2026-08-03 | 2026-08-07 | 5d | 24d |  |
| 84 | 3.1.3.1.5 | Levantamento de elementos especiais dentre outras disciplinas de Engenharia e Arquitetura | 5d | 2026-08-03 A | 2026-08-07 | 62 | 12% | 4.39d | 2026-08-03 | 2026-08-07 | 5d | 24d |  |
| 85 | 3.1.3.1.6 | Indicação de áreas técnicas | 5d | 2026-08-03 A | 2026-08-07 | 62 | 12% | 4.39d | 2026-08-03 | 2026-08-07 | 5d | 24d |  |
| 86 | 3.1.3.1.7 | Planta baixa com traçado conceitual | 5d | 2026-08-03 A | 2026-08-07 | 62 | 12% | 4.39d | 2026-08-03 | 2026-08-07 | 5d | 24d |  |
| 87 | 3.1.3.1.8 | Traçado geral de descidas pluviais | 5d | 2026-08-03 A | 2026-08-07 | 62 | 12% | 4.39d | 2026-08-03 | 2026-08-07 | 5d | 0d |  |
| 88 | 3.1.3.2 | **LOD 200 — Validação interdisciplinar e solução preliminar** | 12d | 2026-08-10 | 2026-08-25 |  |  |  | 2026-08-10 | 2026-08-25 | 12d | 0d |  |
| 89 | 3.1.3.2.1 | Critérios normativos adotados (ABNT, concessionárias, etc.) | 6d | 2026-08-10 | 2026-08-17 | 87 |  |  | 2026-08-10 | 2026-08-17 | 6d | 0d |  |
| 90 | 3.1.3.2.2 | Lista preliminar de sistemas e interfaces envolvidos | 6d | 2026-08-10 | 2026-08-17 | 87 |  |  | 2026-08-10 | 2026-08-17 | 6d | 0d |  |
| 91 | 3.1.3.2.3 | Planta baixa e cortes estimada contendo: - Traçado preliminar de condutores verticais e horizontais - Dimensionamento inicial de calhas e condutores - Localização de elementos ou redes de drenagem existente - Indicação de áreas técnicas | 6d | 2026-08-10 | 2026-08-17 | 87 |  |  | 2026-08-10 | 2026-08-17 | 6d | 18d |  |
| 92 | 3.1.3.2.4 | Estudo de viabilidade técnica, econômica e ambiental | 6d | 2026-08-18 | 2026-08-25 | 89, 90 |  |  | 2026-08-18 | 2026-08-25 | 6d | 0d |  |
| 93 | 3.1.3.2.5 | Levantamento topográfico da área de contribuição e elementos existentes | 6d | 2026-08-18 | 2026-08-25 | 89, 90 |  |  | 2026-08-18 | 2026-08-25 | 6d | 0d |  |
| 94 | 3.1.3.2.6 | Sondagem (permeabilidade ou percolação) | 6d | 2026-08-18 | 2026-08-25 | 89, 90 |  |  | 2026-08-18 | 2026-08-25 | 6d | 12d |  |
| 95 | 3.1.3.3 | **LOD 300 - Consolidação e documentação de entrega** | 12d | 2026-08-26 | 2026-09-11 |  |  |  | 2026-08-26 | 2026-09-11 | 13d | 0d |  |
| 96 | 3.1.3.3.1 | Memorial descritivo | 3d | 2026-08-26 | 2026-08-28 | 93 |  |  | 2026-08-26 | 2026-08-28 | 3d | 1d |  |
| 97 | 3.1.3.3.2 | Memória de cálculo | 4d | 2026-08-26 | 2026-08-31 | 93, 92 |  |  | 2026-08-26 | 2026-08-31 | 5d | 0d |  |
| 98 | 3.1.3.3.3 | Planta, corte e detalhe isométrico contendo: - Detalhamento dos condutores com diâmetros, cotas e inclinações definitivas (condutores pluviais) - Calhas, bocas de lobo, dissipadores de energia e demais elementos/equipamentos definitivos | 5d | 2026-09-01 | 2026-09-08 | 96, 97 |  |  | 2026-09-01 | 2026-09-08 | 5d | 0d |  |
| 99 | 3.1.3.3.4 | Quantitativos e especificação técnica dos materiais | 3d | 2026-09-09 | 2026-09-11 | 98 |  |  | 2026-09-09 | 2026-09-11 | 3d | 0d |  |
| 100 | 3.1.3.3.5 | Aprovação de Conformidade | 3d | 2026-09-09 | 2026-09-11 | 99FF |  |  | 2026-09-09 | 2026-09-11 | 3d | 0d | ܁8 |
| 101 | 3.1.3.3.6 | Material para entrega ao contrato | 3d | 2026-09-09 | 2026-09-11 | 99FF |  |  | 2026-09-09 | 2026-09-11 | 3d | 0d | ܁8 |

| ID | WBS | Task | Duration | Start | Finish | Predecessors | Complete | Remaining | Baseline start | Baseline finish | Baseline duration | Total slack | Free slack |
| --- | --- | --- | --- | --- | --- | --- | --- | --- | --- | --- | --- | --- | --- |
| 102 | 3.1.4 | **Hidráulica** | 29d | 2026-08-03 A | 2026-09-11 |  | 5% | 27.55d | 2026-08-03 | 2026-09-11 | 29d | 0d |  |
| 103 | 3.1.4.1 | **LOD 100 — Premissas, diretrizes e interfaces** | 6d | 2026-08-03 A | 2026-08-10 |  | 19% | 4.84d | 2026-08-03 | 2026-08-10 | 6d | 23d |  |
| 104 | 3.1.4.1.1 | Memorial preliminar | 6d | 2026-08-03 A | 2026-08-10 | 78SS | 19% | 4.84d | 2026-08-03 | 2026-08-10 | 6d | 23d |  |
| 105 | 3.1.4.1.2 | Indicação de áreas técnicas | 6d | 2026-08-03 A | 2026-08-10 | 78SS | 19% | 4.84d | 2026-08-03 | 2026-08-10 | 6d | 23d |  |
| 106 | 3.1.4.1.3 | Planta baixa com traçado conceitual | 6d | 2026-08-03 A | 2026-08-10 | 78SS | 19% | 4.84d | 2026-08-03 | 2026-08-10 | 6d | 23d |  |
| 107 | 3.1.4.1.4 | Pontos de consumo principais e coletas sanitárias | 6d | 2026-08-03 A | 2026-08-10 | 78SS | 19% | 4.84d | 2026-08-03 | 2026-08-10 | 6d | 23d |  |
| 108 | 3.1.4.1.5 | Classificação de uso | 6d | 2026-08-03 A | 2026-08-10 | 78SS | 19% | 4.84d | 2026-08-03 | 2026-08-10 | 6d | 23d |  |
| 109 | 3.1.4.1.6 | Diretrizes de espaço | 6d | 2026-08-03 A | 2026-08-10 | 78SS | 19% | 4.84d | 2026-08-03 | 2026-08-10 | 6d | 23d |  |
| 110 | 3.1.4.1.7 | Estimativa de demanda ou população de uso | 6d | 2026-08-03 A | 2026-08-10 | 78SS | 19% | 4.84d | 2026-08-03 | 2026-08-10 | 6d | 23d |  |
| 111 | 3.1.4.1.8 | Levantamento de elementos especiais dentre outras disciplinas de Engenharia e Arquitetura | 6d | 2026-08-03 A | 2026-08-10 | 78SS | 19% | 4.84d | 2026-08-03 | 2026-08-10 | 6d | 0d |  |
| 112 | 3.1.4.2 | **LOD 200 — Validação interdisciplinar e solução preliminar** | 17d | 2026-08-11 | 2026-09-02 |  |  |  | 2026-08-11 | 2026-09-02 | 17d | 0d |  |
| 113 | 3.1.4.2.1 | Critérios normativos adotados (ABNT, concessionárias, etc.) | 17d | 2026-08-11 | 2026-09-02 | 111 |  |  | 2026-08-11 | 2026-09-02 | 17d | 6d | 0d |
| 114 | 3.1.4.2.2 | Informações de demanda na concessionária (DPE ou AVT Aviso de Viabilidade Técnica) | 17d | 2026-08-11 | 2026-09-02 | 113SS |  |  | 2026-08-11 | 2026-09-02 | 17d | 6d |  |
| 115 | 3.1.4.2.3 | Recebimento e Análise de Sondagem (permeabilidade ou percolação) | 17d | 2026-08-11 | 2026-09-02 | 113SS |  |  | 2026-08-11 | 2026-09-02 | 17d | 6d |  |
| 116 | 3.1.4.2.4 | Recebimento e Análise de Topografia | 17d | 2026-08-11 | 2026-09-02 | 113SS |  |  | 2026-08-11 | 2026-09-02 | 17d | 6d |  |
| 117 | 3.1.4.2.5 | Estudo de viabilidade técnica, econômica e ambiental | 17d | 2026-08-11 | 2026-09-02 | 113SS |  |  | 2026-08-11 | 2026-09-02 | 17d | 6d |  |
| 118 | 3.1.4.2.6 | Lista preliminar de sistemas envolvidos. | 17d | 2026-08-11 | 2026-09-02 | 111 |  |  | 2026-08-11 | 2026-09-02 | 17d | 6d |  |
| 119 | 3.1.4.2.7 | Planta baixa e cortes estimada contendo: - Traçado preliminar de barrilete, ramais, colunas - Diâmetros estimados - Localização aproximada das bombas e unidades de tratamento e reúso - Localização do ramal predial de água e esgoto - Localização aproximada | 17d | 2026-08-11 | 2026-09-02 | 111 |  |  | 2026-08-11 | 2026-09-02 | 17d | 0d |  |
| 120 | 3.1.4.3 | **LOD 300 - Consolidação e documentação de entrega** | 6d | 2026-09-03 | 2026-09-11 |  |  |  | 2026-09-03 | 2026-09-11 | 6d | 0d |  |
| 121 | 3.1.4.3.1 | Planta, corte e detalhe isométrico contendo: - Modelagem detalhada com diâmetros, cotas e inclinações definitivas (barriletes, colunas, ramais) - Quantitativos e especificação técnica dos materiais (tubos, conexões, reservatórios, registros e válvulas com | 6d | 2026-09-03 | 2026-09-11 | 119 |  |  | 2026-09-03 | 2026-09-11 | 6d | 0d |  |
| 122 | 3.1.4.3.2 | Memorial descritivo | 3d | 2026-09-09 | 2026-09-11 | 121FF |  |  | 2026-09-09 | 2026-09-11 | 3d | 0d |  |
| 123 | 3.1.4.3.3 | Memória de cálculo (pressão, vazão, diâmetros, perda de carga). | 3d | 2026-09-09 | 2026-09-11 | 119, 121FF |  |  | 2026-09-09 | 2026-09-11 | 3d | 0d |  |
| 124 | 3.1.4.4 | Aprovação de Conformidade | 3d | 2026-09-09 | 2026-09-11 | 120FF |  |  | 2026-09-09 | 2026-09-11 | 3d | 0d |  |
| 125 | 3.1.4.5 | Material para entrega ao contrato | 3d | 2026-09-09 | 2026-09-11 | 120FF |  |  | 2026-09-09 | 2026-09-11 | 3d | 0d |  |

| ID | WBS | Task | Duration | Start | Finish | Predecessors | Complete | Remaining | Baseline start | Baseline finish | Baseline duration | Total slack | Free slack |
| --- | --- | --- | --- | --- | --- | --- | --- | --- | --- | --- | --- | --- | --- |
| 126 | 3.1.5 | **Esgoto** | 29d | 2026-08-03 A | 2026-09-11 |  | 5% | 27.55d | 2026-08-03 | 2026-09-11 | 29d | 0d |  |
| 127 | 3.1.5.1 | **LOD 100 — Premissas, diretrizes e interfaces** | 6d | 2026-08-03 A | 2026-08-10 |  | 19% | 4.84d | 2026-08-03 | 2026-08-10 | 6d | 23d |  |
| 128 | 3.1.5.1.1 | Memorial preliminar | 6d | 2026-08-03 A | 2026-08-10 | 78SS | 19% | 4.84d | 2026-08-03 | 2026-08-10 | 6d | 23d |  |
| 129 | 3.1.5.1.2 | Indicação de áreas técnicas | 6d | 2026-08-03 A | 2026-08-10 | 78SS | 19% | 4.84d | 2026-08-03 | 2026-08-10 | 6d | 23d |  |
| 130 | 3.1.5.1.3 | Planta baixa com traçado conceitual | 6d | 2026-08-03 A | 2026-08-10 | 78SS | 19% | 4.84d | 2026-08-03 | 2026-08-10 | 6d | 23d |  |
| 131 | 3.1.5.1.4 | Pontos de consumo principais e coletas sanitárias | 6d | 2026-08-03 A | 2026-08-10 | 78SS | 19% | 4.84d | 2026-08-03 | 2026-08-10 | 6d | 23d |  |
| 132 | 3.1.5.1.5 | Classificação de uso | 6d | 2026-08-03 A | 2026-08-10 | 78SS | 19% | 4.84d | 2026-08-03 | 2026-08-10 | 6d | 23d |  |
| 133 | 3.1.5.1.6 | Diretrizes de espaço | 6d | 2026-08-03 A | 2026-08-10 | 78SS | 19% | 4.84d | 2026-08-03 | 2026-08-10 | 6d | 23d |  |
| 134 | 3.1.5.1.7 | Estimativa de demanda ou população de uso | 6d | 2026-08-03 A | 2026-08-10 | 78SS | 19% | 4.84d | 2026-08-03 | 2026-08-10 | 6d | 23d |  |
| 135 | 3.1.5.1.8 | Levantamento de elementos especiais dentre outras disciplinas de Engenharia e Arquitetura | 6d | 2026-08-03 A | 2026-08-10 | 78SS | 19% | 4.84d | 2026-08-03 | 2026-08-10 | 6d | 0d |  |
| 136 | 3.1.5.2 | **LOD 200 — Validação interdisciplinar e solução preliminar** | 17d | 2026-08-11 | 2026-09-02 |  |  |  | 2026-08-11 | 2026-09-02 | 17d | 0d |  |
| 137 | 3.1.5.2.1 | Critérios normativos adotados (ABNT, concessionárias, etc.) | 17d | 2026-08-11 | 2026-09-02 | 135 |  |  | 2026-08-11 | 2026-09-02 | 17d | 6d | 0d |
| 138 | 3.1.5.2.2 | Informações de demanda na concessionária (DPE ou AVT Aviso de Viabilidade Técnica) | 17d | 2026-08-11 | 2026-09-02 | 137SS |  |  | 2026-08-11 | 2026-09-02 | 17d | 6d |  |
| 139 | 3.1.5.2.3 | Recebimento e Análise de Sondagem (permeabilidade ou percolação) | 17d | 2026-08-11 | 2026-09-02 | 137SS |  |  | 2026-08-11 | 2026-09-02 | 17d | 6d |  |
| 140 | 3.1.5.2.4 | Recebimento e Análise de Topografia | 17d | 2026-08-11 | 2026-09-02 | 137SS |  |  | 2026-08-11 | 2026-09-02 | 17d | 6d |  |
| 141 | 3.1.5.2.5 | Estudo de viabilidade técnica, econômica e ambiental | 17d | 2026-08-11 | 2026-09-02 | 137SS |  |  | 2026-08-11 | 2026-09-02 | 17d | 6d |  |
| 142 | 3.1.5.2.6 | Lista preliminar de sistemas envolvidos. | 17d | 2026-08-11 | 2026-09-02 | 135 |  |  | 2026-08-11 | 2026-09-02 | 17d | 6d |  |
| 143 | 3.1.5.2.7 | Planta baixa e cortes estimada contendo: - Traçado preliminar de barrilete, ramais, colunas - Diâmetros estimados - Localização aproximada das bombas e unidades de tratamento e reúso - Localização do ramal predial de água e esgoto - Localização aproximada | 17d | 2026-08-11 | 2026-09-02 | 135 |  |  | 2026-08-11 | 2026-09-02 | 17d | 0d |  |
| 144 | 3.1.5.3 | **LOD 300 - Consolidação e documentação de entrega** | 6d | 2026-09-03 | 2026-09-11 |  |  |  | 2026-09-03 | 2026-09-11 | 6d | 0d |  |
| 145 | 3.1.5.3.1 | Planta, corte e detalhe isométrico contendo: - Modelagem detalhada com diâmetros, cotas e inclinações definitivas (barriletes, colunas, ramais) - Quantitativos e especificação técnica dos materiais (tubos, conexões, reservatórios, registros e válvulas com | 6d | 2026-09-03 | 2026-09-11 | 143 |  |  | 2026-09-03 | 2026-09-11 | 6d | 0d |  |
| 146 | 3.1.5.3.2 | Memorial descritivo | 3d | 2026-09-09 | 2026-09-11 | 145FF |  |  | 2026-09-09 | 2026-09-11 | 3d | 0d |  |
| 147 | 3.1.5.3.3 | Memória de cálculo (pressão, vazão, diâmetros, perda de carga). | 3d | 2026-09-09 | 2026-09-11 | 143, 145FF |  |  | 2026-09-09 | 2026-09-11 | 3d | 0d |  |
| 148 | 3.1.5.4 | Aprovação de Conformidade | 3d | 2026-09-09 | 2026-09-11 | 144FF |  |  | 2026-09-09 | 2026-09-11 | 3d | 0d |  |
| 149 | 3.1.5.5 | Material para entrega ao contrato | 3d | 2026-09-09 | 2026-09-11 | 144FF |  |  | 2026-09-09 | 2026-09-11 | 3d | 0d |  |

| ID | WBS | Task | Duration | Start | Finish | Predecessors | Complete | Remaining | Baseline start | Baseline finish | Baseline duration | Total slack |
| --- | --- | --- | --- | --- | --- | --- | --- | --- | --- | --- | --- | --- |
| 150 | 3.1.6 | **Subestação** | 29d | 2026-08-03 A | 2026-09-11 |  | 5% | 27.55d | 2026-08-03 | 2026-09-11 | 29d | 0d |
| 151 | 3.1.6.1 | **LOD 100 — Concepção** | 6d | 2026-08-03 A | 2026-08-10 |  | 23% | 4.65d | 2026-08-03 | 2026-08-10 | 6d | 23d |
| 152 | 3.1.6.1.1 | Avaliação e Diretrizes Técnicas para Arquitetura | 6d | 2026-08-03 A | 2026-08-10 | 78SS | 23% | 4.65d | 2026-08-03 | 2026-08-10 | 6d | 23d |
| 153 | 3.1.6.1.2 | Levantamento de Demanda, Perfil de Consumo e Ponto de Entrega | 6d | 2026-08-03 A | 2026-08-10 | 78SS | 23% | 4.65d | 2026-08-03 | 2026-08-10 | 6d | 23d |
| 154 | 3.1.6.1.3 | Estudo de Viabilidade Técnica e Atendimento ao Padrão da Concessionária | 6d | 2026-08-03 A | 2026-08-10 | 78SS | 23% | 4.65d | 2026-08-03 | 2026-08-10 | 6d | 0d |
| 155 | 3.1.6.2 | **LOD 200 — Anteprojeto** | 17d | 2026-08-11 | 2026-09-02 |  |  |  | 2026-08-11 | 2026-09-02 | 17d | 0d |
| 156 | 3.1.6.2.1 | Definição do Tipo de Subestação e Arranjo Físico Preliminar | 17d | 2026-08-11 | 2026-09-02 | 154 |  |  | 2026-08-11 | 2026-09-02 | 17d | 6d |
| 157 | 3.1.6.2.2 | Dimensionamento Preliminar do Transformador e Equipamentos Principais | 17d | 2026-08-11 | 2026-09-02 | 154 |  |  | 2026-08-11 | 2026-09-02 | 17d | 6d |
| 158 | 3.1.6.2.3 | Diretrizes Preliminares de Aterramento | 17d | 2026-08-11 | 2026-09-02 | 154 |  |  | 2026-08-11 | 2026-09-02 | 17d | 0d |
| 159 | 3.1.6.3 | LOD 300 - Consolidação e documentação de entrega | 6d | 2026-09-03 | 2026-09-11 | 158 |  |  | 2026-09-03 | 2026-09-11 | 6d | 0d |
| 160 | 3.1.6.4 | Aprovação de Conformidade | 3d | 2026-09-09 | 2026-09-11 | 159FF |  |  | 2026-09-09 | 2026-09-11 | 3d | 0d |
| 161 | 3.1.6.5 | Material para entrega ao contrato | 3d | 2026-09-09 | 2026-09-11 | 159FF |  |  | 2026-09-09 | 2026-09-11 | 3d | 0d |
| 162 | 3.1.7 | **Elétrica Baixa Tensão** | 29d | 2026-08-03 A | 2026-09-11 |  | 5% | 27.55d | 2026-08-03 | 2026-09-11 | 29d | 0d |
| 163 | 3.1.7.1 | **LOD 100 — Concepção** | 6d | 2026-08-03 A | 2026-08-10 |  | 23% | 4.65d | 2026-08-03 | 2026-08-10 | 6d | 23d |
| 164 | 3.1.7.1.1 | Avaliação e Diretrizes Técnicas para Arquitetura | 6d | 2026-08-03 A | 2026-08-10 | 78SS | 23% | 4.65d | 2026-08-03 | 2026-08-10 | 6d | 23d |
| 165 | 3.1.7.1.2 | Estimativa de Cargas e Demanda | 6d | 2026-08-03 A | 2026-08-10 | 78SS | 23% | 4.65d | 2026-08-03 | 2026-08-10 | 6d | 0d |
| 166 | 3.1.7.1.3 | Levantamento de Equipamentos de Outras Disciplinas | 6d | 2026-08-03 A | 2026-08-10 | 78SS | 23% | 4.65d | 2026-08-03 | 2026-08-10 | 6d | 0d |
| 167 | 3.1.7.2 | **LOD 200 — Anteprojeto** | 17d | 2026-08-11 | 2026-09-02 |  |  |  | 2026-08-11 | 2026-09-02 | 17d | 0d |
| 168 | 3.1.7.2.1 | TUGs Estimados | 17d | 2026-08-11 | 2026-09-02 | 165, 166 |  |  | 2026-08-11 | 2026-09-02 | 17d | 0d |
| 169 | 3.1.7.2.2 | Pontos de Luz Estimados | 17d | 2026-08-11 | 2026-09-02 | 165, 166 |  |  | 2026-08-11 | 2026-09-02 | 17d | 0d |
| 170 | 3.1.7.2.3 | TUEs e Quadros Estimados | 17d | 2026-08-11 | 2026-09-02 | 165, 166 |  |  | 2026-08-11 | 2026-09-02 | 17d | 0d |
| 171 | 3.1.7.3 | LOD 300 - Consolidação e documentação de entrega | 6d | 2026-09-03 | 2026-09-11 | 167 |  |  | 2026-09-03 | 2026-09-11 | 6d | 0d |
| 172 | 3.1.7.4 | Aprovação de Conformidade | 3d | 2026-09-09 | 2026-09-11 | 171FF |  |  | 2026-09-09 | 2026-09-11 | 3d | 0d |
| 173 | 3.1.7.5 | Material para entrega ao contrato | 3d | 2026-09-09 | 2026-09-11 | 171FF |  |  | 2026-09-09 | 2026-09-11 | 3d | 0d |

| ID | WBS | Task | Duration | Start | Finish | Predecessors | Complete | Remaining | Baseline start | Baseline finish | Baseline duration | Total slack | Free slack | Constraint |
| --- | --- | --- | --- | --- | --- | --- | --- | --- | --- | --- | --- | --- | --- | --- |
| 174 | 3.1.8 | **Telecom** | 29d | 2026-08-03 A | 2026-09-11 |  | 5% | 27.55d | 2026-08-03 | 2026-09-11 | 29d | 0d |  |  |
| 175 | 3.1.8.1 | **LOD 100 — Concepção** | 6d | 2026-08-03 A | 2026-08-10 |  | 15% | 5.08d | 2026-08-03 | 2026-08-10 | 6d | 23d |  |  |
| 176 | 3.1.8.1.1 | Avaliação e Diretrizes Técnicas para Arquitetura | 6d | 2026-08-03 A | 2026-08-10 | 78SS | 15% | 5.08d | 2026-08-03 | 2026-08-10 | 6d | 23d |  |  |
| 177 | 3.1.8.1.2 | Estimativa de Demanda de Telecomunicações | 6d | 2026-08-03 A | 2026-08-10 | 78SS | 15% | 5.08d | 2026-08-03 | 2026-08-10 | 6d | 13d | 0d |  |
| 178 | 3.1.8.1.3 | Levantamento de Equipamentos e Interfaces com Outras Disciplinas | 6d | 2026-08-03 A | 2026-08-10 | 78SS | 15% | 5.08d | 2026-08-03 | 2026-08-10 | 6d | 0d |  |  |
| 179 | 3.1.8.2 | **LOD 200 — Anteprojeto** | 17d | 2026-08-11 | 2026-09-02 |  |  |  | 2026-08-11 | 2026-09-02 | 17d | 0d |  |  |
| 180 | 3.1.8.2.1 | Pontos de Telecomunicações Estimados (Rede, Voz, CFTV e Demais Sistemas) | 8d | 2026-08-11 | 2026-08-20 | 178 |  |  | 2026-08-11 | 2026-08-20 | 8d | 0d |  |  |
| 181 | 3.1.8.2.2 | Racks Estimados | 8d | 2026-08-11 | 2026-08-20 | 178 |  |  | 2026-08-11 | 2026-08-20 | 8d | 0d |  |  |
| 182 | 3.1.8.2.3 | Infraestrutura de Telecomunicações Preliminar | 9d | 2026-08-21 | 2026-09-02 | 180, 181 |  |  | 2026-08-21 | 2026-09-02 | 9d | 0d |  |  |
| 183 | 3.1.8.3 | LOD 300 - Consolidação e documentação de entrega | 6d | 2026-09-03 | 2026-09-11 | 179 |  |  | 2026-09-03 | 2026-09-11 | 6d | 0d |  |  |
| 184 | 3.1.8.4 | Aprovação de Conformidade | 3d | 2026-09-09 | 2026-09-11 | 183FF |  |  | 2026-09-09 | 2026-09-11 | 3d | 0d |  |  |
| 185 | 3.1.8.5 | Material para entrega ao contrato | 3d | 2026-09-09 | 2026-09-11 | 183FF |  |  | 2026-09-09 | 2026-09-11 | 3d | 0d |  |  |
| 186 | 3.2 | **002 - Edificação principal** | 45d | 2026-07-10 A | 2026-09-11 |  | 18% | 36.86d | 2026-07-10 | 2026-09-11 | 45d | 0d |  |  |
| 187 | 3.2.1 | **Arquitetura** | 45d | 2026-07-10 A | 2026-09-11 |  | 38% | 28.01d | 2026-07-10 | 2026-09-11 | 45d | 0d |  |  |
| 188 | 3.2.1.1 | **Análise e Compatibilização (caso a gente receba o projeto e precise adequar)** | 31d | 2026-07-10 A | 2026-08-21 |  | 74% | 7.91d | 2026-07-10 | 2026-08-21 | 31d | 14d |  |  |
| 189 | 3.2.1.1.1 | Conferir layout (Térreo) | 20d | 2026-07-10 A | 2026-08-06 A | 24FS+5d | 100% |  | 2026-07-10 | 2026-08-06 | 20d |  |  | start no earlier than 2026-06-16 |
| 190 | 3.2.1.1.2 | Propor layout nos ambientes que não tem e verificar se estão funcionais e dentro das normas | 20d | 2026-07-10 A | 2026-08-06 A | 24FS+5d | 100% |  | 2026-07-10 | 2026-08-06 | 20d |  |  | start no earlier than 2026-06-16 |
| 191 | 3.2.1.1.3 | Conferir layout (1° pavimento) | 20d | 2026-07-10 A | 2026-08-06 A | 24FS+5d | 100% |  | 2026-07-10 | 2026-08-06 | 20d |  |  | start no earlier than 2026-06-16 |
| 192 | 3.2.1.1.4 | Propor layout nos ambientes que não tem e verificar se estão funcionais e dentro das normas (1º pavimento) | 20d | 2026-07-10 A | 2026-08-06 A | 24FS+5d | 100% |  | 2026-07-10 | 2026-08-06 | 20d |  |  | start no earlier than 2026-06-16 |
| 193 | 3.2.1.1.5 | Conferir layout (2° Pavimento) | 20d | 2026-07-10 A | 2026-08-06 A | 24FS+5d | 100% |  | 2026-07-10 | 2026-08-06 | 20d |  |  | start no earlier than 2026-06-16 |
| 194 | 3.2.1.1.6 | Propor layout nos ambientes que não tem e verificar se estão funcionais e dentro das normas" (2º pavimento) | 20d | 2026-07-10 A | 2026-08-06 A | 24FS+5d | 100% |  | 2026-07-10 | 2026-08-06 | 20d |  |  | start no earlier than 2026-06-16 |
| 195 | 3.2.1.1.7 | Conferir e fechar alinhamento das paredes | 20d | 2026-07-10 A | 2026-08-06 A | 24FS+5d | 100% |  | 2026-07-10 | 2026-08-06 | 20d |  |  | start no earlier than 2026-06-16 |
| 196 | 3.2.1.1.8 | Conferir quantidade de sanitários e cubas de acordo com os setores | 20d | 2026-07-10 A | 2026-08-06 A | 24FS+5d | 100% |  | 2026-07-10 | 2026-08-06 | 20d |  |  | start no earlier than 2026-06-16 |
| 197 | 3.2.1.1.9 | Conferir e fechar Pisos | 20d | 2026-07-10 | 2026-08-06 | 24FS+5d |  |  | 2026-07-10 | 2026-08-06 | 20d | 25d |  | start no earlier than 2026-06-16 |
| 198 | 3.2.1.1.10 | Conferir e fechar Esquadrias | 20d | 2026-07-10 | 2026-08-06 | 24FS+5d |  |  | 2026-07-10 | 2026-08-06 | 20d | 25d |  | start no earlier than 2026-06-16 |
| 199 | 3.2.1.1.11 | Conferir acessibilidade em rampas e sanitários | 20d | 2026-07-10 A | 2026-08-06 A | 24FS+5d | 100% |  | 2026-07-10 | 2026-08-06 | 20d |  |  | start no earlier than 2026-06-16 |
| 200 | 3.2.1.1.12 | Conferir nomas técnicas para o dimensionamento dos ambientes - principalmente banheiros e circulações | 20d | 2026-07-10 | 2026-08-06 | 24FS+5d |  |  | 2026-07-10 | 2026-08-06 | 20d | 25d |  | start no earlier than 2026-06-16 |
| 201 | 3.2.1.1.13 | Conferir normas técnicas para auditórios (se tiver) | 20d | 2026-07-10 A | 2026-08-06 A | 24FS+5d | 100% |  | 2026-07-10 | 2026-08-06 | 20d |  |  | start no earlier than 2026-06-16 |
| 202 | 3.2.1.1.14 | Compatibilização (pedir relatório de análise de projeto para disciplinas de engenharia) | 5d | 2026-08-07 | 2026-08-13 | 201 |  |  | 2026-08-07 | 2026-08-13 | 5d | 0d |  |  |
| 203 | 3.2.1.1.15 | Compatibilizar as rotas de fulga de acordo com as solicitações de PCI | 11d | 2026-08-07 A | 2026-08-21 A | 201 | 100% |  | 2026-08-07 | 2026-08-21 | 11d |  |  |  |
| 204 | 3.2.1.1.16 | Compatibilizar as prumadas com as equipes de engenharia | 11d | 2026-08-07 A | 2026-08-21 A | 201 | 100% |  | 2026-08-07 | 2026-08-21 | 11d |  |  |  |
| 205 | 3.2.1.1.17 | Ajustar área dos ambientes conforme solicitado pela equipe de elétrica | 11d | 2026-08-07 | 2026-08-21 | 201 |  |  | 2026-08-07 | 2026-08-21 | 11d | 14d |  |  |

| ID | WBS | Task | Duration | Start | Finish | Predecessors | Complete | Remaining | Baseline start | Baseline finish | Baseline duration | Total slack |
| --- | --- | --- | --- | --- | --- | --- | --- | --- | --- | --- | --- | --- |
| 206 | 3.2.1.2 | **LOD 300 - ANTEPROJETO** | 20d | 2026-08-14 A | 2026-09-11 |  | 6% | 18.83d | 2026-08-14 | 2026-09-11 | 20d | 0d |
| 207 | 3.2.1.2.1 | **Modelagem e compatibilização** | 10d | 2026-08-14 A | 2026-08-27 |  | 7% | 9.29d | 2026-08-14 | 2026-08-27 | 10d | 10d |
| 208 | 3.2.1.2.1.1 | Ajustar o navegador de projeto conforme o padrão da Quanta - verificar se todas as vistas estão dentro da disciplina correta - alinahr com o líder da OS | 10d | 2026-08-14 A | 2026-08-27 A | 202 | 100% |  | 2026-08-14 | 2026-08-27 | 10d |  |
| 209 | 3.2.1.2.1.2 | Limpar o arquivo e transferir os padões de projeto da Quanta | 10d | 2026-08-14 | 2026-08-27 | 202 |  |  | 2026-08-14 | 2026-08-27 | 10d | 10d |
| 210 | 3.2.1.2.1.3 | Criar Worksets (em caso de arquivos colaborados) | 10d | 2026-08-14 | 2026-08-27 | 202 |  |  | 2026-08-14 | 2026-08-27 | 10d | 10d |
| 211 | 3.2.1.2.1.4 | Colocar todas as elementos em seus devidos Worksets | 10d | 2026-08-14 | 2026-08-27 | 202 |  |  | 2026-08-14 | 2026-08-27 | 10d | 10d |
| 212 | 3.2.1.2.1.5 | Fazer ajustes dos modelos para Colaboração | 10d | 2026-08-14 | 2026-08-27 | 202 |  |  | 2026-08-14 | 2026-08-27 | 10d | 10d |
| 213 | 3.2.1.2.1.6 | Mudar os pisos para o padrão da quanta (1º pavimento) | 10d | 2026-08-14 A | 2026-08-27 A | 202 | 100% |  | 2026-08-14 | 2026-08-27 | 10d |  |
| 214 | 3.2.1.2.1.7 | Mudar as parades para o padão da quanta (1º pavimento) | 10d | 2026-08-14 | 2026-08-27 | 202 |  |  | 2026-08-14 | 2026-08-27 | 10d | 10d |
| 215 | 3.2.1.2.1.8 | Mudar as portas para o padão da quanta (1º pavimento) | 10d | 2026-08-14 | 2026-08-27 | 202 |  |  | 2026-08-14 | 2026-08-27 | 10d | 10d |
| 216 | 3.2.1.2.1.9 | Mudar as soleiras para o padão da quanta | 10d | 2026-08-14 | 2026-08-27 | 202 |  |  | 2026-08-14 | 2026-08-27 | 10d | 10d |
| 217 | 3.2.1.2.1.10 | Mudar as bancadas para o padão da Quanta (1º pavimento) | 10d | 2026-08-14 | 2026-08-27 | 202 |  |  | 2026-08-14 | 2026-08-27 | 10d | 10d |
| 218 | 3.2.1.2.1.11 | Mudar metais para padrão da Quanta (1º pavimento) | 10d | 2026-08-14 | 2026-08-27 | 202 |  |  | 2026-08-14 | 2026-08-27 | 10d | 10d |
| 219 | 3.2.1.2.1.12 | Mudar demais acabamentos para padrão o padrão da Quanta | 10d | 2026-08-14 | 2026-08-27 | 202 |  |  | 2026-08-14 | 2026-08-27 | 10d | 10d |
| 220 | 3.2.1.2.1.13 | Ajustar ralos das áreas molhadas (1º pavimento) | 10d | 2026-08-14 | 2026-08-27 | 202 |  |  | 2026-08-14 | 2026-08-27 | 10d | 10d |
| 221 | 3.2.1.2.1.14 | Se vier as tomadas - excluir (1º Pavimento) | 10d | 2026-08-14 | 2026-08-27 | 202 |  |  | 2026-08-14 | 2026-08-27 | 10d | 10d |
| 222 | 3.2.1.2.1.15 | Se vier as luminárias - excluir (1° pavimento) | 10d | 2026-08-14 | 2026-08-27 | 202 |  |  | 2026-08-14 | 2026-08-27 | 10d | 10d |
| 223 | 3.2.1.2.1.16 | Inserir caixa d'água - Conferir pré dimensionamento com a engenharia | 10d | 2026-08-14 | 2026-08-27 | 202 |  |  | 2026-08-14 | 2026-08-27 | 10d | 10d |
| 224 | 3.2.1.2.1.17 | Separar camadas dos pisos - leje 10cm (1° camada), contrapiso 3cm+argamassa 2cm+rev 1cm, (2°camada) | 10d | 2026-08-14 | 2026-08-27 | 202 |  |  | 2026-08-14 | 2026-08-27 | 10d | 10d |
| 225 | 3.2.1.2.1.18 | Descrição dos elementos da edificação | 10d | 2026-08-14 | 2026-08-27 | 202 |  |  | 2026-08-14 | 2026-08-27 | 10d | 10d |
| 226 | 3.2.1.2.1.19 | Descrição dos componentes construtivos e materiais de construção | 10d | 2026-08-14 | 2026-08-27 | 202 |  |  | 2026-08-14 | 2026-08-27 | 10d | 10d |
| 227 | 3.2.1.2.1.20 | Lista de pranchas anexas e documentos | 10d | 2026-08-14 | 2026-08-27 | 202 |  |  | 2026-08-14 | 2026-08-27 | 10d | 10d |
| 228 | 3.2.1.2.1.21 | Vias de acesso ao conjunto, arruamento, logradouros adjacentes e calçadas com os respectivos equipamentos urbanos; | 10d | 2026-08-14 | 2026-08-27 | 202 |  |  | 2026-08-14 | 2026-08-27 | 10d | 10d |
| 229 | 3.2.1.2.1.22 | Platôs e taludes principais; | 10d | 2026-08-14 | 2026-08-27 | 202 |  |  | 2026-08-14 | 2026-08-27 | 10d | 10d |
| 230 | 3.2.1.2.1.23 | Perímetro do terreno, recuos e afastamentos; | 10d | 2026-08-14 | 2026-08-27 | 202 |  |  | 2026-08-14 | 2026-08-27 | 10d | 10d |
| 231 | 3.2.1.2.1.24 | Indicação das áreas a serem edificadas com o contorno da cobertura das edificações, estacionamentos e áreas permeáveis/impermeáveis; | 10d | 2026-08-14 | 2026-08-27 | 202 |  |  | 2026-08-14 | 2026-08-27 | 10d | 10d |
| 232 | 3.2.1.2.1.25 | Denominação das edificações, blocos ou espaços; | 10d | 2026-08-14 | 2026-08-27 | 202 |  |  | 2026-08-14 | 2026-08-27 | 10d | 10d |
| 233 | 3.2.1.2.1.26 | Cotas gerais | 10d | 2026-08-14 | 2026-08-27 | 202 |  |  | 2026-08-14 | 2026-08-27 | 10d | 10d |
| 234 | 3.2.1.2.1.27 | Cotas de nível principal. | 10d | 2026-08-14 | 2026-08-27 | 202 |  |  | 2026-08-14 | 2026-08-27 | 10d | 10d |
| 235 | 3.2.1.2.1.28 | Quadros de áreas | 10d | 2026-08-14 | 2026-08-27 | 202 |  |  | 2026-08-14 | 2026-08-27 | 10d | 0d |
| 236 | 3.2.1.2.2 | Planta com as cotas de nível projetadas e existentes | 1d | 2026-08-28 | 2026-08-28 | 235 |  |  | 2026-08-28 | 2026-08-28 | 1d | 0d |

| ID | WBS | Task | Duration | Start | Finish | Predecessors | Baseline start | Baseline finish | Baseline duration | Total slack |
| --- | --- | --- | --- | --- | --- | --- | --- | --- | --- | --- |
| 237 | 3.2.1.2.3 | **Plantas baixas (se tiver mais de um pavimento, duplicar bloco)** | 1d | 2026-08-31 | 2026-08-31 |  | 2026-08-31 | 2026-08-31 | 1d | 0d |
| 238 | 3.2.1.2.3.1 | Indicar simbologias de representação gráfica, conforme NBR 6492:2021; | 1d | 2026-08-31 | 2026-08-31 | 236 | 2026-08-31 | 2026-08-31 | 1d | 8d |
| 239 | 3.2.1.2.3.2 | Compatibilização (verificar se está tudo conforme as normas e alinhar com o restante das disciplinas de engenharia) | 1d | 2026-08-31 | 2026-08-31 | 236 | 2026-08-31 | 2026-08-31 | 1d | 8d |
| 240 | 3.2.1.2.3.3 | Compatibilização (deixar tudo conforme padrão Quanta) | 1d | 2026-08-31 | 2026-08-31 | 236 | 2026-08-31 | 2026-08-31 | 1d | 8d |
| 241 | 3.2.1.2.3.4 | Indicação de Norte; | 1d | 2026-08-31 | 2026-08-31 | 236 | 2026-08-31 | 2026-08-31 | 1d | 8d |
| 242 | 3.2.1.2.3.5 | Indicação de Escala; | 1d | 2026-08-31 | 2026-08-31 | 236 | 2026-08-31 | 2026-08-31 | 1d | 8d |
| 243 | 3.2.1.2.3.6 | Indicação de Acessos; | 1d | 2026-08-31 | 2026-08-31 | 236 | 2026-08-31 | 2026-08-31 | 1d | 8d |
| 244 | 3.2.1.2.3.7 | Elementos de vedação internos e externos; | 1d | 2026-08-31 | 2026-08-31 | 236 | 2026-08-31 | 2026-08-31 | 1d | 8d |
| 245 | 3.2.1.2.3.8 | Esquadrias (sem código e sem quadro); | 1d | 2026-08-31 | 2026-08-31 | 236 | 2026-08-31 | 2026-08-31 | 1d | 8d |
| 246 | 3.2.1.2.3.9 | Elementos estruturais principais; | 1d | 2026-08-31 | 2026-08-31 | 236 | 2026-08-31 | 2026-08-31 | 1d | 8d |
| 247 | 3.2.1.2.3.10 | Identificação dos ambientes e espaços (internos e externos); | 1d | 2026-08-31 | 2026-08-31 | 236 | 2026-08-31 | 2026-08-31 | 1d | 8d |
| 248 | 3.2.1.2.3.11 | Espaços de circulação internos e externos; | 1d | 2026-08-31 | 2026-08-31 | 236 | 2026-08-31 | 2026-08-31 | 1d | 8d |
| 249 | 3.2.1.2.3.12 | Áreas de serviço, funcionais e técnicas (internos e externos); | 1d | 2026-08-31 | 2026-08-31 | 236 | 2026-08-31 | 2026-08-31 | 1d | 8d |
| 250 | 3.2.1.2.3.13 | Projeções de níveis superiores; | 1d | 2026-08-31 | 2026-08-31 | 236 | 2026-08-31 | 2026-08-31 | 1d | 8d |
| 251 | 3.2.1.2.3.14 | Cotas gerais | 1d | 2026-08-31 | 2026-08-31 | 236 | 2026-08-31 | 2026-08-31 | 1d | 8d |
| 252 | 3.2.1.2.3.15 | Cotas de nível principal. | 1d | 2026-08-31 | 2026-08-31 | 236 | 2026-08-31 | 2026-08-31 | 1d | 8d |
| 253 | 3.2.1.2.3.16 | Quadro de áreas | 1d | 2026-08-31 | 2026-08-31 | 236 | 2026-08-31 | 2026-08-31 | 1d | 0d |
| 254 | 3.2.1.2.4 | **Planta das coberturas** | 1d | 2026-09-01 | 2026-09-01 |  | 2026-09-01 | 2026-09-01 | 1d | 0d |
| 255 | 3.2.1.2.4.1 | Indicação do Norte | 1d | 2026-09-01 | 2026-09-01 | 253 | 2026-09-01 | 2026-09-01 | 1d | 7d |
| 256 | 3.2.1.2.4.2 | Indicação de escala | 1d | 2026-09-01 | 2026-09-01 | 253 | 2026-09-01 | 2026-09-01 | 1d | 7d |
| 257 | 3.2.1.2.4.3 | Curvas de nível | 1d | 2026-09-01 | 2026-09-01 | 253 | 2026-09-01 | 2026-09-01 | 1d | 7d |
| 258 | 3.2.1.2.4.4 | Indicação de Acessos; | 1d | 2026-09-01 | 2026-09-01 | 253 | 2026-09-01 | 2026-09-01 | 1d | 7d |
| 259 | 3.2.1.2.4.5 | Estacionamento e áreas cobertas | 1d | 2026-09-01 | 2026-09-01 | 253 | 2026-09-01 | 2026-09-01 | 1d | 7d |
| 260 | 3.2.1.2.4.6 | Cobertura das edificações | 1d | 2026-09-01 | 2026-09-01 | 253 | 2026-09-01 | 2026-09-01 | 1d | 7d |
| 261 | 3.2.1.2.4.7 | Sentido de escoamento das águas pluviais e inclinação | 1d | 2026-09-01 | 2026-09-01 | 253 | 2026-09-01 | 2026-09-01 | 1d | 7d |
| 262 | 3.2.1.2.4.8 | Cotas gerais | 1d | 2026-09-01 | 2026-09-01 | 253 | 2026-09-01 | 2026-09-01 | 1d | 7d |
| 263 | 3.2.1.2.4.9 | Cotas de nível principal | 1d | 2026-09-01 | 2026-09-01 | 253 | 2026-09-01 | 2026-09-01 | 1d | 0d |

| ID | WBS | Task | Duration | Start | Finish | Predecessors | Baseline start | Baseline finish | Baseline duration | Total slack |
| --- | --- | --- | --- | --- | --- | --- | --- | --- | --- | --- |
| 264 | 3.2.1.2.5 | **Cortes longitudinais** | 1d | 2026-09-02 | 2026-09-02 |  | 2026-09-02 | 2026-09-02 | 1d | 0d |
| 265 | 3.2.1.2.5.1 | Indicar simbologias de representação gráfica, conforme NBR 6492:2021; | 1d | 2026-09-02 | 2026-09-02 | 263 | 2026-09-02 | 2026-09-02 | 1d | 6d |
| 266 | 3.2.1.2.5.2 | Indicação de Escala; | 1d | 2026-09-02 | 2026-09-02 | 263 | 2026-09-02 | 2026-09-02 | 1d | 6d |
| 267 | 3.2.1.2.5.3 | Elementos estruturais principais; | 1d | 2026-09-02 | 2026-09-02 | 263 | 2026-09-02 | 2026-09-02 | 1d | 6d |
| 268 | 3.2.1.2.5.4 | Elementos de vedação internos e externos; | 1d | 2026-09-02 | 2026-09-02 | 263 | 2026-09-02 | 2026-09-02 | 1d | 6d |
| 269 | 3.2.1.2.5.5 | Esquadrias; | 1d | 2026-09-02 | 2026-09-02 | 263 | 2026-09-02 | 2026-09-02 | 1d | 6d |
| 270 | 3.2.1.2.5.6 | Identificação dos ambientes; | 1d | 2026-09-02 | 2026-09-02 | 263 | 2026-09-02 | 2026-09-02 | 1d | 6d |
| 271 | 3.2.1.2.5.7 | Cobertura com indicação da respectiva inclinação; | 1d | 2026-09-02 | 2026-09-02 | 263 | 2026-09-02 | 2026-09-02 | 1d | 6d |
| 272 | 3.2.1.2.5.8 | Cotas gerais; | 1d | 2026-09-02 | 2026-09-02 | 263 | 2026-09-02 | 2026-09-02 | 1d | 6d |
| 273 | 3.2.1.2.5.9 | Cotas de nível principal; | 1d | 2026-09-02 | 2026-09-02 | 263 | 2026-09-02 | 2026-09-02 | 1d | 6d |
| 274 | 3.2.1.2.5.10 | Eixos do projeto; | 1d | 2026-09-02 | 2026-09-02 | 263 | 2026-09-02 | 2026-09-02 | 1d | 6d |
| 275 | 3.2.1.2.5.11 | Relevo construído; | 1d | 2026-09-02 | 2026-09-02 | 263 | 2026-09-02 | 2026-09-02 | 1d | 6d |
| 276 | 3.2.1.2.5.12 | Projeção da topografia natural. | 1d | 2026-09-02 | 2026-09-02 | 263 | 2026-09-02 | 2026-09-02 | 1d | 0d |
| 277 | 3.2.1.2.6 | **Cortes transversais** | 1d | 2026-09-03 | 2026-09-03 |  | 2026-09-03 | 2026-09-03 | 1d | 0d |
| 278 | 3.2.1.2.6.1 | Indicar simbologias de representação gráfica, conforme NBR 6492:2021; | 1d | 2026-09-03 | 2026-09-03 | 276 | 2026-09-03 | 2026-09-03 | 1d | 5d |
| 279 | 3.2.1.2.6.2 | Indicação de Escala; | 1d | 2026-09-03 | 2026-09-03 | 276 | 2026-09-03 | 2026-09-03 | 1d | 5d |
| 280 | 3.2.1.2.6.3 | Elementos estruturais principais; | 1d | 2026-09-03 | 2026-09-03 | 276 | 2026-09-03 | 2026-09-03 | 1d | 5d |
| 281 | 3.2.1.2.6.4 | Elementos de vedação internos e externos; | 1d | 2026-09-03 | 2026-09-03 | 276 | 2026-09-03 | 2026-09-03 | 1d | 5d |
| 282 | 3.2.1.2.6.5 | Esquadrias; | 1d | 2026-09-03 | 2026-09-03 | 276 | 2026-09-03 | 2026-09-03 | 1d | 5d |
| 283 | 3.2.1.2.6.6 | Identificação dos ambientes; | 1d | 2026-09-03 | 2026-09-03 | 276 | 2026-09-03 | 2026-09-03 | 1d | 5d |
| 284 | 3.2.1.2.6.7 | Cobertura com indicação da respectiva inclinação; | 1d | 2026-09-03 | 2026-09-03 | 276 | 2026-09-03 | 2026-09-03 | 1d | 5d |
| 285 | 3.2.1.2.6.8 | Cotas gerais; | 1d | 2026-09-03 | 2026-09-03 | 276 | 2026-09-03 | 2026-09-03 | 1d | 5d |
| 286 | 3.2.1.2.6.9 | Cotas de nível principal; | 1d | 2026-09-03 | 2026-09-03 | 276 | 2026-09-03 | 2026-09-03 | 1d | 5d |
| 287 | 3.2.1.2.6.10 | Eixos do projeto; | 1d | 2026-09-03 | 2026-09-03 | 276 | 2026-09-03 | 2026-09-03 | 1d | 5d |
| 288 | 3.2.1.2.6.11 | Relevo construído; | 1d | 2026-09-03 | 2026-09-03 | 276 | 2026-09-03 | 2026-09-03 | 1d | 5d |
| 289 | 3.2.1.2.6.12 | Projeção da topografia natural | 1d | 2026-09-03 | 2026-09-03 | 276 | 2026-09-03 | 2026-09-03 | 1d | 0d |

| ID | WBS | Task | Duration | Start | Finish | Predecessors | Complete | Remaining | Baseline start | Baseline finish | Baseline duration | Total slack | Free slack |
| --- | --- | --- | --- | --- | --- | --- | --- | --- | --- | --- | --- | --- | --- |
| 290 | 3.2.1.2.7 | **Elevações** | 1d | 2026-09-04 | 2026-09-04 |  |  |  | 2026-09-04 | 2026-09-04 | 1d | 0d |  |
| 291 | 3.2.1.2.7.1 | Indicar simbologias de representação gráfica, conforme NBR 6492:2021; | 1d | 2026-09-04 | 2026-09-04 | 289 |  |  | 2026-09-04 | 2026-09-04 | 1d | 0d |  |
| 292 | 3.2.1.2.7.2 | Indicação de Escala; | 1d | 2026-09-04 | 2026-09-04 | 289 |  |  | 2026-09-04 | 2026-09-04 | 1d | 0d |  |
| 293 | 3.2.1.2.7.3 | Elementos estruturais principais; | 1d | 2026-09-04 | 2026-09-04 | 289 |  |  | 2026-09-04 | 2026-09-04 | 1d | 0d |  |
| 294 | 3.2.1.2.7.4 | Elementos de vedação internos e externos; | 1d | 2026-09-04 | 2026-09-04 | 289 |  |  | 2026-09-04 | 2026-09-04 | 1d | 0d |  |
| 295 | 3.2.1.2.7.5 | Esquadrias (sem código e sem quadro); | 1d | 2026-09-04 | 2026-09-04 | 289 |  |  | 2026-09-04 | 2026-09-04 | 1d | 0d |  |
| 296 | 3.2.1.2.7.6 | Relevo construído; | 1d | 2026-09-04 | 2026-09-04 | 289 |  |  | 2026-09-04 | 2026-09-04 | 1d | 0d |  |
| 297 | 3.2.1.2.7.7 | Cotas gerais; | 1d | 2026-09-04 | 2026-09-04 | 289 |  |  | 2026-09-04 | 2026-09-04 | 1d | 0d |  |
| 298 | 3.2.1.2.7.8 | Cotas de nível principais; | 1d | 2026-09-04 | 2026-09-04 | 289 |  |  | 2026-09-04 | 2026-09-04 | 1d | 0d |  |
| 299 | 3.2.1.2.7.9 | Cobertura (quando aparente). | 1d | 2026-09-04 | 2026-09-04 | 289 |  |  | 2026-09-04 | 2026-09-04 | 1d | 0d |  |
| 300 | 3.2.1.2.8 | Memorial Descritivo | 4d | 2026-09-08 | 2026-09-11 | 290 |  |  | 2026-09-08 | 2026-09-11 | 4d | 0d |  |
| 301 | 3.2.2 | Aprovação de Conformidade | 3d | 2026-09-09 | 2026-09-11 | 300FF |  |  | 2026-09-09 | 2026-09-11 | 3d | 0d |  |
| 302 | 3.2.3 | Material para entrega ao contrato | 3d | 2026-09-09 | 2026-09-11 | 300FF |  |  | 2026-09-09 | 2026-09-11 | 3d | 0d |  |
| 303 | 3.2.4 | **Engenharia** | 34d | 2026-07-27 A | 2026-09-11 |  | 5% | 32.3d | 2026-07-27 | 2026-09-11 | 34d | 0d |  |
| 304 | 3.2.4.1 | **Estrutura** | 34d | 2026-07-27 A | 2026-09-11 |  | 3% | 32.95d | 2026-07-27 | 2026-09-11 | 34d | 0d |  |
| 305 | 3.2.4.1.1 | **LOD 100 — Premissas, diretrizes e interfaces** | 7d | 2026-07-27 A | 2026-08-04 |  | 25% | 5.24d | 2026-07-27 | 2026-08-04 | 7d | 27d |  |
| 306 | 3.2.4.1.1.1 | Levantamento de tipos de cargas globais estimadas (permanentes, acidentais, vento e especiais). | 2d | 2026-07-27 A | 2026-07-28 | 202SS-9d | 80% | 0.41d | 2026-07-27 | 2026-07-28 | 2d | 32d |  |
| 307 | 3.2.4.1.1.2 | Estudo volumétrico com modulação inicial de pilares, vigas e lajes. Entendendo vãos e desafios | 5d | 2026-07-27 A | 2026-07-31 | 202SS-9d | 32% | 3.41d | 2026-07-27 | 2026-07-31 | 5d | 29d |  |
| 308 | 3.2.4.1.1.3 | Localização aproximada de elementos estruturais principais. Avaliando vãos e estudando posições | 2d | 2026-07-27 A | 2026-07-28 | 202SS-9d | 80% | 0.41d | 2026-07-27 | 2026-07-28 | 2d | 0d |  |
| 309 | 3.2.4.1.1.4 | Estudo de viabilidade técnica e construtiva. | 3d | 2026-07-29 | 2026-07-31 | 308 |  |  | 2026-07-29 | 2026-07-31 | 3d | 0d |  |
| 310 | 3.2.4.1.1.5 | Definição preliminar do sistema estrutural (concreto armado, metálica ou mista). | 3d | 2026-07-29 | 2026-07-31 | 308 |  |  | 2026-07-29 | 2026-07-31 | 3d | 29d |  |
| 311 | 3.2.4.1.1.6 | Estimativa preliminar de tipologias de fundações (sapatas, blocos, estacas). | 2d | 2026-08-03 | 2026-08-04 | 309 |  |  | 2026-08-03 | 2026-08-04 | 2d | 27d |  |
| 312 | 3.2.4.1.1.7 | Previsão de áreas técnicas, casas de máquinas, reservatórios elevados e estrutura de cobertura. | 2d | 2026-08-03 | 2026-08-04 | 309 |  |  | 2026-08-03 | 2026-08-04 | 2d | 0d |  |
| 313 | 3.2.4.1.2 | **LOD 200 — Validação interdisciplinar e solução preliminar** | 20d | 2026-08-05 | 2026-09-01 |  |  |  | 2026-08-05 | 2026-09-01 | 20d | 0d |  |
| 314 | 3.2.4.1.2.1 | Lista preliminar de cargas e ações para dimensionamento. | 5d | 2026-08-05 | 2026-08-11 | 312 |  |  | 2026-08-05 | 2026-08-11 | 5d | 0d |  |
| 315 | 3.2.4.1.2.2 | Definição preliminar de alturas de pavimentos e níveis de fundação. | 5d | 2026-08-05 | 2026-08-11 | 312 |  |  | 2026-08-05 | 2026-08-11 | 5d | 22d |  |
| 316 | 3.2.4.1.2.3 | Indicação aproximada do sistema de cobertura (tesouras, treliças, vigamento metálico ou concreto). | 5d | 2026-08-05 | 2026-08-11 | 312 |  |  | 2026-08-05 | 2026-08-11 | 5d | 22d |  |
| 317 | 3.2.4.1.2.4 | Modelagem genérica de pilares, vigas, lajes e fundações. | 5d | 2026-08-12 | 2026-08-18 | 314 |  |  | 2026-08-12 | 2026-08-18 | 5d | 17d |  |
| 318 | 3.2.4.1.2.5 | Traçado preliminar de elementos especiais (escadas, rampas estruturais, reservatórios). | 5d | 2026-08-12 | 2026-08-18 | 314 |  |  | 2026-08-12 | 2026-08-18 | 5d | 12d | 0d |
| 319 | 3.2.4.1.2.6 | Arquivo IFC, plantas de forma e planta de locação | 5d | 2026-08-12 | 2026-08-18 | 314 |  |  | 2026-08-12 | 2026-08-18 | 5d | 0d |  |
| 320 | 3.2.4.1.2.7 | Inserção de fundações com tipologia e dimensões preliminares. | 5d | 2026-08-19 | 2026-08-25 | 318 |  |  | 2026-08-19 | 2026-08-25 | 5d | 12d |  |
| 321 | 3.2.4.1.2.8 | Compatibilização inicial com arquitetura e demais disciplinas. | 5d | 2026-08-19 | 2026-08-25 | 319 |  |  | 2026-08-19 | 2026-08-25 | 5d | 12d |  |
| 322 | 3.2.4.1.2.9 | Indicação de passagens de infraestrutura (shafts, aberturas em lajes e vigas). | 5d | 2026-08-19 | 2026-08-25 | 319 |  |  | 2026-08-19 | 2026-08-25 | 5d | 12d |  |
| 323 | 3.2.4.1.2.10 | Modelagem assertiva de elementos principais com dimensões aproximadas (largura, altura, espessura). | 10d | 2026-08-19 | 2026-09-01 | 319 |  |  | 2026-08-19 | 2026-09-01 | 10d | 0d |  |
| 324 | 3.2.4.1.2.11 | Modelagem estimada de armaduras principais (em nível de concepção). | 5d | 2026-08-26 | 2026-09-01 | 323FF |  |  | 2026-08-26 | 2026-09-01 | 5d | 0d |  |

| ID | WBS | Task | Duration | Start | Finish | Predecessors | Complete | Remaining | Baseline start | Baseline finish | Baseline duration | Total slack | Free slack |
| --- | --- | --- | --- | --- | --- | --- | --- | --- | --- | --- | --- | --- | --- |
| 325 | 3.2.4.1.3 | **LOD 300 - Consolidação e documentação de entrega** | 7d | 2026-09-02 | 2026-09-11 |  |  |  | 2026-09-02 | 2026-09-11 | 7d | 0d |  |
| 326 | 3.2.4.1.3.1 | Indicação de níveis e cotas exatas. | 7d | 2026-09-02 | 2026-09-11 | 323, 324 |  |  | 2026-09-02 | 2026-09-11 | 7d | 0d |  |
| 327 | 3.2.4.1.3.2 | Quadro de cargas atualizado. | 7d | 2026-09-02 | 2026-09-11 | 323, 324 |  |  | 2026-09-02 | 2026-09-11 | 7d | 0d |  |
| 328 | 3.2.4.1.3.3 | Dimensionamento final de fundações conforme sondagem e cálculo estrutural. | 7d | 2026-09-02 | 2026-09-11 | 323, 324 |  |  | 2026-09-02 | 2026-09-11 | 7d | 0d |  |
| 329 | 3.2.4.1.3.4 | Definição final dos elementos da cobertura (treliças, vigas, chapas, purlins). | 7d | 2026-09-02 | 2026-09-11 | 323, 324 |  |  | 2026-09-02 | 2026-09-11 | 7d | 0d |  |
| 330 | 3.2.4.1.3.5 | Compatibilização final com arquitetura e instalações (aberturas, embutidos e passagens). | 7d | 2026-09-02 | 2026-09-11 | 323, 324 |  |  | 2026-09-02 | 2026-09-11 | 7d | 0d |  |
| 331 | 3.2.4.1.3.6 | Modelagem definitiva de pilares, vigas, lajes, blocos, sapatas e estacas. | 7d | 2026-09-02 | 2026-09-11 | 323, 324 |  |  | 2026-09-02 | 2026-09-11 | 7d | 0d |  |
| 332 | 3.2.4.1.3.7 | Planta estrutural com todos os elementos identificados. | 7d | 2026-09-02 | 2026-09-11 | 323, 324 |  |  | 2026-09-02 | 2026-09-11 | 7d | 0d |  |
| 333 | 3.2.4.1.3.8 | Memorial descritivo contendo: objetivos, justificativa, descrição do sistema, concepção de fundações/cobertura, especificações e quadro de cargas. | 7d | 2026-09-02 | 2026-09-11 | 323, 324 |  |  | 2026-09-02 | 2026-09-11 | 7d | 0d |  |
| 334 | 3.2.4.1.3.9 | Normas técnicas utilizadas (NBR 6118, 6120, 6122, 8800, etc.). | 7d | 2026-09-02 | 2026-09-11 | 323, 324 |  |  | 2026-09-02 | 2026-09-11 | 7d | 0d |  |
| 335 | 3.2.4.1.3.10 | Consolidar documentação de entrega e emissão formal da disciplina | 7d | 2026-09-02 | 2026-09-11 | 323, 324 |  |  | 2026-09-02 | 2026-09-11 | 7d | 0d |  |
| 336 | 3.2.4.1.4 | Aprovação de Conformidade | 3d | 2026-09-09 | 2026-09-11 | 325FF |  |  | 2026-09-09 | 2026-09-11 | 3d | 0d |  |
| 337 | 3.2.4.1.5 | Material para entrega ao contrato | 3d | 2026-09-09 | 2026-09-11 | 325FF |  |  | 2026-09-09 | 2026-09-11 | 3d | 0d |  |
| 338 | 3.2.4.2 | **Hidrossanitário** | 34d | 2026-07-27 A | 2026-09-11 |  | 6% | 32d | 2026-07-27 | 2026-09-11 | 34d | 0d |  |
| 339 | 3.2.4.2.1 | **LOD 100 — Premissas, diretrizes e interfaces** | 8d | 2026-07-27 A | 2026-08-05 |  | 22% | 6.25d | 2026-07-27 | 2026-08-05 | 8d | 26d |  |
| 340 | 3.2.4.2.1.1 | Memorial preliminar | 8d | 2026-07-27 A | 2026-08-05 | 202SS-9d | 20% | 6.41d | 2026-07-27 | 2026-08-05 | 8d | 26d |  |
| 341 | 3.2.4.2.1.2 | Indicação de áreas técnicas | 6d | 2026-07-27 A | 2026-08-03 | 202SS-9d | 27% | 4.41d | 2026-07-27 | 2026-08-03 | 6d | 28d |  |
| 342 | 3.2.4.2.1.3 | Planta baixa com traçado conceitual | 6d | 2026-07-27 A | 2026-08-03 | 202SS-9d | 27% | 4.41d | 2026-07-27 | 2026-08-03 | 6d | 28d |  |
| 343 | 3.2.4.2.1.4 | Pontos de consumo principais e coletas sanitárias | 6d | 2026-07-27 A | 2026-08-03 | 202SS-9d | 27% | 4.41d | 2026-07-27 | 2026-08-03 | 6d | 28d |  |
| 344 | 3.2.4.2.1.5 | Classificação de uso | 8d | 2026-07-27 A | 2026-08-05 | 202SS-9d | 20% | 6.41d | 2026-07-27 | 2026-08-05 | 8d | 26d |  |
| 345 | 3.2.4.2.1.6 | Diretrizes de espaço | 8d | 2026-07-27 A | 2026-08-05 | 202SS-9d | 20% | 6.41d | 2026-07-27 | 2026-08-05 | 8d | 26d |  |
| 346 | 3.2.4.2.1.7 | Estimativa de demanda ou população de uso | 8d | 2026-07-27 A | 2026-08-05 | 202SS-9d | 20% | 6.41d | 2026-07-27 | 2026-08-05 | 8d | 26d |  |
| 347 | 3.2.4.2.1.8 | Levantamento de elementos especiais dentre outras disciplinas de Engenharia e Arquitetura | 8d | 2026-07-27 A | 2026-08-05 | 202SS-9d | 20% | 6.41d | 2026-07-27 | 2026-08-05 | 8d | 0d |  |
| 348 | 3.2.4.2.2 | **LOD 200 — Validação interdisciplinar e solução preliminar** | 20d | 2026-08-06 | 2026-09-02 |  |  |  | 2026-08-06 | 2026-09-02 | 20d | 0d |  |
| 349 | 3.2.4.2.2.1 | Critérios normativos adotados (ABNT, concessionárias, etc.) | 20d | 2026-08-06 | 2026-09-02 | 347 |  |  | 2026-08-06 | 2026-09-02 | 20d | 6d | 0d |
| 350 | 3.2.4.2.2.2 | Informações de demanda na concessionária (DPE ou AVT Aviso de Viabilidade Técnica) | 20d | 2026-08-06 | 2026-09-02 | 349SS |  |  | 2026-08-06 | 2026-09-02 | 20d | 6d |  |
| 351 | 3.2.4.2.2.3 | Recebimento e Análise de Sondagem (permeabilidade ou percolação) | 20d | 2026-08-06 | 2026-09-02 | 349SS |  |  | 2026-08-06 | 2026-09-02 | 20d | 6d |  |
| 352 | 3.2.4.2.2.4 | Recebimento e Análise de Topografia | 20d | 2026-08-06 | 2026-09-02 | 349SS |  |  | 2026-08-06 | 2026-09-02 | 20d | 6d |  |
| 353 | 3.2.4.2.2.5 | Estudo de viabilidade técnica, econômica e ambiental | 20d | 2026-08-06 | 2026-09-02 | 349SS |  |  | 2026-08-06 | 2026-09-02 | 20d | 6d |  |
| 354 | 3.2.4.2.2.6 | Lista preliminar de sistemas envolvidos. | 20d | 2026-08-06 | 2026-09-02 | 347 |  |  | 2026-08-06 | 2026-09-02 | 20d | 6d |  |
| 355 | 3.2.4.2.2.7 | Planta baixa e cortes estimada contendo: - Traçado preliminar de barrilete, ramais, colunas - Diâmetros estimados - Localização aproximada das bombas e unidades de tratamento e reúso - Localização do ramal predial de água e esgoto - Localização aproximada | 20d | 2026-08-06 | 2026-09-02 | 347 |  |  | 2026-08-06 | 2026-09-02 | 20d | 0d |  |

| ID | WBS | Task | Duration | Start | Finish | Predecessors | Complete | Remaining | Baseline start | Baseline finish | Baseline duration | Total slack | Text3 |
| --- | --- | --- | --- | --- | --- | --- | --- | --- | --- | --- | --- | --- | --- |
| 356 | 3.2.4.2.3 | **LOD 300 - Consolidação e documentação de entrega** | 6d | 2026-09-03 | 2026-09-11 |  |  |  | 2026-09-03 | 2026-09-11 | 6d | 0d |  |
| 357 | 3.2.4.2.3.1 | Planta, corte e detalhe isométrico contendo: - Modelagem detalhada com diâmetros, cotas e inclinações definitivas (barriletes, colunas, ramais) - Quantitativos e especificação técnica dos materiais (tubos, conexões, reservatórios, registros e válvulas com | 6d | 2026-09-03 | 2026-09-11 | 355 |  |  | 2026-09-03 | 2026-09-11 | 6d | 0d |  |
| 358 | 3.2.4.2.3.2 | Memorial descritivo | 3d | 2026-09-09 | 2026-09-11 | 357FF |  |  | 2026-09-09 | 2026-09-11 | 3d | 0d |  |
| 359 | 3.2.4.2.3.3 | Memória de cálculo (pressão, vazão, diâmetros, perda de carga). | 3d | 2026-09-09 | 2026-09-11 | 355, 357FF |  |  | 2026-09-09 | 2026-09-11 | 3d | 0d |  |
| 360 | 3.2.4.2.4 | Aprovação de Conformidade | 3d | 2026-09-09 | 2026-09-11 | 356FF |  |  | 2026-09-09 | 2026-09-11 | 3d | 0d |  |
| 361 | 3.2.4.2.5 | Material para entrega ao contrato | 3d | 2026-09-09 | 2026-09-11 | 356FF |  |  | 2026-09-09 | 2026-09-11 | 3d | 0d |  |
| 362 | 3.2.4.3 | **AVAC** | 34d | 2026-07-27 A | 2026-09-11 |  | 5% | 32.33d | 2026-07-27 | 2026-09-11 | 34d | 0d |  |
| 363 | 3.2.4.3.1 | **LOD 100 — Premissas, diretrizes e interfaces** | 21d | 2026-07-27 A | 2026-08-24 |  | 13% | 18.22d | 2026-07-27 | 2026-08-24 | 21d | 13d |  |
| 364 | 3.2.4.3.1.1 | Estimativa de carga térmica por ambiente. | 10d | 2026-07-27 A | 2026-08-07 | 202SS-9d | 16% | 8.41d | 2026-07-27 | 2026-08-07 | 10d | 24d |  |
| 365 | 3.2.4.3.1.2 | Localização preliminar de unidades de tratamento de ar, condensadoras e exaustores. | 10d | 2026-07-27 A | 2026-08-07 | 202SS-9d | 16% | 8.41d | 2026-07-27 | 2026-08-07 | 10d | 24d |  |
| 366 | 3.2.4.3.1.3 | Pontos locação para seus elementos no projeto arquitetônico. | 10d | 2026-07-27 A | 2026-08-07 | 202SS-9d | 16% | 8.41d | 2026-07-27 | 2026-08-07 | 10d | 0d |  |
| 367 | 3.2.4.3.1.4 | Estudo de viabilidade e rotas principais de distribuição de ar. | 10d | 2026-07-27 A | 2026-08-07 | 202SS-9d | 16% | 8.41d | 2026-07-27 | 2026-08-07 | 10d | 24d |  |
| 368 | 3.2.4.3.1.5 | Reserva de espaços técnicos e shafts. | 10d | 2026-07-27 A | 2026-08-07 | 202SS-9d | 16% | 8.41d | 2026-07-27 | 2026-08-07 | 10d | 0d |  |
| 369 | 3.2.4.3.1.6 | Levantamento de cargas especiais provenientes de outras disciplinas. | 10d | 2026-08-11 | 2026-08-24 | 391, 403, 165, 177 |  |  | 2026-08-11 | 2026-08-24 | 10d | 13d |  |
| 370 | 3.2.4.3.2 | **LOD 200 — Validação interdisciplinar e solução preliminar** | 24d | 2026-08-10 | 2026-09-11 |  |  |  | 2026-08-10 | 2026-09-11 | 24d | 0d |  |
| 371 | 3.2.4.3.2.1 | Lista preliminar de sistemas HVAC envolvidos (expansão direta, VRF, chillers, ventilação, exaustão). | 24d | 2026-08-10 | 2026-09-11 | 368 |  |  | 2026-08-10 | 2026-09-11 | 24d | 0d |  |
| 372 | 3.2.4.3.2.2 | Planta baixa estimada contendo: pontos de insuflamento e retorno. | 24d | 2026-08-10 | 2026-09-11 | 368 |  |  | 2026-08-10 | 2026-09-11 | 24d | 0d |  |
| 373 | 3.2.4.3.2.3 | Rotas iniciais de dutos, tubulações e drenos. | 24d | 2026-08-10 | 2026-09-11 | 368 |  |  | 2026-08-10 | 2026-09-11 | 24d | 0d |  |
| 374 | 3.2.4.3.2.4 | Planta baixa estimada contendo: unidades internas e externas com posição preliminar. | 24d | 2026-08-10 | 2026-09-11 | 368 |  |  | 2026-08-10 | 2026-09-11 | 24d | 0d |  |
| 375 | 3.2.4.3.3 | Aprovação de Conformidade | 3d | 2026-09-09 | 2026-09-11 | 370FF |  |  | 2026-09-09 | 2026-09-11 | 3d | 0d |  |
| 376 | 3.2.4.3.4 | Material para entrega ao contrato | 3d | 2026-09-09 | 2026-09-11 | 370FF |  |  | 2026-09-09 | 2026-09-11 | 3d | 0d |  |
| 377 | 3.2.4.4 | **PCI (Incêndio)** | 34d | 2026-07-27 A | 2026-09-11 |  | 4% | 32.5d | 2026-07-27 | 2026-09-11 | 34d | 0d |  |
| 378 | 3.2.4.4.1 | **LOD 100 — Premissas, diretrizes e interfaces** | 10d | 2026-07-27 A | 2026-08-07 |  | 16% | 8.41d | 2026-07-27 | 2026-08-07 | 10d | 24d | ܁# |
| 379 | 3.2.4.4.1.1 | Estudo e avaliação da arquitetura atendendo as normas competentes de PCI | 10d | 2026-07-27 A | 2026-08-07 | 202SS-9d | 16% | 8.41d | 2026-07-27 | 2026-08-07 | 10d | 24d |  |
| 380 | 3.2.4.4.1.2 | Avaliação do espaço para CMI e Central de Gás. | 10d | 2026-07-27 A | 2026-08-07 | 202SS-9d | 16% | 8.41d | 2026-07-27 | 2026-08-07 | 10d | 24d |  |
| 381 | 3.2.4.4.1.3 | Pontos locação para seus elementos no projeto arquitetônico | 10d | 2026-07-27 A | 2026-08-07 | 202SS-9d | 16% | 8.41d | 2026-07-27 | 2026-08-07 | 10d | 0d |  |

| ID | WBS | Task | Duration | Start | Finish | Predecessors | Complete | Remaining | Baseline start | Baseline finish | Baseline duration | Total slack | Free slack | Text3 |
| --- | --- | --- | --- | --- | --- | --- | --- | --- | --- | --- | --- | --- | --- | --- |
| 382 | 3.2.4.4.2 | **LOD 200 — Validação interdisciplinar e solução preliminar** | 24d | 2026-08-10 | 2026-09-11 |  |  |  | 2026-08-10 | 2026-09-11 | 24d | 0d |  | ܁# |
| 383 | 3.2.4.4.2.1 | Definição da classificação da edificação e o risco de incêndio | 24d | 2026-08-10 | 2026-09-11 | 381 |  |  | 2026-08-10 | 2026-09-11 | 24d | 0d |  |  |
| 384 | 3.2.4.4.2.2 | Cálculos pré-dimensionados dos extintores, hidrantes e bomba. | 24d | 2026-08-10 | 2026-09-11 | 381 |  |  | 2026-08-10 | 2026-09-11 | 24d | 0d |  |  |
| 385 | 3.2.4.4.2.3 | Avaliação das rotas de fuga, ventilação de CMI e outros elementos de importância para as normas de PCI | 24d | 2026-08-10 | 2026-09-11 | 381 |  |  | 2026-08-10 | 2026-09-11 | 24d | 0d |  |  |
| 386 | 3.2.4.4.3 | Aprovação de Conformidade | 3d | 2026-09-09 | 2026-09-11 | 382FF |  |  | 2026-09-09 | 2026-09-11 | 3d | 0d |  |  |
| 387 | 3.2.4.4.4 | Material para entrega ao contrato | 3d | 2026-09-09 | 2026-09-11 | 382FF |  |  | 2026-09-09 | 2026-09-11 | 3d | 0d |  |  |
| 388 | 3.2.4.5 | **Elétrica Baixa Tensão** | 34d | 2026-07-27 A | 2026-09-11 |  | 4% | 32.52d | 2026-07-27 | 2026-09-11 | 34d | 0d |  |  |
| 389 | 3.2.4.5.1 | **LOD 100 — Concepção** | 14d | 2026-07-27 A | 2026-08-13 |  | 21% | 11.03d | 2026-07-27 | 2026-08-13 | 14d | 20d |  |  |
| 390 | 3.2.4.5.1.1 | Avaliação e Diretrizes Técnicas para Arquitetura | 4d | 2026-07-27 A | 2026-07-30 | 202SS-9d | 40% | 2.41d | 2026-07-27 | 2026-07-30 | 4d | 30d |  |  |
| 391 | 3.2.4.5.1.2 | Estimativa de Cargas e Demanda | 7d | 2026-07-27 A | 2026-08-04 | 202SS-9d | 23% | 5.41d | 2026-07-27 | 2026-08-04 | 7d | 7d | 4d |  |
| 392 | 3.2.4.5.1.3 | Levantamento de Equipamentos de Outras Disciplinas | 4d | 2026-08-10 | 2026-08-13 | 366, 381 |  |  | 2026-08-10 | 2026-08-13 | 4d | 0d |  |  |
| 393 | 3.2.4.5.2 | **LOD 200 — Anteprojeto** | 16d | 2026-08-14 | 2026-09-04 |  |  |  | 2026-08-14 | 2026-09-04 | 16d | 0d |  |  |
| 394 | 3.2.4.5.2.1 | TUGs Estimados | 16d | 2026-08-14 | 2026-09-04 | 391, 392 |  |  | 2026-08-14 | 2026-09-04 | 16d | 0d |  |  |
| 395 | 3.2.4.5.2.2 | Pontos de Luz Estimados | 16d | 2026-08-14 | 2026-09-04 | 391, 392 |  |  | 2026-08-14 | 2026-09-04 | 16d | 0d |  |  |
| 396 | 3.2.4.5.2.3 | TUEs e Quadros Estimados | 16d | 2026-08-14 | 2026-09-04 | 391, 392 |  |  | 2026-08-14 | 2026-09-04 | 16d | 0d |  |  |
| 397 | 3.2.4.5.3 | LOD 300 - Consolidação e documentação de entrega | 4d | 2026-09-08 | 2026-09-11 | 393 |  |  | 2026-09-08 | 2026-09-11 | 4d | 0d |  |  |
| 398 | 3.2.4.5.4 | Aprovação de Conformidade | 3d | 2026-09-09 | 2026-09-11 | 397FF |  |  | 2026-09-09 | 2026-09-11 | 3d | 0d |  |  |
| 399 | 3.2.4.5.5 | Material para entrega ao contrato | 3d | 2026-09-09 | 2026-09-11 | 397FF |  |  | 2026-09-09 | 2026-09-11 | 3d | 0d |  |  |
| 400 | 3.2.4.6 | **Telecom** | 34d | 2026-07-27 A | 2026-09-11 |  | 7% | 31.68d | 2026-07-27 | 2026-09-11 | 34d | 0d |  |  |
| 401 | 3.2.4.6.1 | **LOD 100 — Concepção** | 10d | 2026-07-27 A | 2026-08-07 |  | 16% | 8.41d | 2026-07-27 | 2026-08-07 | 10d | 24d |  |  |
| 402 | 3.2.4.6.1.1 | Avaliação e Diretrizes Técnicas para Arquitetura | 10d | 2026-07-27 A | 2026-08-07 | 202SS-9d | 16% | 8.41d | 2026-07-27 | 2026-08-07 | 10d | 24d |  |  |
| 403 | 3.2.4.6.1.2 | Estimativa de Demanda de Telecomunicações | 10d | 2026-07-27 A | 2026-08-07 | 202SS-9d | 16% | 8.41d | 2026-07-27 | 2026-08-07 | 10d | 14d | 1d |  |
| 404 | 3.2.4.6.1.3 | Levantamento de Equipamentos e Interfaces com Outras Disciplinas | 10d | 2026-07-27 A | 2026-08-07 | 202SS-9d | 16% | 8.41d | 2026-07-27 | 2026-08-07 | 10d | 0d |  |  |
| 405 | 3.2.4.6.2 | **LOD 200 — Anteprojeto** | 20d | 2026-08-10 | 2026-09-04 |  |  |  | 2026-08-10 | 2026-09-04 | 20d | 0d |  |  |
| 406 | 3.2.4.6.2.1 | Pontos de Telecomunicações Estimados (Rede, Voz, CFTV e Demais Sistemas) | 10d | 2026-08-10 | 2026-08-21 | 404 |  |  | 2026-08-10 | 2026-08-21 | 10d | 0d |  |  |
| 407 | 3.2.4.6.2.2 | Racks Estimados | 10d | 2026-08-10 | 2026-08-21 | 404 |  |  | 2026-08-10 | 2026-08-21 | 10d | 0d |  |  |
| 408 | 3.2.4.6.2.3 | Infraestrutura de Telecomunicações Preliminar | 10d | 2026-08-24 | 2026-09-04 | 406, 407 |  |  | 2026-08-24 | 2026-09-04 | 10d | 0d |  |  |
| 409 | 3.2.4.6.3 | LOD 300 - Consolidação e documentação de entrega | 4d | 2026-09-08 | 2026-09-11 | 405 |  |  | 2026-09-08 | 2026-09-11 | 4d | 0d |  |  |
| 410 | 3.2.4.6.4 | Aprovação de Conformidade | 3d | 2026-09-09 | 2026-09-11 | 409FF |  |  | 2026-09-09 | 2026-09-11 | 3d | 0d |  |  |
| 411 | 3.2.4.6.5 | Material para entrega ao contrato | 3d | 2026-09-09 | 2026-09-11 | 409FF |  |  | 2026-09-09 | 2026-09-11 | 3d | 0d |  |  |

| ID | WBS | Task | Duration | Start | Finish | Predecessors | Complete | Remaining | Baseline start | Baseline finish | Baseline duration | Total slack |
| --- | --- | --- | --- | --- | --- | --- | --- | --- | --- | --- | --- | --- |
| 412 | 3.2.4.7 | **SPDA** | 34d | 2026-07-27 A | 2026-09-11 |  | 7% | 31.68d | 2026-07-27 | 2026-09-11 | 34d | 0d |
| 413 | 3.2.4.7.1 | **LOD 100 — Concepção** | 10d | 2026-07-27 A | 2026-08-07 |  | 16% | 8.41d | 2026-07-27 | 2026-08-07 | 10d | 24d |
| 414 | 3.2.4.7.1.1 | Avaliação e Diretrizes Técnicas para Arquitetura | 10d | 2026-07-27 A | 2026-08-07 | 202SS-9d | 16% | 8.41d | 2026-07-27 | 2026-08-07 | 10d | 24d |
| 415 | 3.2.4.7.1.2 | Coleta de Informações da Edificação e Análise de Risco (ABNT NBR 5419-2) | 10d | 2026-07-27 A | 2026-08-07 | 202SS-9d | 16% | 8.41d | 2026-07-27 | 2026-08-07 | 10d | 24d |
| 416 | 3.2.4.7.1.3 | Estudo Preliminar de Necessidade e Nível de Proteção do SPDA | 10d | 2026-07-27 A | 2026-08-07 | 202SS-9d | 16% | 8.41d | 2026-07-27 | 2026-08-07 | 10d | 0d |
| 417 | 3.2.4.7.2 | **LOD 200 — Anteprojeto** | 20d | 2026-08-10 | 2026-09-04 |  |  |  | 2026-08-10 | 2026-09-04 | 20d | 0d |
| 418 | 3.2.4.7.2.1 | Definição da Estratégia de Proteção e Soluções Técnicas | 10d | 2026-08-10 | 2026-08-21 | 416 |  |  | 2026-08-10 | 2026-08-21 | 10d | 0d |
| 419 | 3.2.4.7.2.2 | Zoneamento de Captação, Descida e Traçados Preliminares | 10d | 2026-08-24 | 2026-09-04 | 418 |  |  | 2026-08-24 | 2026-09-04 | 10d | 4d |
| 420 | 3.2.4.7.2.3 | Estudo de Interferências, Compatibilização e Métodos Construtivos | 10d | 2026-08-24 | 2026-09-04 | 418 |  |  | 2026-08-24 | 2026-09-04 | 10d | 0d |
| 421 | 3.2.4.7.3 | LOD 300 - Consolidação e documentação de entrega | 4d | 2026-09-08 | 2026-09-11 | 420 |  |  | 2026-09-08 | 2026-09-11 | 4d | 0d |
| 422 | 3.2.4.7.4 | Aprovação de Conformidade | 3d | 2026-09-09 | 2026-09-11 | 421FF |  |  | 2026-09-09 | 2026-09-11 | 3d | 0d |
| 423 | 3.2.4.7.5 | Material para entrega ao contrato | 3d | 2026-09-09 | 2026-09-11 | 421FF |  |  | 2026-09-09 | 2026-09-11 | 3d | 0d |
| 424 | 3.2.4.8 | **Energia Renovável** | 34d | 2026-07-27 A | 2026-09-11 |  | 5% | 32.38d | 2026-07-27 | 2026-09-11 | 34d | 0d |
| 425 | 3.2.4.8.1 | **LOD 100 — Concepção** | 10d | 2026-07-27 A | 2026-08-07 |  | 16% | 8.41d | 2026-07-27 | 2026-08-07 | 10d | 24d |
| 426 | 3.2.4.8.1.1 | Viabilidade e Premissas de Geração | 10d | 2026-07-27 A | 2026-08-07 | 202SS-9d | 16% | 8.41d | 2026-07-27 | 2026-08-07 | 10d | 24d |
| 427 | 3.2.4.8.1.2 | Levantamento Preliminar de Áreas e Sombreamento | 10d | 2026-07-27 A | 2026-08-07 | 202SS-9d | 16% | 8.41d | 2026-07-27 | 2026-08-07 | 10d | 0d |
| 428 | 3.2.4.8.1.3 | Avaliação e Diretrizes Técnicas para Arquitetônico | 10d | 2026-07-27 A | 2026-08-07 | 202SS-9d | 16% | 8.41d | 2026-07-27 | 2026-08-07 | 10d | 24d |
| 429 | 3.2.4.8.2 | **LOD 200 — Anteprojeto** | 20d | 2026-08-10 | 2026-09-04 |  |  |  | 2026-08-10 | 2026-09-04 | 20d | 0d |
| 430 | 3.2.4.8.2.1 | Layout Preliminar de Módulos, Inversores e String Boxes | 20d | 2026-08-10 | 2026-09-04 | 427 |  |  | 2026-08-10 | 2026-09-04 | 20d | 0d |
| 431 | 3.2.4.8.2.2 | Infraestrutura e Rotas Técnicas Preliminares (DC/AC e Aterramento) | 20d | 2026-08-10 | 2026-09-04 | 427 |  |  | 2026-08-10 | 2026-09-04 | 20d | 0d |
| 432 | 3.2.4.8.2.3 | Critérios Preliminares de Proteção e Estimativa de Quantitativos | 20d | 2026-08-10 | 2026-09-04 | 427 |  |  | 2026-08-10 | 2026-09-04 | 20d | 0d |
| 433 | 3.2.4.8.3 | LOD 300 - Consolidação e documentação de entrega | 4d | 2026-09-08 | 2026-09-11 | 429 |  |  | 2026-09-08 | 2026-09-11 | 4d | 0d |
| 434 | 3.2.4.8.4 | Aprovação de Conformidade | 3d | 2026-09-09 | 2026-09-11 | 433FF |  |  | 2026-09-09 | 2026-09-11 | 3d | 0d |
| 435 | 3.2.4.8.5 | Material para entrega ao contrato | 3d | 2026-09-09 | 2026-09-11 | 433FF |  |  | 2026-09-09 | 2026-09-11 | 3d | 0d |

| ID | WBS | Task | Duration | Start | Finish | Predecessors | Complete | Remaining | Baseline start | Baseline finish | Baseline duration | Total slack | Constraint |
| --- | --- | --- | --- | --- | --- | --- | --- | --- | --- | --- | --- | --- | --- |
| 436 | 3.3 | **003 - Teatro** | 45d | 2026-07-10 A | 2026-09-11 |  | 26% | 33.44d | 2026-07-10 | 2026-09-11 | 45d | 0d |  |
| 437 | 3.3.1 | **Arquitetura** | 45d | 2026-07-10 A | 2026-09-11 |  | 60% | 18.05d | 2026-07-10 | 2026-09-11 | 45d | 0d |  |
| 438 | 3.3.1.1 | **Análise e Compatibilização (caso a gente receba o projeto e precise adequar)** | 31d | 2026-07-10 A | 2026-08-21 A |  | 100% |  | 2026-07-10 | 2026-08-21 | 31d |  |  |
| 439 | 3.3.1.1.1 | Analisar topografia (entender se precisar refazer) | 20d | 2026-07-10 A | 2026-08-06 A | 24FS+5d | 100% |  | 2026-07-10 | 2026-08-06 | 20d |  | start no earlier than 2026-06-01 |
| 440 | 3.3.1.1.2 | Verificar, georreferenciar e indicar Norte; | 20d | 2026-07-10 A | 2026-08-06 A | 24FS+5d | 100% |  | 2026-07-10 | 2026-08-06 | 20d |  | start no earlier than 2026-06-01 |
| 441 | 3.3.1.1.3 | Revisão de perímetro do terreno, recuos, taxa de ocupação e afastamentos | 20d | 2026-07-10 A | 2026-08-06 A | 24FS+5d | 100% |  | 2026-07-10 | 2026-08-06 | 20d |  | start no earlier than 2026-06-01 |
| 442 | 3.3.1.1.4 | Conferir e fechar alinhamento das paredes | 20d | 2026-07-10 A | 2026-08-06 A | 24FS+5d | 100% |  | 2026-07-10 | 2026-08-06 | 20d |  | start no earlier than 2026-06-01 |
| 443 | 3.3.1.1.5 | Conferir quantidade de sanitários e cubas de acordo com os setores | 20d | 2026-07-10 A | 2026-08-06 A | 24FS+5d | 100% |  | 2026-07-10 | 2026-08-06 | 20d |  | start no earlier than 2026-06-01 |
| 444 | 3.3.1.1.6 | Conferir e fechar Pisos | 20d | 2026-07-10 A | 2026-08-06 A | 24FS+5d | 100% |  | 2026-07-10 | 2026-08-06 | 20d |  | start no earlier than 2026-06-01 |
| 445 | 3.3.1.1.7 | Conferir e fechar Esquadrias | 20d | 2026-07-10 A | 2026-08-06 A | 24FS+5d | 100% |  | 2026-07-10 | 2026-08-06 | 20d |  | start no earlier than 2026-06-01 |
| 446 | 3.3.1.1.8 | Conferir acessibilidade em rampas e sanitários | 20d | 2026-07-10 A | 2026-08-06 A | 24FS+5d | 100% |  | 2026-07-10 | 2026-08-06 | 20d |  | start no earlier than 2026-06-01 |
| 447 | 3.3.1.1.9 | Conferir nomas técnicas para o dimensionamento dos ambientes - principalmente banheiros e circulações | 20d | 2026-07-10 A | 2026-08-06 A | 24FS+5d | 100% |  | 2026-07-10 | 2026-08-06 | 20d |  | start no earlier than 2026-06-01 |
| 448 | 3.3.1.1.10 | Conferir normas técnicas para auditórios (se tiver) | 20d | 2026-07-10 A | 2026-08-06 A | 24FS+5d | 100% |  | 2026-07-10 | 2026-08-06 | 20d |  | start no earlier than 2026-06-01 |
| 449 | 3.3.1.1.11 | Compatibilização (pedir relatório de análise de projeto para disciplinas de engenharia) | 5d | 2026-08-07 A | 2026-08-13 A | 448 | 100% |  | 2026-08-07 | 2026-08-13 | 5d |  |  |
| 450 | 3.3.1.1.12 | Compatibilizar as rotas de fulga de acordo com as solicitações de PCI | 11d | 2026-08-07 A | 2026-08-21 A | 448 | 100% |  | 2026-08-07 | 2026-08-21 | 11d |  |  |
| 451 | 3.3.1.1.13 | Comatibilizar as prumadas com as equipes de engenharia | 11d | 2026-08-07 A | 2026-08-21 A | 448 | 100% |  | 2026-08-07 | 2026-08-21 | 11d |  |  |
| 452 | 3.3.1.1.14 | Ajustar área dos ambientes conforme solicitado pela equipe de elétrica | 11d | 2026-08-07 A | 2026-08-21 A | 448 | 100% |  | 2026-08-07 | 2026-08-21 | 11d |  |  |
| 453 | 3.3.1.2 | **LOD 300 - ANTEPROJETO** | 20d | 2026-08-14 A | 2026-09-11 |  | 32% | 13.59d | 2026-08-14 | 2026-09-11 | 20d | 0d |  |
| 454 | 3.3.1.2.1 | **Modelagem e compatibilização** | 10d | 2026-08-14 A | 2026-08-27 |  | 39% | 6.07d | 2026-08-14 | 2026-08-27 | 10d | 10d |  |
| 455 | 3.3.1.2.1.1 | Ajustar o navegador de projeto conforme o padrão da Quanta - verificar se todas as vistas estão dentro da disciplina correta - alinahr com o líder da OS | 10d | 2026-08-14 | 2026-08-27 | 449 |  |  | 2026-08-14 | 2026-08-27 | 10d | 10d |  |
| 456 | 3.3.1.2.1.2 | Limpar o arquivo e transferir os padões de projeto da Quanta | 10d | 2026-08-14 | 2026-08-27 | 449 |  |  | 2026-08-14 | 2026-08-27 | 10d | 10d |  |
| 457 | 3.3.1.2.1.3 | Criar Worksets (em caso de arquivos colaborados) | 10d | 2026-08-14 | 2026-08-27 | 449 |  |  | 2026-08-14 | 2026-08-27 | 10d | 10d |  |
| 458 | 3.3.1.2.1.4 | Colocar todas as elementos em seus devidos Worksets | 10d | 2026-08-14 | 2026-08-27 | 449 |  |  | 2026-08-14 | 2026-08-27 | 10d | 10d |  |
| 459 | 3.3.1.2.1.5 | Fazer ajustes dos modelos para Colaboração | 10d | 2026-08-14 | 2026-08-27 | 449 |  |  | 2026-08-14 | 2026-08-27 | 10d | 10d |  |
| 460 | 3.3.1.2.1.6 | Mudar os pisos para o padrão da quanta (1º pavimento) | 10d | 2026-08-14 A | 2026-08-27 A | 449 | 100% |  | 2026-08-14 | 2026-08-27 | 10d |  |  |
| 461 | 3.3.1.2.1.7 | Mudar as parades para o padão da quanta (1º pavimento) | 10d | 2026-08-14 A | 2026-08-27 A | 449 | 100% |  | 2026-08-14 | 2026-08-27 | 10d |  |  |
| 462 | 3.3.1.2.1.8 | Mudar as portas para o padão da quanta (1º pavimento) | 10d | 2026-08-14 A | 2026-08-27 A | 449 | 100% |  | 2026-08-14 | 2026-08-27 | 10d |  |  |
| 463 | 3.3.1.2.1.9 | Mudar as soleiras para o padão da quanta | 10d | 2026-08-14 A | 2026-08-27 A | 449 | 100% |  | 2026-08-14 | 2026-08-27 | 10d |  |  |
| 464 | 3.3.1.2.1.10 | Mudar as bancadas para o padão da Quanta (1º pavimento) | 10d | 2026-08-14 A | 2026-08-27 A | 449 | 100% |  | 2026-08-14 | 2026-08-27 | 10d |  |  |
| 465 | 3.3.1.2.1.11 | Mudar metais para padrão da Quanta (1º pavimento) | 10d | 2026-08-14 A | 2026-08-27 A | 449 | 100% |  | 2026-08-14 | 2026-08-27 | 10d |  |  |
| 466 | 3.3.1.2.1.12 | Mudar demais acabamentos para padrão o padrão da Quanta | 10d | 2026-08-14 A | 2026-08-27 A | 449 | 100% |  | 2026-08-14 | 2026-08-27 | 10d |  |  |
| 467 | 3.3.1.2.1.13 | Ajustar ralos das áreas molhadas (1º pavimento) | 10d | 2026-08-14 A | 2026-08-27 A | 449 | 100% |  | 2026-08-14 | 2026-08-27 | 10d |  |  |
| 468 | 3.3.1.2.1.14 | Se vier as tomadas - excluir (1º Pavimento) | 10d | 2026-08-14 | 2026-08-27 | 449 |  |  | 2026-08-14 | 2026-08-27 | 10d | 10d |  |
| 469 | 3.3.1.2.1.15 | Se vier as luminárias - excluir (1° pavimento) | 10d | 2026-08-14 | 2026-08-27 | 449 |  |  | 2026-08-14 | 2026-08-27 | 10d | 10d |  |
| 470 | 3.3.1.2.1.16 | Inserir caixa d'água - Conferir pré dimensionamento com a engenharia | 10d | 2026-08-14 | 2026-08-27 | 449 |  |  | 2026-08-14 | 2026-08-27 | 10d | 10d |  |
| 471 | 3.3.1.2.1.17 | Separar camadas dos pisos - leje 10cm (1° camada), contrapiso 3cm+argamassa 2cm+rev 1cm, (2°camada) | 10d | 2026-08-14 A | 2026-08-27 A | 449 | 100% |  | 2026-08-14 | 2026-08-27 | 10d |  |  |
| 472 | 3.3.1.2.1.18 | Descrição dos elementos da edificação | 10d | 2026-08-14 | 2026-08-27 | 449 |  |  | 2026-08-14 | 2026-08-27 | 10d | 10d |  |
| 473 | 3.3.1.2.1.19 | Descrição dos componentes construtivos e materiais de construção | 10d | 2026-08-14 | 2026-08-27 | 449 |  |  | 2026-08-14 | 2026-08-27 | 10d | 10d |  |
| 474 | 3.3.1.2.1.20 | Lista de pranchas anexas e documentos | 10d | 2026-08-14 | 2026-08-27 | 449 |  |  | 2026-08-14 | 2026-08-27 | 10d | 10d |  |
| 475 | 3.3.1.2.1.21 | Vias de acesso ao conjunto, arruamento, logradouros adjacentes e calçadas com os respectivos equipamentos urbanos; | 10d | 2026-08-14 | 2026-08-27 | 449 |  |  | 2026-08-14 | 2026-08-27 | 10d | 10d |  |
| 476 | 3.3.1.2.1.22 | Platôs e taludes principais; | 10d | 2026-08-14 | 2026-08-27 | 449 |  |  | 2026-08-14 | 2026-08-27 | 10d | 10d |  |
| 477 | 3.3.1.2.1.23 | Perímetro do terreno, recuos e afastamentos; | 10d | 2026-08-14 | 2026-08-27 | 449 |  |  | 2026-08-14 | 2026-08-27 | 10d | 10d |  |
| 478 | 3.3.1.2.1.24 | Indicação das áreas a serem edificadas com o contorno da cobertura das edificações, estacionamentos e áreas permeáveis/impermeáveis; | 10d | 2026-08-14 | 2026-08-27 | 449 |  |  | 2026-08-14 | 2026-08-27 | 10d | 10d |  |
| 479 | 3.3.1.2.1.25 | Denominação das edificações, blocos ou espaços; | 10d | 2026-08-14 | 2026-08-27 | 449 |  |  | 2026-08-14 | 2026-08-27 | 10d | 10d |  |
| 480 | 3.3.1.2.1.26 | Cotas gerais | 10d | 2026-08-14 A | 2026-08-27 A | 449 | 100% |  | 2026-08-14 | 2026-08-27 | 10d |  |  |
| 481 | 3.3.1.2.1.27 | Cotas de nível principal. | 10d | 2026-08-14 | 2026-08-27 | 449 |  |  | 2026-08-14 | 2026-08-27 | 10d | 10d |  |
| 482 | 3.3.1.2.1.28 | Quadros de áreas | 10d | 2026-08-14 A | 2026-08-27 A | 449 | 100% |  | 2026-08-14 | 2026-08-27 | 10d |  |  |
| 483 | 3.3.1.2.2 | Planta com as cotas de nível projetadas e existentes | 1d | 2026-08-28 | 2026-08-28 | 482 |  |  | 2026-08-28 | 2026-08-28 | 1d | 0d |  |

| ID | WBS | Task | Duration | Start | Finish | Predecessors | Baseline start | Baseline finish | Baseline duration | Total slack |
| --- | --- | --- | --- | --- | --- | --- | --- | --- | --- | --- |
| 484 | 3.3.1.2.3 | **Plantas baixas (se tiver mais de um pavimento, duplicar bloco)** | 1d | 2026-08-31 | 2026-08-31 |  | 2026-08-31 | 2026-08-31 | 1d | 0d |
| 485 | 3.3.1.2.3.1 | Indicar simbologias de representação gráfica, conforme NBR 6492:2021; | 1d | 2026-08-31 | 2026-08-31 | 483 | 2026-08-31 | 2026-08-31 | 1d | 8d |
| 486 | 3.3.1.2.3.2 | Compatibilização (verificar se está tudo conforme as normas e alinhar com o restante das disciplinas de engenharia) | 1d | 2026-08-31 | 2026-08-31 | 483 | 2026-08-31 | 2026-08-31 | 1d | 8d |
| 487 | 3.3.1.2.3.3 | Compatibilização (deixar tudo conforme padrão Quanta) | 1d | 2026-08-31 | 2026-08-31 | 483 | 2026-08-31 | 2026-08-31 | 1d | 8d |
| 488 | 3.3.1.2.3.4 | Indicação de Norte; | 1d | 2026-08-31 | 2026-08-31 | 483 | 2026-08-31 | 2026-08-31 | 1d | 8d |
| 489 | 3.3.1.2.3.5 | Indicação de Escala; | 1d | 2026-08-31 | 2026-08-31 | 483 | 2026-08-31 | 2026-08-31 | 1d | 8d |
| 490 | 3.3.1.2.3.6 | Indicação de Acessos; | 1d | 2026-08-31 | 2026-08-31 | 483 | 2026-08-31 | 2026-08-31 | 1d | 8d |
| 491 | 3.3.1.2.3.7 | Elementos de vedação internos e externos; | 1d | 2026-08-31 | 2026-08-31 | 483 | 2026-08-31 | 2026-08-31 | 1d | 8d |
| 492 | 3.3.1.2.3.8 | Esquadrias (sem código e sem quadro); | 1d | 2026-08-31 | 2026-08-31 | 483 | 2026-08-31 | 2026-08-31 | 1d | 8d |
| 493 | 3.3.1.2.3.9 | Elementos estruturais principais; | 1d | 2026-08-31 | 2026-08-31 | 483 | 2026-08-31 | 2026-08-31 | 1d | 8d |
| 494 | 3.3.1.2.3.10 | Identificação dos ambientes e espaços (internos e externos); | 1d | 2026-08-31 | 2026-08-31 | 483 | 2026-08-31 | 2026-08-31 | 1d | 8d |
| 495 | 3.3.1.2.3.11 | Espaços de circulação internos e externos; | 1d | 2026-08-31 | 2026-08-31 | 483 | 2026-08-31 | 2026-08-31 | 1d | 8d |
| 496 | 3.3.1.2.3.12 | Áreas de serviço, funcionais e técnicas (internos e externos); | 1d | 2026-08-31 | 2026-08-31 | 483 | 2026-08-31 | 2026-08-31 | 1d | 8d |
| 497 | 3.3.1.2.3.13 | Projeções de níveis superiores; | 1d | 2026-08-31 | 2026-08-31 | 483 | 2026-08-31 | 2026-08-31 | 1d | 8d |
| 498 | 3.3.1.2.3.14 | Cotas gerais | 1d | 2026-08-31 | 2026-08-31 | 483 | 2026-08-31 | 2026-08-31 | 1d | 8d |
| 499 | 3.3.1.2.3.15 | Cotas de nível principal. | 1d | 2026-08-31 | 2026-08-31 | 483 | 2026-08-31 | 2026-08-31 | 1d | 8d |
| 500 | 3.3.1.2.3.16 | Quadro de áreas | 1d | 2026-08-31 | 2026-08-31 | 483 | 2026-08-31 | 2026-08-31 | 1d | 0d |
| 501 | 3.3.1.2.4 | **Planta das coberturas** | 1d | 2026-09-01 | 2026-09-01 |  | 2026-09-01 | 2026-09-01 | 1d | 0d |
| 502 | 3.3.1.2.4.1 | Indicação do Norte | 1d | 2026-09-01 | 2026-09-01 | 500 | 2026-09-01 | 2026-09-01 | 1d | 7d |
| 503 | 3.3.1.2.4.2 | Indicação de escala | 1d | 2026-09-01 | 2026-09-01 | 500 | 2026-09-01 | 2026-09-01 | 1d | 7d |
| 504 | 3.3.1.2.4.3 | Curvas de nível | 1d | 2026-09-01 | 2026-09-01 | 500 | 2026-09-01 | 2026-09-01 | 1d | 7d |
| 505 | 3.3.1.2.4.4 | Indicação de Acessos; | 1d | 2026-09-01 | 2026-09-01 | 500 | 2026-09-01 | 2026-09-01 | 1d | 7d |
| 506 | 3.3.1.2.4.5 | Estacionamento e áreas cobertas | 1d | 2026-09-01 | 2026-09-01 | 500 | 2026-09-01 | 2026-09-01 | 1d | 7d |
| 507 | 3.3.1.2.4.6 | Cobertura das edificações | 1d | 2026-09-01 | 2026-09-01 | 500 | 2026-09-01 | 2026-09-01 | 1d | 7d |
| 508 | 3.3.1.2.4.7 | Sentido de escoamento das águas pluviais e inclinação | 1d | 2026-09-01 | 2026-09-01 | 500 | 2026-09-01 | 2026-09-01 | 1d | 7d |
| 509 | 3.3.1.2.4.8 | Cotas gerais | 1d | 2026-09-01 | 2026-09-01 | 500 | 2026-09-01 | 2026-09-01 | 1d | 7d |
| 510 | 3.3.1.2.4.9 | Cotas de nível principal | 1d | 2026-09-01 | 2026-09-01 | 500 | 2026-09-01 | 2026-09-01 | 1d | 0d |

| ID | WBS | Task | Duration | Start | Finish | Predecessors | Baseline start | Baseline finish | Baseline duration | Total slack |
| --- | --- | --- | --- | --- | --- | --- | --- | --- | --- | --- |
| 511 | 3.3.1.2.5 | **Cortes longitudinais** | 1d | 2026-09-02 | 2026-09-02 |  | 2026-09-02 | 2026-09-02 | 1d | 0d |
| 512 | 3.3.1.2.5.1 | Indicar simbologias de representação gráfica, conforme NBR 6492:2021; | 1d | 2026-09-02 | 2026-09-02 | 510 | 2026-09-02 | 2026-09-02 | 1d | 6d |
| 513 | 3.3.1.2.5.2 | Indicação de Escala; | 1d | 2026-09-02 | 2026-09-02 | 510 | 2026-09-02 | 2026-09-02 | 1d | 6d |
| 514 | 3.3.1.2.5.3 | Elementos estruturais principais; | 1d | 2026-09-02 | 2026-09-02 | 510 | 2026-09-02 | 2026-09-02 | 1d | 6d |
| 515 | 3.3.1.2.5.4 | Elementos de vedação internos e externos; | 1d | 2026-09-02 | 2026-09-02 | 510 | 2026-09-02 | 2026-09-02 | 1d | 6d |
| 516 | 3.3.1.2.5.5 | Esquadrias; | 1d | 2026-09-02 | 2026-09-02 | 510 | 2026-09-02 | 2026-09-02 | 1d | 6d |
| 517 | 3.3.1.2.5.6 | Identificação dos ambientes; | 1d | 2026-09-02 | 2026-09-02 | 510 | 2026-09-02 | 2026-09-02 | 1d | 6d |
| 518 | 3.3.1.2.5.7 | Cobertura com indicação da respectiva inclinação; | 1d | 2026-09-02 | 2026-09-02 | 510 | 2026-09-02 | 2026-09-02 | 1d | 6d |
| 519 | 3.3.1.2.5.8 | Cotas gerais; | 1d | 2026-09-02 | 2026-09-02 | 510 | 2026-09-02 | 2026-09-02 | 1d | 6d |
| 520 | 3.3.1.2.5.9 | Cotas de nível principal; | 1d | 2026-09-02 | 2026-09-02 | 510 | 2026-09-02 | 2026-09-02 | 1d | 6d |
| 521 | 3.3.1.2.5.10 | Eixos do projeto; | 1d | 2026-09-02 | 2026-09-02 | 510 | 2026-09-02 | 2026-09-02 | 1d | 6d |
| 522 | 3.3.1.2.5.11 | Relevo construído; | 1d | 2026-09-02 | 2026-09-02 | 510 | 2026-09-02 | 2026-09-02 | 1d | 6d |
| 523 | 3.3.1.2.5.12 | Projeção da topografia natural. | 1d | 2026-09-02 | 2026-09-02 | 510 | 2026-09-02 | 2026-09-02 | 1d | 0d |
| 524 | 3.3.1.2.6 | **Cortes transversais** | 1d | 2026-09-03 | 2026-09-03 |  | 2026-09-03 | 2026-09-03 | 1d | 0d |
| 525 | 3.3.1.2.6.1 | Indicar simbologias de representação gráfica, conforme NBR 6492:2021; | 1d | 2026-09-03 | 2026-09-03 | 523 | 2026-09-03 | 2026-09-03 | 1d | 5d |
| 526 | 3.3.1.2.6.2 | Indicação de Escala; | 1d | 2026-09-03 | 2026-09-03 | 523 | 2026-09-03 | 2026-09-03 | 1d | 5d |
| 527 | 3.3.1.2.6.3 | Elementos estruturais principais; | 1d | 2026-09-03 | 2026-09-03 | 523 | 2026-09-03 | 2026-09-03 | 1d | 5d |
| 528 | 3.3.1.2.6.4 | Elementos de vedação internos e externos; | 1d | 2026-09-03 | 2026-09-03 | 523 | 2026-09-03 | 2026-09-03 | 1d | 5d |
| 529 | 3.3.1.2.6.5 | Esquadrias; | 1d | 2026-09-03 | 2026-09-03 | 523 | 2026-09-03 | 2026-09-03 | 1d | 5d |
| 530 | 3.3.1.2.6.6 | Identificação dos ambientes; | 1d | 2026-09-03 | 2026-09-03 | 523 | 2026-09-03 | 2026-09-03 | 1d | 5d |
| 531 | 3.3.1.2.6.7 | Cobertura com indicação da respectiva inclinação; | 1d | 2026-09-03 | 2026-09-03 | 523 | 2026-09-03 | 2026-09-03 | 1d | 5d |
| 532 | 3.3.1.2.6.8 | Cotas gerais; | 1d | 2026-09-03 | 2026-09-03 | 523 | 2026-09-03 | 2026-09-03 | 1d | 5d |
| 533 | 3.3.1.2.6.9 | Cotas de nível principal; | 1d | 2026-09-03 | 2026-09-03 | 523 | 2026-09-03 | 2026-09-03 | 1d | 5d |
| 534 | 3.3.1.2.6.10 | Eixos do projeto; | 1d | 2026-09-03 | 2026-09-03 | 523 | 2026-09-03 | 2026-09-03 | 1d | 5d |
| 535 | 3.3.1.2.6.11 | Relevo construído; | 1d | 2026-09-03 | 2026-09-03 | 523 | 2026-09-03 | 2026-09-03 | 1d | 5d |
| 536 | 3.3.1.2.6.12 | Projeção da topografia natural | 1d | 2026-09-03 | 2026-09-03 | 523 | 2026-09-03 | 2026-09-03 | 1d | 0d |

| ID | WBS | Task | Duration | Start | Finish | Predecessors | Complete | Remaining | Baseline start | Baseline finish | Baseline duration | Total slack | Free slack |
| --- | --- | --- | --- | --- | --- | --- | --- | --- | --- | --- | --- | --- | --- |
| 537 | 3.3.1.2.7 | **Elevações** | 1d | 2026-09-04 | 2026-09-04 |  |  |  | 2026-09-04 | 2026-09-04 | 1d | 0d |  |
| 538 | 3.3.1.2.7.1 | Indicar simbologias de representação gráfica, conforme NBR 6492:2021; | 1d | 2026-09-04 | 2026-09-04 | 536 |  |  | 2026-09-04 | 2026-09-04 | 1d | 0d |  |
| 539 | 3.3.1.2.7.2 | Indicação de Escala; | 1d | 2026-09-04 | 2026-09-04 | 536 |  |  | 2026-09-04 | 2026-09-04 | 1d | 0d |  |
| 540 | 3.3.1.2.7.3 | Elementos estruturais principais; | 1d | 2026-09-04 | 2026-09-04 | 536 |  |  | 2026-09-04 | 2026-09-04 | 1d | 0d |  |
| 541 | 3.3.1.2.7.4 | Elementos de vedação internos e externos; | 1d | 2026-09-04 | 2026-09-04 | 536 |  |  | 2026-09-04 | 2026-09-04 | 1d | 0d |  |
| 542 | 3.3.1.2.7.5 | Esquadrias (sem código e sem quadro); | 1d | 2026-09-04 | 2026-09-04 | 536 |  |  | 2026-09-04 | 2026-09-04 | 1d | 0d |  |
| 543 | 3.3.1.2.7.6 | Relevo construído; | 1d | 2026-09-04 | 2026-09-04 | 536 |  |  | 2026-09-04 | 2026-09-04 | 1d | 0d |  |
| 544 | 3.3.1.2.7.7 | Cotas gerais; | 1d | 2026-09-04 | 2026-09-04 | 536 |  |  | 2026-09-04 | 2026-09-04 | 1d | 0d |  |
| 545 | 3.3.1.2.7.8 | Cotas de nível principais; | 1d | 2026-09-04 | 2026-09-04 | 536 |  |  | 2026-09-04 | 2026-09-04 | 1d | 0d |  |
| 546 | 3.3.1.2.7.9 | Cobertura (quando aparente). | 1d | 2026-09-04 | 2026-09-04 | 536 |  |  | 2026-09-04 | 2026-09-04 | 1d | 0d |  |
| 547 | 3.3.1.2.8 | Memorial Descritivo | 4d | 2026-09-08 | 2026-09-11 | 537 |  |  | 2026-09-08 | 2026-09-11 | 4d | 0d |  |
| 548 | 3.3.2 | Aprovação de Conformidade | 3d | 2026-09-09 | 2026-09-11 | 547FF |  |  | 2026-09-09 | 2026-09-11 | 3d | 0d |  |
| 549 | 3.3.3 | Material para entrega ao contrato | 3d | 2026-09-09 | 2026-09-11 | 547FF |  |  | 2026-09-09 | 2026-09-11 | 3d | 0d |  |
| 550 | 3.3.4 | **Engenharia** | 34d | 2026-07-27 A | 2026-09-11 |  | 5% | 32.3d | 2026-07-27 | 2026-09-11 | 34d | 0d |  |
| 551 | 3.3.4.1 | **Estrutura** | 34d | 2026-07-27 A | 2026-09-11 |  | 3% | 32.95d | 2026-07-27 | 2026-09-11 | 34d | 0d |  |
| 552 | 3.3.4.1.1 | **LOD 100 — Premissas, diretrizes e interfaces** | 7d | 2026-07-27 A | 2026-08-04 |  | 25% | 5.24d | 2026-07-27 | 2026-08-04 | 7d | 27d |  |
| 553 | 3.3.4.1.1.1 | Levantamento de tipos de cargas globais estimadas (permanentes, acidentais, vento e especiais). | 2d | 2026-07-27 A | 2026-07-28 | 449SS-9d | 80% | 0.41d | 2026-07-27 | 2026-07-28 | 2d | 32d |  |
| 554 | 3.3.4.1.1.2 | Estudo volumétrico com modulação inicial de pilares, vigas e lajes. Entendendo vãos e desafios | 5d | 2026-07-27 A | 2026-07-31 | 449SS-9d | 32% | 3.41d | 2026-07-27 | 2026-07-31 | 5d | 29d |  |
| 555 | 3.3.4.1.1.3 | Localização aproximada de elementos estruturais principais. Avaliando vãos e estudando posições | 2d | 2026-07-27 A | 2026-07-28 | 449SS-9d | 80% | 0.41d | 2026-07-27 | 2026-07-28 | 2d | 0d |  |
| 556 | 3.3.4.1.1.4 | Estudo de viabilidade técnica e construtiva. | 3d | 2026-07-29 | 2026-07-31 | 555 |  |  | 2026-07-29 | 2026-07-31 | 3d | 0d |  |
| 557 | 3.3.4.1.1.5 | Definição preliminar do sistema estrutural (concreto armado, metálica ou mista). | 3d | 2026-07-29 | 2026-07-31 | 555 |  |  | 2026-07-29 | 2026-07-31 | 3d | 29d |  |
| 558 | 3.3.4.1.1.6 | Estimativa preliminar de tipologias de fundações (sapatas, blocos, estacas). | 2d | 2026-08-03 | 2026-08-04 | 556 |  |  | 2026-08-03 | 2026-08-04 | 2d | 27d |  |
| 559 | 3.3.4.1.1.7 | Previsão de áreas técnicas, casas de máquinas, reservatórios elevados e estrutura de cobertura. | 2d | 2026-08-03 | 2026-08-04 | 556 |  |  | 2026-08-03 | 2026-08-04 | 2d | 0d |  |
| 560 | 3.3.4.1.2 | **LOD 200 — Validação interdisciplinar e solução preliminar** | 20d | 2026-08-05 | 2026-09-01 |  |  |  | 2026-08-05 | 2026-09-01 | 20d | 0d |  |
| 561 | 3.3.4.1.2.1 | Lista preliminar de cargas e ações para dimensionamento. | 5d | 2026-08-05 | 2026-08-11 | 559 |  |  | 2026-08-05 | 2026-08-11 | 5d | 0d |  |
| 562 | 3.3.4.1.2.2 | Definição preliminar de alturas de pavimentos e níveis de fundação. | 5d | 2026-08-05 | 2026-08-11 | 559 |  |  | 2026-08-05 | 2026-08-11 | 5d | 22d |  |
| 563 | 3.3.4.1.2.3 | Indicação aproximada do sistema de cobertura (tesouras, treliças, vigamento metálico ou concreto). | 5d | 2026-08-05 | 2026-08-11 | 559 |  |  | 2026-08-05 | 2026-08-11 | 5d | 22d |  |
| 564 | 3.3.4.1.2.4 | Modelagem genérica de pilares, vigas, lajes e fundações. | 5d | 2026-08-12 | 2026-08-18 | 561 |  |  | 2026-08-12 | 2026-08-18 | 5d | 17d |  |
| 565 | 3.3.4.1.2.5 | Traçado preliminar de elementos especiais (escadas, rampas estruturais, reservatórios). | 5d | 2026-08-12 | 2026-08-18 | 561 |  |  | 2026-08-12 | 2026-08-18 | 5d | 12d | 0d |
| 566 | 3.3.4.1.2.6 | Arquivo IFC, plantas de forma e planta de locação | 5d | 2026-08-12 | 2026-08-18 | 561 |  |  | 2026-08-12 | 2026-08-18 | 5d | 0d |  |
| 567 | 3.3.4.1.2.7 | Inserção de fundações com tipologia e dimensões preliminares. | 5d | 2026-08-19 | 2026-08-25 | 565 |  |  | 2026-08-19 | 2026-08-25 | 5d | 12d |  |
| 568 | 3.3.4.1.2.8 | Compatibilização inicial com arquitetura e demais disciplinas. | 5d | 2026-08-19 | 2026-08-25 | 566 |  |  | 2026-08-19 | 2026-08-25 | 5d | 12d |  |
| 569 | 3.3.4.1.2.9 | Indicação de passagens de infraestrutura (shafts, aberturas em lajes e vigas). | 5d | 2026-08-19 | 2026-08-25 | 566 |  |  | 2026-08-19 | 2026-08-25 | 5d | 12d |  |
| 570 | 3.3.4.1.2.10 | Modelagem assertiva de elementos principais com dimensões aproximadas (largura, altura, espessura). | 10d | 2026-08-19 | 2026-09-01 | 566 |  |  | 2026-08-19 | 2026-09-01 | 10d | 0d |  |
| 571 | 3.3.4.1.2.11 | Modelagem estimada de armaduras principais (em nível de concepção). | 5d | 2026-08-26 | 2026-09-01 | 570FF |  |  | 2026-08-26 | 2026-09-01 | 5d | 0d |  |

| ID | WBS | Task | Duration | Start | Finish | Predecessors | Complete | Remaining | Baseline start | Baseline finish | Baseline duration | Total slack | Free slack |
| --- | --- | --- | --- | --- | --- | --- | --- | --- | --- | --- | --- | --- | --- |
| 572 | 3.3.4.1.3 | **LOD 300 - Consolidação e documentação de entrega** | 7d | 2026-09-02 | 2026-09-11 |  |  |  | 2026-09-02 | 2026-09-11 | 7d | 0d |  |
| 573 | 3.3.4.1.3.1 | Indicação de níveis e cotas exatas. | 7d | 2026-09-02 | 2026-09-11 | 570, 571 |  |  | 2026-09-02 | 2026-09-11 | 7d | 0d |  |
| 574 | 3.3.4.1.3.2 | Quadro de cargas atualizado. | 7d | 2026-09-02 | 2026-09-11 | 570, 571 |  |  | 2026-09-02 | 2026-09-11 | 7d | 0d |  |
| 575 | 3.3.4.1.3.3 | Dimensionamento final de fundações conforme sondagem e cálculo estrutural. | 7d | 2026-09-02 | 2026-09-11 | 570, 571 |  |  | 2026-09-02 | 2026-09-11 | 7d | 0d |  |
| 576 | 3.3.4.1.3.4 | Definição final dos elementos da cobertura (treliças, vigas, chapas, purlins). | 7d | 2026-09-02 | 2026-09-11 | 570, 571 |  |  | 2026-09-02 | 2026-09-11 | 7d | 0d |  |
| 577 | 3.3.4.1.3.5 | Compatibilização final com arquitetura e instalações (aberturas, embutidos e passagens). | 7d | 2026-09-02 | 2026-09-11 | 570, 571 |  |  | 2026-09-02 | 2026-09-11 | 7d | 0d |  |
| 578 | 3.3.4.1.3.6 | Modelagem definitiva de pilares, vigas, lajes, blocos, sapatas e estacas. | 7d | 2026-09-02 | 2026-09-11 | 570, 571 |  |  | 2026-09-02 | 2026-09-11 | 7d | 0d |  |
| 579 | 3.3.4.1.3.7 | Planta estrutural com todos os elementos identificados. | 7d | 2026-09-02 | 2026-09-11 | 570, 571 |  |  | 2026-09-02 | 2026-09-11 | 7d | 0d |  |
| 580 | 3.3.4.1.3.8 | Memorial descritivo contendo: objetivos, justificativa, descrição do sistema, concepção de fundações/cobertura, especificações e quadro de cargas. | 7d | 2026-09-02 | 2026-09-11 | 570, 571 |  |  | 2026-09-02 | 2026-09-11 | 7d | 0d |  |
| 581 | 3.3.4.1.3.9 | Normas técnicas utilizadas (NBR 6118, 6120, 6122, 8800, etc.). | 7d | 2026-09-02 | 2026-09-11 | 570, 571 |  |  | 2026-09-02 | 2026-09-11 | 7d | 0d |  |
| 582 | 3.3.4.1.3.10 | Consolidar documentação de entrega e emissão formal da disciplina | 7d | 2026-09-02 | 2026-09-11 | 570, 571 |  |  | 2026-09-02 | 2026-09-11 | 7d | 0d |  |
| 583 | 3.3.4.1.4 | Aprovação de Conformidade | 3d | 2026-09-09 | 2026-09-11 | 572FF |  |  | 2026-09-09 | 2026-09-11 | 3d | 0d |  |
| 584 | 3.3.4.1.5 | Material para entrega ao contrato | 3d | 2026-09-09 | 2026-09-11 | 572FF |  |  | 2026-09-09 | 2026-09-11 | 3d | 0d |  |
| 585 | 3.3.4.2 | **Hidrossanitário** | 34d | 2026-07-27 A | 2026-09-11 |  | 6% | 32d | 2026-07-27 | 2026-09-11 | 34d | 0d |  |
| 586 | 3.3.4.2.1 | **LOD 100 — Premissas, diretrizes e interfaces** | 8d | 2026-07-27 A | 2026-08-05 |  | 22% | 6.25d | 2026-07-27 | 2026-08-05 | 8d | 26d |  |
| 587 | 3.3.4.2.1.1 | Memorial preliminar | 8d | 2026-07-27 A | 2026-08-05 | 449SS-9d | 20% | 6.41d | 2026-07-27 | 2026-08-05 | 8d | 26d |  |
| 588 | 3.3.4.2.1.2 | Indicação de áreas técnicas | 6d | 2026-07-27 A | 2026-08-03 | 449SS-9d | 27% | 4.41d | 2026-07-27 | 2026-08-03 | 6d | 28d |  |
| 589 | 3.3.4.2.1.3 | Planta baixa com traçado conceitual | 6d | 2026-07-27 A | 2026-08-03 | 449SS-9d | 27% | 4.41d | 2026-07-27 | 2026-08-03 | 6d | 28d |  |
| 590 | 3.3.4.2.1.4 | Pontos de consumo principais e coletas sanitárias | 6d | 2026-07-27 A | 2026-08-03 | 449SS-9d | 27% | 4.41d | 2026-07-27 | 2026-08-03 | 6d | 28d |  |
| 591 | 3.3.4.2.1.5 | Classificação de uso | 8d | 2026-07-27 A | 2026-08-05 | 449SS-9d | 20% | 6.41d | 2026-07-27 | 2026-08-05 | 8d | 26d |  |
| 592 | 3.3.4.2.1.6 | Diretrizes de espaço | 8d | 2026-07-27 A | 2026-08-05 | 449SS-9d | 20% | 6.41d | 2026-07-27 | 2026-08-05 | 8d | 26d |  |
| 593 | 3.3.4.2.1.7 | Estimativa de demanda ou população de uso | 8d | 2026-07-27 A | 2026-08-05 | 449SS-9d | 20% | 6.41d | 2026-07-27 | 2026-08-05 | 8d | 26d |  |
| 594 | 3.3.4.2.1.8 | Levantamento de elementos especiais dentre outras disciplinas de Engenharia e Arquitetura | 8d | 2026-07-27 A | 2026-08-05 | 449SS-9d | 20% | 6.41d | 2026-07-27 | 2026-08-05 | 8d | 0d |  |
| 595 | 3.3.4.2.2 | **LOD 200 — Validação interdisciplinar e solução preliminar** | 20d | 2026-08-06 | 2026-09-02 |  |  |  | 2026-08-06 | 2026-09-02 | 20d | 0d |  |
| 596 | 3.3.4.2.2.1 | Critérios normativos adotados (ABNT, concessionárias, etc.) | 20d | 2026-08-06 | 2026-09-02 | 594 |  |  | 2026-08-06 | 2026-09-02 | 20d | 6d | 0d |
| 597 | 3.3.4.2.2.2 | Informações de demanda na concessionária (DPE ou AVT Aviso de Viabilidade Técnica) | 20d | 2026-08-06 | 2026-09-02 | 596SS |  |  | 2026-08-06 | 2026-09-02 | 20d | 6d |  |
| 598 | 3.3.4.2.2.3 | Recebimento e Análise de Sondagem (permeabilidade ou percolação) | 20d | 2026-08-06 | 2026-09-02 | 596SS |  |  | 2026-08-06 | 2026-09-02 | 20d | 6d |  |
| 599 | 3.3.4.2.2.4 | Recebimento e Análise de Topografia | 20d | 2026-08-06 | 2026-09-02 | 596SS |  |  | 2026-08-06 | 2026-09-02 | 20d | 6d |  |
| 600 | 3.3.4.2.2.5 | Estudo de viabilidade técnica, econômica e ambiental | 20d | 2026-08-06 | 2026-09-02 | 596SS |  |  | 2026-08-06 | 2026-09-02 | 20d | 6d |  |
| 601 | 3.3.4.2.2.6 | Lista preliminar de sistemas envolvidos. | 20d | 2026-08-06 | 2026-09-02 | 594 |  |  | 2026-08-06 | 2026-09-02 | 20d | 6d |  |
| 602 | 3.3.4.2.2.7 | Planta baixa e cortes estimada contendo: - Traçado preliminar de barrilete, ramais, colunas - Diâmetros estimados - Localização aproximada das bombas e unidades de tratamento e reúso - Localização do ramal predial de água e esgoto - Localização aproximada | 20d | 2026-08-06 | 2026-09-02 | 594 |  |  | 2026-08-06 | 2026-09-02 | 20d | 0d |  |

| ID | WBS | Task | Duration | Start | Finish | Predecessors | Complete | Remaining | Baseline start | Baseline finish | Baseline duration | Total slack | Text3 |
| --- | --- | --- | --- | --- | --- | --- | --- | --- | --- | --- | --- | --- | --- |
| 603 | 3.3.4.2.3 | **LOD 300 - Consolidação e documentação de entrega** | 6d | 2026-09-03 | 2026-09-11 |  |  |  | 2026-09-03 | 2026-09-11 | 6d | 0d |  |
| 604 | 3.3.4.2.3.1 | Planta, corte e detalhe isométrico contendo: - Modelagem detalhada com diâmetros, cotas e inclinações definitivas (barriletes, colunas, ramais) - Quantitativos e especificação técnica dos materiais (tubos, conexões, reservatórios, registros e válvulas com | 6d | 2026-09-03 | 2026-09-11 | 602 |  |  | 2026-09-03 | 2026-09-11 | 6d | 0d |  |
| 605 | 3.3.4.2.3.2 | Memorial descritivo | 3d | 2026-09-09 | 2026-09-11 | 604FF |  |  | 2026-09-09 | 2026-09-11 | 3d | 0d |  |
| 606 | 3.3.4.2.3.3 | Memória de cálculo (pressão, vazão, diâmetros, perda de carga). | 3d | 2026-09-09 | 2026-09-11 | 602, 604FF |  |  | 2026-09-09 | 2026-09-11 | 3d | 0d |  |
| 607 | 3.3.4.2.4 | Aprovação de Conformidade | 3d | 2026-09-09 | 2026-09-11 | 603FF |  |  | 2026-09-09 | 2026-09-11 | 3d | 0d |  |
| 608 | 3.3.4.2.5 | Material para entrega ao contrato | 3d | 2026-09-09 | 2026-09-11 | 603FF |  |  | 2026-09-09 | 2026-09-11 | 3d | 0d |  |
| 609 | 3.3.4.3 | **AVAC** | 34d | 2026-07-27 A | 2026-09-11 |  | 5% | 32.33d | 2026-07-27 | 2026-09-11 | 34d | 0d |  |
| 610 | 3.3.4.3.1 | **LOD 100 — Premissas, diretrizes e interfaces** | 20d | 2026-07-27 A | 2026-08-21 |  | 13% | 17.35d | 2026-07-27 | 2026-08-21 | 20d | 14d |  |
| 611 | 3.3.4.3.1.1 | Estimativa de carga térmica por ambiente. | 10d | 2026-07-27 A | 2026-08-07 | 449SS-9d | 16% | 8.41d | 2026-07-27 | 2026-08-07 | 10d | 24d |  |
| 612 | 3.3.4.3.1.2 | Localização preliminar de unidades de tratamento de ar, condensadoras e exaustores. | 10d | 2026-07-27 A | 2026-08-07 | 449SS-9d | 16% | 8.41d | 2026-07-27 | 2026-08-07 | 10d | 24d |  |
| 613 | 3.3.4.3.1.3 | Pontos locação para seus elementos no projeto arquitetônico. | 10d | 2026-07-27 A | 2026-08-07 | 449SS-9d | 16% | 8.41d | 2026-07-27 | 2026-08-07 | 10d | 0d |  |
| 614 | 3.3.4.3.1.4 | Estudo de viabilidade e rotas principais de distribuição de ar. | 10d | 2026-07-27 A | 2026-08-07 | 449SS-9d | 16% | 8.41d | 2026-07-27 | 2026-08-07 | 10d | 24d |  |
| 615 | 3.3.4.3.1.5 | Reserva de espaços técnicos e shafts. | 10d | 2026-07-27 A | 2026-08-07 | 449SS-9d | 16% | 8.41d | 2026-07-27 | 2026-08-07 | 10d | 0d |  |
| 616 | 3.3.4.3.1.6 | Levantamento de cargas especiais provenientes de outras disciplinas. | 10d | 2026-08-10 | 2026-08-21 | 638, 650 |  |  | 2026-08-10 | 2026-08-21 | 10d | 14d |  |
| 617 | 3.3.4.3.2 | **LOD 200 — Validação interdisciplinar e solução preliminar** | 24d | 2026-08-10 | 2026-09-11 |  |  |  | 2026-08-10 | 2026-09-11 | 24d | 0d |  |
| 618 | 3.3.4.3.2.1 | Lista preliminar de sistemas HVAC envolvidos (expansão direta, VRF, chillers, ventilação, exaustão). | 24d | 2026-08-10 | 2026-09-11 | 615 |  |  | 2026-08-10 | 2026-09-11 | 24d | 0d |  |
| 619 | 3.3.4.3.2.2 | Planta baixa estimada contendo: pontos de insuflamento e retorno. | 24d | 2026-08-10 | 2026-09-11 | 615 |  |  | 2026-08-10 | 2026-09-11 | 24d | 0d |  |
| 620 | 3.3.4.3.2.3 | Rotas iniciais de dutos, tubulações e drenos. | 24d | 2026-08-10 | 2026-09-11 | 615 |  |  | 2026-08-10 | 2026-09-11 | 24d | 0d |  |
| 621 | 3.3.4.3.2.4 | Planta baixa estimada contendo: unidades internas e externas com posição preliminar. | 24d | 2026-08-10 | 2026-09-11 | 615 |  |  | 2026-08-10 | 2026-09-11 | 24d | 0d |  |
| 622 | 3.3.4.3.3 | Aprovação de Conformidade | 3d | 2026-09-09 | 2026-09-11 | 617FF |  |  | 2026-09-09 | 2026-09-11 | 3d | 0d |  |
| 623 | 3.3.4.3.4 | Material para entrega ao contrato | 3d | 2026-09-09 | 2026-09-11 | 617FF |  |  | 2026-09-09 | 2026-09-11 | 3d | 0d |  |
| 624 | 3.3.4.4 | **PCI (Incêndio)** | 34d | 2026-07-27 A | 2026-09-11 |  | 4% | 32.5d | 2026-07-27 | 2026-09-11 | 34d | 0d |  |
| 625 | 3.3.4.4.1 | **LOD 100 — Premissas, diretrizes e interfaces** | 10d | 2026-07-27 A | 2026-08-07 |  | 16% | 8.41d | 2026-07-27 | 2026-08-07 | 10d | 24d | ܁# |
| 626 | 3.3.4.4.1.1 | Estudo e avaliação da arquitetura atendendo as normas competentes de PCI | 10d | 2026-07-27 A | 2026-08-07 | 449SS-9d | 16% | 8.41d | 2026-07-27 | 2026-08-07 | 10d | 24d |  |
| 627 | 3.3.4.4.1.2 | Avaliação do espaço para CMI e Central de Gás. | 10d | 2026-07-27 A | 2026-08-07 | 449SS-9d | 16% | 8.41d | 2026-07-27 | 2026-08-07 | 10d | 24d |  |
| 628 | 3.3.4.4.1.3 | Pontos locação para seus elementos no projeto arquitetônico | 10d | 2026-07-27 A | 2026-08-07 | 449SS-9d | 16% | 8.41d | 2026-07-27 | 2026-08-07 | 10d | 0d |  |

| ID | WBS | Task | Duration | Start | Finish | Predecessors | Complete | Remaining | Baseline start | Baseline finish | Baseline duration | Total slack | Free slack | Text3 |
| --- | --- | --- | --- | --- | --- | --- | --- | --- | --- | --- | --- | --- | --- | --- |
| 629 | 3.3.4.4.2 | **LOD 200 — Validação interdisciplinar e solução preliminar** | 24d | 2026-08-10 | 2026-09-11 |  |  |  | 2026-08-10 | 2026-09-11 | 24d | 0d |  | ܁# |
| 630 | 3.3.4.4.2.1 | Definição da classificação da edificação e o risco de incêndio | 24d | 2026-08-10 | 2026-09-11 | 628 |  |  | 2026-08-10 | 2026-09-11 | 24d | 0d |  |  |
| 631 | 3.3.4.4.2.2 | Cálculos pré-dimensionados dos extintores, hidrantes e bomba. | 24d | 2026-08-10 | 2026-09-11 | 628 |  |  | 2026-08-10 | 2026-09-11 | 24d | 0d |  |  |
| 632 | 3.3.4.4.2.3 | Avaliação das rotas de fuga, ventilação de CMI e outros elementos de importância para as normas de PCI | 24d | 2026-08-10 | 2026-09-11 | 628 |  |  | 2026-08-10 | 2026-09-11 | 24d | 0d |  |  |
| 633 | 3.3.4.4.3 | Aprovação de Conformidade | 3d | 2026-09-09 | 2026-09-11 | 629FF |  |  | 2026-09-09 | 2026-09-11 | 3d | 0d |  |  |
| 634 | 3.3.4.4.4 | Material para entrega ao contrato | 3d | 2026-09-09 | 2026-09-11 | 629FF |  |  | 2026-09-09 | 2026-09-11 | 3d | 0d |  |  |
| 635 | 3.3.4.5 | **Elétrica Baixa Tensão** | 34d | 2026-07-27 A | 2026-09-11 |  | 4% | 32.52d | 2026-07-27 | 2026-09-11 | 34d | 0d |  |  |
| 636 | 3.3.4.5.1 | **LOD 100 — Concepção** | 14d | 2026-07-27 A | 2026-08-13 |  | 21% | 11.03d | 2026-07-27 | 2026-08-13 | 14d | 20d |  |  |
| 637 | 3.3.4.5.1.1 | Avaliação e Diretrizes Técnicas para Arquitetura | 4d | 2026-07-27 A | 2026-07-30 | 449SS-9d | 40% | 2.41d | 2026-07-27 | 2026-07-30 | 4d | 30d |  |  |
| 638 | 3.3.4.5.1.2 | Estimativa de Cargas e Demanda | 7d | 2026-07-27 A | 2026-08-04 | 449SS-9d | 23% | 5.41d | 2026-07-27 | 2026-08-04 | 7d | 7d | 3d |  |
| 639 | 3.3.4.5.1.3 | Levantamento de Equipamentos de Outras Disciplinas | 4d | 2026-08-10 | 2026-08-13 | 613, 628 |  |  | 2026-08-10 | 2026-08-13 | 4d | 0d |  |  |
| 640 | 3.3.4.5.2 | **LOD 200 — Anteprojeto** | 16d | 2026-08-14 | 2026-09-04 |  |  |  | 2026-08-14 | 2026-09-04 | 16d | 0d |  |  |
| 641 | 3.3.4.5.2.1 | TUGs Estimados | 16d | 2026-08-14 | 2026-09-04 | 638, 639 |  |  | 2026-08-14 | 2026-09-04 | 16d | 0d |  |  |
| 642 | 3.3.4.5.2.2 | Pontos de Luz Estimados | 16d | 2026-08-14 | 2026-09-04 | 638, 639 |  |  | 2026-08-14 | 2026-09-04 | 16d | 0d |  |  |
| 643 | 3.3.4.5.2.3 | TUEs e Quadros Estimados | 16d | 2026-08-14 | 2026-09-04 | 638, 639 |  |  | 2026-08-14 | 2026-09-04 | 16d | 0d |  |  |
| 644 | 3.3.4.5.3 | LOD 300 - Consolidação e documentação de entrega | 4d | 2026-09-08 | 2026-09-11 | 640 |  |  | 2026-09-08 | 2026-09-11 | 4d | 0d |  |  |
| 645 | 3.3.4.5.4 | Aprovação de Conformidade | 3d | 2026-09-09 | 2026-09-11 | 644FF |  |  | 2026-09-09 | 2026-09-11 | 3d | 0d |  |  |
| 646 | 3.3.4.5.5 | Material para entrega ao contrato | 3d | 2026-09-09 | 2026-09-11 | 644FF |  |  | 2026-09-09 | 2026-09-11 | 3d | 0d |  |  |
| 647 | 3.3.4.6 | **Telecom** | 34d | 2026-07-27 A | 2026-09-11 |  | 7% | 31.68d | 2026-07-27 | 2026-09-11 | 34d | 0d |  |  |
| 648 | 3.3.4.6.1 | **LOD 100 — Concepção** | 10d | 2026-07-27 A | 2026-08-07 |  | 16% | 8.41d | 2026-07-27 | 2026-08-07 | 10d | 24d |  |  |
| 649 | 3.3.4.6.1.1 | Avaliação e Diretrizes Técnicas para Arquitetura | 10d | 2026-07-27 A | 2026-08-07 | 449SS-9d | 16% | 8.41d | 2026-07-27 | 2026-08-07 | 10d | 24d |  |  |
| 650 | 3.3.4.6.1.2 | Estimativa de Demanda de Telecomunicações | 10d | 2026-07-27 A | 2026-08-07 | 449SS-9d | 16% | 8.41d | 2026-07-27 | 2026-08-07 | 10d | 14d | 0d |  |
| 651 | 3.3.4.6.1.3 | Levantamento de Equipamentos e Interfaces com Outras Disciplinas | 10d | 2026-07-27 A | 2026-08-07 | 449SS-9d | 16% | 8.41d | 2026-07-27 | 2026-08-07 | 10d | 0d |  |  |
| 652 | 3.3.4.6.2 | **LOD 200 — Anteprojeto** | 20d | 2026-08-10 | 2026-09-04 |  |  |  | 2026-08-10 | 2026-09-04 | 20d | 0d |  |  |
| 653 | 3.3.4.6.2.1 | Pontos de Telecomunicações Estimados (Rede, Voz, CFTV e Demais Sistemas) | 10d | 2026-08-10 | 2026-08-21 | 651 |  |  | 2026-08-10 | 2026-08-21 | 10d | 0d |  |  |
| 654 | 3.3.4.6.2.2 | Racks Estimados | 10d | 2026-08-10 | 2026-08-21 | 651 |  |  | 2026-08-10 | 2026-08-21 | 10d | 0d |  |  |
| 655 | 3.3.4.6.2.3 | Infraestrutura de Telecomunicações Preliminar | 10d | 2026-08-24 | 2026-09-04 | 653, 654 |  |  | 2026-08-24 | 2026-09-04 | 10d | 0d |  |  |
| 656 | 3.3.4.6.3 | LOD 300 - Consolidação e documentação de entrega | 4d | 2026-09-08 | 2026-09-11 | 652 |  |  | 2026-09-08 | 2026-09-11 | 4d | 0d |  |  |
| 657 | 3.3.4.6.4 | Aprovação de Conformidade | 3d | 2026-09-09 | 2026-09-11 | 656FF |  |  | 2026-09-09 | 2026-09-11 | 3d | 0d |  |  |
| 658 | 3.3.4.6.5 | Material para entrega ao contrato | 3d | 2026-09-09 | 2026-09-11 | 656FF |  |  | 2026-09-09 | 2026-09-11 | 3d | 0d |  |  |

| ID | WBS | Task | Duration | Start | Finish | Predecessors | Complete | Remaining | Baseline start | Baseline finish | Baseline duration | Total slack |
| --- | --- | --- | --- | --- | --- | --- | --- | --- | --- | --- | --- | --- |
| 659 | 3.3.4.7 | **SPDA** | 34d | 2026-07-27 A | 2026-09-11 |  | 7% | 31.68d | 2026-07-27 | 2026-09-11 | 34d | 0d |
| 660 | 3.3.4.7.1 | **LOD 100 — Concepção** | 10d | 2026-07-27 A | 2026-08-07 |  | 16% | 8.41d | 2026-07-27 | 2026-08-07 | 10d | 24d |
| 661 | 3.3.4.7.1.1 | Avaliação e Diretrizes Técnicas para Arquitetura | 10d | 2026-07-27 A | 2026-08-07 | 449SS-9d | 16% | 8.41d | 2026-07-27 | 2026-08-07 | 10d | 24d |
| 662 | 3.3.4.7.1.2 | Coleta de Informações da Edificação e Análise de Risco (ABNT NBR 5419-2) | 10d | 2026-07-27 A | 2026-08-07 | 449SS-9d | 16% | 8.41d | 2026-07-27 | 2026-08-07 | 10d | 24d |
| 663 | 3.3.4.7.1.3 | Estudo Preliminar de Necessidade e Nível de Proteção do SPDA | 10d | 2026-07-27 A | 2026-08-07 | 449SS-9d | 16% | 8.41d | 2026-07-27 | 2026-08-07 | 10d | 0d |
| 664 | 3.3.4.7.2 | **LOD 200 — Anteprojeto** | 20d | 2026-08-10 | 2026-09-04 |  |  |  | 2026-08-10 | 2026-09-04 | 20d | 0d |
| 665 | 3.3.4.7.2.1 | Definição da Estratégia de Proteção e Soluções Técnicas | 10d | 2026-08-10 | 2026-08-21 | 663 |  |  | 2026-08-10 | 2026-08-21 | 10d | 0d |
| 666 | 3.3.4.7.2.2 | Zoneamento de Captação, Descida e Traçados Preliminares | 10d | 2026-08-24 | 2026-09-04 | 665 |  |  | 2026-08-24 | 2026-09-04 | 10d | 4d |
| 667 | 3.3.4.7.2.3 | Estudo de Interferências, Compatibilização e Métodos Construtivos | 10d | 2026-08-24 | 2026-09-04 | 665 |  |  | 2026-08-24 | 2026-09-04 | 10d | 0d |
| 668 | 3.3.4.7.3 | LOD 300 - Consolidação e documentação de entrega | 4d | 2026-09-08 | 2026-09-11 | 667 |  |  | 2026-09-08 | 2026-09-11 | 4d | 0d |
| 669 | 3.3.4.7.4 | Aprovação de Conformidade | 3d | 2026-09-09 | 2026-09-11 | 668FF |  |  | 2026-09-09 | 2026-09-11 | 3d | 0d |
| 670 | 3.3.4.7.5 | Material para entrega ao contrato | 3d | 2026-09-09 | 2026-09-11 | 668FF |  |  | 2026-09-09 | 2026-09-11 | 3d | 0d |
| 671 | 3.3.4.8 | **Energia Renovável** | 34d | 2026-07-27 A | 2026-09-11 |  | 5% | 32.38d | 2026-07-27 | 2026-09-11 | 34d | 0d |
| 672 | 3.3.4.8.1 | **LOD 100 — Concepção** | 10d | 2026-07-27 A | 2026-08-07 |  | 16% | 8.41d | 2026-07-27 | 2026-08-07 | 10d | 24d |
| 673 | 3.3.4.8.1.1 | Viabilidade e Premissas de Geração | 10d | 2026-07-27 A | 2026-08-07 | 449SS-9d | 16% | 8.41d | 2026-07-27 | 2026-08-07 | 10d | 24d |
| 674 | 3.3.4.8.1.2 | Levantamento Preliminar de Áreas e Sombreamento | 10d | 2026-07-27 A | 2026-08-07 | 449SS-9d | 16% | 8.41d | 2026-07-27 | 2026-08-07 | 10d | 0d |
| 675 | 3.3.4.8.1.3 | Avaliação e Diretrizes Técnicas para Arquitetônico | 10d | 2026-07-27 A | 2026-08-07 | 449SS-9d | 16% | 8.41d | 2026-07-27 | 2026-08-07 | 10d | 24d |
| 676 | 3.3.4.8.2 | **LOD 200 — Anteprojeto** | 20d | 2026-08-10 | 2026-09-04 |  |  |  | 2026-08-10 | 2026-09-04 | 20d | 0d |
| 677 | 3.3.4.8.2.1 | Layout Preliminar de Módulos, Inversores e String Boxes | 20d | 2026-08-10 | 2026-09-04 | 674 |  |  | 2026-08-10 | 2026-09-04 | 20d | 0d |
| 678 | 3.3.4.8.2.2 | Infraestrutura e Rotas Técnicas Preliminares (DC/AC e Aterramento) | 20d | 2026-08-10 | 2026-09-04 | 674 |  |  | 2026-08-10 | 2026-09-04 | 20d | 0d |
| 679 | 3.3.4.8.2.3 | Critérios Preliminares de Proteção e Estimativa de Quantitativos | 20d | 2026-08-10 | 2026-09-04 | 674 |  |  | 2026-08-10 | 2026-09-04 | 20d | 0d |
| 680 | 3.3.4.8.3 | LOD 300 - Consolidação e documentação de entrega | 4d | 2026-09-08 | 2026-09-11 | 676 |  |  | 2026-09-08 | 2026-09-11 | 4d | 0d |
| 681 | 3.3.4.8.4 | Aprovação de Conformidade | 3d | 2026-09-09 | 2026-09-11 | 680FF |  |  | 2026-09-09 | 2026-09-11 | 3d | 0d |
| 682 | 3.3.4.8.5 | Material para entrega ao contrato | 3d | 2026-09-09 | 2026-09-11 | 680FF |  |  | 2026-09-09 | 2026-09-11 | 3d | 0d |

| ID | WBS | Task | Duration | Start | Finish | Predecessors | Complete | Remaining | Baseline start | Baseline finish | Baseline duration | Total slack | Constraint |
| --- | --- | --- | --- | --- | --- | --- | --- | --- | --- | --- | --- | --- | --- |
| 683 | 3.4 | **004 - Hospedagem** | 45d | 2026-07-10 A | 2026-09-11 |  | 15% | 38.29d | 2026-07-10 | 2026-09-11 | 45d | 0d |  |
| 684 | 3.4.1 | **Arquitetura** | 45d | 2026-07-10 A | 2026-09-11 |  | 30% | 31.59d | 2026-07-10 | 2026-09-11 | 45d | 0d |  |
| 685 | 3.4.1.1 | **Análise e Compatibilização (caso a gente receba o projeto e precise adequar)** | 31d | 2026-07-10 A | 2026-08-21 |  | 51% | 15.29d | 2026-07-10 | 2026-08-21 | 31d | 14d |  |
| 686 | 3.4.1.1.1 | Analisar topografia (entender se precisar refazer) | 20d | 2026-07-10 | 2026-08-06 | 24FS+5d |  |  | 2026-07-10 | 2026-08-06 | 20d | 25d | start no earlier than 2026-06-01 |
| 687 | 3.4.1.1.2 | Verificar, georreferenciar e indicar Norte; | 20d | 2026-07-10 | 2026-08-06 | 24FS+5d |  |  | 2026-07-10 | 2026-08-06 | 20d | 25d | start no earlier than 2026-06-01 |
| 688 | 3.4.1.1.3 | Revisão de perímetro do terreno, recuos, taxa de ocupação e afastamentos | 20d | 2026-07-10 | 2026-08-06 | 24FS+5d |  |  | 2026-07-10 | 2026-08-06 | 20d | 25d | start no earlier than 2026-06-01 |
| 689 | 3.4.1.1.4 | Conferir normas dos órgão de trânsito vigentes e com a equipe de mobilidade da Quanta | 20d | 2026-07-10 | 2026-08-06 | 24FS+5d |  |  | 2026-07-10 | 2026-08-06 | 20d | 25d | start no earlier than 2026-06-01 |
| 690 | 3.4.1.1.5 | Conferir e fechar alinhamento das paredes | 20d | 2026-07-10 A | 2026-08-06 A | 24FS+5d | 100% |  | 2026-07-10 | 2026-08-06 | 20d |  | start no earlier than 2026-06-01 |
| 691 | 3.4.1.1.6 | Conferir quantidade de sanitários e cubas de acordo com os setores | 20d | 2026-07-10 A | 2026-08-06 A | 24FS+5d | 100% |  | 2026-07-10 | 2026-08-06 | 20d |  | start no earlier than 2026-06-01 |
| 692 | 3.4.1.1.7 | Conferir e fechar Pisos | 20d | 2026-07-10 A | 2026-08-06 A | 24FS+5d | 100% |  | 2026-07-10 | 2026-08-06 | 20d |  | start no earlier than 2026-06-01 |
| 693 | 3.4.1.1.8 | Conferir e fechar Esquadrias | 20d | 2026-07-10 | 2026-08-06 | 24FS+5d |  |  | 2026-07-10 | 2026-08-06 | 20d | 25d | start no earlier than 2026-06-01 |
| 694 | 3.4.1.1.9 | Conferir acessibilidade em rampas e sanitários | 20d | 2026-07-10 A | 2026-08-06 A | 24FS+5d | 100% |  | 2026-07-10 | 2026-08-06 | 20d |  | start no earlier than 2026-06-01 |
| 695 | 3.4.1.1.10 | Conferir nomas técnicas para o dimensionamento dos ambientes - principalmente banheiros e circulações | 20d | 2026-07-10 A | 2026-08-06 A | 24FS+5d | 100% |  | 2026-07-10 | 2026-08-06 | 20d |  | start no earlier than 2026-06-01 |
| 696 | 3.4.1.1.11 | Conferir normas técnicas para auditórios (se tiver) | 20d | 2026-07-10 | 2026-08-06 | 24FS+5d |  |  | 2026-07-10 | 2026-08-06 | 20d | 0d | start no earlier than 2026-06-01 |
| 697 | 3.4.1.1.12 | Verificar layout (se tiver) | 20d | 2026-07-10 A | 2026-08-06 A | 24FS+5d | 100% |  | 2026-07-10 | 2026-08-06 | 20d |  | start no earlier than 2026-06-01 |
| 698 | 3.4.1.1.13 | Propor layout nos ambientes que não tem e verificar se estão funcionais e dentro das normas | 20d | 2026-07-10 A | 2026-08-06 A | 24FS+5d | 100% |  | 2026-07-10 | 2026-08-06 | 20d |  | start no earlier than 2026-06-01 |
| 699 | 3.4.1.1.14 | Compatibilização (pedir relatório de análise de projeto para disciplinas de engenharia) | 5d | 2026-08-07 | 2026-08-13 | 696, 698 |  |  | 2026-08-07 | 2026-08-13 | 5d | 0d |  |
| 700 | 3.4.1.1.15 | Compatibilizar as rotas de fulga de acordo com as solicitações de PCI | 11d | 2026-08-07 A | 2026-08-21 A | 696, 698 | 100% |  | 2026-08-07 | 2026-08-21 | 11d |  |  |
| 701 | 3.4.1.1.16 | Comatibilizar as prumadas com as equipes de engenharia | 11d | 2026-08-07 | 2026-08-21 | 696, 698 |  |  | 2026-08-07 | 2026-08-21 | 11d | 14d |  |
| 702 | 3.4.1.1.17 | Ajustar área dos ambientes conforme solicitado pela equipe de elétrica | 11d | 2026-08-07 | 2026-08-21 | 696, 698 |  |  | 2026-08-07 | 2026-08-21 | 11d | 14d |  |
| 703 | 3.4.1.2 | **LOD 300 - ANTEPROJETO** | 20d | 2026-08-14 A | 2026-09-11 |  | 12% | 17.67d | 2026-08-14 | 2026-09-11 | 20d | 0d |  |
| 704 | 3.4.1.2.1 | **Modelagem e compatibilização** | 10d | 2026-08-14 A | 2026-08-27 |  | 14% | 8.57d | 2026-08-14 | 2026-08-27 | 10d | 10d |  |
| 705 | 3.4.1.2.1.1 | Ajustar o navegador de projeto conforme o padrão da Quanta - verificar se todas as vistas estão dentro da disciplina correta - alinahr com o líder da OS | 10d | 2026-08-14 A | 2026-08-27 A | 699 | 100% |  | 2026-08-14 | 2026-08-27 | 10d |  |  |
| 706 | 3.4.1.2.1.2 | Limpar o arquivo e transferir os padões de projeto da Quanta | 10d | 2026-08-14 | 2026-08-27 | 699 |  |  | 2026-08-14 | 2026-08-27 | 10d | 10d |  |
| 707 | 3.4.1.2.1.3 | Criar Worksets (em caso de arquivos colaborados) | 10d | 2026-08-14 | 2026-08-27 | 699 |  |  | 2026-08-14 | 2026-08-27 | 10d | 10d |  |
| 708 | 3.4.1.2.1.4 | Colocar todas as elementos em seus devidos Worksets | 10d | 2026-08-14 | 2026-08-27 | 699 |  |  | 2026-08-14 | 2026-08-27 | 10d | 10d |  |
| 709 | 3.4.1.2.1.5 | Fazer ajustes dos modelos para Colaboração | 10d | 2026-08-14 | 2026-08-27 | 699 |  |  | 2026-08-14 | 2026-08-27 | 10d | 10d |  |
| 710 | 3.4.1.2.1.6 | Mudar os pisos para o padrão da quanta (1º pavimento) | 10d | 2026-08-14 A | 2026-08-27 A | 699 | 100% |  | 2026-08-14 | 2026-08-27 | 10d |  |  |
| 711 | 3.4.1.2.1.7 | Mudar as parades para o padão da quanta (1º pavimento) | 10d | 2026-08-14 | 2026-08-27 | 699 |  |  | 2026-08-14 | 2026-08-27 | 10d | 10d |  |
| 712 | 3.4.1.2.1.8 | Mudar as portas para o padão da quanta (1º pavimento) | 10d | 2026-08-14 | 2026-08-27 | 699 |  |  | 2026-08-14 | 2026-08-27 | 10d | 10d |  |
| 713 | 3.4.1.2.1.9 | Mudar as soleiras para o padão da quanta | 10d | 2026-08-14 | 2026-08-27 | 699 |  |  | 2026-08-14 | 2026-08-27 | 10d | 10d |  |
| 714 | 3.4.1.2.1.10 | Mudar as bancadas para o padão da Quanta (1º pavimento) | 10d | 2026-08-14 A | 2026-08-27 A | 699 | 100% |  | 2026-08-14 | 2026-08-27 | 10d |  |  |
| 715 | 3.4.1.2.1.11 | Mudar metais para padrão da Quanta (1º pavimento) | 10d | 2026-08-14 | 2026-08-27 | 699 |  |  | 2026-08-14 | 2026-08-27 | 10d | 10d |  |
| 716 | 3.4.1.2.1.12 | Mudar demais acabamentos para padrão o padrão da Quanta | 10d | 2026-08-14 | 2026-08-27 | 699 |  |  | 2026-08-14 | 2026-08-27 | 10d | 10d |  |
| 717 | 3.4.1.2.1.13 | Ajustar ralos das áreas molhadas (1º pavimento) | 10d | 2026-08-14 A | 2026-08-27 A | 699 | 100% |  | 2026-08-14 | 2026-08-27 | 10d |  |  |
| 718 | 3.4.1.2.1.14 | Se vier as tomadas - excluir (1º Pavimento) | 10d | 2026-08-14 | 2026-08-27 | 699 |  |  | 2026-08-14 | 2026-08-27 | 10d | 10d |  |
| 719 | 3.4.1.2.1.15 | Se vier as luminárias - excluir (1° pavimento) | 10d | 2026-08-14 | 2026-08-27 | 699 |  |  | 2026-08-14 | 2026-08-27 | 10d | 10d |  |
| 720 | 3.4.1.2.1.16 | Inserir caixa d'água - Conferir pré dimensionamento com a engenharia | 10d | 2026-08-14 | 2026-08-27 | 699 |  |  | 2026-08-14 | 2026-08-27 | 10d | 10d |  |
| 721 | 3.4.1.2.1.17 | Separar camadas dos pisos - leje 10cm (1° camada), contrapiso 3cm+argamassa 2cm+rev 1cm, (2°camada) | 10d | 2026-08-14 | 2026-08-27 | 699 |  |  | 2026-08-14 | 2026-08-27 | 10d | 10d |  |
| 722 | 3.4.1.2.1.18 | Descrição dos elementos da edificação | 10d | 2026-08-14 | 2026-08-27 | 699 |  |  | 2026-08-14 | 2026-08-27 | 10d | 10d |  |
| 723 | 3.4.1.2.1.19 | Descrição dos componentes construtivos e materiais de construção | 10d | 2026-08-14 | 2026-08-27 | 699 |  |  | 2026-08-14 | 2026-08-27 | 10d | 10d |  |
| 724 | 3.4.1.2.1.20 | Lista de pranchas anexas e documentos | 10d | 2026-08-14 | 2026-08-27 | 699 |  |  | 2026-08-14 | 2026-08-27 | 10d | 10d |  |
| 725 | 3.4.1.2.1.21 | Vias de acesso ao conjunto, arruamento, logradouros adjacentes e calçadas com os respectivos equipamentos urbanos; | 10d | 2026-08-14 | 2026-08-27 | 699 |  |  | 2026-08-14 | 2026-08-27 | 10d | 10d |  |
| 726 | 3.4.1.2.1.22 | Platôs e taludes principais; | 10d | 2026-08-14 | 2026-08-27 | 699 |  |  | 2026-08-14 | 2026-08-27 | 10d | 10d |  |
| 727 | 3.4.1.2.1.23 | Perímetro do terreno, recuos e afastamentos; | 10d | 2026-08-14 | 2026-08-27 | 699 |  |  | 2026-08-14 | 2026-08-27 | 10d | 10d |  |
| 728 | 3.4.1.2.1.24 | Indicação das áreas a serem edificadas com o contorno da cobertura das edificações, estacionamentos e áreas permeáveis/impermeáveis; | 10d | 2026-08-14 | 2026-08-27 | 699 |  |  | 2026-08-14 | 2026-08-27 | 10d | 10d |  |
| 729 | 3.4.1.2.1.25 | Denominação das edificações, blocos ou espaços; | 10d | 2026-08-14 | 2026-08-27 | 699 |  |  | 2026-08-14 | 2026-08-27 | 10d | 10d |  |
| 730 | 3.4.1.2.1.26 | Cotas gerais | 10d | 2026-08-14 | 2026-08-27 | 699 |  |  | 2026-08-14 | 2026-08-27 | 10d | 10d |  |
| 731 | 3.4.1.2.1.27 | Cotas de nível principal. | 10d | 2026-08-14 | 2026-08-27 | 699 |  |  | 2026-08-14 | 2026-08-27 | 10d | 10d |  |
| 732 | 3.4.1.2.1.28 | Quadros de áreas | 10d | 2026-08-14 | 2026-08-27 | 699 |  |  | 2026-08-14 | 2026-08-27 | 10d | 0d |  |
| 733 | 3.4.1.2.2 | Planta com as cotas de nível projetadas e existentes | 1d | 2026-08-28 | 2026-08-28 | 732 |  |  | 2026-08-28 | 2026-08-28 | 1d | 0d |  |

| ID | WBS | Task | Duration | Start | Finish | Predecessors | Baseline start | Baseline finish | Baseline duration | Total slack |
| --- | --- | --- | --- | --- | --- | --- | --- | --- | --- | --- |
| 734 | 3.4.1.2.3 | **Plantas baixas (se tiver mais de um pavimento, duplicar bloco)** | 1d | 2026-08-31 | 2026-08-31 |  | 2026-08-31 | 2026-08-31 | 1d | 0d |
| 735 | 3.4.1.2.3.1 | Indicar simbologias de representação gráfica, conforme NBR 6492:2021; | 1d | 2026-08-31 | 2026-08-31 | 733 | 2026-08-31 | 2026-08-31 | 1d | 8d |
| 736 | 3.4.1.2.3.2 | Compatibilização (verificar se está tudo conforme as normas e alinhar com o restante das disciplinas de engenharia) | 1d | 2026-08-31 | 2026-08-31 | 733 | 2026-08-31 | 2026-08-31 | 1d | 8d |
| 737 | 3.4.1.2.3.3 | Compatibilização (deixar tudo conforme padrão Quanta) | 1d | 2026-08-31 | 2026-08-31 | 733 | 2026-08-31 | 2026-08-31 | 1d | 8d |
| 738 | 3.4.1.2.3.4 | Indicação de Norte; | 1d | 2026-08-31 | 2026-08-31 | 733 | 2026-08-31 | 2026-08-31 | 1d | 8d |
| 739 | 3.4.1.2.3.5 | Indicação de Escala; | 1d | 2026-08-31 | 2026-08-31 | 733 | 2026-08-31 | 2026-08-31 | 1d | 8d |
| 740 | 3.4.1.2.3.6 | Indicação de Acessos; | 1d | 2026-08-31 | 2026-08-31 | 733 | 2026-08-31 | 2026-08-31 | 1d | 8d |
| 741 | 3.4.1.2.3.7 | Elementos de vedação internos e externos; | 1d | 2026-08-31 | 2026-08-31 | 733 | 2026-08-31 | 2026-08-31 | 1d | 8d |
| 742 | 3.4.1.2.3.8 | Esquadrias (sem código e sem quadro); | 1d | 2026-08-31 | 2026-08-31 | 733 | 2026-08-31 | 2026-08-31 | 1d | 8d |
| 743 | 3.4.1.2.3.9 | Elementos estruturais principais; | 1d | 2026-08-31 | 2026-08-31 | 733 | 2026-08-31 | 2026-08-31 | 1d | 8d |
| 744 | 3.4.1.2.3.10 | Identificação dos ambientes e espaços (internos e externos); | 1d | 2026-08-31 | 2026-08-31 | 733 | 2026-08-31 | 2026-08-31 | 1d | 8d |
| 745 | 3.4.1.2.3.11 | Espaços de circulação internos e externos; | 1d | 2026-08-31 | 2026-08-31 | 733 | 2026-08-31 | 2026-08-31 | 1d | 8d |
| 746 | 3.4.1.2.3.12 | Áreas de serviço, funcionais e técnicas (internos e externos); | 1d | 2026-08-31 | 2026-08-31 | 733 | 2026-08-31 | 2026-08-31 | 1d | 8d |
| 747 | 3.4.1.2.3.13 | Projeções de níveis superiores; | 1d | 2026-08-31 | 2026-08-31 | 733 | 2026-08-31 | 2026-08-31 | 1d | 8d |
| 748 | 3.4.1.2.3.14 | Cotas gerais | 1d | 2026-08-31 | 2026-08-31 | 733 | 2026-08-31 | 2026-08-31 | 1d | 8d |
| 749 | 3.4.1.2.3.15 | Cotas de nível principal. | 1d | 2026-08-31 | 2026-08-31 | 733 | 2026-08-31 | 2026-08-31 | 1d | 8d |
| 750 | 3.4.1.2.3.16 | Quadro de áreas | 1d | 2026-08-31 | 2026-08-31 | 733 | 2026-08-31 | 2026-08-31 | 1d | 0d |
| 751 | 3.4.1.2.4 | **Planta das coberturas** | 1d | 2026-09-01 | 2026-09-01 |  | 2026-09-01 | 2026-09-01 | 1d | 0d |
| 752 | 3.4.1.2.4.1 | Indicação do Norte | 1d | 2026-09-01 | 2026-09-01 | 750 | 2026-09-01 | 2026-09-01 | 1d | 7d |
| 753 | 3.4.1.2.4.2 | Indicação de escala | 1d | 2026-09-01 | 2026-09-01 | 750 | 2026-09-01 | 2026-09-01 | 1d | 7d |
| 754 | 3.4.1.2.4.3 | Curvas de nível | 1d | 2026-09-01 | 2026-09-01 | 750 | 2026-09-01 | 2026-09-01 | 1d | 7d |
| 755 | 3.4.1.2.4.4 | Indicação de Acessos; | 1d | 2026-09-01 | 2026-09-01 | 750 | 2026-09-01 | 2026-09-01 | 1d | 7d |
| 756 | 3.4.1.2.4.5 | Estacionamento e áreas cobertas | 1d | 2026-09-01 | 2026-09-01 | 750 | 2026-09-01 | 2026-09-01 | 1d | 7d |
| 757 | 3.4.1.2.4.6 | Cobertura das edificações | 1d | 2026-09-01 | 2026-09-01 | 750 | 2026-09-01 | 2026-09-01 | 1d | 7d |
| 758 | 3.4.1.2.4.7 | Sentido de escoamento das águas pluviais e inclinação | 1d | 2026-09-01 | 2026-09-01 | 750 | 2026-09-01 | 2026-09-01 | 1d | 7d |
| 759 | 3.4.1.2.4.8 | Cotas gerais | 1d | 2026-09-01 | 2026-09-01 | 750 | 2026-09-01 | 2026-09-01 | 1d | 7d |
| 760 | 3.4.1.2.4.9 | Cotas de nível principal | 1d | 2026-09-01 | 2026-09-01 | 750 | 2026-09-01 | 2026-09-01 | 1d | 0d |

| ID | WBS | Task | Duration | Start | Finish | Predecessors | Baseline start | Baseline finish | Baseline duration | Total slack |
| --- | --- | --- | --- | --- | --- | --- | --- | --- | --- | --- |
| 761 | 3.4.1.2.5 | **Cortes longitudinais** | 1d | 2026-09-02 | 2026-09-02 |  | 2026-09-02 | 2026-09-02 | 1d | 0d |
| 762 | 3.4.1.2.5.1 | Indicar simbologias de representação gráfica, conforme NBR 6492:2021; | 1d | 2026-09-02 | 2026-09-02 | 760 | 2026-09-02 | 2026-09-02 | 1d | 6d |
| 763 | 3.4.1.2.5.2 | Indicação de Escala; | 1d | 2026-09-02 | 2026-09-02 | 760 | 2026-09-02 | 2026-09-02 | 1d | 6d |
| 764 | 3.4.1.2.5.3 | Elementos estruturais principais; | 1d | 2026-09-02 | 2026-09-02 | 760 | 2026-09-02 | 2026-09-02 | 1d | 6d |
| 765 | 3.4.1.2.5.4 | Elementos de vedação internos e externos; | 1d | 2026-09-02 | 2026-09-02 | 760 | 2026-09-02 | 2026-09-02 | 1d | 6d |
| 766 | 3.4.1.2.5.5 | Esquadrias; | 1d | 2026-09-02 | 2026-09-02 | 760 | 2026-09-02 | 2026-09-02 | 1d | 6d |
| 767 | 3.4.1.2.5.6 | Identificação dos ambientes; | 1d | 2026-09-02 | 2026-09-02 | 760 | 2026-09-02 | 2026-09-02 | 1d | 6d |
| 768 | 3.4.1.2.5.7 | Cobertura com indicação da respectiva inclinação; | 1d | 2026-09-02 | 2026-09-02 | 760 | 2026-09-02 | 2026-09-02 | 1d | 6d |
| 769 | 3.4.1.2.5.8 | Cotas gerais; | 1d | 2026-09-02 | 2026-09-02 | 760 | 2026-09-02 | 2026-09-02 | 1d | 6d |
| 770 | 3.4.1.2.5.9 | Cotas de nível principal; | 1d | 2026-09-02 | 2026-09-02 | 760 | 2026-09-02 | 2026-09-02 | 1d | 6d |
| 771 | 3.4.1.2.5.10 | Eixos do projeto; | 1d | 2026-09-02 | 2026-09-02 | 760 | 2026-09-02 | 2026-09-02 | 1d | 6d |
| 772 | 3.4.1.2.5.11 | Relevo construído; | 1d | 2026-09-02 | 2026-09-02 | 760 | 2026-09-02 | 2026-09-02 | 1d | 6d |
| 773 | 3.4.1.2.5.12 | Projeção da topografia natural. | 1d | 2026-09-02 | 2026-09-02 | 760 | 2026-09-02 | 2026-09-02 | 1d | 0d |
| 774 | 3.4.1.2.6 | **Cortes transversais** | 1d | 2026-09-03 | 2026-09-03 |  | 2026-09-03 | 2026-09-03 | 1d | 0d |
| 775 | 3.4.1.2.6.1 | Indicar simbologias de representação gráfica, conforme NBR 6492:2021; | 1d | 2026-09-03 | 2026-09-03 | 773 | 2026-09-03 | 2026-09-03 | 1d | 5d |
| 776 | 3.4.1.2.6.2 | Indicação de Escala; | 1d | 2026-09-03 | 2026-09-03 | 773 | 2026-09-03 | 2026-09-03 | 1d | 5d |
| 777 | 3.4.1.2.6.3 | Elementos estruturais principais; | 1d | 2026-09-03 | 2026-09-03 | 773 | 2026-09-03 | 2026-09-03 | 1d | 5d |
| 778 | 3.4.1.2.6.4 | Elementos de vedação internos e externos; | 1d | 2026-09-03 | 2026-09-03 | 773 | 2026-09-03 | 2026-09-03 | 1d | 5d |
| 779 | 3.4.1.2.6.5 | Esquadrias; | 1d | 2026-09-03 | 2026-09-03 | 773 | 2026-09-03 | 2026-09-03 | 1d | 5d |
| 780 | 3.4.1.2.6.6 | Identificação dos ambientes; | 1d | 2026-09-03 | 2026-09-03 | 773 | 2026-09-03 | 2026-09-03 | 1d | 5d |
| 781 | 3.4.1.2.6.7 | Cobertura com indicação da respectiva inclinação; | 1d | 2026-09-03 | 2026-09-03 | 773 | 2026-09-03 | 2026-09-03 | 1d | 5d |
| 782 | 3.4.1.2.6.8 | Cotas gerais; | 1d | 2026-09-03 | 2026-09-03 | 773 | 2026-09-03 | 2026-09-03 | 1d | 5d |
| 783 | 3.4.1.2.6.9 | Cotas de nível principal; | 1d | 2026-09-03 | 2026-09-03 | 773 | 2026-09-03 | 2026-09-03 | 1d | 5d |
| 784 | 3.4.1.2.6.10 | Eixos do projeto; | 1d | 2026-09-03 | 2026-09-03 | 773 | 2026-09-03 | 2026-09-03 | 1d | 5d |
| 785 | 3.4.1.2.6.11 | Relevo construído; | 1d | 2026-09-03 | 2026-09-03 | 773 | 2026-09-03 | 2026-09-03 | 1d | 5d |
| 786 | 3.4.1.2.6.12 | Projeção da topografia natural | 1d | 2026-09-03 | 2026-09-03 | 773 | 2026-09-03 | 2026-09-03 | 1d | 0d |

| ID | WBS | Task | Duration | Start | Finish | Predecessors | Complete | Remaining | Baseline start | Baseline finish | Baseline duration | Total slack | Free slack |
| --- | --- | --- | --- | --- | --- | --- | --- | --- | --- | --- | --- | --- | --- |
| 787 | 3.4.1.2.7 | **Elevações** | 1d | 2026-09-04 | 2026-09-04 |  |  |  | 2026-09-04 | 2026-09-04 | 1d | 0d |  |
| 788 | 3.4.1.2.7.1 | Indicar simbologias de representação gráfica, conforme NBR 6492:2021; | 1d | 2026-09-04 | 2026-09-04 | 786 |  |  | 2026-09-04 | 2026-09-04 | 1d | 0d |  |
| 789 | 3.4.1.2.7.2 | Indicação de Escala; | 1d | 2026-09-04 | 2026-09-04 | 786 |  |  | 2026-09-04 | 2026-09-04 | 1d | 0d |  |
| 790 | 3.4.1.2.7.3 | Elementos estruturais principais; | 1d | 2026-09-04 | 2026-09-04 | 786 |  |  | 2026-09-04 | 2026-09-04 | 1d | 0d |  |
| 791 | 3.4.1.2.7.4 | Elementos de vedação internos e externos; | 1d | 2026-09-04 | 2026-09-04 | 786 |  |  | 2026-09-04 | 2026-09-04 | 1d | 0d |  |
| 792 | 3.4.1.2.7.5 | Esquadrias (sem código e sem quadro); | 1d | 2026-09-04 | 2026-09-04 | 786 |  |  | 2026-09-04 | 2026-09-04 | 1d | 0d |  |
| 793 | 3.4.1.2.7.6 | Relevo construído; | 1d | 2026-09-04 | 2026-09-04 | 786 |  |  | 2026-09-04 | 2026-09-04 | 1d | 0d |  |
| 794 | 3.4.1.2.7.7 | Cotas gerais; | 1d | 2026-09-04 | 2026-09-04 | 786 |  |  | 2026-09-04 | 2026-09-04 | 1d | 0d |  |
| 795 | 3.4.1.2.7.8 | Cotas de nível principais; | 1d | 2026-09-04 | 2026-09-04 | 786 |  |  | 2026-09-04 | 2026-09-04 | 1d | 0d |  |
| 796 | 3.4.1.2.7.9 | Cobertura (quando aparente). | 1d | 2026-09-04 | 2026-09-04 | 786 |  |  | 2026-09-04 | 2026-09-04 | 1d | 0d |  |
| 797 | 3.4.1.2.8 | Memorial Descritivo | 4d | 2026-09-08 | 2026-09-11 | 787 |  |  | 2026-09-08 | 2026-09-11 | 4d | 0d |  |
| 798 | 3.4.2 | Aprovação de Conformidade | 3d | 2026-09-09 | 2026-09-11 | 797FF |  |  | 2026-09-09 | 2026-09-11 | 3d | 0d |  |
| 799 | 3.4.3 | Material para entrega ao contrato | 3d | 2026-09-09 | 2026-09-11 | 797FF |  |  | 2026-09-09 | 2026-09-11 | 3d | 0d |  |
| 800 | 3.4.4 | **Engenharia** | 34d | 2026-07-27 A | 2026-09-11 |  | 5% | 32.3d | 2026-07-27 | 2026-09-11 | 34d | 0d |  |
| 801 | 3.4.4.1 | **Estrutura** | 34d | 2026-07-27 A | 2026-09-11 |  | 3% | 32.95d | 2026-07-27 | 2026-09-11 | 34d | 0d |  |
| 802 | 3.4.4.1.1 | **LOD 100 — Premissas, diretrizes e interfaces** | 7d | 2026-07-27 A | 2026-08-04 |  | 25% | 5.24d | 2026-07-27 | 2026-08-04 | 7d | 27d |  |
| 803 | 3.4.4.1.1.1 | Levantamento de tipos de cargas globais estimadas (permanentes, acidentais, vento e especiais). | 2d | 2026-07-27 A | 2026-07-28 | 699SS-9d | 80% | 0.41d | 2026-07-27 | 2026-07-28 | 2d | 32d |  |
| 804 | 3.4.4.1.1.2 | Estudo volumétrico com modulação inicial de pilares, vigas e lajes. Entendendo vãos e desafios | 5d | 2026-07-27 A | 2026-07-31 | 699SS-9d | 32% | 3.41d | 2026-07-27 | 2026-07-31 | 5d | 29d |  |
| 805 | 3.4.4.1.1.3 | Localização aproximada de elementos estruturais principais. Avaliando vãos e estudando posições | 2d | 2026-07-27 A | 2026-07-28 | 699SS-9d | 80% | 0.41d | 2026-07-27 | 2026-07-28 | 2d | 0d |  |
| 806 | 3.4.4.1.1.4 | Estudo de viabilidade técnica e construtiva. | 3d | 2026-07-29 | 2026-07-31 | 805 |  |  | 2026-07-29 | 2026-07-31 | 3d | 0d |  |
| 807 | 3.4.4.1.1.5 | Definição preliminar do sistema estrutural (concreto armado, metálica ou mista). | 3d | 2026-07-29 | 2026-07-31 | 805 |  |  | 2026-07-29 | 2026-07-31 | 3d | 29d |  |
| 808 | 3.4.4.1.1.6 | Estimativa preliminar de tipologias de fundações (sapatas, blocos, estacas). | 2d | 2026-08-03 | 2026-08-04 | 806 |  |  | 2026-08-03 | 2026-08-04 | 2d | 27d |  |
| 809 | 3.4.4.1.1.7 | Previsão de áreas técnicas, casas de máquinas, reservatórios elevados e estrutura de cobertura. | 2d | 2026-08-03 | 2026-08-04 | 806 |  |  | 2026-08-03 | 2026-08-04 | 2d | 0d |  |
| 810 | 3.4.4.1.2 | **LOD 200 — Validação interdisciplinar e solução preliminar** | 20d | 2026-08-05 | 2026-09-01 |  |  |  | 2026-08-05 | 2026-09-01 | 20d | 0d |  |
| 811 | 3.4.4.1.2.1 | Lista preliminar de cargas e ações para dimensionamento. | 5d | 2026-08-05 | 2026-08-11 | 809 |  |  | 2026-08-05 | 2026-08-11 | 5d | 0d |  |
| 812 | 3.4.4.1.2.2 | Definição preliminar de alturas de pavimentos e níveis de fundação. | 5d | 2026-08-05 | 2026-08-11 | 809 |  |  | 2026-08-05 | 2026-08-11 | 5d | 22d |  |
| 813 | 3.4.4.1.2.3 | Indicação aproximada do sistema de cobertura (tesouras, treliças, vigamento metálico ou concreto). | 5d | 2026-08-05 | 2026-08-11 | 809 |  |  | 2026-08-05 | 2026-08-11 | 5d | 22d |  |
| 814 | 3.4.4.1.2.4 | Modelagem genérica de pilares, vigas, lajes e fundações. | 5d | 2026-08-12 | 2026-08-18 | 811 |  |  | 2026-08-12 | 2026-08-18 | 5d | 17d |  |
| 815 | 3.4.4.1.2.5 | Traçado preliminar de elementos especiais (escadas, rampas estruturais, reservatórios). | 5d | 2026-08-12 | 2026-08-18 | 811 |  |  | 2026-08-12 | 2026-08-18 | 5d | 12d | 0d |
| 816 | 3.4.4.1.2.6 | Arquivo IFC, plantas de forma e planta de locação | 5d | 2026-08-12 | 2026-08-18 | 811 |  |  | 2026-08-12 | 2026-08-18 | 5d | 0d |  |
| 817 | 3.4.4.1.2.7 | Inserção de fundações com tipologia e dimensões preliminares. | 5d | 2026-08-19 | 2026-08-25 | 815 |  |  | 2026-08-19 | 2026-08-25 | 5d | 12d |  |
| 818 | 3.4.4.1.2.8 | Compatibilização inicial com arquitetura e demais disciplinas. | 5d | 2026-08-19 | 2026-08-25 | 816 |  |  | 2026-08-19 | 2026-08-25 | 5d | 12d |  |
| 819 | 3.4.4.1.2.9 | Indicação de passagens de infraestrutura (shafts, aberturas em lajes e vigas). | 5d | 2026-08-19 | 2026-08-25 | 816 |  |  | 2026-08-19 | 2026-08-25 | 5d | 12d |  |
| 820 | 3.4.4.1.2.10 | Modelagem assertiva de elementos principais com dimensões aproximadas (largura, altura, espessura). | 10d | 2026-08-19 | 2026-09-01 | 816 |  |  | 2026-08-19 | 2026-09-01 | 10d | 0d |  |
| 821 | 3.4.4.1.2.11 | Modelagem estimada de armaduras principais (em nível de concepção). | 5d | 2026-08-26 | 2026-09-01 | 820FF |  |  | 2026-08-26 | 2026-09-01 | 5d | 0d |  |

| ID | WBS | Task | Duration | Start | Finish | Predecessors | Complete | Remaining | Baseline start | Baseline finish | Baseline duration | Total slack | Free slack |
| --- | --- | --- | --- | --- | --- | --- | --- | --- | --- | --- | --- | --- | --- |
| 822 | 3.4.4.1.3 | **LOD 300 - Consolidação e documentação de entrega** | 7d | 2026-09-02 | 2026-09-11 |  |  |  | 2026-09-02 | 2026-09-11 | 7d | 0d |  |
| 823 | 3.4.4.1.3.1 | Indicação de níveis e cotas exatas. | 7d | 2026-09-02 | 2026-09-11 | 820, 821 |  |  | 2026-09-02 | 2026-09-11 | 7d | 0d |  |
| 824 | 3.4.4.1.3.2 | Quadro de cargas atualizado. | 7d | 2026-09-02 | 2026-09-11 | 820, 821 |  |  | 2026-09-02 | 2026-09-11 | 7d | 0d |  |
| 825 | 3.4.4.1.3.3 | Dimensionamento final de fundações conforme sondagem e cálculo estrutural. | 7d | 2026-09-02 | 2026-09-11 | 820, 821 |  |  | 2026-09-02 | 2026-09-11 | 7d | 0d |  |
| 826 | 3.4.4.1.3.4 | Definição final dos elementos da cobertura (treliças, vigas, chapas, purlins). | 7d | 2026-09-02 | 2026-09-11 | 820, 821 |  |  | 2026-09-02 | 2026-09-11 | 7d | 0d |  |
| 827 | 3.4.4.1.3.5 | Compatibilização final com arquitetura e instalações (aberturas, embutidos e passagens). | 7d | 2026-09-02 | 2026-09-11 | 820, 821 |  |  | 2026-09-02 | 2026-09-11 | 7d | 0d |  |
| 828 | 3.4.4.1.3.6 | Modelagem definitiva de pilares, vigas, lajes, blocos, sapatas e estacas. | 7d | 2026-09-02 | 2026-09-11 | 820, 821 |  |  | 2026-09-02 | 2026-09-11 | 7d | 0d |  |
| 829 | 3.4.4.1.3.7 | Planta estrutural com todos os elementos identificados. | 7d | 2026-09-02 | 2026-09-11 | 820, 821 |  |  | 2026-09-02 | 2026-09-11 | 7d | 0d |  |
| 830 | 3.4.4.1.3.8 | Memorial descritivo contendo: objetivos, justificativa, descrição do sistema, concepção de fundações/cobertura, especificações e quadro de cargas. | 7d | 2026-09-02 | 2026-09-11 | 820, 821 |  |  | 2026-09-02 | 2026-09-11 | 7d | 0d |  |
| 831 | 3.4.4.1.3.9 | Normas técnicas utilizadas (NBR 6118, 6120, 6122, 8800, etc.). | 7d | 2026-09-02 | 2026-09-11 | 820, 821 |  |  | 2026-09-02 | 2026-09-11 | 7d | 0d |  |
| 832 | 3.4.4.1.3.10 | Consolidar documentação de entrega e emissão formal da disciplina | 7d | 2026-09-02 | 2026-09-11 | 820, 821 |  |  | 2026-09-02 | 2026-09-11 | 7d | 0d |  |
| 833 | 3.4.4.1.4 | Aprovação de Conformidade | 3d | 2026-09-09 | 2026-09-11 | 822FF |  |  | 2026-09-09 | 2026-09-11 | 3d | 0d |  |
| 834 | 3.4.4.1.5 | Material para entrega ao contrato | 3d | 2026-09-09 | 2026-09-11 | 822FF |  |  | 2026-09-09 | 2026-09-11 | 3d | 0d |  |
| 835 | 3.4.4.2 | **Hidrossanitário** | 34d | 2026-07-27 A | 2026-09-11 |  | 6% | 32d | 2026-07-27 | 2026-09-11 | 34d | 0d |  |
| 836 | 3.4.4.2.1 | **LOD 100 — Premissas, diretrizes e interfaces** | 8d | 2026-07-27 A | 2026-08-05 |  | 22% | 6.25d | 2026-07-27 | 2026-08-05 | 8d | 26d |  |
| 837 | 3.4.4.2.1.1 | Memorial preliminar | 8d | 2026-07-27 A | 2026-08-05 | 699SS-9d | 20% | 6.41d | 2026-07-27 | 2026-08-05 | 8d | 26d |  |
| 838 | 3.4.4.2.1.2 | Indicação de áreas técnicas | 6d | 2026-07-27 A | 2026-08-03 | 699SS-9d | 27% | 4.41d | 2026-07-27 | 2026-08-03 | 6d | 28d |  |
| 839 | 3.4.4.2.1.3 | Planta baixa com traçado conceitual | 6d | 2026-07-27 A | 2026-08-03 | 699SS-9d | 27% | 4.41d | 2026-07-27 | 2026-08-03 | 6d | 28d |  |
| 840 | 3.4.4.2.1.4 | Pontos de consumo principais e coletas sanitárias | 6d | 2026-07-27 A | 2026-08-03 | 699SS-9d | 27% | 4.41d | 2026-07-27 | 2026-08-03 | 6d | 28d |  |
| 841 | 3.4.4.2.1.5 | Classificação de uso | 8d | 2026-07-27 A | 2026-08-05 | 699SS-9d | 20% | 6.41d | 2026-07-27 | 2026-08-05 | 8d | 26d |  |
| 842 | 3.4.4.2.1.6 | Diretrizes de espaço | 8d | 2026-07-27 A | 2026-08-05 | 699SS-9d | 20% | 6.41d | 2026-07-27 | 2026-08-05 | 8d | 26d |  |
| 843 | 3.4.4.2.1.7 | Estimativa de demanda ou população de uso | 8d | 2026-07-27 A | 2026-08-05 | 699SS-9d | 20% | 6.41d | 2026-07-27 | 2026-08-05 | 8d | 26d |  |
| 844 | 3.4.4.2.1.8 | Levantamento de elementos especiais dentre outras disciplinas de Engenharia e Arquitetura | 8d | 2026-07-27 A | 2026-08-05 | 699SS-9d | 20% | 6.41d | 2026-07-27 | 2026-08-05 | 8d | 0d |  |
| 845 | 3.4.4.2.2 | **LOD 200 — Validação interdisciplinar e solução preliminar** | 20d | 2026-08-06 | 2026-09-02 |  |  |  | 2026-08-06 | 2026-09-02 | 20d | 0d |  |
| 846 | 3.4.4.2.2.1 | Critérios normativos adotados (ABNT, concessionárias, etc.) | 20d | 2026-08-06 | 2026-09-02 | 844 |  |  | 2026-08-06 | 2026-09-02 | 20d | 6d | 0d |
| 847 | 3.4.4.2.2.2 | Informações de demanda na concessionária (DPE ou AVT Aviso de Viabilidade Técnica) | 20d | 2026-08-06 | 2026-09-02 | 846SS |  |  | 2026-08-06 | 2026-09-02 | 20d | 6d |  |
| 848 | 3.4.4.2.2.3 | Recebimento e Análise de Sondagem (permeabilidade ou percolação) | 20d | 2026-08-06 | 2026-09-02 | 846SS |  |  | 2026-08-06 | 2026-09-02 | 20d | 6d |  |
| 849 | 3.4.4.2.2.4 | Recebimento e Análise de Topografia | 20d | 2026-08-06 | 2026-09-02 | 846SS |  |  | 2026-08-06 | 2026-09-02 | 20d | 6d |  |
| 850 | 3.4.4.2.2.5 | Estudo de viabilidade técnica, econômica e ambiental | 20d | 2026-08-06 | 2026-09-02 | 846SS |  |  | 2026-08-06 | 2026-09-02 | 20d | 6d |  |
| 851 | 3.4.4.2.2.6 | Lista preliminar de sistemas envolvidos. | 20d | 2026-08-06 | 2026-09-02 | 844 |  |  | 2026-08-06 | 2026-09-02 | 20d | 6d |  |
| 852 | 3.4.4.2.2.7 | Planta baixa e cortes estimada contendo: - Traçado preliminar de barrilete, ramais, colunas - Diâmetros estimados - Localização aproximada das bombas e unidades de tratamento e reúso - Localização do ramal predial de água e esgoto - Localização aproximada | 20d | 2026-08-06 | 2026-09-02 | 844 |  |  | 2026-08-06 | 2026-09-02 | 20d | 0d |  |

| ID | WBS | Task | Duration | Start | Finish | Predecessors | Complete | Remaining | Baseline start | Baseline finish | Baseline duration | Total slack | Text3 |
| --- | --- | --- | --- | --- | --- | --- | --- | --- | --- | --- | --- | --- | --- |
| 853 | 3.4.4.2.3 | **LOD 300 - Consolidação e documentação de entrega** | 6d | 2026-09-03 | 2026-09-11 |  |  |  | 2026-09-03 | 2026-09-11 | 6d | 0d |  |
| 854 | 3.4.4.2.3.1 | Planta, corte e detalhe isométrico contendo: - Modelagem detalhada com diâmetros, cotas e inclinações definitivas (barriletes, colunas, ramais) - Quantitativos e especificação técnica dos materiais (tubos, conexões, reservatórios, registros e válvulas com | 6d | 2026-09-03 | 2026-09-11 | 852 |  |  | 2026-09-03 | 2026-09-11 | 6d | 0d |  |
| 855 | 3.4.4.2.3.2 | Memorial descritivo | 3d | 2026-09-09 | 2026-09-11 | 854FF |  |  | 2026-09-09 | 2026-09-11 | 3d | 0d |  |
| 856 | 3.4.4.2.3.3 | Memória de cálculo (pressão, vazão, diâmetros, perda de carga). | 3d | 2026-09-09 | 2026-09-11 | 852, 854FF |  |  | 2026-09-09 | 2026-09-11 | 3d | 0d |  |
| 857 | 3.4.4.2.4 | Aprovação de Conformidade | 3d | 2026-09-09 | 2026-09-11 | 853FF |  |  | 2026-09-09 | 2026-09-11 | 3d | 0d |  |
| 858 | 3.4.4.2.5 | Material para entrega ao contrato | 3d | 2026-09-09 | 2026-09-11 | 853FF |  |  | 2026-09-09 | 2026-09-11 | 3d | 0d |  |
| 859 | 3.4.4.3 | **AVAC** | 34d | 2026-07-27 A | 2026-09-11 |  | 5% | 32.33d | 2026-07-27 | 2026-09-11 | 34d | 0d |  |
| 860 | 3.4.4.3.1 | **LOD 100 — Premissas, diretrizes e interfaces** | 20d | 2026-07-27 A | 2026-08-21 |  | 13% | 17.35d | 2026-07-27 | 2026-08-21 | 20d | 14d |  |
| 861 | 3.4.4.3.1.1 | Estimativa de carga térmica por ambiente. | 10d | 2026-07-27 A | 2026-08-07 | 699SS-9d | 16% | 8.41d | 2026-07-27 | 2026-08-07 | 10d | 24d |  |
| 862 | 3.4.4.3.1.2 | Localização preliminar de unidades de tratamento de ar, condensadoras e exaustores. | 10d | 2026-07-27 A | 2026-08-07 | 699SS-9d | 16% | 8.41d | 2026-07-27 | 2026-08-07 | 10d | 24d |  |
| 863 | 3.4.4.3.1.3 | Pontos locação para seus elementos no projeto arquitetônico. | 10d | 2026-07-27 A | 2026-08-07 | 699SS-9d | 16% | 8.41d | 2026-07-27 | 2026-08-07 | 10d | 0d |  |
| 864 | 3.4.4.3.1.4 | Estudo de viabilidade e rotas principais de distribuição de ar. | 10d | 2026-07-27 A | 2026-08-07 | 699SS-9d | 16% | 8.41d | 2026-07-27 | 2026-08-07 | 10d | 24d |  |
| 865 | 3.4.4.3.1.5 | Reserva de espaços técnicos e shafts. | 10d | 2026-07-27 A | 2026-08-07 | 699SS-9d | 16% | 8.41d | 2026-07-27 | 2026-08-07 | 10d | 0d |  |
| 866 | 3.4.4.3.1.6 | Levantamento de cargas especiais provenientes de outras disciplinas. | 10d | 2026-08-10 | 2026-08-21 | 888, 900 |  |  | 2026-08-10 | 2026-08-21 | 10d | 14d |  |
| 867 | 3.4.4.3.2 | **LOD 200 — Validação interdisciplinar e solução preliminar** | 24d | 2026-08-10 | 2026-09-11 |  |  |  | 2026-08-10 | 2026-09-11 | 24d | 0d |  |
| 868 | 3.4.4.3.2.1 | Lista preliminar de sistemas HVAC envolvidos (expansão direta, VRF, chillers, ventilação, exaustão). | 24d | 2026-08-10 | 2026-09-11 | 865 |  |  | 2026-08-10 | 2026-09-11 | 24d | 0d |  |
| 869 | 3.4.4.3.2.2 | Planta baixa estimada contendo: pontos de insuflamento e retorno. | 24d | 2026-08-10 | 2026-09-11 | 865 |  |  | 2026-08-10 | 2026-09-11 | 24d | 0d |  |
| 870 | 3.4.4.3.2.3 | Rotas iniciais de dutos, tubulações e drenos. | 24d | 2026-08-10 | 2026-09-11 | 865 |  |  | 2026-08-10 | 2026-09-11 | 24d | 0d |  |
| 871 | 3.4.4.3.2.4 | Planta baixa estimada contendo: unidades internas e externas com posição preliminar. | 24d | 2026-08-10 | 2026-09-11 | 865 |  |  | 2026-08-10 | 2026-09-11 | 24d | 0d |  |
| 872 | 3.4.4.3.3 | Aprovação de Conformidade | 3d | 2026-09-09 | 2026-09-11 | 867FF |  |  | 2026-09-09 | 2026-09-11 | 3d | 0d |  |
| 873 | 3.4.4.3.4 | Material para entrega ao contrato | 3d | 2026-09-09 | 2026-09-11 | 867FF |  |  | 2026-09-09 | 2026-09-11 | 3d | 0d |  |
| 874 | 3.4.4.4 | **PCI (Incêndio)** | 34d | 2026-07-27 A | 2026-09-11 |  | 4% | 32.5d | 2026-07-27 | 2026-09-11 | 34d | 0d |  |
| 875 | 3.4.4.4.1 | **LOD 100 — Premissas, diretrizes e interfaces** | 10d | 2026-07-27 A | 2026-08-07 |  | 16% | 8.41d | 2026-07-27 | 2026-08-07 | 10d | 24d | ܁# |
| 876 | 3.4.4.4.1.1 | Estudo e avaliação da arquitetura atendendo as normas competentes de PCI | 10d | 2026-07-27 A | 2026-08-07 | 699SS-9d | 16% | 8.41d | 2026-07-27 | 2026-08-07 | 10d | 24d |  |
| 877 | 3.4.4.4.1.2 | Avaliação do espaço para CMI e Central de Gás. | 10d | 2026-07-27 A | 2026-08-07 | 699SS-9d | 16% | 8.41d | 2026-07-27 | 2026-08-07 | 10d | 24d |  |
| 878 | 3.4.4.4.1.3 | Pontos locação para seus elementos no projeto arquitetônico | 10d | 2026-07-27 A | 2026-08-07 | 699SS-9d | 16% | 8.41d | 2026-07-27 | 2026-08-07 | 10d | 0d |  |

| ID | WBS | Task | Duration | Start | Finish | Predecessors | Complete | Remaining | Baseline start | Baseline finish | Baseline duration | Total slack | Free slack | Text3 |
| --- | --- | --- | --- | --- | --- | --- | --- | --- | --- | --- | --- | --- | --- | --- |
| 879 | 3.4.4.4.2 | **LOD 200 — Validação interdisciplinar e solução preliminar** | 24d | 2026-08-10 | 2026-09-11 |  |  |  | 2026-08-10 | 2026-09-11 | 24d | 0d |  | ܁# |
| 880 | 3.4.4.4.2.1 | Definição da classificação da edificação e o risco de incêndio | 24d | 2026-08-10 | 2026-09-11 | 878 |  |  | 2026-08-10 | 2026-09-11 | 24d | 0d |  |  |
| 881 | 3.4.4.4.2.2 | Cálculos pré-dimensionados dos extintores, hidrantes e bomba. | 24d | 2026-08-10 | 2026-09-11 | 878 |  |  | 2026-08-10 | 2026-09-11 | 24d | 0d |  |  |
| 882 | 3.4.4.4.2.3 | Avaliação das rotas de fuga, ventilação de CMI e outros elementos de importância para as normas de PCI | 24d | 2026-08-10 | 2026-09-11 | 878 |  |  | 2026-08-10 | 2026-09-11 | 24d | 0d |  |  |
| 883 | 3.4.4.4.3 | Aprovação de Conformidade | 3d | 2026-09-09 | 2026-09-11 | 879FF |  |  | 2026-09-09 | 2026-09-11 | 3d | 0d |  |  |
| 884 | 3.4.4.4.4 | Material para entrega ao contrato | 3d | 2026-09-09 | 2026-09-11 | 879FF |  |  | 2026-09-09 | 2026-09-11 | 3d | 0d |  |  |
| 885 | 3.4.4.5 | **Elétrica Baixa Tensão** | 34d | 2026-07-27 A | 2026-09-11 |  | 4% | 32.52d | 2026-07-27 | 2026-09-11 | 34d | 0d |  |  |
| 886 | 3.4.4.5.1 | **LOD 100 — Concepção** | 14d | 2026-07-27 A | 2026-08-13 |  | 21% | 11.03d | 2026-07-27 | 2026-08-13 | 14d | 20d |  |  |
| 887 | 3.4.4.5.1.1 | Avaliação e Diretrizes Técnicas para Arquitetura | 4d | 2026-07-27 A | 2026-07-30 | 699SS-9d | 40% | 2.41d | 2026-07-27 | 2026-07-30 | 4d | 30d |  |  |
| 888 | 3.4.4.5.1.2 | Estimativa de Cargas e Demanda | 7d | 2026-07-27 A | 2026-08-04 | 699SS-9d | 23% | 5.41d | 2026-07-27 | 2026-08-04 | 7d | 7d | 3d |  |
| 889 | 3.4.4.5.1.3 | Levantamento de Equipamentos de Outras Disciplinas | 4d | 2026-08-10 | 2026-08-13 | 863, 878 |  |  | 2026-08-10 | 2026-08-13 | 4d | 0d |  |  |
| 890 | 3.4.4.5.2 | **LOD 200 — Anteprojeto** | 16d | 2026-08-14 | 2026-09-04 |  |  |  | 2026-08-14 | 2026-09-04 | 16d | 0d |  |  |
| 891 | 3.4.4.5.2.1 | TUGs Estimados | 16d | 2026-08-14 | 2026-09-04 | 888, 889 |  |  | 2026-08-14 | 2026-09-04 | 16d | 0d |  |  |
| 892 | 3.4.4.5.2.2 | Pontos de Luz Estimados | 16d | 2026-08-14 | 2026-09-04 | 888, 889 |  |  | 2026-08-14 | 2026-09-04 | 16d | 0d |  |  |
| 893 | 3.4.4.5.2.3 | TUEs e Quadros Estimados | 16d | 2026-08-14 | 2026-09-04 | 888, 889 |  |  | 2026-08-14 | 2026-09-04 | 16d | 0d |  |  |
| 894 | 3.4.4.5.3 | LOD 300 - Consolidação e documentação de entrega | 4d | 2026-09-08 | 2026-09-11 | 890 |  |  | 2026-09-08 | 2026-09-11 | 4d | 0d |  |  |
| 895 | 3.4.4.5.4 | Aprovação de Conformidade | 3d | 2026-09-09 | 2026-09-11 | 894FF |  |  | 2026-09-09 | 2026-09-11 | 3d | 0d |  |  |
| 896 | 3.4.4.5.5 | Material para entrega ao contrato | 3d | 2026-09-09 | 2026-09-11 | 894FF |  |  | 2026-09-09 | 2026-09-11 | 3d | 0d |  |  |
| 897 | 3.4.4.6 | **Telecom** | 34d | 2026-07-27 A | 2026-09-11 |  | 7% | 31.68d | 2026-07-27 | 2026-09-11 | 34d | 0d |  |  |
| 898 | 3.4.4.6.1 | **LOD 100 — Concepção** | 10d | 2026-07-27 A | 2026-08-07 |  | 16% | 8.41d | 2026-07-27 | 2026-08-07 | 10d | 24d |  |  |
| 899 | 3.4.4.6.1.1 | Avaliação e Diretrizes Técnicas para Arquitetura | 10d | 2026-07-27 A | 2026-08-07 | 699SS-9d | 16% | 8.41d | 2026-07-27 | 2026-08-07 | 10d | 24d |  |  |
| 900 | 3.4.4.6.1.2 | Estimativa de Demanda de Telecomunicações | 10d | 2026-07-27 A | 2026-08-07 | 699SS-9d | 16% | 8.41d | 2026-07-27 | 2026-08-07 | 10d | 14d | 0d |  |
| 901 | 3.4.4.6.1.3 | Levantamento de Equipamentos e Interfaces com Outras Disciplinas | 10d | 2026-07-27 A | 2026-08-07 | 699SS-9d | 16% | 8.41d | 2026-07-27 | 2026-08-07 | 10d | 0d |  |  |
| 902 | 3.4.4.6.2 | **LOD 200 — Anteprojeto** | 20d | 2026-08-10 | 2026-09-04 |  |  |  | 2026-08-10 | 2026-09-04 | 20d | 0d |  |  |
| 903 | 3.4.4.6.2.1 | Pontos de Telecomunicações Estimados (Rede, Voz, CFTV e Demais Sistemas) | 10d | 2026-08-10 | 2026-08-21 | 901 |  |  | 2026-08-10 | 2026-08-21 | 10d | 0d |  |  |
| 904 | 3.4.4.6.2.2 | Racks Estimados | 10d | 2026-08-10 | 2026-08-21 | 901 |  |  | 2026-08-10 | 2026-08-21 | 10d | 0d |  |  |
| 905 | 3.4.4.6.2.3 | Infraestrutura de Telecomunicações Preliminar | 10d | 2026-08-24 | 2026-09-04 | 903, 904 |  |  | 2026-08-24 | 2026-09-04 | 10d | 0d |  |  |
| 906 | 3.4.4.6.3 | LOD 300 - Consolidação e documentação de entrega | 4d | 2026-09-08 | 2026-09-11 | 902 |  |  | 2026-09-08 | 2026-09-11 | 4d | 0d |  |  |
| 907 | 3.4.4.6.4 | Aprovação de Conformidade | 3d | 2026-09-09 | 2026-09-11 | 906FF |  |  | 2026-09-09 | 2026-09-11 | 3d | 0d |  |  |
| 908 | 3.4.4.6.5 | Material para entrega ao contrato | 3d | 2026-09-09 | 2026-09-11 | 906FF |  |  | 2026-09-09 | 2026-09-11 | 3d | 0d |  |  |

| ID | WBS | Task | Duration | Start | Finish | Predecessors | Complete | Remaining | Baseline start | Baseline finish | Baseline duration | Total slack |
| --- | --- | --- | --- | --- | --- | --- | --- | --- | --- | --- | --- | --- |
| 909 | 3.4.4.7 | **SPDA** | 34d | 2026-07-27 A | 2026-09-11 |  | 7% | 31.68d | 2026-07-27 | 2026-09-11 | 34d | 0d |
| 910 | 3.4.4.7.1 | **LOD 100 — Concepção** | 10d | 2026-07-27 A | 2026-08-07 |  | 16% | 8.41d | 2026-07-27 | 2026-08-07 | 10d | 24d |
| 911 | 3.4.4.7.1.1 | Avaliação e Diretrizes Técnicas para Arquitetura | 10d | 2026-07-27 A | 2026-08-07 | 699SS-9d | 16% | 8.41d | 2026-07-27 | 2026-08-07 | 10d | 24d |
| 912 | 3.4.4.7.1.2 | Coleta de Informações da Edificação e Análise de Risco (ABNT NBR 5419-2) | 10d | 2026-07-27 A | 2026-08-07 | 699SS-9d | 16% | 8.41d | 2026-07-27 | 2026-08-07 | 10d | 24d |
| 913 | 3.4.4.7.1.3 | Estudo Preliminar de Necessidade e Nível de Proteção do SPDA | 10d | 2026-07-27 A | 2026-08-07 | 699SS-9d | 16% | 8.41d | 2026-07-27 | 2026-08-07 | 10d | 0d |
| 914 | 3.4.4.7.2 | **LOD 200 — Anteprojeto** | 20d | 2026-08-10 | 2026-09-04 |  |  |  | 2026-08-10 | 2026-09-04 | 20d | 0d |
| 915 | 3.4.4.7.2.1 | Definição da Estratégia de Proteção e Soluções Técnicas | 10d | 2026-08-10 | 2026-08-21 | 913 |  |  | 2026-08-10 | 2026-08-21 | 10d | 0d |
| 916 | 3.4.4.7.2.2 | Zoneamento de Captação, Descida e Traçados Preliminares | 10d | 2026-08-24 | 2026-09-04 | 915 |  |  | 2026-08-24 | 2026-09-04 | 10d | 4d |
| 917 | 3.4.4.7.2.3 | Estudo de Interferências, Compatibilização e Métodos Construtivos | 10d | 2026-08-24 | 2026-09-04 | 915 |  |  | 2026-08-24 | 2026-09-04 | 10d | 0d |
| 918 | 3.4.4.7.3 | LOD 300 - Consolidação e documentação de entrega | 4d | 2026-09-08 | 2026-09-11 | 917 |  |  | 2026-09-08 | 2026-09-11 | 4d | 0d |
| 919 | 3.4.4.7.4 | Aprovação de Conformidade | 3d | 2026-09-09 | 2026-09-11 | 918FF |  |  | 2026-09-09 | 2026-09-11 | 3d | 0d |
| 920 | 3.4.4.7.5 | Material para entrega ao contrato | 3d | 2026-09-09 | 2026-09-11 | 918FF |  |  | 2026-09-09 | 2026-09-11 | 3d | 0d |
| 921 | 3.4.4.8 | **Energia Renovável** | 34d | 2026-07-27 A | 2026-09-11 |  | 5% | 32.38d | 2026-07-27 | 2026-09-11 | 34d | 0d |
| 922 | 3.4.4.8.1 | **LOD 100 — Concepção** | 10d | 2026-07-27 A | 2026-08-07 |  | 16% | 8.41d | 2026-07-27 | 2026-08-07 | 10d | 24d |
| 923 | 3.4.4.8.1.1 | Viabilidade e Premissas de Geração | 10d | 2026-07-27 A | 2026-08-07 | 699SS-9d | 16% | 8.41d | 2026-07-27 | 2026-08-07 | 10d | 24d |
| 924 | 3.4.4.8.1.2 | Levantamento Preliminar de Áreas e Sombreamento | 10d | 2026-07-27 A | 2026-08-07 | 699SS-9d | 16% | 8.41d | 2026-07-27 | 2026-08-07 | 10d | 0d |
| 925 | 3.4.4.8.1.3 | Avaliação e Diretrizes Técnicas para Arquitetônico | 10d | 2026-07-27 A | 2026-08-07 | 699SS-9d | 16% | 8.41d | 2026-07-27 | 2026-08-07 | 10d | 24d |
| 926 | 3.4.4.8.2 | **LOD 200 — Anteprojeto** | 20d | 2026-08-10 | 2026-09-04 |  |  |  | 2026-08-10 | 2026-09-04 | 20d | 0d |
| 927 | 3.4.4.8.2.1 | Layout Preliminar de Módulos, Inversores e String Boxes | 20d | 2026-08-10 | 2026-09-04 | 924 |  |  | 2026-08-10 | 2026-09-04 | 20d | 0d |
| 928 | 3.4.4.8.2.2 | Infraestrutura e Rotas Técnicas Preliminares (DC/AC e Aterramento) | 20d | 2026-08-10 | 2026-09-04 | 924 |  |  | 2026-08-10 | 2026-09-04 | 20d | 0d |
| 929 | 3.4.4.8.2.3 | Critérios Preliminares de Proteção e Estimativa de Quantitativos | 20d | 2026-08-10 | 2026-09-04 | 924 |  |  | 2026-08-10 | 2026-09-04 | 20d | 0d |
| 930 | 3.4.4.8.3 | LOD 300 - Consolidação e documentação de entrega | 4d | 2026-09-08 | 2026-09-11 | 926 |  |  | 2026-09-08 | 2026-09-11 | 4d | 0d |
| 931 | 3.4.4.8.4 | Aprovação de Conformidade | 3d | 2026-09-09 | 2026-09-11 | 930FF |  |  | 2026-09-09 | 2026-09-11 | 3d | 0d |
| 932 | 3.4.4.8.5 | Material para entrega ao contrato | 3d | 2026-09-09 | 2026-09-11 | 930FF |  |  | 2026-09-09 | 2026-09-11 | 3d | 0d |

| ID | WBS | Task | Duration | Start | Finish | Predecessors | Complete | Remaining | Baseline start | Baseline finish | Baseline duration | Total slack | Constraint |
| --- | --- | --- | --- | --- | --- | --- | --- | --- | --- | --- | --- | --- | --- |
| 933 | 3.5 | **005 - Restaurante** | 45d | 2026-07-10 A | 2026-09-11 |  | 20% | 35.87d | 2026-07-10 | 2026-09-11 | 45d | 0d |  |
| 934 | 3.5.1 | **Arquitetura** | 45d | 2026-07-10 A | 2026-09-11 |  | 47% | 24.06d | 2026-07-10 | 2026-09-11 | 45d | 0d |  |
| 935 | 3.5.1.1 | **Análise e Compatibilização (caso a gente receba o projeto e precise adequar)** | 31d | 2026-07-10 A | 2026-08-21 |  | 69% | 9.53d | 2026-07-10 | 2026-08-21 | 31d | 14d |  |
| 936 | 3.5.1.1.1 | Conferir normas de cozinha industrial | 20d | 2026-07-10 | 2026-08-06 | 24FS+5d |  |  | 2026-07-10 | 2026-08-06 | 20d | 25d | start no earlier than 2026-06-01 |
| 937 | 3.5.1.1.2 | Conferir e fechar alinhamento das paredes | 20d | 2026-07-10 A | 2026-08-06 A | 24FS+5d | 100% |  | 2026-07-10 | 2026-08-06 | 20d |  | start no earlier than 2026-06-01 |
| 938 | 3.5.1.1.3 | Conferir quantidade de sanitários e cubas de acordo com os setores | 20d | 2026-07-10 A | 2026-08-06 A | 24FS+5d | 100% |  | 2026-07-10 | 2026-08-06 | 20d |  | start no earlier than 2026-06-01 |
| 939 | 3.5.1.1.4 | Conferir layout | 20d | 2026-07-10 A | 2026-08-06 A | 24FS+5d | 100% |  | 2026-07-10 | 2026-08-06 | 20d |  | start no earlier than 2026-06-01 |
| 940 | 3.5.1.1.5 | Conferir e fechar Pisos | 20d | 2026-07-10 A | 2026-08-06 A | 24FS+5d | 100% |  | 2026-07-10 | 2026-08-06 | 20d |  | start no earlier than 2026-06-01 |
| 941 | 3.5.1.1.6 | Conferir e fechar Esquadrias | 20d | 2026-07-10 A | 2026-08-06 A | 24FS+5d | 100% |  | 2026-07-10 | 2026-08-06 | 20d |  | start no earlier than 2026-06-01 |
| 942 | 3.5.1.1.7 | Conferir acessibilidade em rampas e sanitários | 20d | 2026-07-10 A | 2026-08-06 A | 24FS+5d | 100% |  | 2026-07-10 | 2026-08-06 | 20d |  | start no earlier than 2026-06-01 |
| 943 | 3.5.1.1.8 | Conferir nomas técnicas para o dimensionamento dos ambientes - principalmente banheiros e circulações | 20d | 2026-07-10 A | 2026-08-06 A | 24FS+5d | 100% |  | 2026-07-10 | 2026-08-06 | 20d |  | start no earlier than 2026-06-01 |
| 944 | 3.5.1.1.9 | Conferir normas técnicas para auditórios (se tiver) | 20d | 2026-07-10 | 2026-08-06 | 24FS+5d |  |  | 2026-07-10 | 2026-08-06 | 20d | 0d | start no earlier than 2026-06-01 |
| 945 | 3.5.1.1.10 | Compatibilização (pedir relatório de análise de projeto para disciplinas de engenharia) | 5d | 2026-08-07 | 2026-08-13 | 944 |  |  | 2026-08-07 | 2026-08-13 | 5d | 0d |  |
| 946 | 3.5.1.1.11 | Compatibilizar as rotas de fulga de acordo com as solicitações de PCI | 11d | 2026-08-07 A | 2026-08-21 A | 944 | 100% |  | 2026-08-07 | 2026-08-21 | 11d |  |  |
| 947 | 3.5.1.1.12 | Comatibilizar as prumadas com as equipes de engenharia | 11d | 2026-08-07 | 2026-08-21 | 944 |  |  | 2026-08-07 | 2026-08-21 | 11d | 14d |  |
| 948 | 3.5.1.1.13 | Ajustar área dos ambientes conforme solicitado pela equipe de elétrica | 11d | 2026-08-07 | 2026-08-21 | 944 |  |  | 2026-08-07 | 2026-08-21 | 11d | 14d |  |
| 949 | 3.5.1.2 | **LOD 300 - ANTEPROJETO** | 20d | 2026-08-14 A | 2026-09-11 |  | 32% | 13.59d | 2026-08-14 | 2026-09-11 | 20d | 0d |  |
| 950 | 3.5.1.2.1 | **Modelagem e compatibilização** | 10d | 2026-08-14 A | 2026-08-27 |  | 39% | 6.07d | 2026-08-14 | 2026-08-27 | 10d | 10d |  |
| 951 | 3.5.1.2.1.1 | Ajustar o navegador de projeto conforme o padrão da Quanta - verificar se todas as vistas estão dentro da disciplina correta - alinahr com o líder da OS | 10d | 2026-08-14 A | 2026-08-27 A | 945 | 100% |  | 2026-08-14 | 2026-08-27 | 10d |  |  |
| 952 | 3.5.1.2.1.2 | Limpar o arquivo e transferir os padões de projeto da Quanta | 10d | 2026-08-14 A | 2026-08-27 A | 945 | 100% |  | 2026-08-14 | 2026-08-27 | 10d |  |  |
| 953 | 3.5.1.2.1.3 | Criar Worksets (em caso de arquivos colaborados) | 10d | 2026-08-14 | 2026-08-27 | 945 |  |  | 2026-08-14 | 2026-08-27 | 10d | 10d |  |
| 954 | 3.5.1.2.1.4 | Colocar todas as elementos em seus devidos Worksets | 10d | 2026-08-14 | 2026-08-27 | 945 |  |  | 2026-08-14 | 2026-08-27 | 10d | 10d |  |
| 955 | 3.5.1.2.1.5 | Fazer ajustes dos modelos para Colaboração | 10d | 2026-08-14 | 2026-08-27 | 945 |  |  | 2026-08-14 | 2026-08-27 | 10d | 10d |  |
| 956 | 3.5.1.2.1.6 | Mudar os pisos para o padrão da quanta (1º pavimento) | 10d | 2026-08-14 A | 2026-08-27 A | 945 | 100% |  | 2026-08-14 | 2026-08-27 | 10d |  |  |
| 957 | 3.5.1.2.1.7 | Mudar as parades para o padão da quanta (1º pavimento) | 10d | 2026-08-14 A | 2026-08-27 A | 945 | 100% |  | 2026-08-14 | 2026-08-27 | 10d |  |  |
| 958 | 3.5.1.2.1.8 | Mudar as portas para o padão da quanta (1º pavimento) | 10d | 2026-08-14 A | 2026-08-27 A | 945 | 100% |  | 2026-08-14 | 2026-08-27 | 10d |  |  |
| 959 | 3.5.1.2.1.9 | Mudar as soleiras para o padão da quanta | 10d | 2026-08-14 | 2026-08-27 | 945 |  |  | 2026-08-14 | 2026-08-27 | 10d | 10d |  |
| 960 | 3.5.1.2.1.10 | Mudar as bancadas para o padão da Quanta (1º pavimento) | 10d | 2026-08-14 A | 2026-08-27 A | 945 | 100% |  | 2026-08-14 | 2026-08-27 | 10d |  |  |
| 961 | 3.5.1.2.1.11 | Mudar metais para padrão da Quanta (1º pavimento) | 10d | 2026-08-14 | 2026-08-27 | 945 |  |  | 2026-08-14 | 2026-08-27 | 10d | 10d |  |
| 962 | 3.5.1.2.1.12 | Mudar demais acabamentos para padrão o padrão da Quanta | 10d | 2026-08-14 A | 2026-08-27 A | 945 | 100% |  | 2026-08-14 | 2026-08-27 | 10d |  |  |
| 963 | 3.5.1.2.1.13 | Ajustar ralos das áreas molhadas (1º pavimento) | 10d | 2026-08-14 A | 2026-08-27 A | 945 | 100% |  | 2026-08-14 | 2026-08-27 | 10d |  |  |
| 964 | 3.5.1.2.1.14 | Se vier as tomadas - excluir (1º Pavimento) | 10d | 2026-08-14 | 2026-08-27 | 945 |  |  | 2026-08-14 | 2026-08-27 | 10d | 10d |  |
| 965 | 3.5.1.2.1.15 | Se vier as luminárias - excluir (1° pavimento) | 10d | 2026-08-14 | 2026-08-27 | 945 |  |  | 2026-08-14 | 2026-08-27 | 10d | 10d |  |
| 966 | 3.5.1.2.1.16 | Inserir caixa d'água - Conferir pré dimensionamento com a engenharia | 10d | 2026-08-14 | 2026-08-27 | 945 |  |  | 2026-08-14 | 2026-08-27 | 10d | 10d |  |
| 967 | 3.5.1.2.1.17 | Separar camadas dos pisos - leje 10cm (1° camada), contrapiso 3cm+argamassa 2cm+rev 1cm, (2°camada) | 10d | 2026-08-14 A | 2026-08-27 A | 945 | 100% |  | 2026-08-14 | 2026-08-27 | 10d |  |  |
| 968 | 3.5.1.2.1.18 | Descrição dos elementos da edificação | 10d | 2026-08-14 | 2026-08-27 | 945 |  |  | 2026-08-14 | 2026-08-27 | 10d | 10d |  |
| 969 | 3.5.1.2.1.19 | Descrição dos componentes construtivos e materiais de construção | 10d | 2026-08-14 | 2026-08-27 | 945 |  |  | 2026-08-14 | 2026-08-27 | 10d | 10d |  |
| 970 | 3.5.1.2.1.20 | Lista de pranchas anexas e documentos | 10d | 2026-08-14 | 2026-08-27 | 945 |  |  | 2026-08-14 | 2026-08-27 | 10d | 10d |  |
| 971 | 3.5.1.2.1.21 | Vias de acesso ao conjunto, arruamento, logradouros adjacentes e calçadas com os respectivos equipamentos urbanos; | 10d | 2026-08-14 | 2026-08-27 | 945 |  |  | 2026-08-14 | 2026-08-27 | 10d | 10d |  |
| 972 | 3.5.1.2.1.22 | Platôs e taludes principais; | 10d | 2026-08-14 | 2026-08-27 | 945 |  |  | 2026-08-14 | 2026-08-27 | 10d | 10d |  |
| 973 | 3.5.1.2.1.23 | Perímetro do terreno, recuos e afastamentos; | 10d | 2026-08-14 | 2026-08-27 | 945 |  |  | 2026-08-14 | 2026-08-27 | 10d | 10d |  |
| 974 | 3.5.1.2.1.24 | Indicação das áreas a serem edificadas com o contorno da cobertura das edificações, estacionamentos e áreas permeáveis/impermeáveis; | 10d | 2026-08-14 | 2026-08-27 | 945 |  |  | 2026-08-14 | 2026-08-27 | 10d | 10d |  |
| 975 | 3.5.1.2.1.25 | Denominação das edificações, blocos ou espaços; | 10d | 2026-08-14 | 2026-08-27 | 945 |  |  | 2026-08-14 | 2026-08-27 | 10d | 10d |  |
| 976 | 3.5.1.2.1.26 | Cotas gerais | 10d | 2026-08-14 A | 2026-08-27 A | 945 | 100% |  | 2026-08-14 | 2026-08-27 | 10d |  |  |
| 977 | 3.5.1.2.1.27 | Cotas de nível principal. | 10d | 2026-08-14 | 2026-08-27 | 945 |  |  | 2026-08-14 | 2026-08-27 | 10d | 10d |  |
| 978 | 3.5.1.2.1.28 | Quadros de áreas | 10d | 2026-08-14 A | 2026-08-27 A | 945 | 100% |  | 2026-08-14 | 2026-08-27 | 10d |  |  |
| 979 | 3.5.1.2.2 | Planta com as cotas de nível projetadas e existentes | 1d | 2026-08-28 | 2026-08-28 | 978 |  |  | 2026-08-28 | 2026-08-28 | 1d | 0d |  |

| ID | WBS | Task | Duration | Start | Finish | Predecessors | Baseline start | Baseline finish | Baseline duration | Total slack |
| --- | --- | --- | --- | --- | --- | --- | --- | --- | --- | --- |
| 980 | 3.5.1.2.3 | **Plantas baixas (se tiver mais de um pavimento, duplicar bloco)** | 1d | 2026-08-31 | 2026-08-31 |  | 2026-08-31 | 2026-08-31 | 1d | 0d |
| 981 | 3.5.1.2.3.1 | Indicar simbologias de representação gráfica, conforme NBR 6492:2021; | 1d | 2026-08-31 | 2026-08-31 | 979 | 2026-08-31 | 2026-08-31 | 1d | 8d |
| 982 | 3.5.1.2.3.2 | Compatibilização (verificar se está tudo conforme as normas e alinhar com o restante das disciplinas de engenharia) | 1d | 2026-08-31 | 2026-08-31 | 979 | 2026-08-31 | 2026-08-31 | 1d | 8d |
| 983 | 3.5.1.2.3.3 | Compatibilização (deixar tudo conforme padrão Quanta) | 1d | 2026-08-31 | 2026-08-31 | 979 | 2026-08-31 | 2026-08-31 | 1d | 8d |
| 984 | 3.5.1.2.3.4 | Indicação de Norte; | 1d | 2026-08-31 | 2026-08-31 | 979 | 2026-08-31 | 2026-08-31 | 1d | 8d |
| 985 | 3.5.1.2.3.5 | Indicação de Escala; | 1d | 2026-08-31 | 2026-08-31 | 979 | 2026-08-31 | 2026-08-31 | 1d | 8d |
| 986 | 3.5.1.2.3.6 | Indicação de Acessos; | 1d | 2026-08-31 | 2026-08-31 | 979 | 2026-08-31 | 2026-08-31 | 1d | 8d |
| 987 | 3.5.1.2.3.7 | Elementos de vedação internos e externos; | 1d | 2026-08-31 | 2026-08-31 | 979 | 2026-08-31 | 2026-08-31 | 1d | 8d |
| 988 | 3.5.1.2.3.8 | Esquadrias (sem código e sem quadro); | 1d | 2026-08-31 | 2026-08-31 | 979 | 2026-08-31 | 2026-08-31 | 1d | 8d |
| 989 | 3.5.1.2.3.9 | Elementos estruturais principais; | 1d | 2026-08-31 | 2026-08-31 | 979 | 2026-08-31 | 2026-08-31 | 1d | 8d |
| 990 | 3.5.1.2.3.10 | Identificação dos ambientes e espaços (internos e externos); | 1d | 2026-08-31 | 2026-08-31 | 979 | 2026-08-31 | 2026-08-31 | 1d | 8d |
| 991 | 3.5.1.2.3.11 | Espaços de circulação internos e externos; | 1d | 2026-08-31 | 2026-08-31 | 979 | 2026-08-31 | 2026-08-31 | 1d | 8d |
| 992 | 3.5.1.2.3.12 | Áreas de serviço, funcionais e técnicas (internos e externos); | 1d | 2026-08-31 | 2026-08-31 | 979 | 2026-08-31 | 2026-08-31 | 1d | 8d |
| 993 | 3.5.1.2.3.13 | Projeções de níveis superiores; | 1d | 2026-08-31 | 2026-08-31 | 979 | 2026-08-31 | 2026-08-31 | 1d | 8d |
| 994 | 3.5.1.2.3.14 | Cotas gerais | 1d | 2026-08-31 | 2026-08-31 | 979 | 2026-08-31 | 2026-08-31 | 1d | 8d |
| 995 | 3.5.1.2.3.15 | Cotas de nível principal. | 1d | 2026-08-31 | 2026-08-31 | 979 | 2026-08-31 | 2026-08-31 | 1d | 8d |
| 996 | 3.5.1.2.3.16 | Quadro de áreas | 1d | 2026-08-31 | 2026-08-31 | 979 | 2026-08-31 | 2026-08-31 | 1d | 0d |
| 997 | 3.5.1.2.4 | **Planta das coberturas** | 1d | 2026-09-01 | 2026-09-01 |  | 2026-09-01 | 2026-09-01 | 1d | 0d |
| 998 | 3.5.1.2.4.1 | Indicação do Norte | 1d | 2026-09-01 | 2026-09-01 | 996 | 2026-09-01 | 2026-09-01 | 1d | 7d |
| 999 | 3.5.1.2.4.2 | Indicação de escala | 1d | 2026-09-01 | 2026-09-01 | 996 | 2026-09-01 | 2026-09-01 | 1d | 7d |
| 1000 | 3.5.1.2.4.3 | Curvas de nível | 1d | 2026-09-01 | 2026-09-01 | 996 | 2026-09-01 | 2026-09-01 | 1d | 7d |
| 1001 | 3.5.1.2.4.4 | Indicação de Acessos; | 1d | 2026-09-01 | 2026-09-01 | 996 | 2026-09-01 | 2026-09-01 | 1d | 7d |
| 1002 | 3.5.1.2.4.5 | Estacionamento e áreas cobertas | 1d | 2026-09-01 | 2026-09-01 | 996 | 2026-09-01 | 2026-09-01 | 1d | 7d |
| 1003 | 3.5.1.2.4.6 | Cobertura das edificações | 1d | 2026-09-01 | 2026-09-01 | 996 | 2026-09-01 | 2026-09-01 | 1d | 7d |
| 1004 | 3.5.1.2.4.7 | Sentido de escoamento das águas pluviais e inclinação | 1d | 2026-09-01 | 2026-09-01 | 996 | 2026-09-01 | 2026-09-01 | 1d | 7d |
| 1005 | 3.5.1.2.4.8 | Cotas gerais | 1d | 2026-09-01 | 2026-09-01 | 996 | 2026-09-01 | 2026-09-01 | 1d | 7d |
| 1006 | 3.5.1.2.4.9 | Cotas de nível principal | 1d | 2026-09-01 | 2026-09-01 | 996 | 2026-09-01 | 2026-09-01 | 1d | 0d |

| ID | WBS | Task | Duration | Start | Finish | Predecessors | Baseline start | Baseline finish | Baseline duration | Total slack |
| --- | --- | --- | --- | --- | --- | --- | --- | --- | --- | --- |
| 1007 | 3.5.1.2.5 | **Cortes longitudinais** | 1d | 2026-09-02 | 2026-09-02 |  | 2026-09-02 | 2026-09-02 | 1d | 0d |
| 1008 | 3.5.1.2.5.1 | Indicar simbologias de representação gráfica, conforme NBR 6492:2021; | 1d | 2026-09-02 | 2026-09-02 | 1006 | 2026-09-02 | 2026-09-02 | 1d | 6d |
| 1009 | 3.5.1.2.5.2 | Indicação de Escala; | 1d | 2026-09-02 | 2026-09-02 | 1006 | 2026-09-02 | 2026-09-02 | 1d | 6d |
| 1010 | 3.5.1.2.5.3 | Elementos estruturais principais; | 1d | 2026-09-02 | 2026-09-02 | 1006 | 2026-09-02 | 2026-09-02 | 1d | 6d |
| 1011 | 3.5.1.2.5.4 | Elementos de vedação internos e externos; | 1d | 2026-09-02 | 2026-09-02 | 1006 | 2026-09-02 | 2026-09-02 | 1d | 6d |
| 1012 | 3.5.1.2.5.5 | Esquadrias; | 1d | 2026-09-02 | 2026-09-02 | 1006 | 2026-09-02 | 2026-09-02 | 1d | 6d |
| 1013 | 3.5.1.2.5.6 | Identificação dos ambientes; | 1d | 2026-09-02 | 2026-09-02 | 1006 | 2026-09-02 | 2026-09-02 | 1d | 6d |
| 1014 | 3.5.1.2.5.7 | Cobertura com indicação da respectiva inclinação; | 1d | 2026-09-02 | 2026-09-02 | 1006 | 2026-09-02 | 2026-09-02 | 1d | 6d |
| 1015 | 3.5.1.2.5.8 | Cotas gerais; | 1d | 2026-09-02 | 2026-09-02 | 1006 | 2026-09-02 | 2026-09-02 | 1d | 6d |
| 1016 | 3.5.1.2.5.9 | Cotas de nível principal; | 1d | 2026-09-02 | 2026-09-02 | 1006 | 2026-09-02 | 2026-09-02 | 1d | 6d |
| 1017 | 3.5.1.2.5.10 | Eixos do projeto; | 1d | 2026-09-02 | 2026-09-02 | 1006 | 2026-09-02 | 2026-09-02 | 1d | 6d |
| 1018 | 3.5.1.2.5.11 | Relevo construído; | 1d | 2026-09-02 | 2026-09-02 | 1006 | 2026-09-02 | 2026-09-02 | 1d | 6d |
| 1019 | 3.5.1.2.5.12 | Projeção da topografia natural. | 1d | 2026-09-02 | 2026-09-02 | 1006 | 2026-09-02 | 2026-09-02 | 1d | 0d |
| 1020 | 3.5.1.2.6 | **Cortes transversais** | 1d | 2026-09-03 | 2026-09-03 |  | 2026-09-03 | 2026-09-03 | 1d | 0d |
| 1021 | 3.5.1.2.6.1 | Indicar simbologias de representação gráfica, conforme NBR 6492:2021; | 1d | 2026-09-03 | 2026-09-03 | 1019 | 2026-09-03 | 2026-09-03 | 1d | 5d |
| 1022 | 3.5.1.2.6.2 | Indicação de Escala; | 1d | 2026-09-03 | 2026-09-03 | 1019 | 2026-09-03 | 2026-09-03 | 1d | 5d |
| 1023 | 3.5.1.2.6.3 | Elementos estruturais principais; | 1d | 2026-09-03 | 2026-09-03 | 1019 | 2026-09-03 | 2026-09-03 | 1d | 5d |
| 1024 | 3.5.1.2.6.4 | Elementos de vedação internos e externos; | 1d | 2026-09-03 | 2026-09-03 | 1019 | 2026-09-03 | 2026-09-03 | 1d | 5d |
| 1025 | 3.5.1.2.6.5 | Esquadrias; | 1d | 2026-09-03 | 2026-09-03 | 1019 | 2026-09-03 | 2026-09-03 | 1d | 5d |
| 1026 | 3.5.1.2.6.6 | Identificação dos ambientes; | 1d | 2026-09-03 | 2026-09-03 | 1019 | 2026-09-03 | 2026-09-03 | 1d | 5d |
| 1027 | 3.5.1.2.6.7 | Cobertura com indicação da respectiva inclinação; | 1d | 2026-09-03 | 2026-09-03 | 1019 | 2026-09-03 | 2026-09-03 | 1d | 5d |
| 1028 | 3.5.1.2.6.8 | Cotas gerais; | 1d | 2026-09-03 | 2026-09-03 | 1019 | 2026-09-03 | 2026-09-03 | 1d | 5d |
| 1029 | 3.5.1.2.6.9 | Cotas de nível principal; | 1d | 2026-09-03 | 2026-09-03 | 1019 | 2026-09-03 | 2026-09-03 | 1d | 5d |
| 1030 | 3.5.1.2.6.10 | Eixos do projeto; | 1d | 2026-09-03 | 2026-09-03 | 1019 | 2026-09-03 | 2026-09-03 | 1d | 5d |
| 1031 | 3.5.1.2.6.11 | Relevo construído; | 1d | 2026-09-03 | 2026-09-03 | 1019 | 2026-09-03 | 2026-09-03 | 1d | 5d |
| 1032 | 3.5.1.2.6.12 | Projeção da topografia natural | 1d | 2026-09-03 | 2026-09-03 | 1019 | 2026-09-03 | 2026-09-03 | 1d | 0d |

| ID | WBS | Task | Duration | Start | Finish | Predecessors | Complete | Remaining | Baseline start | Baseline finish | Baseline duration | Total slack | Free slack |
| --- | --- | --- | --- | --- | --- | --- | --- | --- | --- | --- | --- | --- | --- |
| 1033 | 3.5.1.2.7 | **Elevações** | 1d | 2026-09-04 | 2026-09-04 |  |  |  | 2026-09-04 | 2026-09-04 | 1d | 0d |  |
| 1034 | 3.5.1.2.7.1 | Indicar simbologias de representação gráfica, conforme NBR 6492:2021; | 1d | 2026-09-04 | 2026-09-04 | 1032 |  |  | 2026-09-04 | 2026-09-04 | 1d | 0d |  |
| 1035 | 3.5.1.2.7.2 | Indicação de Escala; | 1d | 2026-09-04 | 2026-09-04 | 1032 |  |  | 2026-09-04 | 2026-09-04 | 1d | 0d |  |
| 1036 | 3.5.1.2.7.3 | Elementos estruturais principais; | 1d | 2026-09-04 | 2026-09-04 | 1032 |  |  | 2026-09-04 | 2026-09-04 | 1d | 0d |  |
| 1037 | 3.5.1.2.7.4 | Elementos de vedação internos e externos; | 1d | 2026-09-04 | 2026-09-04 | 1032 |  |  | 2026-09-04 | 2026-09-04 | 1d | 0d |  |
| 1038 | 3.5.1.2.7.5 | Esquadrias (sem código e sem quadro); | 1d | 2026-09-04 | 2026-09-04 | 1032 |  |  | 2026-09-04 | 2026-09-04 | 1d | 0d |  |
| 1039 | 3.5.1.2.7.6 | Relevo construído; | 1d | 2026-09-04 | 2026-09-04 | 1032 |  |  | 2026-09-04 | 2026-09-04 | 1d | 0d |  |
| 1040 | 3.5.1.2.7.7 | Cotas gerais; | 1d | 2026-09-04 | 2026-09-04 | 1032 |  |  | 2026-09-04 | 2026-09-04 | 1d | 0d |  |
| 1041 | 3.5.1.2.7.8 | Cotas de nível principais; | 1d | 2026-09-04 | 2026-09-04 | 1032 |  |  | 2026-09-04 | 2026-09-04 | 1d | 0d |  |
| 1042 | 3.5.1.2.7.9 | Cobertura (quando aparente). | 1d | 2026-09-04 | 2026-09-04 | 1032 |  |  | 2026-09-04 | 2026-09-04 | 1d | 0d |  |
| 1043 | 3.5.1.2.8 | Memorial Descritivo | 4d | 2026-09-08 | 2026-09-11 | 1033 |  |  | 2026-09-08 | 2026-09-11 | 4d | 0d |  |
| 1044 | 3.5.2 | Aprovação de Conformidade | 3d | 2026-09-09 | 2026-09-11 | 1043FF |  |  | 2026-09-09 | 2026-09-11 | 3d | 0d |  |
| 1045 | 3.5.3 | Material para entrega ao contrato | 3d | 2026-09-09 | 2026-09-11 | 1043FF |  |  | 2026-09-09 | 2026-09-11 | 3d | 0d |  |
| 1046 | 3.5.4 | **Engenharia** | 34d | 2026-07-27 A | 2026-09-11 |  | 5% | 32.3d | 2026-07-27 | 2026-09-11 | 34d | 0d |  |
| 1047 | 3.5.4.1 | **Estrutura** | 34d | 2026-07-27 A | 2026-09-11 |  | 3% | 32.95d | 2026-07-27 | 2026-09-11 | 34d | 0d |  |
| 1048 | 3.5.4.1.1 | **LOD 100 — Premissas, diretrizes e interfaces** | 7d | 2026-07-27 A | 2026-08-04 |  | 25% | 5.24d | 2026-07-27 | 2026-08-04 | 7d | 27d |  |
| 1049 | 3.5.4.1.1.1 | Levantamento de tipos de cargas globais estimadas (permanentes, acidentais, vento e especiais). | 2d | 2026-07-27 A | 2026-07-28 | 945SS-9d | 80% | 0.41d | 2026-07-27 | 2026-07-28 | 2d | 32d |  |
| 1050 | 3.5.4.1.1.2 | Estudo volumétrico com modulação inicial de pilares, vigas e lajes. Entendendo vãos e desafios | 5d | 2026-07-27 A | 2026-07-31 | 945SS-9d | 32% | 3.41d | 2026-07-27 | 2026-07-31 | 5d | 29d |  |
| 1051 | 3.5.4.1.1.3 | Localização aproximada de elementos estruturais principais. Avaliando vãos e estudando posições | 2d | 2026-07-27 A | 2026-07-28 | 945SS-9d | 80% | 0.41d | 2026-07-27 | 2026-07-28 | 2d | 0d |  |
| 1052 | 3.5.4.1.1.4 | Estudo de viabilidade técnica e construtiva. | 3d | 2026-07-29 | 2026-07-31 | 1051 |  |  | 2026-07-29 | 2026-07-31 | 3d | 0d |  |
| 1053 | 3.5.4.1.1.5 | Definição preliminar do sistema estrutural (concreto armado, metálica ou mista). | 3d | 2026-07-29 | 2026-07-31 | 1051 |  |  | 2026-07-29 | 2026-07-31 | 3d | 29d |  |
| 1054 | 3.5.4.1.1.6 | Estimativa preliminar de tipologias de fundações (sapatas, blocos, estacas). | 2d | 2026-08-03 | 2026-08-04 | 1052 |  |  | 2026-08-03 | 2026-08-04 | 2d | 27d |  |
| 1055 | 3.5.4.1.1.7 | Previsão de áreas técnicas, casas de máquinas, reservatórios elevados e estrutura de cobertura. | 2d | 2026-08-03 | 2026-08-04 | 1052 |  |  | 2026-08-03 | 2026-08-04 | 2d | 0d |  |
| 1056 | 3.5.4.1.2 | **LOD 200 — Validação interdisciplinar e solução preliminar** | 20d | 2026-08-05 | 2026-09-01 |  |  |  | 2026-08-05 | 2026-09-01 | 20d | 0d |  |
| 1057 | 3.5.4.1.2.1 | Lista preliminar de cargas e ações para dimensionamento. | 5d | 2026-08-05 | 2026-08-11 | 1055 |  |  | 2026-08-05 | 2026-08-11 | 5d | 0d |  |
| 1058 | 3.5.4.1.2.2 | Definição preliminar de alturas de pavimentos e níveis de fundação. | 5d | 2026-08-05 | 2026-08-11 | 1055 |  |  | 2026-08-05 | 2026-08-11 | 5d | 22d |  |
| 1059 | 3.5.4.1.2.3 | Indicação aproximada do sistema de cobertura (tesouras, treliças, vigamento metálico ou concreto). | 5d | 2026-08-05 | 2026-08-11 | 1055 |  |  | 2026-08-05 | 2026-08-11 | 5d | 22d |  |
| 1060 | 3.5.4.1.2.4 | Modelagem genérica de pilares, vigas, lajes e fundações. | 5d | 2026-08-12 | 2026-08-18 | 1057 |  |  | 2026-08-12 | 2026-08-18 | 5d | 17d |  |
| 1061 | 3.5.4.1.2.5 | Traçado preliminar de elementos especiais (escadas, rampas estruturais, reservatórios). | 5d | 2026-08-12 | 2026-08-18 | 1057 |  |  | 2026-08-12 | 2026-08-18 | 5d | 12d | 0d |
| 1062 | 3.5.4.1.2.6 | Arquivo IFC, plantas de forma e planta de locação | 5d | 2026-08-12 | 2026-08-18 | 1057 |  |  | 2026-08-12 | 2026-08-18 | 5d | 0d |  |
| 1063 | 3.5.4.1.2.7 | Inserção de fundações com tipologia e dimensões preliminares. | 5d | 2026-08-19 | 2026-08-25 | 1061 |  |  | 2026-08-19 | 2026-08-25 | 5d | 12d |  |
| 1064 | 3.5.4.1.2.8 | Compatibilização inicial com arquitetura e demais disciplinas. | 5d | 2026-08-19 | 2026-08-25 | 1062 |  |  | 2026-08-19 | 2026-08-25 | 5d | 12d |  |
| 1065 | 3.5.4.1.2.9 | Indicação de passagens de infraestrutura (shafts, aberturas em lajes e vigas). | 5d | 2026-08-19 | 2026-08-25 | 1062 |  |  | 2026-08-19 | 2026-08-25 | 5d | 12d |  |
| 1066 | 3.5.4.1.2.10 | Modelagem assertiva de elementos principais com dimensões aproximadas (largura, altura, espessura). | 10d | 2026-08-19 | 2026-09-01 | 1062 |  |  | 2026-08-19 | 2026-09-01 | 10d | 0d |  |
| 1067 | 3.5.4.1.2.11 | Modelagem estimada de armaduras principais (em nível de concepção). | 5d | 2026-08-26 | 2026-09-01 | 1066FF |  |  | 2026-08-26 | 2026-09-01 | 5d | 0d |  |

| ID | WBS | Task | Duration | Start | Finish | Predecessors | Complete | Remaining | Baseline start | Baseline finish | Baseline duration | Total slack | Free slack |
| --- | --- | --- | --- | --- | --- | --- | --- | --- | --- | --- | --- | --- | --- |
| 1068 | 3.5.4.1.3 | **LOD 300 - Consolidação e documentação de entrega** | 7d | 2026-09-02 | 2026-09-11 |  |  |  | 2026-09-02 | 2026-09-11 | 7d | 0d |  |
| 1069 | 3.5.4.1.3.1 | Indicação de níveis e cotas exatas. | 7d | 2026-09-02 | 2026-09-11 | 1066, 1067 |  |  | 2026-09-02 | 2026-09-11 | 7d | 0d |  |
| 1070 | 3.5.4.1.3.2 | Quadro de cargas atualizado. | 7d | 2026-09-02 | 2026-09-11 | 1066, 1067 |  |  | 2026-09-02 | 2026-09-11 | 7d | 0d |  |
| 1071 | 3.5.4.1.3.3 | Dimensionamento final de fundações conforme sondagem e cálculo estrutural. | 7d | 2026-09-02 | 2026-09-11 | 1066, 1067 |  |  | 2026-09-02 | 2026-09-11 | 7d | 0d |  |
| 1072 | 3.5.4.1.3.4 | Definição final dos elementos da cobertura (treliças, vigas, chapas, purlins). | 7d | 2026-09-02 | 2026-09-11 | 1066, 1067 |  |  | 2026-09-02 | 2026-09-11 | 7d | 0d |  |
| 1073 | 3.5.4.1.3.5 | Compatibilização final com arquitetura e instalações (aberturas, embutidos e passagens). | 7d | 2026-09-02 | 2026-09-11 | 1066, 1067 |  |  | 2026-09-02 | 2026-09-11 | 7d | 0d |  |
| 1074 | 3.5.4.1.3.6 | Modelagem definitiva de pilares, vigas, lajes, blocos, sapatas e estacas. | 7d | 2026-09-02 | 2026-09-11 | 1066, 1067 |  |  | 2026-09-02 | 2026-09-11 | 7d | 0d |  |
| 1075 | 3.5.4.1.3.7 | Planta estrutural com todos os elementos identificados. | 7d | 2026-09-02 | 2026-09-11 | 1066, 1067 |  |  | 2026-09-02 | 2026-09-11 | 7d | 0d |  |
| 1076 | 3.5.4.1.3.8 | Memorial descritivo contendo: objetivos, justificativa, descrição do sistema, concepção de fundações/cobertura, especificações e quadro de cargas. | 7d | 2026-09-02 | 2026-09-11 | 1066, 1067 |  |  | 2026-09-02 | 2026-09-11 | 7d | 0d |  |
| 1077 | 3.5.4.1.3.9 | Normas técnicas utilizadas (NBR 6118, 6120, 6122, 8800, etc.). | 7d | 2026-09-02 | 2026-09-11 | 1066, 1067 |  |  | 2026-09-02 | 2026-09-11 | 7d | 0d |  |
| 1078 | 3.5.4.1.3.10 | Consolidar documentação de entrega e emissão formal da disciplina | 7d | 2026-09-02 | 2026-09-11 | 1066, 1067 |  |  | 2026-09-02 | 2026-09-11 | 7d | 0d |  |
| 1079 | 3.5.4.1.4 | Aprovação de Conformidade | 3d | 2026-09-09 | 2026-09-11 | 1068FF |  |  | 2026-09-09 | 2026-09-11 | 3d | 0d |  |
| 1080 | 3.5.4.1.5 | Material para entrega ao contrato | 3d | 2026-09-09 | 2026-09-11 | 1068FF |  |  | 2026-09-09 | 2026-09-11 | 3d | 0d |  |
| 1081 | 3.5.4.2 | **Hidrossanitário** | 34d | 2026-07-27 A | 2026-09-11 |  | 6% | 32d | 2026-07-27 | 2026-09-11 | 34d | 0d |  |
| 1082 | 3.5.4.2.1 | **LOD 100 — Premissas, diretrizes e interfaces** | 8d | 2026-07-27 A | 2026-08-05 |  | 22% | 6.25d | 2026-07-27 | 2026-08-05 | 8d | 26d |  |
| 1083 | 3.5.4.2.1.1 | Memorial preliminar | 8d | 2026-07-27 A | 2026-08-05 | 945SS-9d | 20% | 6.41d | 2026-07-27 | 2026-08-05 | 8d | 26d |  |
| 1084 | 3.5.4.2.1.2 | Indicação de áreas técnicas | 6d | 2026-07-27 A | 2026-08-03 | 945SS-9d | 27% | 4.41d | 2026-07-27 | 2026-08-03 | 6d | 28d |  |
| 1085 | 3.5.4.2.1.3 | Planta baixa com traçado conceitual | 6d | 2026-07-27 A | 2026-08-03 | 945SS-9d | 27% | 4.41d | 2026-07-27 | 2026-08-03 | 6d | 28d |  |
| 1086 | 3.5.4.2.1.4 | Pontos de consumo principais e coletas sanitárias | 6d | 2026-07-27 A | 2026-08-03 | 945SS-9d | 27% | 4.41d | 2026-07-27 | 2026-08-03 | 6d | 28d |  |
| 1087 | 3.5.4.2.1.5 | Classificação de uso | 8d | 2026-07-27 A | 2026-08-05 | 945SS-9d | 20% | 6.41d | 2026-07-27 | 2026-08-05 | 8d | 26d |  |
| 1088 | 3.5.4.2.1.6 | Diretrizes de espaço | 8d | 2026-07-27 A | 2026-08-05 | 945SS-9d | 20% | 6.41d | 2026-07-27 | 2026-08-05 | 8d | 26d |  |
| 1089 | 3.5.4.2.1.7 | Estimativa de demanda ou população de uso | 8d | 2026-07-27 A | 2026-08-05 | 945SS-9d | 20% | 6.41d | 2026-07-27 | 2026-08-05 | 8d | 26d |  |
| 1090 | 3.5.4.2.1.8 | Levantamento de elementos especiais dentre outras disciplinas de Engenharia e Arquitetura | 8d | 2026-07-27 A | 2026-08-05 | 945SS-9d | 20% | 6.41d | 2026-07-27 | 2026-08-05 | 8d | 0d |  |
| 1091 | 3.5.4.2.2 | **LOD 200 — Validação interdisciplinar e solução preliminar** | 20d | 2026-08-06 | 2026-09-02 |  |  |  | 2026-08-06 | 2026-09-02 | 20d | 0d |  |
| 1092 | 3.5.4.2.2.1 | Critérios normativos adotados (ABNT, concessionárias, etc.) | 20d | 2026-08-06 | 2026-09-02 | 1090 |  |  | 2026-08-06 | 2026-09-02 | 20d | 6d | 0d |
| 1093 | 3.5.4.2.2.2 | Informações de demanda na concessionária (DPE ou AVT Aviso de Viabilidade Técnica) | 20d | 2026-08-06 | 2026-09-02 | 1092SS |  |  | 2026-08-06 | 2026-09-02 | 20d | 6d |  |
| 1094 | 3.5.4.2.2.3 | Recebimento e Análise de Sondagem (permeabilidade ou percolação) | 20d | 2026-08-06 | 2026-09-02 | 1092SS |  |  | 2026-08-06 | 2026-09-02 | 20d | 6d |  |
| 1095 | 3.5.4.2.2.4 | Recebimento e Análise de Topografia | 20d | 2026-08-06 | 2026-09-02 | 1092SS |  |  | 2026-08-06 | 2026-09-02 | 20d | 6d |  |
| 1096 | 3.5.4.2.2.5 | Estudo de viabilidade técnica, econômica e ambiental | 20d | 2026-08-06 | 2026-09-02 | 1092SS |  |  | 2026-08-06 | 2026-09-02 | 20d | 6d |  |
| 1097 | 3.5.4.2.2.6 | Lista preliminar de sistemas envolvidos. | 20d | 2026-08-06 | 2026-09-02 | 1090 |  |  | 2026-08-06 | 2026-09-02 | 20d | 6d |  |
| 1098 | 3.5.4.2.2.7 | Planta baixa e cortes estimada contendo: - Traçado preliminar de barrilete, ramais, colunas - Diâmetros estimados - Localização aproximada das bombas e unidades de tratamento e reúso - Localização do ramal predial de água e esgoto - Localização aproximada | 20d | 2026-08-06 | 2026-09-02 | 1090 |  |  | 2026-08-06 | 2026-09-02 | 20d | 0d |  |

| ID | WBS | Task | Duration | Start | Finish | Predecessors | Complete | Remaining | Baseline start | Baseline finish | Baseline duration | Total slack | Text3 |
| --- | --- | --- | --- | --- | --- | --- | --- | --- | --- | --- | --- | --- | --- |
| 1099 | 3.5.4.2.3 | **LOD 300 - Consolidação e documentação de entrega** | 6d | 2026-09-03 | 2026-09-11 |  |  |  | 2026-09-03 | 2026-09-11 | 6d | 0d |  |
| 1100 | 3.5.4.2.3.1 | Planta, corte e detalhe isométrico contendo: - Modelagem detalhada com diâmetros, cotas e inclinações definitivas (barriletes, colunas, ramais) - Quantitativos e especificação técnica dos materiais (tubos, conexões, reservatórios, registros e válvulas com | 6d | 2026-09-03 | 2026-09-11 | 1098 |  |  | 2026-09-03 | 2026-09-11 | 6d | 0d |  |
| 1101 | 3.5.4.2.3.2 | Memorial descritivo | 3d | 2026-09-09 | 2026-09-11 | 1100FF |  |  | 2026-09-09 | 2026-09-11 | 3d | 0d |  |
| 1102 | 3.5.4.2.3.3 | Memória de cálculo (pressão, vazão, diâmetros, perda de carga). | 3d | 2026-09-09 | 2026-09-11 | 1098, 1100FF |  |  | 2026-09-09 | 2026-09-11 | 3d | 0d |  |
| 1103 | 3.5.4.2.4 | Aprovação de Conformidade | 3d | 2026-09-09 | 2026-09-11 | 1099FF |  |  | 2026-09-09 | 2026-09-11 | 3d | 0d |  |
| 1104 | 3.5.4.2.5 | Material para entrega ao contrato | 3d | 2026-09-09 | 2026-09-11 | 1099FF |  |  | 2026-09-09 | 2026-09-11 | 3d | 0d |  |
| 1105 | 3.5.4.3 | **AVAC** | 34d | 2026-07-27 A | 2026-09-11 |  | 5% | 32.33d | 2026-07-27 | 2026-09-11 | 34d | 0d |  |
| 1106 | 3.5.4.3.1 | **LOD 100 — Premissas, diretrizes e interfaces** | 20d | 2026-07-27 A | 2026-08-21 |  | 13% | 17.35d | 2026-07-27 | 2026-08-21 | 20d | 14d |  |
| 1107 | 3.5.4.3.1.1 | Estimativa de carga térmica por ambiente. | 10d | 2026-07-27 A | 2026-08-07 | 945SS-9d | 16% | 8.41d | 2026-07-27 | 2026-08-07 | 10d | 24d |  |
| 1108 | 3.5.4.3.1.2 | Localização preliminar de unidades de tratamento de ar, condensadoras e exaustores. | 10d | 2026-07-27 A | 2026-08-07 | 945SS-9d | 16% | 8.41d | 2026-07-27 | 2026-08-07 | 10d | 24d |  |
| 1109 | 3.5.4.3.1.3 | Pontos locação para seus elementos no projeto arquitetônico. | 10d | 2026-07-27 A | 2026-08-07 | 945SS-9d | 16% | 8.41d | 2026-07-27 | 2026-08-07 | 10d | 0d |  |
| 1110 | 3.5.4.3.1.4 | Estudo de viabilidade e rotas principais de distribuição de ar. | 10d | 2026-07-27 A | 2026-08-07 | 945SS-9d | 16% | 8.41d | 2026-07-27 | 2026-08-07 | 10d | 24d |  |
| 1111 | 3.5.4.3.1.5 | Reserva de espaços técnicos e shafts. | 10d | 2026-07-27 A | 2026-08-07 | 945SS-9d | 16% | 8.41d | 2026-07-27 | 2026-08-07 | 10d | 0d |  |
| 1112 | 3.5.4.3.1.6 | Levantamento de cargas especiais provenientes de outras disciplinas. | 10d | 2026-08-10 | 2026-08-21 | 1134, 1146 |  |  | 2026-08-10 | 2026-08-21 | 10d | 14d |  |
| 1113 | 3.5.4.3.2 | **LOD 200 — Validação interdisciplinar e solução preliminar** | 24d | 2026-08-10 | 2026-09-11 |  |  |  | 2026-08-10 | 2026-09-11 | 24d | 0d |  |
| 1114 | 3.5.4.3.2.1 | Lista preliminar de sistemas HVAC envolvidos (expansão direta, VRF, chillers, ventilação, exaustão). | 24d | 2026-08-10 | 2026-09-11 | 1111 |  |  | 2026-08-10 | 2026-09-11 | 24d | 0d |  |
| 1115 | 3.5.4.3.2.2 | Planta baixa estimada contendo: pontos de insuflamento e retorno. | 24d | 2026-08-10 | 2026-09-11 | 1111 |  |  | 2026-08-10 | 2026-09-11 | 24d | 0d |  |
| 1116 | 3.5.4.3.2.3 | Rotas iniciais de dutos, tubulações e drenos. | 24d | 2026-08-10 | 2026-09-11 | 1111 |  |  | 2026-08-10 | 2026-09-11 | 24d | 0d |  |
| 1117 | 3.5.4.3.2.4 | Planta baixa estimada contendo: unidades internas e externas com posição preliminar. | 24d | 2026-08-10 | 2026-09-11 | 1111 |  |  | 2026-08-10 | 2026-09-11 | 24d | 0d |  |
| 1118 | 3.5.4.3.3 | Aprovação de Conformidade | 3d | 2026-09-09 | 2026-09-11 | 1113FF |  |  | 2026-09-09 | 2026-09-11 | 3d | 0d |  |
| 1119 | 3.5.4.3.4 | Material para entrega ao contrato | 3d | 2026-09-09 | 2026-09-11 | 1113FF |  |  | 2026-09-09 | 2026-09-11 | 3d | 0d |  |
| 1120 | 3.5.4.4 | **PCI (Incêndio)** | 34d | 2026-07-27 A | 2026-09-11 |  | 4% | 32.5d | 2026-07-27 | 2026-09-11 | 34d | 0d |  |
| 1121 | 3.5.4.4.1 | **LOD 100 — Premissas, diretrizes e interfaces** | 10d | 2026-07-27 A | 2026-08-07 |  | 16% | 8.41d | 2026-07-27 | 2026-08-07 | 10d | 24d | ܁# |
| 1122 | 3.5.4.4.1.1 | Estudo e avaliação da arquitetura atendendo as normas competentes de PCI | 10d | 2026-07-27 A | 2026-08-07 | 945SS-9d | 16% | 8.41d | 2026-07-27 | 2026-08-07 | 10d | 24d |  |
| 1123 | 3.5.4.4.1.2 | Avaliação do espaço para CMI e Central de Gás. | 10d | 2026-07-27 A | 2026-08-07 | 945SS-9d | 16% | 8.41d | 2026-07-27 | 2026-08-07 | 10d | 24d |  |
| 1124 | 3.5.4.4.1.3 | Pontos locação para seus elementos no projeto arquitetônico | 10d | 2026-07-27 A | 2026-08-07 | 945SS-9d | 16% | 8.41d | 2026-07-27 | 2026-08-07 | 10d | 0d |  |

| ID | WBS | Task | Duration | Start | Finish | Predecessors | Complete | Remaining | Baseline start | Baseline finish | Baseline duration | Total slack | Free slack | Text3 |
| --- | --- | --- | --- | --- | --- | --- | --- | --- | --- | --- | --- | --- | --- | --- |
| 1125 | 3.5.4.4.2 | **LOD 200 — Validação interdisciplinar e solução preliminar** | 24d | 2026-08-10 | 2026-09-11 |  |  |  | 2026-08-10 | 2026-09-11 | 24d | 0d |  | ܁# |
| 1126 | 3.5.4.4.2.1 | Definição da classificação da edificação e o risco de incêndio | 24d | 2026-08-10 | 2026-09-11 | 1124 |  |  | 2026-08-10 | 2026-09-11 | 24d | 0d |  |  |
| 1127 | 3.5.4.4.2.2 | Cálculos pré-dimensionados dos extintores, hidrantes e bomba. | 24d | 2026-08-10 | 2026-09-11 | 1124 |  |  | 2026-08-10 | 2026-09-11 | 24d | 0d |  |  |
| 1128 | 3.5.4.4.2.3 | Avaliação das rotas de fuga, ventilação de CMI e outros elementos de importância para as normas de PCI | 24d | 2026-08-10 | 2026-09-11 | 1124 |  |  | 2026-08-10 | 2026-09-11 | 24d | 0d |  |  |
| 1129 | 3.5.4.4.3 | Aprovação de Conformidade | 3d | 2026-09-09 | 2026-09-11 | 1125FF |  |  | 2026-09-09 | 2026-09-11 | 3d | 0d |  |  |
| 1130 | 3.5.4.4.4 | Material para entrega ao contrato | 3d | 2026-09-09 | 2026-09-11 | 1125FF |  |  | 2026-09-09 | 2026-09-11 | 3d | 0d |  |  |
| 1131 | 3.5.4.5 | **Elétrica Baixa Tensão** | 34d | 2026-07-27 A | 2026-09-11 |  | 4% | 32.52d | 2026-07-27 | 2026-09-11 | 34d | 0d |  |  |
| 1132 | 3.5.4.5.1 | **LOD 100 — Concepção** | 14d | 2026-07-27 A | 2026-08-13 |  | 21% | 11.03d | 2026-07-27 | 2026-08-13 | 14d | 20d |  |  |
| 1133 | 3.5.4.5.1.1 | Avaliação e Diretrizes Técnicas para Arquitetura | 4d | 2026-07-27 A | 2026-07-30 | 945SS-9d | 40% | 2.41d | 2026-07-27 | 2026-07-30 | 4d | 30d |  |  |
| 1134 | 3.5.4.5.1.2 | Estimativa de Cargas e Demanda | 7d | 2026-07-27 A | 2026-08-04 | 945SS-9d | 23% | 5.41d | 2026-07-27 | 2026-08-04 | 7d | 7d | 3d |  |
| 1135 | 3.5.4.5.1.3 | Levantamento de Equipamentos de Outras Disciplinas | 4d | 2026-08-10 | 2026-08-13 | 1109, 1124 |  |  | 2026-08-10 | 2026-08-13 | 4d | 0d |  |  |
| 1136 | 3.5.4.5.2 | **LOD 200 — Anteprojeto** | 16d | 2026-08-14 | 2026-09-04 |  |  |  | 2026-08-14 | 2026-09-04 | 16d | 0d |  |  |
| 1137 | 3.5.4.5.2.1 | TUGs Estimados | 16d | 2026-08-14 | 2026-09-04 | 1134, 1135 |  |  | 2026-08-14 | 2026-09-04 | 16d | 0d |  |  |
| 1138 | 3.5.4.5.2.2 | Pontos de Luz Estimados | 16d | 2026-08-14 | 2026-09-04 | 1134, 1135 |  |  | 2026-08-14 | 2026-09-04 | 16d | 0d |  |  |
| 1139 | 3.5.4.5.2.3 | TUEs e Quadros Estimados | 16d | 2026-08-14 | 2026-09-04 | 1134, 1135 |  |  | 2026-08-14 | 2026-09-04 | 16d | 0d |  |  |
| 1140 | 3.5.4.5.3 | LOD 300 - Consolidação e documentação de entrega | 4d | 2026-09-08 | 2026-09-11 | 1136 |  |  | 2026-09-08 | 2026-09-11 | 4d | 0d |  |  |
| 1141 | 3.5.4.5.4 | Aprovação de Conformidade | 3d | 2026-09-09 | 2026-09-11 | 1140FF |  |  | 2026-09-09 | 2026-09-11 | 3d | 0d |  |  |
| 1142 | 3.5.4.5.5 | Material para entrega ao contrato | 3d | 2026-09-09 | 2026-09-11 | 1140FF |  |  | 2026-09-09 | 2026-09-11 | 3d | 0d |  |  |
| 1143 | 3.5.4.6 | **Telecom** | 34d | 2026-07-27 A | 2026-09-11 |  | 7% | 31.68d | 2026-07-27 | 2026-09-11 | 34d | 0d |  |  |
| 1144 | 3.5.4.6.1 | **LOD 100 — Concepção** | 10d | 2026-07-27 A | 2026-08-07 |  | 16% | 8.41d | 2026-07-27 | 2026-08-07 | 10d | 24d |  |  |
| 1145 | 3.5.4.6.1.1 | Avaliação e Diretrizes Técnicas para Arquitetura | 10d | 2026-07-27 A | 2026-08-07 | 945SS-9d | 16% | 8.41d | 2026-07-27 | 2026-08-07 | 10d | 24d |  |  |
| 1146 | 3.5.4.6.1.2 | Estimativa de Demanda de Telecomunicações | 10d | 2026-07-27 A | 2026-08-07 | 945SS-9d | 16% | 8.41d | 2026-07-27 | 2026-08-07 | 10d | 14d | 0d |  |
| 1147 | 3.5.4.6.1.3 | Levantamento de Equipamentos e Interfaces com Outras Disciplinas | 10d | 2026-07-27 A | 2026-08-07 | 945SS-9d | 16% | 8.41d | 2026-07-27 | 2026-08-07 | 10d | 0d |  |  |
| 1148 | 3.5.4.6.2 | **LOD 200 — Anteprojeto** | 20d | 2026-08-10 | 2026-09-04 |  |  |  | 2026-08-10 | 2026-09-04 | 20d | 0d |  |  |
| 1149 | 3.5.4.6.2.1 | Pontos de Telecomunicações Estimados (Rede, Voz, CFTV e Demais Sistemas) | 10d | 2026-08-10 | 2026-08-21 | 1147 |  |  | 2026-08-10 | 2026-08-21 | 10d | 0d |  |  |
| 1150 | 3.5.4.6.2.2 | Racks Estimados | 10d | 2026-08-10 | 2026-08-21 | 1147 |  |  | 2026-08-10 | 2026-08-21 | 10d | 0d |  |  |
| 1151 | 3.5.4.6.2.3 | Infraestrutura de Telecomunicações Preliminar | 10d | 2026-08-24 | 2026-09-04 | 1149, 1150 |  |  | 2026-08-24 | 2026-09-04 | 10d | 0d |  |  |
| 1152 | 3.5.4.6.3 | LOD 300 - Consolidação e documentação de entrega | 4d | 2026-09-08 | 2026-09-11 | 1148 |  |  | 2026-09-08 | 2026-09-11 | 4d | 0d |  |  |
| 1153 | 3.5.4.6.4 | Aprovação de Conformidade | 3d | 2026-09-09 | 2026-09-11 | 1152FF |  |  | 2026-09-09 | 2026-09-11 | 3d | 0d |  |  |
| 1154 | 3.5.4.6.5 | Material para entrega ao contrato | 3d | 2026-09-09 | 2026-09-11 | 1152FF |  |  | 2026-09-09 | 2026-09-11 | 3d | 0d |  |  |

| ID | WBS | Task | Duration | Start | Finish | Predecessors | Complete | Remaining | Baseline start | Baseline finish | Baseline duration | Total slack |
| --- | --- | --- | --- | --- | --- | --- | --- | --- | --- | --- | --- | --- |
| 1155 | 3.5.4.7 | **SPDA** | 34d | 2026-07-27 A | 2026-09-11 |  | 7% | 31.68d | 2026-07-27 | 2026-09-11 | 34d | 0d |
| 1156 | 3.5.4.7.1 | **LOD 100 — Concepção** | 10d | 2026-07-27 A | 2026-08-07 |  | 16% | 8.41d | 2026-07-27 | 2026-08-07 | 10d | 24d |
| 1157 | 3.5.4.7.1.1 | Avaliação e Diretrizes Técnicas para Arquitetura | 10d | 2026-07-27 A | 2026-08-07 | 945SS-9d | 16% | 8.41d | 2026-07-27 | 2026-08-07 | 10d | 24d |
| 1158 | 3.5.4.7.1.2 | Coleta de Informações da Edificação e Análise de Risco (ABNT NBR 5419-2) | 10d | 2026-07-27 A | 2026-08-07 | 945SS-9d | 16% | 8.41d | 2026-07-27 | 2026-08-07 | 10d | 24d |
| 1159 | 3.5.4.7.1.3 | Estudo Preliminar de Necessidade e Nível de Proteção do SPDA | 10d | 2026-07-27 A | 2026-08-07 | 945SS-9d | 16% | 8.41d | 2026-07-27 | 2026-08-07 | 10d | 0d |
| 1160 | 3.5.4.7.2 | **LOD 200 — Anteprojeto** | 20d | 2026-08-10 | 2026-09-04 |  |  |  | 2026-08-10 | 2026-09-04 | 20d | 0d |
| 1161 | 3.5.4.7.2.1 | Definição da Estratégia de Proteção e Soluções Técnicas | 10d | 2026-08-10 | 2026-08-21 | 1159 |  |  | 2026-08-10 | 2026-08-21 | 10d | 0d |
| 1162 | 3.5.4.7.2.2 | Zoneamento de Captação, Descida e Traçados Preliminares | 10d | 2026-08-24 | 2026-09-04 | 1161 |  |  | 2026-08-24 | 2026-09-04 | 10d | 4d |
| 1163 | 3.5.4.7.2.3 | Estudo de Interferências, Compatibilização e Métodos Construtivos | 10d | 2026-08-24 | 2026-09-04 | 1161 |  |  | 2026-08-24 | 2026-09-04 | 10d | 0d |
| 1164 | 3.5.4.7.3 | LOD 300 - Consolidação e documentação de entrega | 4d | 2026-09-08 | 2026-09-11 | 1163 |  |  | 2026-09-08 | 2026-09-11 | 4d | 0d |
| 1165 | 3.5.4.7.4 | Aprovação de Conformidade | 3d | 2026-09-09 | 2026-09-11 | 1164FF |  |  | 2026-09-09 | 2026-09-11 | 3d | 0d |
| 1166 | 3.5.4.7.5 | Material para entrega ao contrato | 3d | 2026-09-09 | 2026-09-11 | 1164FF |  |  | 2026-09-09 | 2026-09-11 | 3d | 0d |
| 1167 | 3.5.4.8 | **Energia Renovável** | 34d | 2026-07-27 A | 2026-09-11 |  | 5% | 32.38d | 2026-07-27 | 2026-09-11 | 34d | 0d |
| 1168 | 3.5.4.8.1 | **LOD 100 — Concepção** | 10d | 2026-07-27 A | 2026-08-07 |  | 16% | 8.41d | 2026-07-27 | 2026-08-07 | 10d | 24d |
| 1169 | 3.5.4.8.1.1 | Viabilidade e Premissas de Geração | 10d | 2026-07-27 A | 2026-08-07 | 945SS-9d | 16% | 8.41d | 2026-07-27 | 2026-08-07 | 10d | 24d |
| 1170 | 3.5.4.8.1.2 | Levantamento Preliminar de Áreas e Sombreamento | 10d | 2026-07-27 A | 2026-08-07 | 945SS-9d | 16% | 8.41d | 2026-07-27 | 2026-08-07 | 10d | 0d |
| 1171 | 3.5.4.8.1.3 | Avaliação e Diretrizes Técnicas para Arquitetônico | 10d | 2026-07-27 A | 2026-08-07 | 945SS-9d | 16% | 8.41d | 2026-07-27 | 2026-08-07 | 10d | 24d |
| 1172 | 3.5.4.8.2 | **LOD 200 — Anteprojeto** | 20d | 2026-08-10 | 2026-09-04 |  |  |  | 2026-08-10 | 2026-09-04 | 20d | 0d |
| 1173 | 3.5.4.8.2.1 | Layout Preliminar de Módulos, Inversores e String Boxes | 20d | 2026-08-10 | 2026-09-04 | 1170 |  |  | 2026-08-10 | 2026-09-04 | 20d | 0d |
| 1174 | 3.5.4.8.2.2 | Infraestrutura e Rotas Técnicas Preliminares (DC/AC e Aterramento) | 20d | 2026-08-10 | 2026-09-04 | 1170 |  |  | 2026-08-10 | 2026-09-04 | 20d | 0d |
| 1175 | 3.5.4.8.2.3 | Critérios Preliminares de Proteção e Estimativa de Quantitativos | 20d | 2026-08-10 | 2026-09-04 | 1170 |  |  | 2026-08-10 | 2026-09-04 | 20d | 0d |
| 1176 | 3.5.4.8.3 | LOD 300 - Consolidação e documentação de entrega | 4d | 2026-09-08 | 2026-09-11 | 1172 |  |  | 2026-09-08 | 2026-09-11 | 4d | 0d |
| 1177 | 3.5.4.8.4 | Aprovação de Conformidade | 3d | 2026-09-09 | 2026-09-11 | 1176FF |  |  | 2026-09-09 | 2026-09-11 | 3d | 0d |
| 1178 | 3.5.4.8.5 | Material para entrega ao contrato | 3d | 2026-09-09 | 2026-09-11 | 1176FF |  |  | 2026-09-09 | 2026-09-11 | 3d | 0d |

| ID | WBS | Task | Duration | Start | Finish | Predecessors | Complete | Remaining | Baseline start | Baseline finish | Baseline duration | Total slack | Free slack | Constraint |
| --- | --- | --- | --- | --- | --- | --- | --- | --- | --- | --- | --- | --- | --- | --- |
| 1179 | 3.6 | **006 - Guarita (3 guaritas)** | 45d | 2026-07-10 A | 2026-09-11 |  | 27% | 33.02d | 2026-07-10 | 2026-09-11 | 45d | 0d |  |  |
| 1180 | 3.6.1 | **Arquitetura** | 45d | 2026-07-10 A | 2026-09-11 |  | 64% | 16.33d | 2026-07-10 | 2026-09-11 | 45d | 0d |  |  |
| 1181 | 3.6.1.1 | **Análise e Compatibilização (caso a gente receba o projeto e precise adequar)** | 31d | 2026-07-10 A | 2026-08-21 A |  | 100% |  | 2026-07-10 | 2026-08-21 | 31d |  |  |  |
| 1182 | 3.6.1.1.1 | Conferir normas de cozinha industrial | 20d | 2026-07-10 A | 2026-08-06 A | 24FS+5d | 100% |  | 2026-07-10 | 2026-08-06 | 20d |  |  | start no earlier than 2026-06-01 |
| 1183 | 3.6.1.1.2 | Conferir e fechar alinhamento das paredes | 20d | 2026-07-10 A | 2026-08-06 A | 24FS+5d | 100% |  | 2026-07-10 | 2026-08-06 | 20d |  |  | start no earlier than 2026-06-01 |
| 1184 | 3.6.1.1.3 | Conferir quantidade de sanitários e cubas de acordo com os setores | 20d | 2026-07-10 A | 2026-08-06 A | 24FS+5d | 100% |  | 2026-07-10 | 2026-08-06 | 20d |  |  | start no earlier than 2026-06-01 |
| 1185 | 3.6.1.1.4 | Conferir layout | 20d | 2026-07-10 A | 2026-08-06 A | 24FS+5d | 100% |  | 2026-07-10 | 2026-08-06 | 20d |  |  | start no earlier than 2026-06-01 |
| 1186 | 3.6.1.1.5 | Conferir e fechar Pisos | 20d | 2026-07-10 A | 2026-08-06 A | 24FS+5d | 100% |  | 2026-07-10 | 2026-08-06 | 20d |  |  | start no earlier than 2026-06-01 |
| 1187 | 3.6.1.1.6 | Conferir e fechar Esquadrias | 20d | 2026-07-10 A | 2026-08-06 A | 24FS+5d | 100% |  | 2026-07-10 | 2026-08-06 | 20d |  |  | start no earlier than 2026-06-01 |
| 1188 | 3.6.1.1.7 | Conferir acessibilidade em rampas e sanitários | 20d | 2026-07-10 A | 2026-08-06 A | 24FS+5d | 100% |  | 2026-07-10 | 2026-08-06 | 20d |  |  | start no earlier than 2026-06-01 |
| 1189 | 3.6.1.1.8 | Conferir nomas técnicas para o dimensionamento dos ambientes - principalmente banheiros e circulações | 20d | 2026-07-10 A | 2026-08-06 A | 24FS+5d | 100% |  | 2026-07-10 | 2026-08-06 | 20d |  |  | start no earlier than 2026-06-01 |
| 1190 | 3.6.1.1.9 | Conferir normas técnicas para auditórios (se tiver) | 20d | 2026-07-10 A | 2026-08-06 A | 24FS+5d | 100% |  | 2026-07-10 | 2026-08-06 | 20d |  |  | start no earlier than 2026-06-01 |
| 1191 | 3.6.1.1.10 | Compatibilização (pedir relatório de análise de projeto para disciplinas de engenharia) | 5d | 2026-08-07 A | 2026-08-13 A | 1190 | 100% |  | 2026-08-07 | 2026-08-13 | 5d |  |  |  |
| 1192 | 3.6.1.1.11 | Compatibilizar as rotas de fulga de acordo com as solicitações de PCI | 11d | 2026-08-07 A | 2026-08-21 A | 1190 | 100% |  | 2026-08-07 | 2026-08-21 | 11d |  |  |  |
| 1193 | 3.6.1.1.12 | Comatibilizar as prumadas com as equipes de engenharia | 11d | 2026-08-07 A | 2026-08-21 A | 1190 | 100% |  | 2026-08-07 | 2026-08-21 | 11d |  |  |  |
| 1194 | 3.6.1.1.13 | Ajustar área dos ambientes conforme solicitado pela equipe de elétrica | 11d | 2026-08-07 A | 2026-08-21 A | 1190 | 100% |  | 2026-08-07 | 2026-08-21 | 11d |  |  |  |
| 1195 | 3.6.1.2 | **LOD 300 - ANTEPROJETO** | 20d | 2026-08-14 A | 2026-09-11 |  | 41% | 11.87d | 2026-08-14 | 2026-09-11 | 20d | 0d |  |  |
| 1196 | 3.6.1.2.1 | **Modelagem e compatibilização** | 10d | 2026-08-14 A | 2026-08-27 |  | 45% | 5.48d | 2026-08-14 | 2026-08-27 | 10d | 10d |  |  |
| 1197 | 3.6.1.2.1.1 | Ajustar o navegador de projeto conforme o padrão da Quanta - verificar se todas as vistas estão dentro da disciplina correta - alinahr com o líder da OS | 10d | 2026-08-14 | 2026-08-27 | 1191 |  |  | 2026-08-14 | 2026-08-27 | 10d | 10d |  |  |
| 1198 | 3.6.1.2.1.2 | Limpar o arquivo e transferir os padões de projeto da Quanta | 10d | 2026-08-14 | 2026-08-27 | 1191 |  |  | 2026-08-14 | 2026-08-27 | 10d | 10d |  |  |
| 1199 | 3.6.1.2.1.3 | Criar Worksets (em caso de arquivos colaborados) | 10d | 2026-08-14 | 2026-08-27 | 1191 |  |  | 2026-08-14 | 2026-08-27 | 10d | 10d |  |  |
| 1200 | 3.6.1.2.1.4 | Colocar todas as elementos em seus devidos Worksets | 10d | 2026-08-14 | 2026-08-27 | 1191 |  |  | 2026-08-14 | 2026-08-27 | 10d | 10d |  |  |
| 1201 | 3.6.1.2.1.5 | Fazer ajustes dos modelos para Colaboração | 10d | 2026-08-14 | 2026-08-27 | 1191 |  |  | 2026-08-14 | 2026-08-27 | 10d | 10d |  |  |
| 1202 | 3.6.1.2.1.6 | Mudar os pisos para o padrão da quanta (1º pavimento) | 10d | 2026-08-14 A | 2026-08-27 A | 1191 | 100% |  | 2026-08-14 | 2026-08-27 | 10d |  |  |  |
| 1203 | 3.6.1.2.1.7 | Mudar as parades para o padão da quanta (1º pavimento) | 10d | 2026-08-14 A | 2026-08-27 A | 1191 | 100% |  | 2026-08-14 | 2026-08-27 | 10d |  |  |  |
| 1204 | 3.6.1.2.1.8 | Mudar as portas para o padão da quanta (1º pavimento) | 10d | 2026-08-14 A | 2026-08-27 A | 1191 | 100% |  | 2026-08-14 | 2026-08-27 | 10d |  |  |  |
| 1205 | 3.6.1.2.1.9 | Mudar as soleiras para o padão da quanta | 10d | 2026-08-14 A | 2026-08-27 A | 1191 | 100% |  | 2026-08-14 | 2026-08-27 | 10d |  |  |  |
| 1206 | 3.6.1.2.1.10 | Mudar as bancadas para o padão da Quanta (1º pavimento) | 10d | 2026-08-14 A | 2026-08-27 A | 1191 | 100% |  | 2026-08-14 | 2026-08-27 | 10d |  |  |  |
| 1207 | 3.6.1.2.1.11 | Mudar metais para padrão da Quanta (1º pavimento) | 10d | 2026-08-14 A | 2026-08-27 A | 1191 | 100% |  | 2026-08-14 | 2026-08-27 | 10d |  |  |  |
| 1208 | 3.6.1.2.1.12 | Mudar demais acabamentos para padrão o padrão da Quanta | 10d | 2026-08-14 A | 2026-08-27 A | 1191 | 100% |  | 2026-08-14 | 2026-08-27 | 10d |  |  |  |
| 1209 | 3.6.1.2.1.13 | Ajustar ralos das áreas molhadas (1º pavimento) | 10d | 2026-08-14 A | 2026-08-27 A | 1191 | 100% |  | 2026-08-14 | 2026-08-27 | 10d |  |  |  |
| 1210 | 3.6.1.2.1.14 | Se vier as tomadas - excluir (1º Pavimento) | 10d | 2026-08-14 | 2026-08-27 | 1191 |  |  | 2026-08-14 | 2026-08-27 | 10d | 10d |  |  |
| 1211 | 3.6.1.2.1.15 | Se vier as luminárias - excluir (1° pavimento) | 10d | 2026-08-14 | 2026-08-27 | 1191 |  |  | 2026-08-14 | 2026-08-27 | 10d | 10d |  |  |
| 1212 | 3.6.1.2.1.16 | Inserir caixa d'água - Conferir pré dimensionamento com a engenharia | 10d | 2026-08-14 | 2026-08-27 | 1191 |  |  | 2026-08-14 | 2026-08-27 | 10d | 10d |  |  |
| 1213 | 3.6.1.2.1.17 | Separar camadas dos pisos - leje 10cm (1° camada), contrapiso 3cm+argamassa 2cm+rev 1cm, (2°camada) | 10d | 2026-08-14 A | 2026-08-27 A | 1191 | 100% |  | 2026-08-14 | 2026-08-27 | 10d |  |  |  |
| 1214 | 3.6.1.2.1.18 | Descrição dos elementos da edificação | 10d | 2026-08-14 A | 2026-08-27 | 1191 | 66% | 3.4d | 2026-08-14 | 2026-08-27 | 10d | 10d |  |  |
| 1215 | 3.6.1.2.1.19 | Descrição dos componentes construtivos e materiais de construção | 10d | 2026-08-14 A | 2026-08-27 | 1191 | 33% | 6.7d | 2026-08-14 | 2026-08-27 | 10d | 10d |  |  |
| 1216 | 3.6.1.2.1.20 | Lista de pranchas anexas e documentos | 10d | 2026-08-14 | 2026-08-27 | 1191 |  |  | 2026-08-14 | 2026-08-27 | 10d | 10d |  |  |
| 1217 | 3.6.1.2.1.21 | Vias de acesso ao conjunto, arruamento, logradouros adjacentes e calçadas com os respectivos equipamentos urbanos; | 10d | 2026-08-14 | 2026-08-27 | 1191 |  |  | 2026-08-14 | 2026-08-27 | 10d | 10d |  |  |
| 1218 | 3.6.1.2.1.22 | Platôs e taludes principais; | 10d | 2026-08-14 | 2026-08-27 | 1191 |  |  | 2026-08-14 | 2026-08-27 | 10d | 10d |  |  |
| 1219 | 3.6.1.2.1.23 | Perímetro do terreno, recuos e afastamentos; | 10d | 2026-08-14 | 2026-08-27 | 1191 |  |  | 2026-08-14 | 2026-08-27 | 10d | 10d |  |  |
| 1220 | 3.6.1.2.1.24 | Indicação das áreas a serem edificadas com o contorno da cobertura das edificações, estacionamentos e áreas permeáveis/impermeáveis; | 10d | 2026-08-14 | 2026-08-27 | 1191 |  |  | 2026-08-14 | 2026-08-27 | 10d | 10d |  |  |
| 1221 | 3.6.1.2.1.25 | Denominação das edificações, blocos ou espaços; | 10d | 2026-08-14 | 2026-08-27 | 1191 |  |  | 2026-08-14 | 2026-08-27 | 10d | 10d |  |  |
| 1222 | 3.6.1.2.1.26 | Cotas gerais | 10d | 2026-08-14 A | 2026-08-27 A | 1191 | 100% |  | 2026-08-14 | 2026-08-27 | 10d |  |  |  |
| 1223 | 3.6.1.2.1.27 | Cotas de nível principal. | 10d | 2026-08-14 A | 2026-08-27 | 1191 | 66% | 3.4d | 2026-08-14 | 2026-08-27 | 10d | 10d |  |  |
| 1224 | 3.6.1.2.1.28 | Quadros de áreas | 10d | 2026-08-14 A | 2026-08-27 A | 1191 | 100% |  | 2026-08-14 | 2026-08-27 | 10d |  |  |  |
| 1225 | 3.6.1.2.2 | Planta com as cotas de nível projetadas e existentes | 1d | 2026-08-28 | 2026-08-28 | 1224 |  |  | 2026-08-28 | 2026-08-28 | 1d | 0.33d | 0d |  |

| ID | WBS | Task | Duration | Start | Finish | Predecessors | Complete | Remaining | Baseline start | Baseline finish | Baseline duration | Total slack | Free slack |
| --- | --- | --- | --- | --- | --- | --- | --- | --- | --- | --- | --- | --- | --- |
| 1226 | 3.6.1.2.3 | **Plantas baixas (se tiver mais de um pavimento, duplicar bloco)** | 1d | 2026-08-31 A | 2026-08-31 |  | 27% | 0.73d | 2026-08-31 | 2026-08-31 | 1d | 8d |  |
| 1227 | 3.6.1.2.3.1 | Indicar simbologias de representação gráfica, conforme NBR 6492:2021; | 1d | 2026-08-31 A | 2026-08-31 | 1225 | 33% | 0.67d | 2026-08-31 | 2026-08-31 | 1d | 8d |  |
| 1228 | 3.6.1.2.3.2 | Compatibilização (verificar se está tudo conforme as normas e alinhar com o restante das disciplinas de engenharia) | 1d | 2026-08-31 | 2026-08-31 | 1225 |  |  | 2026-08-31 | 2026-08-31 | 1d | 8d |  |
| 1229 | 3.6.1.2.3.3 | Compatibilização (deixar tudo conforme padrão Quanta) | 1d | 2026-08-31 A | 2026-08-31 | 1225 | 33% | 0.67d | 2026-08-31 | 2026-08-31 | 1d | 8d |  |
| 1230 | 3.6.1.2.3.4 | Indicação de Norte; | 1d | 2026-08-31 A | 2026-08-31 | 1225 | 33% | 0.67d | 2026-08-31 | 2026-08-31 | 1d | 8d |  |
| 1231 | 3.6.1.2.3.5 | Indicação de Escala; | 1d | 2026-08-31 | 2026-08-31 | 1225 |  |  | 2026-08-31 | 2026-08-31 | 1d | 8d |  |
| 1232 | 3.6.1.2.3.6 | Indicação de Acessos; | 1d | 2026-08-31 A | 2026-08-31 | 1225 | 33% | 0.67d | 2026-08-31 | 2026-08-31 | 1d | 8d |  |
| 1233 | 3.6.1.2.3.7 | Elementos de vedação internos e externos; | 1d | 2026-08-31 | 2026-08-31 | 1225 |  |  | 2026-08-31 | 2026-08-31 | 1d | 8d |  |
| 1234 | 3.6.1.2.3.8 | Esquadrias (sem código e sem quadro); | 1d | 2026-08-31 A | 2026-08-31 | 1225 | 33% | 0.67d | 2026-08-31 | 2026-08-31 | 1d | 8d |  |
| 1235 | 3.6.1.2.3.9 | Elementos estruturais principais; | 1d | 2026-08-31 A | 2026-08-31 | 1225 | 33% | 0.67d | 2026-08-31 | 2026-08-31 | 1d | 8d |  |
| 1236 | 3.6.1.2.3.10 | Identificação dos ambientes e espaços (internos e externos); | 1d | 2026-08-31 A | 2026-08-31 | 1225 | 33% | 0.67d | 2026-08-31 | 2026-08-31 | 1d | 8d |  |
| 1237 | 3.6.1.2.3.11 | Espaços de circulação internos e externos; | 1d | 2026-08-31 A | 2026-08-31 | 1225 | 33% | 0.67d | 2026-08-31 | 2026-08-31 | 1d | 8d |  |
| 1238 | 3.6.1.2.3.12 | Áreas de serviço, funcionais e técnicas (internos e externos); | 1d | 2026-08-31 A | 2026-08-31 | 1225 | 33% | 0.67d | 2026-08-31 | 2026-08-31 | 1d | 8d |  |
| 1239 | 3.6.1.2.3.13 | Projeções de níveis superiores; | 1d | 2026-08-31 A | 2026-08-31 | 1225 | 33% | 0.67d | 2026-08-31 | 2026-08-31 | 1d | 8d |  |
| 1240 | 3.6.1.2.3.14 | Cotas gerais | 1d | 2026-08-31 A | 2026-08-31 | 1225 | 33% | 0.67d | 2026-08-31 | 2026-08-31 | 1d | 8d |  |
| 1241 | 3.6.1.2.3.15 | Cotas de nível principal. | 1d | 2026-08-31 A | 2026-08-31 | 1225 | 33% | 0.67d | 2026-08-31 | 2026-08-31 | 1d | 8d |  |
| 1242 | 3.6.1.2.3.16 | Quadro de áreas | 1d | 2026-08-31 A | 2026-08-31 | 1225 | 33% | 0.67d | 2026-08-31 | 2026-08-31 | 1d | 0.33d | 0d |
| 1243 | 3.6.1.2.4 | **Planta das coberturas** | 1d | 2026-09-01 A | 2026-09-01 |  | 15% | 0.85d | 2026-09-01 | 2026-09-01 | 1d | 7d |  |
| 1244 | 3.6.1.2.4.1 | Indicação do Norte | 1d | 2026-09-01 A | 2026-09-01 | 1242 | 33% | 0.67d | 2026-09-01 | 2026-09-01 | 1d | 7d |  |
| 1245 | 3.6.1.2.4.2 | Indicação de escala | 1d | 2026-09-01 | 2026-09-01 | 1242 |  |  | 2026-09-01 | 2026-09-01 | 1d | 7d |  |
| 1246 | 3.6.1.2.4.3 | Curvas de nível | 1d | 2026-09-01 | 2026-09-01 | 1242 |  |  | 2026-09-01 | 2026-09-01 | 1d | 7d |  |
| 1247 | 3.6.1.2.4.4 | Indicação de Acessos; | 1d | 2026-09-01 | 2026-09-01 | 1242 |  |  | 2026-09-01 | 2026-09-01 | 1d | 7d |  |
| 1248 | 3.6.1.2.4.5 | Estacionamento e áreas cobertas | 1d | 2026-09-01 | 2026-09-01 | 1242 |  |  | 2026-09-01 | 2026-09-01 | 1d | 7d |  |
| 1249 | 3.6.1.2.4.6 | Cobertura das edificações | 1d | 2026-09-01 A | 2026-09-01 | 1242 | 33% | 0.67d | 2026-09-01 | 2026-09-01 | 1d | 7d |  |
| 1250 | 3.6.1.2.4.7 | Sentido de escoamento das águas pluviais e inclinação | 1d | 2026-09-01 | 2026-09-01 | 1242 |  |  | 2026-09-01 | 2026-09-01 | 1d | 7d |  |
| 1251 | 3.6.1.2.4.8 | Cotas gerais | 1d | 2026-09-01 A | 2026-09-01 | 1242 | 33% | 0.67d | 2026-09-01 | 2026-09-01 | 1d | 7d |  |
| 1252 | 3.6.1.2.4.9 | Cotas de nível principal | 1d | 2026-09-01 A | 2026-09-01 | 1242 | 33% | 0.67d | 2026-09-01 | 2026-09-01 | 1d | 0d |  |

| ID | WBS | Task | Duration | Start | Finish | Predecessors | Complete | Remaining | Baseline start | Baseline finish | Baseline duration | Total slack |
| --- | --- | --- | --- | --- | --- | --- | --- | --- | --- | --- | --- | --- |
| 1253 | 3.6.1.2.5 | **Cortes longitudinais** | 1d | 2026-09-02 A | 2026-09-02 |  | 19% | 0.81d | 2026-09-02 | 2026-09-02 | 1d | 6d |
| 1254 | 3.6.1.2.5.1 | Indicar simbologias de representação gráfica, conforme NBR 6492:2021; | 1d | 2026-09-02 A | 2026-09-02 | 1252 | 33% | 0.67d | 2026-09-02 | 2026-09-02 | 1d | 6d |
| 1255 | 3.6.1.2.5.2 | Indicação de Escala; | 1d | 2026-09-02 | 2026-09-02 | 1252 |  |  | 2026-09-02 | 2026-09-02 | 1d | 6d |
| 1256 | 3.6.1.2.5.3 | Elementos estruturais principais; | 1d | 2026-09-02 A | 2026-09-02 | 1252 | 33% | 0.67d | 2026-09-02 | 2026-09-02 | 1d | 6d |
| 1257 | 3.6.1.2.5.4 | Elementos de vedação internos e externos; | 1d | 2026-09-02 A | 2026-09-02 | 1252 | 33% | 0.67d | 2026-09-02 | 2026-09-02 | 1d | 6d |
| 1258 | 3.6.1.2.5.5 | Esquadrias; | 1d | 2026-09-02 | 2026-09-02 | 1252 |  |  | 2026-09-02 | 2026-09-02 | 1d | 6d |
| 1259 | 3.6.1.2.5.6 | Identificação dos ambientes; | 1d | 2026-09-02 A | 2026-09-02 | 1252 | 33% | 0.67d | 2026-09-02 | 2026-09-02 | 1d | 6d |
| 1260 | 3.6.1.2.5.7 | Cobertura com indicação da respectiva inclinação; | 1d | 2026-09-02 | 2026-09-02 | 1252 |  |  | 2026-09-02 | 2026-09-02 | 1d | 6d |
| 1261 | 3.6.1.2.5.8 | Cotas gerais; | 1d | 2026-09-02 A | 2026-09-02 | 1252 | 33% | 0.67d | 2026-09-02 | 2026-09-02 | 1d | 6d |
| 1262 | 3.6.1.2.5.9 | Cotas de nível principal; | 1d | 2026-09-02 A | 2026-09-02 | 1252 | 33% | 0.67d | 2026-09-02 | 2026-09-02 | 1d | 6d |
| 1263 | 3.6.1.2.5.10 | Eixos do projeto; | 1d | 2026-09-02 A | 2026-09-02 | 1252 | 33% | 0.67d | 2026-09-02 | 2026-09-02 | 1d | 6d |
| 1264 | 3.6.1.2.5.11 | Relevo construído; | 1d | 2026-09-02 | 2026-09-02 | 1252 |  |  | 2026-09-02 | 2026-09-02 | 1d | 6d |
| 1265 | 3.6.1.2.5.12 | Projeção da topografia natural. | 1d | 2026-09-02 | 2026-09-02 | 1252 |  |  | 2026-09-02 | 2026-09-02 | 1d | 0d |
| 1266 | 3.6.1.2.6 | **Cortes transversais** | 1d | 2026-09-03 A | 2026-09-03 |  | 22% | 0.78d | 2026-09-03 | 2026-09-03 | 1d | 5d |
| 1267 | 3.6.1.2.6.1 | Indicar simbologias de representação gráfica, conforme NBR 6492:2021; | 1d | 2026-09-03 A | 2026-09-03 | 1265 | 33% | 0.67d | 2026-09-03 | 2026-09-03 | 1d | 5d |
| 1268 | 3.6.1.2.6.2 | Indicação de Escala; | 1d | 2026-09-03 | 2026-09-03 | 1265 |  |  | 2026-09-03 | 2026-09-03 | 1d | 5d |
| 1269 | 3.6.1.2.6.3 | Elementos estruturais principais; | 1d | 2026-09-03 A | 2026-09-03 | 1265 | 33% | 0.67d | 2026-09-03 | 2026-09-03 | 1d | 5d |
| 1270 | 3.6.1.2.6.4 | Elementos de vedação internos e externos; | 1d | 2026-09-03 A | 2026-09-03 | 1265 | 33% | 0.67d | 2026-09-03 | 2026-09-03 | 1d | 5d |
| 1271 | 3.6.1.2.6.5 | Esquadrias; | 1d | 2026-09-03 | 2026-09-03 | 1265 |  |  | 2026-09-03 | 2026-09-03 | 1d | 5d |
| 1272 | 3.6.1.2.6.6 | Identificação dos ambientes; | 1d | 2026-09-03 A | 2026-09-03 | 1265 | 33% | 0.67d | 2026-09-03 | 2026-09-03 | 1d | 5d |
| 1273 | 3.6.1.2.6.7 | Cobertura com indicação da respectiva inclinação; | 1d | 2026-09-03 A | 2026-09-03 | 1265 | 33% | 0.67d | 2026-09-03 | 2026-09-03 | 1d | 5d |
| 1274 | 3.6.1.2.6.8 | Cotas gerais; | 1d | 2026-09-03 A | 2026-09-03 | 1265 | 33% | 0.67d | 2026-09-03 | 2026-09-03 | 1d | 5d |
| 1275 | 3.6.1.2.6.9 | Cotas de nível principal; | 1d | 2026-09-03 A | 2026-09-03 | 1265 | 33% | 0.67d | 2026-09-03 | 2026-09-03 | 1d | 5d |
| 1276 | 3.6.1.2.6.10 | Eixos do projeto; | 1d | 2026-09-03 A | 2026-09-03 | 1265 | 33% | 0.67d | 2026-09-03 | 2026-09-03 | 1d | 5d |
| 1277 | 3.6.1.2.6.11 | Relevo construído; | 1d | 2026-09-03 | 2026-09-03 | 1265 |  |  | 2026-09-03 | 2026-09-03 | 1d | 5d |
| 1278 | 3.6.1.2.6.12 | Projeção da topografia natural | 1d | 2026-09-03 | 2026-09-03 | 1265 |  |  | 2026-09-03 | 2026-09-03 | 1d | 0d |

| ID | WBS | Task | Duration | Start | Finish | Predecessors | Complete | Remaining | Baseline start | Baseline finish | Baseline duration | Total slack | Free slack |
| --- | --- | --- | --- | --- | --- | --- | --- | --- | --- | --- | --- | --- | --- |
| 1279 | 3.6.1.2.7 | **Elevações** | 1d | 2026-09-04 A | 2026-09-04 |  | 26% | 0.74d | 2026-09-04 | 2026-09-04 | 1d | 0d |  |
| 1280 | 3.6.1.2.7.1 | Indicar simbologias de representação gráfica, conforme NBR 6492:2021; | 1d | 2026-09-04 A | 2026-09-04 | 1278 | 33% | 0.67d | 2026-09-04 | 2026-09-04 | 1d | 0d |  |
| 1281 | 3.6.1.2.7.2 | Indicação de Escala; | 1d | 2026-09-04 | 2026-09-04 | 1278 |  |  | 2026-09-04 | 2026-09-04 | 1d | 0d |  |
| 1282 | 3.6.1.2.7.3 | Elementos estruturais principais; | 1d | 2026-09-04 A | 2026-09-04 | 1278 | 33% | 0.67d | 2026-09-04 | 2026-09-04 | 1d | 0d |  |
| 1283 | 3.6.1.2.7.4 | Elementos de vedação internos e externos; | 1d | 2026-09-04 A | 2026-09-04 | 1278 | 33% | 0.67d | 2026-09-04 | 2026-09-04 | 1d | 0d |  |
| 1284 | 3.6.1.2.7.5 | Esquadrias (sem código e sem quadro); | 1d | 2026-09-04 A | 2026-09-04 | 1278 | 33% | 0.67d | 2026-09-04 | 2026-09-04 | 1d | 0d |  |
| 1285 | 3.6.1.2.7.6 | Relevo construído; | 1d | 2026-09-04 | 2026-09-04 | 1278 |  |  | 2026-09-04 | 2026-09-04 | 1d | 0d |  |
| 1286 | 3.6.1.2.7.7 | Cotas gerais; | 1d | 2026-09-04 A | 2026-09-04 | 1278 | 33% | 0.67d | 2026-09-04 | 2026-09-04 | 1d | 0d |  |
| 1287 | 3.6.1.2.7.8 | Cotas de nível principais; | 1d | 2026-09-04 A | 2026-09-04 | 1278 | 33% | 0.67d | 2026-09-04 | 2026-09-04 | 1d | 0d |  |
| 1288 | 3.6.1.2.7.9 | Cobertura (quando aparente). | 1d | 2026-09-04 A | 2026-09-04 | 1278 | 33% | 0.67d | 2026-09-04 | 2026-09-04 | 1d | 0d |  |
| 1289 | 3.6.1.2.8 | Memorial Descritivo | 4d | 2026-09-08 | 2026-09-11 | 1279 |  |  | 2026-09-08 | 2026-09-11 | 4d | 0d |  |
| 1290 | 3.6.2 | Aprovação de Conformidade | 3d | 2026-09-09 | 2026-09-11 | 1289FF |  |  | 2026-09-09 | 2026-09-11 | 3d | 0d |  |
| 1291 | 3.6.3 | Material para entrega ao contrato | 3d | 2026-09-09 | 2026-09-11 | 1289FF |  |  | 2026-09-09 | 2026-09-11 | 3d | 0d |  |
| 1292 | 3.6.4 | **Engenharia** | 34d | 2026-07-27 A | 2026-09-11 |  | 5% | 32.3d | 2026-07-27 | 2026-09-11 | 34d | 0d |  |
| 1293 | 3.6.4.1 | **Estrutura** | 34d | 2026-07-27 A | 2026-09-11 |  | 3% | 32.95d | 2026-07-27 | 2026-09-11 | 34d | 0d |  |
| 1294 | 3.6.4.1.1 | **LOD 100 — Premissas, diretrizes e interfaces** | 7d | 2026-07-27 A | 2026-08-04 |  | 25% | 5.24d | 2026-07-27 | 2026-08-04 | 7d | 27d |  |
| 1295 | 3.6.4.1.1.1 | Levantamento de tipos de cargas globais estimadas (permanentes, acidentais, vento e especiais). | 2d | 2026-07-27 A | 2026-07-28 | 1191SS-9d | 80% | 0.41d | 2026-07-27 | 2026-07-28 | 2d | 32d |  |
| 1296 | 3.6.4.1.1.2 | Estudo volumétrico com modulação inicial de pilares, vigas e lajes. Entendendo vãos e desafios | 5d | 2026-07-27 A | 2026-07-31 | 1191SS-9d | 32% | 3.41d | 2026-07-27 | 2026-07-31 | 5d | 29d |  |
| 1297 | 3.6.4.1.1.3 | Localização aproximada de elementos estruturais principais. Avaliando vãos e estudando posições | 2d | 2026-07-27 A | 2026-07-28 | 1191SS-9d | 80% | 0.41d | 2026-07-27 | 2026-07-28 | 2d | 0d |  |
| 1298 | 3.6.4.1.1.4 | Estudo de viabilidade técnica e construtiva. | 3d | 2026-07-29 | 2026-07-31 | 1297 |  |  | 2026-07-29 | 2026-07-31 | 3d | 0d |  |
| 1299 | 3.6.4.1.1.5 | Definição preliminar do sistema estrutural (concreto armado, metálica ou mista). | 3d | 2026-07-29 | 2026-07-31 | 1297 |  |  | 2026-07-29 | 2026-07-31 | 3d | 29d |  |
| 1300 | 3.6.4.1.1.6 | Estimativa preliminar de tipologias de fundações (sapatas, blocos, estacas). | 2d | 2026-08-03 | 2026-08-04 | 1298 |  |  | 2026-08-03 | 2026-08-04 | 2d | 27d |  |
| 1301 | 3.6.4.1.1.7 | Previsão de áreas técnicas, casas de máquinas, reservatórios elevados e estrutura de cobertura. | 2d | 2026-08-03 | 2026-08-04 | 1298 |  |  | 2026-08-03 | 2026-08-04 | 2d | 0d |  |
| 1302 | 3.6.4.1.2 | **LOD 200 — Validação interdisciplinar e solução preliminar** | 20d | 2026-08-05 | 2026-09-01 |  |  |  | 2026-08-05 | 2026-09-01 | 20d | 0d |  |
| 1303 | 3.6.4.1.2.1 | Lista preliminar de cargas e ações para dimensionamento. | 5d | 2026-08-05 | 2026-08-11 | 1301 |  |  | 2026-08-05 | 2026-08-11 | 5d | 0d |  |
| 1304 | 3.6.4.1.2.2 | Definição preliminar de alturas de pavimentos e níveis de fundação. | 5d | 2026-08-05 | 2026-08-11 | 1301 |  |  | 2026-08-05 | 2026-08-11 | 5d | 22d |  |
| 1305 | 3.6.4.1.2.3 | Indicação aproximada do sistema de cobertura (tesouras, treliças, vigamento metálico ou concreto). | 5d | 2026-08-05 | 2026-08-11 | 1301 |  |  | 2026-08-05 | 2026-08-11 | 5d | 22d |  |
| 1306 | 3.6.4.1.2.4 | Modelagem genérica de pilares, vigas, lajes e fundações. | 5d | 2026-08-12 | 2026-08-18 | 1303 |  |  | 2026-08-12 | 2026-08-18 | 5d | 17d |  |
| 1307 | 3.6.4.1.2.5 | Traçado preliminar de elementos especiais (escadas, rampas estruturais, reservatórios). | 5d | 2026-08-12 | 2026-08-18 | 1303 |  |  | 2026-08-12 | 2026-08-18 | 5d | 12d | 0d |
| 1308 | 3.6.4.1.2.6 | Arquivo IFC, plantas de forma e planta de locação | 5d | 2026-08-12 | 2026-08-18 | 1303 |  |  | 2026-08-12 | 2026-08-18 | 5d | 0d |  |
| 1309 | 3.6.4.1.2.7 | Inserção de fundações com tipologia e dimensões preliminares. | 5d | 2026-08-19 | 2026-08-25 | 1307 |  |  | 2026-08-19 | 2026-08-25 | 5d | 12d |  |
| 1310 | 3.6.4.1.2.8 | Compatibilização inicial com arquitetura e demais disciplinas. | 5d | 2026-08-19 | 2026-08-25 | 1308 |  |  | 2026-08-19 | 2026-08-25 | 5d | 12d |  |
| 1311 | 3.6.4.1.2.9 | Indicação de passagens de infraestrutura (shafts, aberturas em lajes e vigas). | 5d | 2026-08-19 | 2026-08-25 | 1308 |  |  | 2026-08-19 | 2026-08-25 | 5d | 12d |  |
| 1312 | 3.6.4.1.2.10 | Modelagem assertiva de elementos principais com dimensões aproximadas (largura, altura, espessura). | 10d | 2026-08-19 | 2026-09-01 | 1308 |  |  | 2026-08-19 | 2026-09-01 | 10d | 0d |  |
| 1313 | 3.6.4.1.2.11 | Modelagem estimada de armaduras principais (em nível de concepção). | 5d | 2026-08-26 | 2026-09-01 | 1312FF |  |  | 2026-08-26 | 2026-09-01 | 5d | 0d |  |

| ID | WBS | Task | Duration | Start | Finish | Predecessors | Complete | Remaining | Baseline start | Baseline finish | Baseline duration | Total slack | Free slack |
| --- | --- | --- | --- | --- | --- | --- | --- | --- | --- | --- | --- | --- | --- |
| 1314 | 3.6.4.1.3 | **LOD 300 - Consolidação e documentação de entrega** | 7d | 2026-09-02 | 2026-09-11 |  |  |  | 2026-09-02 | 2026-09-11 | 7d | 0d |  |
| 1315 | 3.6.4.1.3.1 | Indicação de níveis e cotas exatas. | 7d | 2026-09-02 | 2026-09-11 | 1312, 1313 |  |  | 2026-09-02 | 2026-09-11 | 7d | 0d |  |
| 1316 | 3.6.4.1.3.2 | Quadro de cargas atualizado. | 7d | 2026-09-02 | 2026-09-11 | 1312, 1313 |  |  | 2026-09-02 | 2026-09-11 | 7d | 0d |  |
| 1317 | 3.6.4.1.3.3 | Dimensionamento final de fundações conforme sondagem e cálculo estrutural. | 7d | 2026-09-02 | 2026-09-11 | 1312, 1313 |  |  | 2026-09-02 | 2026-09-11 | 7d | 0d |  |
| 1318 | 3.6.4.1.3.4 | Definição final dos elementos da cobertura (treliças, vigas, chapas, purlins). | 7d | 2026-09-02 | 2026-09-11 | 1312, 1313 |  |  | 2026-09-02 | 2026-09-11 | 7d | 0d |  |
| 1319 | 3.6.4.1.3.5 | Compatibilização final com arquitetura e instalações (aberturas, embutidos e passagens). | 7d | 2026-09-02 | 2026-09-11 | 1312, 1313 |  |  | 2026-09-02 | 2026-09-11 | 7d | 0d |  |
| 1320 | 3.6.4.1.3.6 | Modelagem definitiva de pilares, vigas, lajes, blocos, sapatas e estacas. | 7d | 2026-09-02 | 2026-09-11 | 1312, 1313 |  |  | 2026-09-02 | 2026-09-11 | 7d | 0d |  |
| 1321 | 3.6.4.1.3.7 | Planta estrutural com todos os elementos identificados. | 7d | 2026-09-02 | 2026-09-11 | 1312, 1313 |  |  | 2026-09-02 | 2026-09-11 | 7d | 0d |  |
| 1322 | 3.6.4.1.3.8 | Memorial descritivo contendo: objetivos, justificativa, descrição do sistema, concepção de fundações/cobertura, especificações e quadro de cargas. | 7d | 2026-09-02 | 2026-09-11 | 1312, 1313 |  |  | 2026-09-02 | 2026-09-11 | 7d | 0d |  |
| 1323 | 3.6.4.1.3.9 | Normas técnicas utilizadas (NBR 6118, 6120, 6122, 8800, etc.). | 7d | 2026-09-02 | 2026-09-11 | 1312, 1313 |  |  | 2026-09-02 | 2026-09-11 | 7d | 0d |  |
| 1324 | 3.6.4.1.3.10 | Consolidar documentação de entrega e emissão formal da disciplina | 7d | 2026-09-02 | 2026-09-11 | 1312, 1313 |  |  | 2026-09-02 | 2026-09-11 | 7d | 0d |  |
| 1325 | 3.6.4.1.4 | Aprovação de Conformidade | 3d | 2026-09-09 | 2026-09-11 | 1314FF |  |  | 2026-09-09 | 2026-09-11 | 3d | 0d |  |
| 1326 | 3.6.4.1.5 | Material para entrega ao contrato | 3d | 2026-09-09 | 2026-09-11 | 1314FF |  |  | 2026-09-09 | 2026-09-11 | 3d | 0d |  |
| 1327 | 3.6.4.2 | **Hidrossanitário** | 34d | 2026-07-27 A | 2026-09-11 |  | 6% | 32d | 2026-07-27 | 2026-09-11 | 34d | 0d |  |
| 1328 | 3.6.4.2.1 | **LOD 100 — Premissas, diretrizes e interfaces** | 8d | 2026-07-27 A | 2026-08-05 |  | 22% | 6.25d | 2026-07-27 | 2026-08-05 | 8d | 26d |  |
| 1329 | 3.6.4.2.1.1 | Memorial preliminar | 8d | 2026-07-27 A | 2026-08-05 | 1191SS-9d | 20% | 6.41d | 2026-07-27 | 2026-08-05 | 8d | 26d |  |
| 1330 | 3.6.4.2.1.2 | Indicação de áreas técnicas | 6d | 2026-07-27 A | 2026-08-03 | 1191SS-9d | 27% | 4.41d | 2026-07-27 | 2026-08-03 | 6d | 28d |  |
| 1331 | 3.6.4.2.1.3 | Planta baixa com traçado conceitual | 6d | 2026-07-27 A | 2026-08-03 | 1191SS-9d | 27% | 4.41d | 2026-07-27 | 2026-08-03 | 6d | 28d |  |
| 1332 | 3.6.4.2.1.4 | Pontos de consumo principais e coletas sanitárias | 6d | 2026-07-27 A | 2026-08-03 | 1191SS-9d | 27% | 4.41d | 2026-07-27 | 2026-08-03 | 6d | 28d |  |
| 1333 | 3.6.4.2.1.5 | Classificação de uso | 8d | 2026-07-27 A | 2026-08-05 | 1191SS-9d | 20% | 6.41d | 2026-07-27 | 2026-08-05 | 8d | 26d |  |
| 1334 | 3.6.4.2.1.6 | Diretrizes de espaço | 8d | 2026-07-27 A | 2026-08-05 | 1191SS-9d | 20% | 6.41d | 2026-07-27 | 2026-08-05 | 8d | 26d |  |
| 1335 | 3.6.4.2.1.7 | Estimativa de demanda ou população de uso | 8d | 2026-07-27 A | 2026-08-05 | 1191SS-9d | 20% | 6.41d | 2026-07-27 | 2026-08-05 | 8d | 26d |  |
| 1336 | 3.6.4.2.1.8 | Levantamento de elementos especiais dentre outras disciplinas de Engenharia e Arquitetura | 8d | 2026-07-27 A | 2026-08-05 | 1191SS-9d | 20% | 6.41d | 2026-07-27 | 2026-08-05 | 8d | 0d |  |
| 1337 | 3.6.4.2.2 | **LOD 200 — Validação interdisciplinar e solução preliminar** | 20d | 2026-08-06 | 2026-09-02 |  |  |  | 2026-08-06 | 2026-09-02 | 20d | 0d |  |
| 1338 | 3.6.4.2.2.1 | Critérios normativos adotados (ABNT, concessionárias, etc.) | 20d | 2026-08-06 | 2026-09-02 | 1336 |  |  | 2026-08-06 | 2026-09-02 | 20d | 6d | 0d |
| 1339 | 3.6.4.2.2.2 | Informações de demanda na concessionária (DPE ou AVT Aviso de Viabilidade Técnica) | 20d | 2026-08-06 | 2026-09-02 | 1338SS |  |  | 2026-08-06 | 2026-09-02 | 20d | 6d |  |
| 1340 | 3.6.4.2.2.3 | Recebimento e Análise de Sondagem (permeabilidade ou percolação) | 20d | 2026-08-06 | 2026-09-02 | 1338SS |  |  | 2026-08-06 | 2026-09-02 | 20d | 6d |  |
| 1341 | 3.6.4.2.2.4 | Recebimento e Análise de Topografia | 20d | 2026-08-06 | 2026-09-02 | 1338SS |  |  | 2026-08-06 | 2026-09-02 | 20d | 6d |  |
| 1342 | 3.6.4.2.2.5 | Estudo de viabilidade técnica, econômica e ambiental | 20d | 2026-08-06 | 2026-09-02 | 1338SS |  |  | 2026-08-06 | 2026-09-02 | 20d | 6d |  |
| 1343 | 3.6.4.2.2.6 | Lista preliminar de sistemas envolvidos. | 20d | 2026-08-06 | 2026-09-02 | 1336 |  |  | 2026-08-06 | 2026-09-02 | 20d | 6d |  |
| 1344 | 3.6.4.2.2.7 | Planta baixa e cortes estimada contendo: - Traçado preliminar de barrilete, ramais, colunas - Diâmetros estimados - Localização aproximada das bombas e unidades de tratamento e reúso - Localização do ramal predial de água e esgoto - Localização aproximada | 20d | 2026-08-06 | 2026-09-02 | 1336 |  |  | 2026-08-06 | 2026-09-02 | 20d | 0d |  |

| ID | WBS | Task | Duration | Start | Finish | Predecessors | Complete | Remaining | Baseline start | Baseline finish | Baseline duration | Total slack | Text3 |
| --- | --- | --- | --- | --- | --- | --- | --- | --- | --- | --- | --- | --- | --- |
| 1345 | 3.6.4.2.3 | **LOD 300 - Consolidação e documentação de entrega** | 6d | 2026-09-03 | 2026-09-11 |  |  |  | 2026-09-03 | 2026-09-11 | 6d | 0d |  |
| 1346 | 3.6.4.2.3.1 | Planta, corte e detalhe isométrico contendo: - Modelagem detalhada com diâmetros, cotas e inclinações definitivas (barriletes, colunas, ramais) - Quantitativos e especificação técnica dos materiais (tubos, conexões, reservatórios, registros e válvulas com | 6d | 2026-09-03 | 2026-09-11 | 1344 |  |  | 2026-09-03 | 2026-09-11 | 6d | 0d |  |
| 1347 | 3.6.4.2.3.2 | Memorial descritivo | 3d | 2026-09-09 | 2026-09-11 | 1346FF |  |  | 2026-09-09 | 2026-09-11 | 3d | 0d |  |
| 1348 | 3.6.4.2.3.3 | Memória de cálculo (pressão, vazão, diâmetros, perda de carga). | 3d | 2026-09-09 | 2026-09-11 | 1344, 1346FF |  |  | 2026-09-09 | 2026-09-11 | 3d | 0d |  |
| 1349 | 3.6.4.2.4 | Aprovação de Conformidade | 3d | 2026-09-09 | 2026-09-11 | 1345FF |  |  | 2026-09-09 | 2026-09-11 | 3d | 0d |  |
| 1350 | 3.6.4.2.5 | Material para entrega ao contrato | 3d | 2026-09-09 | 2026-09-11 | 1345FF |  |  | 2026-09-09 | 2026-09-11 | 3d | 0d |  |
| 1351 | 3.6.4.3 | **AVAC** | 34d | 2026-07-27 A | 2026-09-11 |  | 5% | 32.33d | 2026-07-27 | 2026-09-11 | 34d | 0d |  |
| 1352 | 3.6.4.3.1 | **LOD 100 — Premissas, diretrizes e interfaces** | 20d | 2026-07-27 A | 2026-08-21 |  | 13% | 17.35d | 2026-07-27 | 2026-08-21 | 20d | 14d |  |
| 1353 | 3.6.4.3.1.1 | Estimativa de carga térmica por ambiente. | 10d | 2026-07-27 A | 2026-08-07 | 1191SS-9d | 16% | 8.41d | 2026-07-27 | 2026-08-07 | 10d | 24d |  |
| 1354 | 3.6.4.3.1.2 | Localização preliminar de unidades de tratamento de ar, condensadoras e exaustores. | 10d | 2026-07-27 A | 2026-08-07 | 1191SS-9d | 16% | 8.41d | 2026-07-27 | 2026-08-07 | 10d | 24d |  |
| 1355 | 3.6.4.3.1.3 | Pontos locação para seus elementos no projeto arquitetônico. | 10d | 2026-07-27 A | 2026-08-07 | 1191SS-9d | 16% | 8.41d | 2026-07-27 | 2026-08-07 | 10d | 0d |  |
| 1356 | 3.6.4.3.1.4 | Estudo de viabilidade e rotas principais de distribuição de ar. | 10d | 2026-07-27 A | 2026-08-07 | 1191SS-9d | 16% | 8.41d | 2026-07-27 | 2026-08-07 | 10d | 24d |  |
| 1357 | 3.6.4.3.1.5 | Reserva de espaços técnicos e shafts. | 10d | 2026-07-27 A | 2026-08-07 | 1191SS-9d | 16% | 8.41d | 2026-07-27 | 2026-08-07 | 10d | 0d |  |
| 1358 | 3.6.4.3.1.6 | Levantamento de cargas especiais provenientes de outras disciplinas. | 10d | 2026-08-10 | 2026-08-21 | 1380, 1392 |  |  | 2026-08-10 | 2026-08-21 | 10d | 14d |  |
| 1359 | 3.6.4.3.2 | **LOD 200 — Validação interdisciplinar e solução preliminar** | 24d | 2026-08-10 | 2026-09-11 |  |  |  | 2026-08-10 | 2026-09-11 | 24d | 0d |  |
| 1360 | 3.6.4.3.2.1 | Lista preliminar de sistemas HVAC envolvidos (expansão direta, VRF, chillers, ventilação, exaustão). | 24d | 2026-08-10 | 2026-09-11 | 1357 |  |  | 2026-08-10 | 2026-09-11 | 24d | 0d |  |
| 1361 | 3.6.4.3.2.2 | Planta baixa estimada contendo: pontos de insuflamento e retorno. | 24d | 2026-08-10 | 2026-09-11 | 1357 |  |  | 2026-08-10 | 2026-09-11 | 24d | 0d |  |
| 1362 | 3.6.4.3.2.3 | Rotas iniciais de dutos, tubulações e drenos. | 24d | 2026-08-10 | 2026-09-11 | 1357 |  |  | 2026-08-10 | 2026-09-11 | 24d | 0d |  |
| 1363 | 3.6.4.3.2.4 | Planta baixa estimada contendo: unidades internas e externas com posição preliminar. | 24d | 2026-08-10 | 2026-09-11 | 1357 |  |  | 2026-08-10 | 2026-09-11 | 24d | 0d |  |
| 1364 | 3.6.4.3.3 | Aprovação de Conformidade | 3d | 2026-09-09 | 2026-09-11 | 1359FF |  |  | 2026-09-09 | 2026-09-11 | 3d | 0d |  |
| 1365 | 3.6.4.3.4 | Material para entrega ao contrato | 3d | 2026-09-09 | 2026-09-11 | 1359FF |  |  | 2026-09-09 | 2026-09-11 | 3d | 0d |  |
| 1366 | 3.6.4.4 | **PCI (Incêndio)** | 34d | 2026-07-27 A | 2026-09-11 |  | 4% | 32.5d | 2026-07-27 | 2026-09-11 | 34d | 0d |  |
| 1367 | 3.6.4.4.1 | **LOD 100 — Premissas, diretrizes e interfaces** | 10d | 2026-07-27 A | 2026-08-07 |  | 16% | 8.41d | 2026-07-27 | 2026-08-07 | 10d | 24d | ܁# |
| 1368 | 3.6.4.4.1.1 | Estudo e avaliação da arquitetura atendendo as normas competentes de PCI | 10d | 2026-07-27 A | 2026-08-07 | 1191SS-9d | 16% | 8.41d | 2026-07-27 | 2026-08-07 | 10d | 24d |  |
| 1369 | 3.6.4.4.1.2 | Avaliação do espaço para CMI e Central de Gás. | 10d | 2026-07-27 A | 2026-08-07 | 1191SS-9d | 16% | 8.41d | 2026-07-27 | 2026-08-07 | 10d | 24d |  |
| 1370 | 3.6.4.4.1.3 | Pontos locação para seus elementos no projeto arquitetônico | 10d | 2026-07-27 A | 2026-08-07 | 1191SS-9d | 16% | 8.41d | 2026-07-27 | 2026-08-07 | 10d | 0d |  |

| ID | WBS | Task | Duration | Start | Finish | Predecessors | Complete | Remaining | Baseline start | Baseline finish | Baseline duration | Total slack | Free slack | Text3 |
| --- | --- | --- | --- | --- | --- | --- | --- | --- | --- | --- | --- | --- | --- | --- |
| 1371 | 3.6.4.4.2 | **LOD 200 — Validação interdisciplinar e solução preliminar** | 24d | 2026-08-10 | 2026-09-11 |  |  |  | 2026-08-10 | 2026-09-11 | 24d | 0d |  | ܁# |
| 1372 | 3.6.4.4.2.1 | Definição da classificação da edificação e o risco de incêndio | 24d | 2026-08-10 | 2026-09-11 | 1370 |  |  | 2026-08-10 | 2026-09-11 | 24d | 0d |  |  |
| 1373 | 3.6.4.4.2.2 | Cálculos pré-dimensionados dos extintores, hidrantes e bomba. | 24d | 2026-08-10 | 2026-09-11 | 1370 |  |  | 2026-08-10 | 2026-09-11 | 24d | 0d |  |  |
| 1374 | 3.6.4.4.2.3 | Avaliação das rotas de fuga, ventilação de CMI e outros elementos de importância para as normas de PCI | 24d | 2026-08-10 | 2026-09-11 | 1370 |  |  | 2026-08-10 | 2026-09-11 | 24d | 0d |  |  |
| 1375 | 3.6.4.4.3 | Aprovação de Conformidade | 3d | 2026-09-09 | 2026-09-11 | 1371FF |  |  | 2026-09-09 | 2026-09-11 | 3d | 0d |  |  |
| 1376 | 3.6.4.4.4 | Material para entrega ao contrato | 3d | 2026-09-09 | 2026-09-11 | 1371FF |  |  | 2026-09-09 | 2026-09-11 | 3d | 0d |  |  |
| 1377 | 3.6.4.5 | **Elétrica Baixa Tensão** | 34d | 2026-07-27 A | 2026-09-11 |  | 4% | 32.52d | 2026-07-27 | 2026-09-11 | 34d | 0d |  |  |
| 1378 | 3.6.4.5.1 | **LOD 100 — Concepção** | 14d | 2026-07-27 A | 2026-08-13 |  | 21% | 11.03d | 2026-07-27 | 2026-08-13 | 14d | 20d |  |  |
| 1379 | 3.6.4.5.1.1 | Avaliação e Diretrizes Técnicas para Arquitetura | 4d | 2026-07-27 A | 2026-07-30 | 1191SS-9d | 40% | 2.41d | 2026-07-27 | 2026-07-30 | 4d | 30d |  |  |
| 1380 | 3.6.4.5.1.2 | Estimativa de Cargas e Demanda | 7d | 2026-07-27 A | 2026-08-04 | 1191SS-9d | 23% | 5.41d | 2026-07-27 | 2026-08-04 | 7d | 7d | 3d |  |
| 1381 | 3.6.4.5.1.3 | Levantamento de Equipamentos de Outras Disciplinas | 4d | 2026-08-10 | 2026-08-13 | 1355, 1370 |  |  | 2026-08-10 | 2026-08-13 | 4d | 0d |  |  |
| 1382 | 3.6.4.5.2 | **LOD 200 — Anteprojeto** | 16d | 2026-08-14 | 2026-09-04 |  |  |  | 2026-08-14 | 2026-09-04 | 16d | 0d |  |  |
| 1383 | 3.6.4.5.2.1 | TUGs Estimados | 16d | 2026-08-14 | 2026-09-04 | 1380, 1381 |  |  | 2026-08-14 | 2026-09-04 | 16d | 0d |  |  |
| 1384 | 3.6.4.5.2.2 | Pontos de Luz Estimados | 16d | 2026-08-14 | 2026-09-04 | 1380, 1381 |  |  | 2026-08-14 | 2026-09-04 | 16d | 0d |  |  |
| 1385 | 3.6.4.5.2.3 | TUEs e Quadros Estimados | 16d | 2026-08-14 | 2026-09-04 | 1380, 1381 |  |  | 2026-08-14 | 2026-09-04 | 16d | 0d |  |  |
| 1386 | 3.6.4.5.3 | LOD 300 - Consolidação e documentação de entrega | 4d | 2026-09-08 | 2026-09-11 | 1382 |  |  | 2026-09-08 | 2026-09-11 | 4d | 0d |  |  |
| 1387 | 3.6.4.5.4 | Aprovação de Conformidade | 3d | 2026-09-09 | 2026-09-11 | 1386FF |  |  | 2026-09-09 | 2026-09-11 | 3d | 0d |  |  |
| 1388 | 3.6.4.5.5 | Material para entrega ao contrato | 3d | 2026-09-09 | 2026-09-11 | 1386FF |  |  | 2026-09-09 | 2026-09-11 | 3d | 0d |  |  |
| 1389 | 3.6.4.6 | **Telecom** | 34d | 2026-07-27 A | 2026-09-11 |  | 7% | 31.68d | 2026-07-27 | 2026-09-11 | 34d | 0d |  |  |
| 1390 | 3.6.4.6.1 | **LOD 100 — Concepção** | 10d | 2026-07-27 A | 2026-08-07 |  | 16% | 8.41d | 2026-07-27 | 2026-08-07 | 10d | 24d |  |  |
| 1391 | 3.6.4.6.1.1 | Avaliação e Diretrizes Técnicas para Arquitetura | 10d | 2026-07-27 A | 2026-08-07 | 1191SS-9d | 16% | 8.41d | 2026-07-27 | 2026-08-07 | 10d | 24d |  |  |
| 1392 | 3.6.4.6.1.2 | Estimativa de Demanda de Telecomunicações | 10d | 2026-07-27 A | 2026-08-07 | 1191SS-9d | 16% | 8.41d | 2026-07-27 | 2026-08-07 | 10d | 14d | 0d |  |
| 1393 | 3.6.4.6.1.3 | Levantamento de Equipamentos e Interfaces com Outras Disciplinas | 10d | 2026-07-27 A | 2026-08-07 | 1191SS-9d | 16% | 8.41d | 2026-07-27 | 2026-08-07 | 10d | 0d |  |  |
| 1394 | 3.6.4.6.2 | **LOD 200 — Anteprojeto** | 20d | 2026-08-10 | 2026-09-04 |  |  |  | 2026-08-10 | 2026-09-04 | 20d | 0d |  |  |
| 1395 | 3.6.4.6.2.1 | Pontos de Telecomunicações Estimados (Rede, Voz, CFTV e Demais Sistemas) | 10d | 2026-08-10 | 2026-08-21 | 1393 |  |  | 2026-08-10 | 2026-08-21 | 10d | 0d |  |  |
| 1396 | 3.6.4.6.2.2 | Racks Estimados | 10d | 2026-08-10 | 2026-08-21 | 1393 |  |  | 2026-08-10 | 2026-08-21 | 10d | 0d |  |  |
| 1397 | 3.6.4.6.2.3 | Infraestrutura de Telecomunicações Preliminar | 10d | 2026-08-24 | 2026-09-04 | 1395, 1396 |  |  | 2026-08-24 | 2026-09-04 | 10d | 0d |  |  |
| 1398 | 3.6.4.6.3 | LOD 300 - Consolidação e documentação de entrega | 4d | 2026-09-08 | 2026-09-11 | 1394 |  |  | 2026-09-08 | 2026-09-11 | 4d | 0d |  |  |
| 1399 | 3.6.4.6.4 | Aprovação de Conformidade | 3d | 2026-09-09 | 2026-09-11 | 1398FF |  |  | 2026-09-09 | 2026-09-11 | 3d | 0d |  |  |
| 1400 | 3.6.4.6.5 | Material para entrega ao contrato | 3d | 2026-09-09 | 2026-09-11 | 1398FF |  |  | 2026-09-09 | 2026-09-11 | 3d | 0d |  |  |

| ID | WBS | Task | Duration | Start | Finish | Predecessors | Complete | Remaining | Baseline start | Baseline finish | Baseline duration | Total slack |
| --- | --- | --- | --- | --- | --- | --- | --- | --- | --- | --- | --- | --- |
| 1401 | 3.6.4.7 | **SPDA** | 34d | 2026-07-27 A | 2026-09-11 |  | 7% | 31.68d | 2026-07-27 | 2026-09-11 | 34d | 0d |
| 1402 | 3.6.4.7.1 | **LOD 100 — Concepção** | 10d | 2026-07-27 A | 2026-08-07 |  | 16% | 8.41d | 2026-07-27 | 2026-08-07 | 10d | 24d |
| 1403 | 3.6.4.7.1.1 | Avaliação e Diretrizes Técnicas para Arquitetura | 10d | 2026-07-27 A | 2026-08-07 | 1191SS-9d | 16% | 8.41d | 2026-07-27 | 2026-08-07 | 10d | 24d |
| 1404 | 3.6.4.7.1.2 | Coleta de Informações da Edificação e Análise de Risco (ABNT NBR 5419-2) | 10d | 2026-07-27 A | 2026-08-07 | 1191SS-9d | 16% | 8.41d | 2026-07-27 | 2026-08-07 | 10d | 24d |
| 1405 | 3.6.4.7.1.3 | Estudo Preliminar de Necessidade e Nível de Proteção do SPDA | 10d | 2026-07-27 A | 2026-08-07 | 1191SS-9d | 16% | 8.41d | 2026-07-27 | 2026-08-07 | 10d | 0d |
| 1406 | 3.6.4.7.2 | **LOD 200 — Anteprojeto** | 20d | 2026-08-10 | 2026-09-04 |  |  |  | 2026-08-10 | 2026-09-04 | 20d | 0d |
| 1407 | 3.6.4.7.2.1 | Definição da Estratégia de Proteção e Soluções Técnicas | 10d | 2026-08-10 | 2026-08-21 | 1405 |  |  | 2026-08-10 | 2026-08-21 | 10d | 0d |
| 1408 | 3.6.4.7.2.2 | Zoneamento de Captação, Descida e Traçados Preliminares | 10d | 2026-08-24 | 2026-09-04 | 1407 |  |  | 2026-08-24 | 2026-09-04 | 10d | 4d |
| 1409 | 3.6.4.7.2.3 | Estudo de Interferências, Compatibilização e Métodos Construtivos | 10d | 2026-08-24 | 2026-09-04 | 1407 |  |  | 2026-08-24 | 2026-09-04 | 10d | 0d |
| 1410 | 3.6.4.7.3 | LOD 300 - Consolidação e documentação de entrega | 4d | 2026-09-08 | 2026-09-11 | 1409 |  |  | 2026-09-08 | 2026-09-11 | 4d | 0d |
| 1411 | 3.6.4.7.4 | Aprovação de Conformidade | 3d | 2026-09-09 | 2026-09-11 | 1410FF |  |  | 2026-09-09 | 2026-09-11 | 3d | 0d |
| 1412 | 3.6.4.7.5 | Material para entrega ao contrato | 3d | 2026-09-09 | 2026-09-11 | 1410FF |  |  | 2026-09-09 | 2026-09-11 | 3d | 0d |
| 1413 | 3.6.4.8 | **Energia Renovável** | 34d | 2026-07-27 A | 2026-09-11 |  | 5% | 32.38d | 2026-07-27 | 2026-09-11 | 34d | 0d |
| 1414 | 3.6.4.8.1 | **LOD 100 — Concepção** | 10d | 2026-07-27 A | 2026-08-07 |  | 16% | 8.41d | 2026-07-27 | 2026-08-07 | 10d | 24d |
| 1415 | 3.6.4.8.1.1 | Viabilidade e Premissas de Geração | 10d | 2026-07-27 A | 2026-08-07 | 1191SS-9d | 16% | 8.41d | 2026-07-27 | 2026-08-07 | 10d | 24d |
| 1416 | 3.6.4.8.1.2 | Levantamento Preliminar de Áreas e Sombreamento | 10d | 2026-07-27 A | 2026-08-07 | 1191SS-9d | 16% | 8.41d | 2026-07-27 | 2026-08-07 | 10d | 0d |
| 1417 | 3.6.4.8.1.3 | Avaliação e Diretrizes Técnicas para Arquitetônico | 10d | 2026-07-27 A | 2026-08-07 | 1191SS-9d | 16% | 8.41d | 2026-07-27 | 2026-08-07 | 10d | 24d |
| 1418 | 3.6.4.8.2 | **LOD 200 — Anteprojeto** | 20d | 2026-08-10 | 2026-09-04 |  |  |  | 2026-08-10 | 2026-09-04 | 20d | 0d |
| 1419 | 3.6.4.8.2.1 | Layout Preliminar de Módulos, Inversores e String Boxes | 20d | 2026-08-10 | 2026-09-04 | 1416 |  |  | 2026-08-10 | 2026-09-04 | 20d | 0d |
| 1420 | 3.6.4.8.2.2 | Infraestrutura e Rotas Técnicas Preliminares (DC/AC e Aterramento) | 20d | 2026-08-10 | 2026-09-04 | 1416 |  |  | 2026-08-10 | 2026-09-04 | 20d | 0d |
| 1421 | 3.6.4.8.2.3 | Critérios Preliminares de Proteção e Estimativa de Quantitativos | 20d | 2026-08-10 | 2026-09-04 | 1416 |  |  | 2026-08-10 | 2026-09-04 | 20d | 0d |
| 1422 | 3.6.4.8.3 | LOD 300 - Consolidação e documentação de entrega | 4d | 2026-09-08 | 2026-09-11 | 1418 |  |  | 2026-09-08 | 2026-09-11 | 4d | 0d |
| 1423 | 3.6.4.8.4 | Aprovação de Conformidade | 3d | 2026-09-09 | 2026-09-11 | 1422FF |  |  | 2026-09-09 | 2026-09-11 | 3d | 0d |
| 1424 | 3.6.4.8.5 | Material para entrega ao contrato | 3d | 2026-09-09 | 2026-09-11 | 1422FF |  |  | 2026-09-09 | 2026-09-11 | 3d | 0d |

| ID | WBS | Task | Duration | Start | Finish | Predecessors | Complete | Remaining | Baseline start | Baseline finish | Baseline duration | Total slack | Constraint |
| --- | --- | --- | --- | --- | --- | --- | --- | --- | --- | --- | --- | --- | --- |
| 1425 | 3.7 | **007 - Banheiro Externo** | 45d | 2026-07-10 A | 2026-09-11 |  | 16% | 37.67d | 2026-07-10 | 2026-09-11 | 0d | 0d |  |
| 1426 | 3.7.1 | **Arquitetura** | 45d | 2026-07-10 A | 2026-09-11 |  | 36% | 28.96d | 2026-07-10 | 2026-09-11 | 45d | 0d |  |
| 1427 | 3.7.1.1 | **Análise e Compatibilização (caso a gente receba o projeto e precise adequar)** | 31d | 2026-07-10 A | 2026-08-21 |  | 55% | 13.94d | 2026-07-10 | 2026-08-21 | 31d | 14d |  |
| 1428 | 3.7.1.1.1 | Conferir normas de cozinha industrial | 20d | 2026-07-10 | 2026-08-06 | 24FS+5d |  |  | 2026-07-10 | 2026-08-06 | 20d | 25d | start no earlier than 2026-06-01 |
| 1429 | 3.7.1.1.2 | Conferir e fechar alinhamento das paredes | 20d | 2026-07-10 A | 2026-08-06 A | 24FS+5d | 100% |  | 2026-07-10 | 2026-08-06 | 20d |  | start no earlier than 2026-06-01 |
| 1430 | 3.7.1.1.3 | Conferir quantidade de sanitários e cubas de acordo com os setores | 20d | 2026-07-10 A | 2026-08-06 A | 24FS+5d | 100% |  | 2026-07-10 | 2026-08-06 | 20d |  | start no earlier than 2026-06-01 |
| 1431 | 3.7.1.1.4 | Conferir layout | 20d | 2026-07-10 | 2026-08-06 | 24FS+5d |  |  | 2026-07-10 | 2026-08-06 | 20d | 25d | start no earlier than 2026-06-01 |
| 1432 | 3.7.1.1.5 | Conferir e fechar Pisos | 20d | 2026-07-10 A | 2026-08-06 A | 24FS+5d | 100% |  | 2026-07-10 | 2026-08-06 | 20d |  | start no earlier than 2026-06-01 |
| 1433 | 3.7.1.1.6 | Conferir e fechar Esquadrias | 20d | 2026-07-10 A | 2026-08-06 A | 24FS+5d | 100% |  | 2026-07-10 | 2026-08-06 | 20d |  | start no earlier than 2026-06-01 |
| 1434 | 3.7.1.1.7 | Conferir acessibilidade em rampas e sanitários | 20d | 2026-07-10 A | 2026-08-06 A | 24FS+5d | 100% |  | 2026-07-10 | 2026-08-06 | 20d |  | start no earlier than 2026-06-01 |
| 1435 | 3.7.1.1.8 | Conferir nomas técnicas para o dimensionamento dos ambientes - principalmente banheiros e circulações | 20d | 2026-07-10 A | 2026-08-06 A | 24FS+5d | 100% |  | 2026-07-10 | 2026-08-06 | 20d |  | start no earlier than 2026-06-01 |
| 1436 | 3.7.1.1.9 | Conferir normas técnicas para auditórios (se tiver) | 20d | 2026-07-10 | 2026-08-06 | 24FS+5d |  |  | 2026-07-10 | 2026-08-06 | 20d | 0d | start no earlier than 2026-06-01 |
| 1437 | 3.7.1.1.10 | Compatibilização (pedir relatório de análise de projeto para disciplinas de engenharia) | 5d | 2026-08-07 | 2026-08-13 | 1436 |  |  | 2026-08-07 | 2026-08-13 | 5d | 0d |  |
| 1438 | 3.7.1.1.11 | Compatibilizar as rotas de fulga de acordo com as solicitações de PCI | 11d | 2026-08-07 | 2026-08-21 | 1436 |  |  | 2026-08-07 | 2026-08-21 | 11d | 14d |  |
| 1439 | 3.7.1.1.12 | Comatibilizar as prumadas com as equipes de engenharia | 11d | 2026-08-07 | 2026-08-21 | 1436 |  |  | 2026-08-07 | 2026-08-21 | 11d | 14d |  |
| 1440 | 3.7.1.1.13 | Ajustar área dos ambientes conforme solicitado pela equipe de elétrica | 11d | 2026-08-07 | 2026-08-21 | 1436 |  |  | 2026-08-07 | 2026-08-21 | 11d | 14d |  |
| 1441 | 3.7.1.2 | **LOD 300 - ANTEPROJETO** | 20d | 2026-08-14 A | 2026-09-11 |  | 23% | 15.34d | 2026-08-14 | 2026-09-11 | 20d | 0d |  |
| 1442 | 3.7.1.2.1 | **Modelagem e compatibilização** | 10d | 2026-08-14 A | 2026-08-27 |  | 29% | 7.14d | 2026-08-14 | 2026-08-27 | 10d | 10d |  |
| 1443 | 3.7.1.2.1.1 | Ajustar o navegador de projeto conforme o padrão da Quanta - verificar se todas as vistas estão dentro da disciplina correta - alinahr com o líder da OS | 10d | 2026-08-14 | 2026-08-27 | 1437 |  |  | 2026-08-14 | 2026-08-27 | 10d | 10d |  |
| 1444 | 3.7.1.2.1.2 | Limpar o arquivo e transferir os padões de projeto da Quanta | 10d | 2026-08-14 | 2026-08-27 | 1437 |  |  | 2026-08-14 | 2026-08-27 | 10d | 10d |  |
| 1445 | 3.7.1.2.1.3 | Criar Worksets (em caso de arquivos colaborados) | 10d | 2026-08-14 | 2026-08-27 | 1437 |  |  | 2026-08-14 | 2026-08-27 | 10d | 10d |  |
| 1446 | 3.7.1.2.1.4 | Colocar todas as elementos em seus devidos Worksets | 10d | 2026-08-14 | 2026-08-27 | 1437 |  |  | 2026-08-14 | 2026-08-27 | 10d | 10d |  |
| 1447 | 3.7.1.2.1.5 | Fazer ajustes dos modelos para Colaboração | 10d | 2026-08-14 | 2026-08-27 | 1437 |  |  | 2026-08-14 | 2026-08-27 | 10d | 10d |  |
| 1448 | 3.7.1.2.1.6 | Mudar os pisos para o padrão da quanta (1º pavimento) | 10d | 2026-08-14 A | 2026-08-27 A | 1437 | 100% |  | 2026-08-14 | 2026-08-27 | 10d |  |  |
| 1449 | 3.7.1.2.1.7 | Mudar as parades para o padão da quanta (1º pavimento) | 10d | 2026-08-14 A | 2026-08-27 A | 1437 | 100% |  | 2026-08-14 | 2026-08-27 | 10d |  |  |
| 1450 | 3.7.1.2.1.8 | Mudar as portas para o padão da quanta (1º pavimento) | 10d | 2026-08-14 A | 2026-08-27 A | 1437 | 100% |  | 2026-08-14 | 2026-08-27 | 10d |  |  |
| 1451 | 3.7.1.2.1.9 | Mudar as soleiras para o padão da quanta | 10d | 2026-08-14 A | 2026-08-27 A | 1437 | 100% |  | 2026-08-14 | 2026-08-27 | 10d |  |  |
| 1452 | 3.7.1.2.1.10 | Mudar as bancadas para o padão da Quanta (1º pavimento) | 10d | 2026-08-14 A | 2026-08-27 A | 1437 | 100% |  | 2026-08-14 | 2026-08-27 | 10d |  |  |
| 1453 | 3.7.1.2.1.11 | Mudar metais para padrão da Quanta (1º pavimento) | 10d | 2026-08-14 A | 2026-08-27 A | 1437 | 100% |  | 2026-08-14 | 2026-08-27 | 10d |  |  |
| 1454 | 3.7.1.2.1.12 | Mudar demais acabamentos para padrão o padrão da Quanta | 10d | 2026-08-14 A | 2026-08-27 A | 1437 | 100% |  | 2026-08-14 | 2026-08-27 | 10d |  |  |
| 1455 | 3.7.1.2.1.13 | Ajustar ralos das áreas molhadas (1º pavimento) | 10d | 2026-08-14 | 2026-08-27 | 1437 |  |  | 2026-08-14 | 2026-08-27 | 10d | 10d |  |
| 1456 | 3.7.1.2.1.14 | Se vier as tomadas - excluir (1º Pavimento) | 10d | 2026-08-14 | 2026-08-27 | 1437 |  |  | 2026-08-14 | 2026-08-27 | 10d | 10d |  |
| 1457 | 3.7.1.2.1.15 | Se vier as luminárias - excluir (1° pavimento) | 10d | 2026-08-14 | 2026-08-27 | 1437 |  |  | 2026-08-14 | 2026-08-27 | 10d | 10d |  |
| 1458 | 3.7.1.2.1.16 | Inserir caixa d'água - Conferir pré dimensionamento com a engenharia | 10d | 2026-08-14 | 2026-08-27 | 1437 |  |  | 2026-08-14 | 2026-08-27 | 10d | 10d |  |
| 1459 | 3.7.1.2.1.17 | Separar camadas dos pisos - leje 10cm (1° camada), contrapiso 3cm+argamassa 2cm+rev 1cm, (2°camada) | 10d | 2026-08-14 A | 2026-08-27 A | 1437 | 100% |  | 2026-08-14 | 2026-08-27 | 10d |  |  |
| 1460 | 3.7.1.2.1.18 | Descrição dos elementos da edificação | 10d | 2026-08-14 | 2026-08-27 | 1437 |  |  | 2026-08-14 | 2026-08-27 | 10d | 10d |  |
| 1461 | 3.7.1.2.1.19 | Descrição dos componentes construtivos e materiais de construção | 10d | 2026-08-14 | 2026-08-27 | 1437 |  |  | 2026-08-14 | 2026-08-27 | 10d | 10d |  |
| 1462 | 3.7.1.2.1.20 | Lista de pranchas anexas e documentos | 10d | 2026-08-14 | 2026-08-27 | 1437 |  |  | 2026-08-14 | 2026-08-27 | 10d | 10d |  |
| 1463 | 3.7.1.2.1.21 | Vias de acesso ao conjunto, arruamento, logradouros adjacentes e calçadas com os respectivos equipamentos urbanos; | 10d | 2026-08-14 | 2026-08-27 | 1437 |  |  | 2026-08-14 | 2026-08-27 | 10d | 10d |  |
| 1464 | 3.7.1.2.1.22 | Platôs e taludes principais; | 10d | 2026-08-14 | 2026-08-27 | 1437 |  |  | 2026-08-14 | 2026-08-27 | 10d | 10d |  |
| 1465 | 3.7.1.2.1.23 | Perímetro do terreno, recuos e afastamentos; | 10d | 2026-08-14 | 2026-08-27 | 1437 |  |  | 2026-08-14 | 2026-08-27 | 10d | 10d |  |
| 1466 | 3.7.1.2.1.24 | Indicação das áreas a serem edificadas com o contorno da cobertura das edificações, estacionamentos e áreas permeáveis/impermeáveis; | 10d | 2026-08-14 | 2026-08-27 | 1437 |  |  | 2026-08-14 | 2026-08-27 | 10d | 10d |  |
| 1467 | 3.7.1.2.1.25 | Denominação das edificações, blocos ou espaços; | 10d | 2026-08-14 | 2026-08-27 | 1437 |  |  | 2026-08-14 | 2026-08-27 | 10d | 10d |  |
| 1468 | 3.7.1.2.1.26 | Cotas gerais | 10d | 2026-08-14 | 2026-08-27 | 1437 |  |  | 2026-08-14 | 2026-08-27 | 10d | 10d |  |
| 1469 | 3.7.1.2.1.27 | Cotas de nível principal. | 10d | 2026-08-14 | 2026-08-27 | 1437 |  |  | 2026-08-14 | 2026-08-27 | 10d | 10d |  |
| 1470 | 3.7.1.2.1.28 | Quadros de áreas | 10d | 2026-08-14 | 2026-08-27 | 1437 |  |  | 2026-08-14 | 2026-08-27 | 10d | 0d |  |
| 1471 | 3.7.1.2.2 | Planta com as cotas de nível projetadas e existentes | 1d | 2026-08-28 | 2026-08-28 | 1470 |  |  | 2026-08-28 | 2026-08-28 | 1d | 0d |  |

| ID | WBS | Task | Duration | Start | Finish | Predecessors | Baseline start | Baseline finish | Baseline duration | Total slack |
| --- | --- | --- | --- | --- | --- | --- | --- | --- | --- | --- |
| 1472 | 3.7.1.2.3 | **Plantas baixas (se tiver mais de um pavimento, duplicar bloco)** | 1d | 2026-08-31 | 2026-08-31 |  | 2026-08-31 | 2026-08-31 | 1d | 0d |
| 1473 | 3.7.1.2.3.1 | Indicar simbologias de representação gráfica, conforme NBR 6492:2021; | 1d | 2026-08-31 | 2026-08-31 | 1471 | 2026-08-31 | 2026-08-31 | 1d | 8d |
| 1474 | 3.7.1.2.3.2 | Compatibilização (verificar se está tudo conforme as normas e alinhar com o restante das disciplinas de engenharia) | 1d | 2026-08-31 | 2026-08-31 | 1471 | 2026-08-31 | 2026-08-31 | 1d | 8d |
| 1475 | 3.7.1.2.3.3 | Compatibilização (deixar tudo conforme padrão Quanta) | 1d | 2026-08-31 | 2026-08-31 | 1471 | 2026-08-31 | 2026-08-31 | 1d | 8d |
| 1476 | 3.7.1.2.3.4 | Indicação de Norte; | 1d | 2026-08-31 | 2026-08-31 | 1471 | 2026-08-31 | 2026-08-31 | 1d | 8d |
| 1477 | 3.7.1.2.3.5 | Indicação de Escala; | 1d | 2026-08-31 | 2026-08-31 | 1471 | 2026-08-31 | 2026-08-31 | 1d | 8d |
| 1478 | 3.7.1.2.3.6 | Indicação de Acessos; | 1d | 2026-08-31 | 2026-08-31 | 1471 | 2026-08-31 | 2026-08-31 | 1d | 8d |
| 1479 | 3.7.1.2.3.7 | Elementos de vedação internos e externos; | 1d | 2026-08-31 | 2026-08-31 | 1471 | 2026-08-31 | 2026-08-31 | 1d | 8d |
| 1480 | 3.7.1.2.3.8 | Esquadrias (sem código e sem quadro); | 1d | 2026-08-31 | 2026-08-31 | 1471 | 2026-08-31 | 2026-08-31 | 1d | 8d |
| 1481 | 3.7.1.2.3.9 | Elementos estruturais principais; | 1d | 2026-08-31 | 2026-08-31 | 1471 | 2026-08-31 | 2026-08-31 | 1d | 8d |
| 1482 | 3.7.1.2.3.10 | Identificação dos ambientes e espaços (internos e externos); | 1d | 2026-08-31 | 2026-08-31 | 1471 | 2026-08-31 | 2026-08-31 | 1d | 8d |
| 1483 | 3.7.1.2.3.11 | Espaços de circulação internos e externos; | 1d | 2026-08-31 | 2026-08-31 | 1471 | 2026-08-31 | 2026-08-31 | 1d | 8d |
| 1484 | 3.7.1.2.3.12 | Áreas de serviço, funcionais e técnicas (internos e externos); | 1d | 2026-08-31 | 2026-08-31 | 1471 | 2026-08-31 | 2026-08-31 | 1d | 8d |
| 1485 | 3.7.1.2.3.13 | Projeções de níveis superiores; | 1d | 2026-08-31 | 2026-08-31 | 1471 | 2026-08-31 | 2026-08-31 | 1d | 8d |
| 1486 | 3.7.1.2.3.14 | Cotas gerais | 1d | 2026-08-31 | 2026-08-31 | 1471 | 2026-08-31 | 2026-08-31 | 1d | 8d |
| 1487 | 3.7.1.2.3.15 | Cotas de nível principal. | 1d | 2026-08-31 | 2026-08-31 | 1471 | 2026-08-31 | 2026-08-31 | 1d | 8d |
| 1488 | 3.7.1.2.3.16 | Quadro de áreas | 1d | 2026-08-31 | 2026-08-31 | 1471 | 2026-08-31 | 2026-08-31 | 1d | 0d |
| 1489 | 3.7.1.2.4 | **Planta das coberturas** | 1d | 2026-09-01 | 2026-09-01 |  | 2026-09-01 | 2026-09-01 | 1d | 0d |
| 1490 | 3.7.1.2.4.1 | Indicação do Norte | 1d | 2026-09-01 | 2026-09-01 | 1488 | 2026-09-01 | 2026-09-01 | 1d | 7d |
| 1491 | 3.7.1.2.4.2 | Indicação de escala | 1d | 2026-09-01 | 2026-09-01 | 1488 | 2026-09-01 | 2026-09-01 | 1d | 7d |
| 1492 | 3.7.1.2.4.3 | Curvas de nível | 1d | 2026-09-01 | 2026-09-01 | 1488 | 2026-09-01 | 2026-09-01 | 1d | 7d |
| 1493 | 3.7.1.2.4.4 | Indicação de Acessos; | 1d | 2026-09-01 | 2026-09-01 | 1488 | 2026-09-01 | 2026-09-01 | 1d | 7d |
| 1494 | 3.7.1.2.4.5 | Estacionamento e áreas cobertas | 1d | 2026-09-01 | 2026-09-01 | 1488 | 2026-09-01 | 2026-09-01 | 1d | 7d |
| 1495 | 3.7.1.2.4.6 | Cobertura das edificações | 1d | 2026-09-01 | 2026-09-01 | 1488 | 2026-09-01 | 2026-09-01 | 1d | 7d |
| 1496 | 3.7.1.2.4.7 | Sentido de escoamento das águas pluviais e inclinação | 1d | 2026-09-01 | 2026-09-01 | 1488 | 2026-09-01 | 2026-09-01 | 1d | 7d |
| 1497 | 3.7.1.2.4.8 | Cotas gerais | 1d | 2026-09-01 | 2026-09-01 | 1488 | 2026-09-01 | 2026-09-01 | 1d | 7d |
| 1498 | 3.7.1.2.4.9 | Cotas de nível principal | 1d | 2026-09-01 | 2026-09-01 | 1488 | 2026-09-01 | 2026-09-01 | 1d | 0d |

| ID | WBS | Task | Duration | Start | Finish | Predecessors | Baseline start | Baseline finish | Baseline duration | Total slack |
| --- | --- | --- | --- | --- | --- | --- | --- | --- | --- | --- |
| 1499 | 3.7.1.2.5 | **Cortes longitudinais** | 1d | 2026-09-02 | 2026-09-02 |  | 2026-09-02 | 2026-09-02 | 1d | 0d |
| 1500 | 3.7.1.2.5.1 | Indicar simbologias de representação gráfica, conforme NBR 6492:2021; | 1d | 2026-09-02 | 2026-09-02 | 1498 | 2026-09-02 | 2026-09-02 | 1d | 6d |
| 1501 | 3.7.1.2.5.2 | Indicação de Escala; | 1d | 2026-09-02 | 2026-09-02 | 1498 | 2026-09-02 | 2026-09-02 | 1d | 6d |
| 1502 | 3.7.1.2.5.3 | Elementos estruturais principais; | 1d | 2026-09-02 | 2026-09-02 | 1498 | 2026-09-02 | 2026-09-02 | 1d | 6d |
| 1503 | 3.7.1.2.5.4 | Elementos de vedação internos e externos; | 1d | 2026-09-02 | 2026-09-02 | 1498 | 2026-09-02 | 2026-09-02 | 1d | 6d |
| 1504 | 3.7.1.2.5.5 | Esquadrias; | 1d | 2026-09-02 | 2026-09-02 | 1498 | 2026-09-02 | 2026-09-02 | 1d | 6d |
| 1505 | 3.7.1.2.5.6 | Identificação dos ambientes; | 1d | 2026-09-02 | 2026-09-02 | 1498 | 2026-09-02 | 2026-09-02 | 1d | 6d |
| 1506 | 3.7.1.2.5.7 | Cobertura com indicação da respectiva inclinação; | 1d | 2026-09-02 | 2026-09-02 | 1498 | 2026-09-02 | 2026-09-02 | 1d | 6d |
| 1507 | 3.7.1.2.5.8 | Cotas gerais; | 1d | 2026-09-02 | 2026-09-02 | 1498 | 2026-09-02 | 2026-09-02 | 1d | 6d |
| 1508 | 3.7.1.2.5.9 | Cotas de nível principal; | 1d | 2026-09-02 | 2026-09-02 | 1498 | 2026-09-02 | 2026-09-02 | 1d | 6d |
| 1509 | 3.7.1.2.5.10 | Eixos do projeto; | 1d | 2026-09-02 | 2026-09-02 | 1498 | 2026-09-02 | 2026-09-02 | 1d | 6d |
| 1510 | 3.7.1.2.5.11 | Relevo construído; | 1d | 2026-09-02 | 2026-09-02 | 1498 | 2026-09-02 | 2026-09-02 | 1d | 6d |
| 1511 | 3.7.1.2.5.12 | Projeção da topografia natural. | 1d | 2026-09-02 | 2026-09-02 | 1498 | 2026-09-02 | 2026-09-02 | 1d | 0d |
| 1512 | 3.7.1.2.6 | **Cortes transversais** | 1d | 2026-09-03 | 2026-09-03 |  | 2026-09-03 | 2026-09-03 | 1d | 0d |
| 1513 | 3.7.1.2.6.1 | Indicar simbologias de representação gráfica, conforme NBR 6492:2021; | 1d | 2026-09-03 | 2026-09-03 | 1511 | 2026-09-03 | 2026-09-03 | 1d | 5d |
| 1514 | 3.7.1.2.6.2 | Indicação de Escala; | 1d | 2026-09-03 | 2026-09-03 | 1511 | 2026-09-03 | 2026-09-03 | 1d | 5d |
| 1515 | 3.7.1.2.6.3 | Elementos estruturais principais; | 1d | 2026-09-03 | 2026-09-03 | 1511 | 2026-09-03 | 2026-09-03 | 1d | 5d |
| 1516 | 3.7.1.2.6.4 | Elementos de vedação internos e externos; | 1d | 2026-09-03 | 2026-09-03 | 1511 | 2026-09-03 | 2026-09-03 | 1d | 5d |
| 1517 | 3.7.1.2.6.5 | Esquadrias; | 1d | 2026-09-03 | 2026-09-03 | 1511 | 2026-09-03 | 2026-09-03 | 1d | 5d |
| 1518 | 3.7.1.2.6.6 | Identificação dos ambientes; | 1d | 2026-09-03 | 2026-09-03 | 1511 | 2026-09-03 | 2026-09-03 | 1d | 5d |
| 1519 | 3.7.1.2.6.7 | Cobertura com indicação da respectiva inclinação; | 1d | 2026-09-03 | 2026-09-03 | 1511 | 2026-09-03 | 2026-09-03 | 1d | 5d |
| 1520 | 3.7.1.2.6.8 | Cotas gerais; | 1d | 2026-09-03 | 2026-09-03 | 1511 | 2026-09-03 | 2026-09-03 | 1d | 5d |
| 1521 | 3.7.1.2.6.9 | Cotas de nível principal; | 1d | 2026-09-03 | 2026-09-03 | 1511 | 2026-09-03 | 2026-09-03 | 1d | 5d |
| 1522 | 3.7.1.2.6.10 | Eixos do projeto; | 1d | 2026-09-03 | 2026-09-03 | 1511 | 2026-09-03 | 2026-09-03 | 1d | 5d |
| 1523 | 3.7.1.2.6.11 | Relevo construído; | 1d | 2026-09-03 | 2026-09-03 | 1511 | 2026-09-03 | 2026-09-03 | 1d | 5d |
| 1524 | 3.7.1.2.6.12 | Projeção da topografia natural | 1d | 2026-09-03 | 2026-09-03 | 1511 | 2026-09-03 | 2026-09-03 | 1d | 0d |

| ID | WBS | Task | Duration | Start | Finish | Predecessors | Complete | Remaining | Baseline start | Baseline finish | Baseline duration | Total slack | Free slack |
| --- | --- | --- | --- | --- | --- | --- | --- | --- | --- | --- | --- | --- | --- |
| 1525 | 3.7.1.2.7 | **Elevações** | 1d | 2026-09-04 | 2026-09-04 |  |  |  | 2026-09-04 | 2026-09-04 | 1d | 0d |  |
| 1526 | 3.7.1.2.7.1 | Indicar simbologias de representação gráfica, conforme NBR 6492:2021; | 1d | 2026-09-04 | 2026-09-04 | 1524 |  |  | 2026-09-04 | 2026-09-04 | 1d | 0d |  |
| 1527 | 3.7.1.2.7.2 | Indicação de Escala; | 1d | 2026-09-04 | 2026-09-04 | 1524 |  |  | 2026-09-04 | 2026-09-04 | 1d | 0d |  |
| 1528 | 3.7.1.2.7.3 | Elementos estruturais principais; | 1d | 2026-09-04 | 2026-09-04 | 1524 |  |  | 2026-09-04 | 2026-09-04 | 1d | 0d |  |
| 1529 | 3.7.1.2.7.4 | Elementos de vedação internos e externos; | 1d | 2026-09-04 | 2026-09-04 | 1524 |  |  | 2026-09-04 | 2026-09-04 | 1d | 0d |  |
| 1530 | 3.7.1.2.7.5 | Esquadrias (sem código e sem quadro); | 1d | 2026-09-04 | 2026-09-04 | 1524 |  |  | 2026-09-04 | 2026-09-04 | 1d | 0d |  |
| 1531 | 3.7.1.2.7.6 | Relevo construído; | 1d | 2026-09-04 | 2026-09-04 | 1524 |  |  | 2026-09-04 | 2026-09-04 | 1d | 0d |  |
| 1532 | 3.7.1.2.7.7 | Cotas gerais; | 1d | 2026-09-04 | 2026-09-04 | 1524 |  |  | 2026-09-04 | 2026-09-04 | 1d | 0d |  |
| 1533 | 3.7.1.2.7.8 | Cotas de nível principais; | 1d | 2026-09-04 | 2026-09-04 | 1524 |  |  | 2026-09-04 | 2026-09-04 | 1d | 0d |  |
| 1534 | 3.7.1.2.7.9 | Cobertura (quando aparente). | 1d | 2026-09-04 | 2026-09-04 | 1524 |  |  | 2026-09-04 | 2026-09-04 | 1d | 0d |  |
| 1535 | 3.7.1.2.8 | Memorial Descritivo | 4d | 2026-09-08 | 2026-09-11 | 1525 |  |  | 2026-09-08 | 2026-09-11 | 4d | 0d |  |
| 1536 | 3.7.2 | Aprovação de Conformidade | 3d | 2026-09-09 | 2026-09-11 | 1535FF |  |  | 2026-09-09 | 2026-09-11 | 3d | 0d |  |
| 1537 | 3.7.3 | Material para entrega ao contrato | 3d | 2026-09-09 | 2026-09-11 | 1535FF |  |  | 2026-09-09 | 2026-09-11 | 3d | 0d |  |
| 1538 | 3.7.4 | **Engenharia** | 34d | 2026-07-27 A | 2026-09-11 |  | 5% | 32.3d | 2026-07-27 | 2026-09-11 | 34d | 0d |  |
| 1539 | 3.7.4.1 | **Estrutura** | 34d | 2026-07-27 A | 2026-09-11 |  | 3% | 32.95d | 2026-07-27 | 2026-09-11 | 34d | 0d |  |
| 1540 | 3.7.4.1.1 | **LOD 100 — Premissas, diretrizes e interfaces** | 7d | 2026-07-27 A | 2026-08-04 |  | 25% | 5.24d | 2026-07-27 | 2026-08-04 | 7d | 27d |  |
| 1541 | 3.7.4.1.1.1 | Levantamento de tipos de cargas globais estimadas (permanentes, acidentais, vento e especiais). | 2d | 2026-07-27 A | 2026-07-28 | 1437SS-9d | 80% | 0.41d | 2026-07-27 | 2026-07-28 | 2d | 32d |  |
| 1542 | 3.7.4.1.1.2 | Estudo volumétrico com modulação inicial de pilares, vigas e lajes. Entendendo vãos e desafios | 5d | 2026-07-27 A | 2026-07-31 | 1437SS-9d | 32% | 3.41d | 2026-07-27 | 2026-07-31 | 5d | 29d |  |
| 1543 | 3.7.4.1.1.3 | Localização aproximada de elementos estruturais principais. Avaliando vãos e estudando posições | 2d | 2026-07-27 A | 2026-07-28 | 1437SS-9d | 80% | 0.41d | 2026-07-27 | 2026-07-28 | 2d | 0d |  |
| 1544 | 3.7.4.1.1.4 | Estudo de viabilidade técnica e construtiva. | 3d | 2026-07-29 | 2026-07-31 | 1543 |  |  | 2026-07-29 | 2026-07-31 | 3d | 0d |  |
| 1545 | 3.7.4.1.1.5 | Definição preliminar do sistema estrutural (concreto armado, metálica ou mista). | 3d | 2026-07-29 | 2026-07-31 | 1543 |  |  | 2026-07-29 | 2026-07-31 | 3d | 29d |  |
| 1546 | 3.7.4.1.1.6 | Estimativa preliminar de tipologias de fundações (sapatas, blocos, estacas). | 2d | 2026-08-03 | 2026-08-04 | 1544 |  |  | 2026-08-03 | 2026-08-04 | 2d | 27d |  |
| 1547 | 3.7.4.1.1.7 | Previsão de áreas técnicas, casas de máquinas, reservatórios elevados e estrutura de cobertura. | 2d | 2026-08-03 | 2026-08-04 | 1544 |  |  | 2026-08-03 | 2026-08-04 | 2d | 0d |  |
| 1548 | 3.7.4.1.2 | **LOD 200 — Validação interdisciplinar e solução preliminar** | 20d | 2026-08-05 | 2026-09-01 |  |  |  | 2026-08-05 | 2026-09-01 | 20d | 0d |  |
| 1549 | 3.7.4.1.2.1 | Lista preliminar de cargas e ações para dimensionamento. | 5d | 2026-08-05 | 2026-08-11 | 1547 |  |  | 2026-08-05 | 2026-08-11 | 5d | 0d |  |
| 1550 | 3.7.4.1.2.2 | Definição preliminar de alturas de pavimentos e níveis de fundação. | 5d | 2026-08-05 | 2026-08-11 | 1547 |  |  | 2026-08-05 | 2026-08-11 | 5d | 22d |  |
| 1551 | 3.7.4.1.2.3 | Indicação aproximada do sistema de cobertura (tesouras, treliças, vigamento metálico ou concreto). | 5d | 2026-08-05 | 2026-08-11 | 1547 |  |  | 2026-08-05 | 2026-08-11 | 5d | 22d |  |
| 1552 | 3.7.4.1.2.4 | Modelagem genérica de pilares, vigas, lajes e fundações. | 5d | 2026-08-12 | 2026-08-18 | 1549 |  |  | 2026-08-12 | 2026-08-18 | 5d | 17d |  |
| 1553 | 3.7.4.1.2.5 | Traçado preliminar de elementos especiais (escadas, rampas estruturais, reservatórios). | 5d | 2026-08-12 | 2026-08-18 | 1549 |  |  | 2026-08-12 | 2026-08-18 | 5d | 12d | 0d |
| 1554 | 3.7.4.1.2.6 | Arquivo IFC, plantas de forma e planta de locação | 5d | 2026-08-12 | 2026-08-18 | 1549 |  |  | 2026-08-12 | 2026-08-18 | 5d | 0d |  |
| 1555 | 3.7.4.1.2.7 | Inserção de fundações com tipologia e dimensões preliminares. | 5d | 2026-08-19 | 2026-08-25 | 1553 |  |  | 2026-08-19 | 2026-08-25 | 5d | 12d |  |
| 1556 | 3.7.4.1.2.8 | Compatibilização inicial com arquitetura e demais disciplinas. | 5d | 2026-08-19 | 2026-08-25 | 1554 |  |  | 2026-08-19 | 2026-08-25 | 5d | 12d |  |
| 1557 | 3.7.4.1.2.9 | Indicação de passagens de infraestrutura (shafts, aberturas em lajes e vigas). | 5d | 2026-08-19 | 2026-08-25 | 1554 |  |  | 2026-08-19 | 2026-08-25 | 5d | 12d |  |
| 1558 | 3.7.4.1.2.10 | Modelagem assertiva de elementos principais com dimensões aproximadas (largura, altura, espessura). | 10d | 2026-08-19 | 2026-09-01 | 1554 |  |  | 2026-08-19 | 2026-09-01 | 10d | 0d |  |
| 1559 | 3.7.4.1.2.11 | Modelagem estimada de armaduras principais (em nível de concepção). | 5d | 2026-08-26 | 2026-09-01 | 1558FF |  |  | 2026-08-26 | 2026-09-01 | 5d | 0d |  |

| ID | WBS | Task | Duration | Start | Finish | Predecessors | Complete | Remaining | Baseline start | Baseline finish | Baseline duration | Total slack | Free slack |
| --- | --- | --- | --- | --- | --- | --- | --- | --- | --- | --- | --- | --- | --- |
| 1560 | 3.7.4.1.3 | **LOD 300 - Consolidação e documentação de entrega** | 7d | 2026-09-02 | 2026-09-11 |  |  |  | 2026-09-02 | 2026-09-11 | 7d | 0d |  |
| 1561 | 3.7.4.1.3.1 | Indicação de níveis e cotas exatas. | 7d | 2026-09-02 | 2026-09-11 | 1558, 1559 |  |  | 2026-09-02 | 2026-09-11 | 7d | 0d |  |
| 1562 | 3.7.4.1.3.2 | Quadro de cargas atualizado. | 7d | 2026-09-02 | 2026-09-11 | 1558, 1559 |  |  | 2026-09-02 | 2026-09-11 | 7d | 0d |  |
| 1563 | 3.7.4.1.3.3 | Dimensionamento final de fundações conforme sondagem e cálculo estrutural. | 7d | 2026-09-02 | 2026-09-11 | 1558, 1559 |  |  | 2026-09-02 | 2026-09-11 | 7d | 0d |  |
| 1564 | 3.7.4.1.3.4 | Definição final dos elementos da cobertura (treliças, vigas, chapas, purlins). | 7d | 2026-09-02 | 2026-09-11 | 1558, 1559 |  |  | 2026-09-02 | 2026-09-11 | 7d | 0d |  |
| 1565 | 3.7.4.1.3.5 | Compatibilização final com arquitetura e instalações (aberturas, embutidos e passagens). | 7d | 2026-09-02 | 2026-09-11 | 1558, 1559 |  |  | 2026-09-02 | 2026-09-11 | 7d | 0d |  |
| 1566 | 3.7.4.1.3.6 | Modelagem definitiva de pilares, vigas, lajes, blocos, sapatas e estacas. | 7d | 2026-09-02 | 2026-09-11 | 1558, 1559 |  |  | 2026-09-02 | 2026-09-11 | 7d | 0d |  |
| 1567 | 3.7.4.1.3.7 | Planta estrutural com todos os elementos identificados. | 7d | 2026-09-02 | 2026-09-11 | 1558, 1559 |  |  | 2026-09-02 | 2026-09-11 | 7d | 0d |  |
| 1568 | 3.7.4.1.3.8 | Memorial descritivo contendo: objetivos, justificativa, descrição do sistema, concepção de fundações/cobertura, especificações e quadro de cargas. | 7d | 2026-09-02 | 2026-09-11 | 1558, 1559 |  |  | 2026-09-02 | 2026-09-11 | 7d | 0d |  |
| 1569 | 3.7.4.1.3.9 | Normas técnicas utilizadas (NBR 6118, 6120, 6122, 8800, etc.). | 7d | 2026-09-02 | 2026-09-11 | 1558, 1559 |  |  | 2026-09-02 | 2026-09-11 | 7d | 0d |  |
| 1570 | 3.7.4.1.3.10 | Consolidar documentação de entrega e emissão formal da disciplina | 7d | 2026-09-02 | 2026-09-11 | 1558, 1559 |  |  | 2026-09-02 | 2026-09-11 | 7d | 0d |  |
| 1571 | 3.7.4.1.4 | Aprovação de Conformidade | 3d | 2026-09-09 | 2026-09-11 | 1560FF |  |  | 2026-09-09 | 2026-09-11 | 3d | 0d |  |
| 1572 | 3.7.4.1.5 | Material para entrega ao contrato | 3d | 2026-09-09 | 2026-09-11 | 1560FF |  |  | 2026-09-09 | 2026-09-11 | 3d | 0d |  |
| 1573 | 3.7.4.2 | **Hidrossanitário** | 34d | 2026-07-27 A | 2026-09-11 |  | 6% | 32d | 2026-07-27 | 2026-09-11 | 34d | 0d |  |
| 1574 | 3.7.4.2.1 | **LOD 100 — Premissas, diretrizes e interfaces** | 8d | 2026-07-27 A | 2026-08-05 |  | 22% | 6.25d | 2026-07-27 | 2026-08-05 | 8d | 26d |  |
| 1575 | 3.7.4.2.1.1 | Memorial preliminar | 8d | 2026-07-27 A | 2026-08-05 | 1437SS-9d | 20% | 6.41d | 2026-07-27 | 2026-08-05 | 8d | 26d |  |
| 1576 | 3.7.4.2.1.2 | Indicação de áreas técnicas | 6d | 2026-07-27 A | 2026-08-03 | 1437SS-9d | 27% | 4.41d | 2026-07-27 | 2026-08-03 | 6d | 28d |  |
| 1577 | 3.7.4.2.1.3 | Planta baixa com traçado conceitual | 6d | 2026-07-27 A | 2026-08-03 | 1437SS-9d | 27% | 4.41d | 2026-07-27 | 2026-08-03 | 6d | 28d |  |
| 1578 | 3.7.4.2.1.4 | Pontos de consumo principais e coletas sanitárias | 6d | 2026-07-27 A | 2026-08-03 | 1437SS-9d | 27% | 4.41d | 2026-07-27 | 2026-08-03 | 6d | 28d |  |
| 1579 | 3.7.4.2.1.5 | Classificação de uso | 8d | 2026-07-27 A | 2026-08-05 | 1437SS-9d | 20% | 6.41d | 2026-07-27 | 2026-08-05 | 8d | 26d |  |
| 1580 | 3.7.4.2.1.6 | Diretrizes de espaço | 8d | 2026-07-27 A | 2026-08-05 | 1437SS-9d | 20% | 6.41d | 2026-07-27 | 2026-08-05 | 8d | 26d |  |
| 1581 | 3.7.4.2.1.7 | Estimativa de demanda ou população de uso | 8d | 2026-07-27 A | 2026-08-05 | 1437SS-9d | 20% | 6.41d | 2026-07-27 | 2026-08-05 | 8d | 26d |  |
| 1582 | 3.7.4.2.1.8 | Levantamento de elementos especiais dentre outras disciplinas de Engenharia e Arquitetura | 8d | 2026-07-27 A | 2026-08-05 | 1437SS-9d | 20% | 6.41d | 2026-07-27 | 2026-08-05 | 8d | 0d |  |
| 1583 | 3.7.4.2.2 | **LOD 200 — Validação interdisciplinar e solução preliminar** | 20d | 2026-08-06 | 2026-09-02 |  |  |  | 2026-08-06 | 2026-09-02 | 20d | 0d |  |
| 1584 | 3.7.4.2.2.1 | Critérios normativos adotados (ABNT, concessionárias, etc.) | 20d | 2026-08-06 | 2026-09-02 | 1582 |  |  | 2026-08-06 | 2026-09-02 | 20d | 6d | 0d |
| 1585 | 3.7.4.2.2.2 | Informações de demanda na concessionária (DPE ou AVT Aviso de Viabilidade Técnica) | 20d | 2026-08-06 | 2026-09-02 | 1584SS |  |  | 2026-08-06 | 2026-09-02 | 20d | 6d |  |
| 1586 | 3.7.4.2.2.3 | Recebimento e Análise de Sondagem (permeabilidade ou percolação) | 20d | 2026-08-06 | 2026-09-02 | 1584SS |  |  | 2026-08-06 | 2026-09-02 | 20d | 6d |  |
| 1587 | 3.7.4.2.2.4 | Recebimento e Análise de Topografia | 20d | 2026-08-06 | 2026-09-02 | 1584SS |  |  | 2026-08-06 | 2026-09-02 | 20d | 6d |  |
| 1588 | 3.7.4.2.2.5 | Estudo de viabilidade técnica, econômica e ambiental | 20d | 2026-08-06 | 2026-09-02 | 1584SS |  |  | 2026-08-06 | 2026-09-02 | 20d | 6d |  |
| 1589 | 3.7.4.2.2.6 | Lista preliminar de sistemas envolvidos. | 20d | 2026-08-06 | 2026-09-02 | 1582 |  |  | 2026-08-06 | 2026-09-02 | 20d | 6d |  |
| 1590 | 3.7.4.2.2.7 | Planta baixa e cortes estimada contendo: - Traçado preliminar de barrilete, ramais, colunas - Diâmetros estimados - Localização aproximada das bombas e unidades de tratamento e reúso - Localização do ramal predial de água e esgoto - Localização aproximada | 20d | 2026-08-06 | 2026-09-02 | 1582 |  |  | 2026-08-06 | 2026-09-02 | 20d | 0d |  |

| ID | WBS | Task | Duration | Start | Finish | Predecessors | Complete | Remaining | Baseline start | Baseline finish | Baseline duration | Total slack | Text3 |
| --- | --- | --- | --- | --- | --- | --- | --- | --- | --- | --- | --- | --- | --- |
| 1591 | 3.7.4.2.3 | **LOD 300 - Consolidação e documentação de entrega** | 6d | 2026-09-03 | 2026-09-11 |  |  |  | 2026-09-03 | 2026-09-11 | 6d | 0d |  |
| 1592 | 3.7.4.2.3.1 | Planta, corte e detalhe isométrico contendo: - Modelagem detalhada com diâmetros, cotas e inclinações definitivas (barriletes, colunas, ramais) - Quantitativos e especificação técnica dos materiais (tubos, conexões, reservatórios, registros e válvulas com | 6d | 2026-09-03 | 2026-09-11 | 1590 |  |  | 2026-09-03 | 2026-09-11 | 6d | 0d |  |
| 1593 | 3.7.4.2.3.2 | Memorial descritivo | 3d | 2026-09-09 | 2026-09-11 | 1592FF |  |  | 2026-09-09 | 2026-09-11 | 3d | 0d |  |
| 1594 | 3.7.4.2.3.3 | Memória de cálculo (pressão, vazão, diâmetros, perda de carga). | 3d | 2026-09-09 | 2026-09-11 | 1590, 1592FF |  |  | 2026-09-09 | 2026-09-11 | 3d | 0d |  |
| 1595 | 3.7.4.2.4 | Aprovação de Conformidade | 3d | 2026-09-09 | 2026-09-11 | 1591FF |  |  | 2026-09-09 | 2026-09-11 | 3d | 0d |  |
| 1596 | 3.7.4.2.5 | Material para entrega ao contrato | 3d | 2026-09-09 | 2026-09-11 | 1591FF |  |  | 2026-09-09 | 2026-09-11 | 3d | 0d |  |
| 1597 | 3.7.4.3 | **AVAC** | 34d | 2026-07-27 A | 2026-09-11 |  | 5% | 32.33d | 2026-07-27 | 2026-09-11 | 34d | 0d |  |
| 1598 | 3.7.4.3.1 | **LOD 100 — Premissas, diretrizes e interfaces** | 20d | 2026-07-27 A | 2026-08-21 |  | 13% | 17.35d | 2026-07-27 | 2026-08-21 | 20d | 14d |  |
| 1599 | 3.7.4.3.1.1 | Estimativa de carga térmica por ambiente. | 10d | 2026-07-27 A | 2026-08-07 | 1437SS-9d | 16% | 8.41d | 2026-07-27 | 2026-08-07 | 10d | 24d |  |
| 1600 | 3.7.4.3.1.2 | Localização preliminar de unidades de tratamento de ar, condensadoras e exaustores. | 10d | 2026-07-27 A | 2026-08-07 | 1437SS-9d | 16% | 8.41d | 2026-07-27 | 2026-08-07 | 10d | 24d |  |
| 1601 | 3.7.4.3.1.3 | Pontos locação para seus elementos no projeto arquitetônico. | 10d | 2026-07-27 A | 2026-08-07 | 1437SS-9d | 16% | 8.41d | 2026-07-27 | 2026-08-07 | 10d | 0d |  |
| 1602 | 3.7.4.3.1.4 | Estudo de viabilidade e rotas principais de distribuição de ar. | 10d | 2026-07-27 A | 2026-08-07 | 1437SS-9d | 16% | 8.41d | 2026-07-27 | 2026-08-07 | 10d | 24d |  |
| 1603 | 3.7.4.3.1.5 | Reserva de espaços técnicos e shafts. | 10d | 2026-07-27 A | 2026-08-07 | 1437SS-9d | 16% | 8.41d | 2026-07-27 | 2026-08-07 | 10d | 0d |  |
| 1604 | 3.7.4.3.1.6 | Levantamento de cargas especiais provenientes de outras disciplinas. | 10d | 2026-08-10 | 2026-08-21 | 1626, 1638 |  |  | 2026-08-10 | 2026-08-21 | 10d | 14d |  |
| 1605 | 3.7.4.3.2 | **LOD 200 — Validação interdisciplinar e solução preliminar** | 24d | 2026-08-10 | 2026-09-11 |  |  |  | 2026-08-10 | 2026-09-11 | 24d | 0d |  |
| 1606 | 3.7.4.3.2.1 | Lista preliminar de sistemas HVAC envolvidos (expansão direta, VRF, chillers, ventilação, exaustão). | 24d | 2026-08-10 | 2026-09-11 | 1603 |  |  | 2026-08-10 | 2026-09-11 | 24d | 0d |  |
| 1607 | 3.7.4.3.2.2 | Planta baixa estimada contendo: pontos de insuflamento e retorno. | 24d | 2026-08-10 | 2026-09-11 | 1603 |  |  | 2026-08-10 | 2026-09-11 | 24d | 0d |  |
| 1608 | 3.7.4.3.2.3 | Rotas iniciais de dutos, tubulações e drenos. | 24d | 2026-08-10 | 2026-09-11 | 1603 |  |  | 2026-08-10 | 2026-09-11 | 24d | 0d |  |
| 1609 | 3.7.4.3.2.4 | Planta baixa estimada contendo: unidades internas e externas com posição preliminar. | 24d | 2026-08-10 | 2026-09-11 | 1603 |  |  | 2026-08-10 | 2026-09-11 | 24d | 0d |  |
| 1610 | 3.7.4.3.3 | Aprovação de Conformidade | 3d | 2026-09-09 | 2026-09-11 | 1605FF |  |  | 2026-09-09 | 2026-09-11 | 3d | 0d |  |
| 1611 | 3.7.4.3.4 | Material para entrega ao contrato | 3d | 2026-09-09 | 2026-09-11 | 1605FF |  |  | 2026-09-09 | 2026-09-11 | 3d | 0d |  |
| 1612 | 3.7.4.4 | **PCI (Incêndio)** | 34d | 2026-07-27 A | 2026-09-11 |  | 4% | 32.5d | 2026-07-27 | 2026-09-11 | 34d | 0d |  |
| 1613 | 3.7.4.4.1 | **LOD 100 — Premissas, diretrizes e interfaces** | 10d | 2026-07-27 A | 2026-08-07 |  | 16% | 8.41d | 2026-07-27 | 2026-08-07 | 10d | 24d | ܁# |
| 1614 | 3.7.4.4.1.1 | Estudo e avaliação da arquitetura atendendo as normas competentes de PCI | 10d | 2026-07-27 A | 2026-08-07 | 1437SS-9d | 16% | 8.41d | 2026-07-27 | 2026-08-07 | 10d | 24d |  |
| 1615 | 3.7.4.4.1.2 | Avaliação do espaço para CMI e Central de Gás. | 10d | 2026-07-27 A | 2026-08-07 | 1437SS-9d | 16% | 8.41d | 2026-07-27 | 2026-08-07 | 10d | 24d |  |
| 1616 | 3.7.4.4.1.3 | Pontos locação para seus elementos no projeto arquitetônico | 10d | 2026-07-27 A | 2026-08-07 | 1437SS-9d | 16% | 8.41d | 2026-07-27 | 2026-08-07 | 10d | 0d |  |

| ID | WBS | Task | Duration | Start | Finish | Predecessors | Complete | Remaining | Baseline start | Baseline finish | Baseline duration | Total slack | Free slack | Text3 |
| --- | --- | --- | --- | --- | --- | --- | --- | --- | --- | --- | --- | --- | --- | --- |
| 1617 | 3.7.4.4.2 | **LOD 200 — Validação interdisciplinar e solução preliminar** | 24d | 2026-08-10 | 2026-09-11 |  |  |  | 2026-08-10 | 2026-09-11 | 24d | 0d |  | ܁# |
| 1618 | 3.7.4.4.2.1 | Definição da classificação da edificação e o risco de incêndio | 24d | 2026-08-10 | 2026-09-11 | 1616 |  |  | 2026-08-10 | 2026-09-11 | 24d | 0d |  |  |
| 1619 | 3.7.4.4.2.2 | Cálculos pré-dimensionados dos extintores, hidrantes e bomba. | 24d | 2026-08-10 | 2026-09-11 | 1616 |  |  | 2026-08-10 | 2026-09-11 | 24d | 0d |  |  |
| 1620 | 3.7.4.4.2.3 | Avaliação das rotas de fuga, ventilação de CMI e outros elementos de importância para as normas de PCI | 24d | 2026-08-10 | 2026-09-11 | 1616 |  |  | 2026-08-10 | 2026-09-11 | 24d | 0d |  |  |
| 1621 | 3.7.4.4.3 | Aprovação de Conformidade | 3d | 2026-09-09 | 2026-09-11 | 1617FF |  |  | 2026-09-09 | 2026-09-11 | 3d | 0d |  |  |
| 1622 | 3.7.4.4.4 | Material para entrega ao contrato | 3d | 2026-09-09 | 2026-09-11 | 1617FF |  |  | 2026-09-09 | 2026-09-11 | 3d | 0d |  |  |
| 1623 | 3.7.4.5 | **Elétrica Baixa Tensão** | 34d | 2026-07-27 A | 2026-09-11 |  | 4% | 32.52d | 2026-07-27 | 2026-09-11 | 34d | 0d |  |  |
| 1624 | 3.7.4.5.1 | **LOD 100 — Concepção** | 14d | 2026-07-27 A | 2026-08-13 |  | 21% | 11.03d | 2026-07-27 | 2026-08-13 | 14d | 20d |  |  |
| 1625 | 3.7.4.5.1.1 | Avaliação e Diretrizes Técnicas para Arquitetura | 4d | 2026-07-27 A | 2026-07-30 | 1437SS-9d | 40% | 2.41d | 2026-07-27 | 2026-07-30 | 4d | 30d |  |  |
| 1626 | 3.7.4.5.1.2 | Estimativa de Cargas e Demanda | 7d | 2026-07-27 A | 2026-08-04 | 1437SS-9d | 23% | 5.41d | 2026-07-27 | 2026-08-04 | 7d | 7d | 3d |  |
| 1627 | 3.7.4.5.1.3 | Levantamento de Equipamentos de Outras Disciplinas | 4d | 2026-08-10 | 2026-08-13 | 1601, 1616 |  |  | 2026-08-10 | 2026-08-13 | 4d | 0d |  |  |
| 1628 | 3.7.4.5.2 | **LOD 200 — Anteprojeto** | 16d | 2026-08-14 | 2026-09-04 |  |  |  | 2026-08-14 | 2026-09-04 | 16d | 0d |  |  |
| 1629 | 3.7.4.5.2.1 | TUGs Estimados | 16d | 2026-08-14 | 2026-09-04 | 1626, 1627 |  |  | 2026-08-14 | 2026-09-04 | 16d | 0d |  |  |
| 1630 | 3.7.4.5.2.2 | Pontos de Luz Estimados | 16d | 2026-08-14 | 2026-09-04 | 1626, 1627 |  |  | 2026-08-14 | 2026-09-04 | 16d | 0d |  |  |
| 1631 | 3.7.4.5.2.3 | TUEs e Quadros Estimados | 16d | 2026-08-14 | 2026-09-04 | 1626, 1627 |  |  | 2026-08-14 | 2026-09-04 | 16d | 0d |  |  |
| 1632 | 3.7.4.5.3 | LOD 300 - Consolidação e documentação de entrega | 4d | 2026-09-08 | 2026-09-11 | 1628 |  |  | 2026-09-08 | 2026-09-11 | 4d | 0d |  |  |
| 1633 | 3.7.4.5.4 | Aprovação de Conformidade | 3d | 2026-09-09 | 2026-09-11 | 1632FF |  |  | 2026-09-09 | 2026-09-11 | 3d | 0d |  |  |
| 1634 | 3.7.4.5.5 | Material para entrega ao contrato | 3d | 2026-09-09 | 2026-09-11 | 1632FF |  |  | 2026-09-09 | 2026-09-11 | 3d | 0d |  |  |
| 1635 | 3.7.4.6 | **Telecom** | 34d | 2026-07-27 A | 2026-09-11 |  | 7% | 31.68d | 2026-07-27 | 2026-09-11 | 34d | 0d |  |  |
| 1636 | 3.7.4.6.1 | **LOD 100 — Concepção** | 10d | 2026-07-27 A | 2026-08-07 |  | 16% | 8.41d | 2026-07-27 | 2026-08-07 | 10d | 24d |  |  |
| 1637 | 3.7.4.6.1.1 | Avaliação e Diretrizes Técnicas para Arquitetura | 10d | 2026-07-27 A | 2026-08-07 | 1437SS-9d | 16% | 8.41d | 2026-07-27 | 2026-08-07 | 10d | 24d |  |  |
| 1638 | 3.7.4.6.1.2 | Estimativa de Demanda de Telecomunicações | 10d | 2026-07-27 A | 2026-08-07 | 1437SS-9d | 16% | 8.41d | 2026-07-27 | 2026-08-07 | 10d | 14d | 0d |  |
| 1639 | 3.7.4.6.1.3 | Levantamento de Equipamentos e Interfaces com Outras Disciplinas | 10d | 2026-07-27 A | 2026-08-07 | 1437SS-9d | 16% | 8.41d | 2026-07-27 | 2026-08-07 | 10d | 0d |  |  |
| 1640 | 3.7.4.6.2 | **LOD 200 — Anteprojeto** | 20d | 2026-08-10 | 2026-09-04 |  |  |  | 2026-08-10 | 2026-09-04 | 20d | 0d |  |  |
| 1641 | 3.7.4.6.2.1 | Pontos de Telecomunicações Estimados (Rede, Voz, CFTV e Demais Sistemas) | 10d | 2026-08-10 | 2026-08-21 | 1639 |  |  | 2026-08-10 | 2026-08-21 | 10d | 0d |  |  |
| 1642 | 3.7.4.6.2.2 | Racks Estimados | 10d | 2026-08-10 | 2026-08-21 | 1639 |  |  | 2026-08-10 | 2026-08-21 | 10d | 0d |  |  |
| 1643 | 3.7.4.6.2.3 | Infraestrutura de Telecomunicações Preliminar | 10d | 2026-08-24 | 2026-09-04 | 1641, 1642 |  |  | 2026-08-24 | 2026-09-04 | 10d | 0d |  |  |
| 1644 | 3.7.4.6.3 | LOD 300 - Consolidação e documentação de entrega | 4d | 2026-09-08 | 2026-09-11 | 1640 |  |  | 2026-09-08 | 2026-09-11 | 4d | 0d |  |  |
| 1645 | 3.7.4.6.4 | Aprovação de Conformidade | 3d | 2026-09-09 | 2026-09-11 | 1644FF |  |  | 2026-09-09 | 2026-09-11 | 3d | 0d |  |  |
| 1646 | 3.7.4.6.5 | Material para entrega ao contrato | 3d | 2026-09-09 | 2026-09-11 | 1644FF |  |  | 2026-09-09 | 2026-09-11 | 3d | 0d |  |  |

| ID | WBS | Task | Type | Duration | Start | Finish | Predecessors | Complete | Remaining | Baseline start | Baseline finish | Baseline duration | Total slack |
| --- | --- | --- | --- | --- | --- | --- | --- | --- | --- | --- | --- | --- | --- |
| 1647 | 3.7.4.7 | **SPDA** |  | 34d | 2026-07-27 A | 2026-09-11 |  | 7% | 31.68d | 2026-07-27 | 2026-09-11 | 34d | 0d |
| 1648 | 3.7.4.7.1 | **LOD 100 — Concepção** |  | 10d | 2026-07-27 A | 2026-08-07 |  | 16% | 8.41d | 2026-07-27 | 2026-08-07 | 10d | 24d |
| 1649 | 3.7.4.7.1.1 | Avaliação e Diretrizes Técnicas para Arquitetura |  | 10d | 2026-07-27 A | 2026-08-07 | 1437SS-9d | 16% | 8.41d | 2026-07-27 | 2026-08-07 | 10d | 24d |
| 1650 | 3.7.4.7.1.2 | Coleta de Informações da Edificação e Análise de Risco (ABNT NBR 5419-2) |  | 10d | 2026-07-27 A | 2026-08-07 | 1437SS-9d | 16% | 8.41d | 2026-07-27 | 2026-08-07 | 10d | 24d |
| 1651 | 3.7.4.7.1.3 | Estudo Preliminar de Necessidade e Nível de Proteção do SPDA |  | 10d | 2026-07-27 A | 2026-08-07 | 1437SS-9d | 16% | 8.41d | 2026-07-27 | 2026-08-07 | 10d | 0d |
| 1652 | 3.7.4.7.2 | **LOD 200 — Anteprojeto** |  | 20d | 2026-08-10 | 2026-09-04 |  |  |  | 2026-08-10 | 2026-09-04 | 20d | 0d |
| 1653 | 3.7.4.7.2.1 | Definição da Estratégia de Proteção e Soluções Técnicas |  | 10d | 2026-08-10 | 2026-08-21 | 1651 |  |  | 2026-08-10 | 2026-08-21 | 10d | 0d |
| 1654 | 3.7.4.7.2.2 | Zoneamento de Captação, Descida e Traçados Preliminares |  | 10d | 2026-08-24 | 2026-09-04 | 1653 |  |  | 2026-08-24 | 2026-09-04 | 10d | 4d |
| 1655 | 3.7.4.7.2.3 | Estudo de Interferências, Compatibilização e Métodos Construtivos |  | 10d | 2026-08-24 | 2026-09-04 | 1653 |  |  | 2026-08-24 | 2026-09-04 | 10d | 0d |
| 1656 | 3.7.4.7.3 | LOD 300 - Consolidação e documentação de entrega |  | 4d | 2026-09-08 | 2026-09-11 | 1655 |  |  | 2026-09-08 | 2026-09-11 | 4d | 0d |
| 1657 | 3.7.4.7.4 | Aprovação de Conformidade |  | 3d | 2026-09-09 | 2026-09-11 | 1656FF |  |  | 2026-09-09 | 2026-09-11 | 3d | 0d |
| 1658 | 3.7.4.7.5 | Material para entrega ao contrato |  | 3d | 2026-09-09 | 2026-09-11 | 1656FF |  |  | 2026-09-09 | 2026-09-11 | 3d | 0d |
| 1659 | 3.7.4.8 | **Energia Renovável** |  | 34d | 2026-07-27 A | 2026-09-11 |  | 5% | 32.38d | 2026-07-27 | 2026-09-11 | 34d | 0d |
| 1660 | 3.7.4.8.1 | **LOD 100 — Concepção** |  | 10d | 2026-07-27 A | 2026-08-07 |  | 16% | 8.41d | 2026-07-27 | 2026-08-07 | 10d | 24d |
| 1661 | 3.7.4.8.1.1 | Viabilidade e Premissas de Geração |  | 10d | 2026-07-27 A | 2026-08-07 | 1437SS-9d | 16% | 8.41d | 2026-07-27 | 2026-08-07 | 10d | 24d |
| 1662 | 3.7.4.8.1.2 | Levantamento Preliminar de Áreas e Sombreamento |  | 10d | 2026-07-27 A | 2026-08-07 | 1437SS-9d | 16% | 8.41d | 2026-07-27 | 2026-08-07 | 10d | 0d |
| 1663 | 3.7.4.8.1.3 | Avaliação e Diretrizes Técnicas para Arquitetônico |  | 10d | 2026-07-27 A | 2026-08-07 | 1437SS-9d | 16% | 8.41d | 2026-07-27 | 2026-08-07 | 10d | 24d |
| 1664 | 3.7.4.8.2 | **LOD 200 — Anteprojeto** |  | 20d | 2026-08-10 | 2026-09-04 |  |  |  | 2026-08-10 | 2026-09-04 | 20d | 0d |
| 1665 | 3.7.4.8.2.1 | Layout Preliminar de Módulos, Inversores e String Boxes |  | 20d | 2026-08-10 | 2026-09-04 | 1662 |  |  | 2026-08-10 | 2026-09-04 | 20d | 0d |
| 1666 | 3.7.4.8.2.2 | Infraestrutura e Rotas Técnicas Preliminares (DC/AC e Aterramento) |  | 20d | 2026-08-10 | 2026-09-04 | 1662 |  |  | 2026-08-10 | 2026-09-04 | 20d | 0d |
| 1667 | 3.7.4.8.2.3 | Critérios Preliminares de Proteção e Estimativa de Quantitativos |  | 20d | 2026-08-10 | 2026-09-04 | 1662 |  |  | 2026-08-10 | 2026-09-04 | 20d | 0d |
| 1668 | 3.7.4.8.3 | LOD 300 - Consolidação e documentação de entrega |  | 4d | 2026-09-08 | 2026-09-11 | 1664 |  |  | 2026-09-08 | 2026-09-11 | 4d | 0d |
| 1669 | 3.7.4.8.4 | Aprovação de Conformidade |  | 3d | 2026-09-09 | 2026-09-11 | 1668FF |  |  | 2026-09-09 | 2026-09-11 | 3d | 0d |
| 1670 | 3.7.4.8.5 | Material para entrega ao contrato |  | 3d | 2026-09-09 | 2026-09-11 | 1668FF |  |  | 2026-09-09 | 2026-09-11 | 3d | 0d |
| 1671 | 4 | P3 - Orçamento/Cronograma |  | 15d | 2026-09-04 | 2026-09-25 | 30FS-5d |  |  | 2026-09-04 | 2026-09-25 | 20d | 0d |
| 1672 | 5 | P4 - Modelagem Econômico Financeira |  | 10d | 2026-09-14 | 2026-09-25 | 1671FF |  |  | 2026-09-14 | 2026-09-25 | 10d | 0d |
| 1673 | 6 | P5 - Modelagem Jurídica |  | 10d | 2026-09-14 | 2026-09-25 | 1671FF |  |  | 2026-09-14 | 2026-09-25 | 10d | 0d |
| 1674 | 7 | Periodo de revisão se necessário | milestone | 0d | 2026-05-04 A | 2026-05-04 A | 1SS | 100% |  | 2026-05-04 | 2026-05-04 | 0d |  |
