# OS 068 - ANTEPROJETO CIDADE DO ESPORTE

Schedule from MS Project, 2026-05-07 to 2026-10-26, status date 2026-08-11, A marks actual dates.

## Calendars

- Calendário 1: Mon-Fri 09:00-12:00, 13:00-18:00; Sat-Sun off. Exceptions (off unless hours are given): 2026-06-04 (Feriado Corpus Christi), 2026-09-07 (Feriado Independencia do Brasil), 2026-10-12 (Feriado Nossa Senhora Aparecida).

## Resources

| Resource | Group |
| --- | --- |
| SMI Engenharia | SMI |
| Rui Raoli BIM |  |
| Tecra Engenharia | Tecra |
| Dorothea Heirichs | Dorothea |
| Yuka Ogawa | Yuka |
| Jurídico Quanta |  |
| Priscila Abreu EST |  |
| Leomar Delgado | Leomar |
| Limonge de Almeida | Limonge |
| AeB Engenharia | AeB engenharia |
| Fernanda Garruti EST |  |
| Rodrigo Goes EST |  |
| Nous Engenharia (Wanessa) | Nous Engenharia |
| Abel Lopes HID |  |
| Matheus Ferreira HID |  |
| Kayke Cheli PROJ |  |
| João Gabriel PROJ |  |
| Alan Albuquerque ELE |  |
| Leo Ferrari ELE |  |
| Marcelo Ricardo ELE |  |
| Gabriel Caurim | Gcaurin |
| MOB Eng | MOB |
| Heitor Rubio ELE |  |
| Paulo G. ELE |  |
| Thaíza Rodrig. ELE |  |
| Rafael Menna ENE |  |
| Lucas Pacheco ENE |  |
| Lucas Silva ENE Estag |  |
| Amanda W. HID |  |
| Neemias PCI/GAS |  |
| Anderson F. HVAC |  |
| Alexandre Blumel |  |
| Vanessa Maia ORC |  |
| Bruno Souza ORC |  |
| Romulo Santos ORC |  |
| Diego Bieger | Diego Bieger |
| Tiago Carlos TER |  |
| Raquel Morano |  |
| Guilherme ECO |  |
| Setor Jurídico |  |
| Vinicius Delgado |  |
| Morena Braga |  |
| P/ TERCEIRIZAR |  |
| MAFRA | MAFRA |
| BLR | BLR |
| COTRAL | COTRAL |
| Prime | PRIME |
| CODEMAR | Cliente |
| SEMED | Cliente |
| Carlos Alberto (Casoba) |  |
| Cezar Augusto ELE |  |
| Carlos Santos TER |  |
| Maíra Rocha |  |
| Jairo Diniz |  |
| Eloá Honaiser |  |
| Erick Lima |  |
| Tarcísio Marques CPT |  |
| Igor Freire DADOS |  |
| Hagata Oliveira DADOS |  |
| Marcel Silva CNF |  |
| Gustavo Oliveira CNF |  |
| Letícia Gonç. CNF |  |
| Equipe Energia |  |
| Petras |  |
| Pilotis |  |
| Rodofer |  |
| TMSilva |  |
| STCGEO |  |
| Vitor Sales GEO |  |
| Prossema | Prossema |
| Proseng | Prosseng |
| Pamplona | Pamplona |
| PeX | PeX |
| Eoliver | Eoliver |
| Aleff Moura |  |
| S&A Engenharia |  |
| Matheus Barboza MOBILIDADE |  |
| Neemias Eloy PCI/GAS |  |
| TecTON |  |
| Anderson F. HVAC |  |
| Gabriela Gama ARQ |  |
| Bruno Almeida ARQ |  |
| Richard Marx ARQ |  |
| Lorena ARQ |  |
| Camila ARQ |  |
| Mariana ARQ |  |
| Érica ARQ |  |
| Maria Lis ARQ |  |
| Antônio Alves ARQ |  |
| Juliana ARQ |  |
| Caio Ary ARQ |  |
| Roberto Mattos ARQ |  |
| Camilla Bessa CNF |  |
| Alex Matoso SUP |  |
| Aline Bonsanto CPT |  |
| Pavanello |  |
| AKKERMAN |  |
| RiO RAMP |  |

## Schedule

| ID | WBS | Task | Type | Duration | Start | Finish | Predecessors | Complete | Baseline start | Baseline finish | Baseline duration | Constraint |
| --- | --- | --- | --- | --- | --- | --- | --- | --- | --- | --- | --- | --- |
| 1 | 1 | **P0 - Estudos Iniciais/Plano de Trabalho** |  | 57d | 2026-05-07 A | 2026-07-27 A |  | 100% | 2026-05-07 | 2026-07-27 | 57d |  |
| 2 | 1.1 | Marco de Abertura de OS |  | 1d | 2026-05-07 A | 2026-05-07 A |  | 100% | 2026-05-07 | 2026-05-07 | 1d |  |
| 3 | 1.2 | Recebimento de dados da contratante |  | 1d | 2026-05-07 A | 2026-05-07 A |  | 100% | 2026-05-07 | 2026-05-07 | 1d |  |
| 4 | 1.3 | Recebimento de dados do projeto |  | 1d | 2026-05-07 A | 2026-05-07 A |  | 100% | 2026-05-07 | 2026-05-07 | 1d |  |
| 5 | 1.4 | **Definições do projeto** |  | 0d | 2026-05-07 A | 2026-05-07 A |  | 100% | 2026-05-07 | 2026-05-07 | 0d |  |
| 6 | 1.4.1 | Definição de escopo | milestone | 0d | 2026-05-07 A | 2026-05-07 A |  | 100% | 2026-05-07 | 2026-05-07 | 0d |  |
| 7 | 1.4.2 | Aprovação do escopo (contrato) | milestone | 0d | 2026-05-07 A | 2026-05-07 A |  | 100% | 2026-05-07 | 2026-05-07 | 0d |  |
| 8 | 1.4.3 | Definição de responsabilidades | milestone | 0d | 2026-05-07 A | 2026-05-07 A |  | 100% | 2026-05-07 | 2026-05-07 | 0d |  |
| 9 | 1.4.4 | Definição de comunicação | milestone | 0d | 2026-05-07 A | 2026-05-07 A |  | 100% | 2026-05-07 | 2026-05-07 | 0d |  |
| 10 | 1.4.5 | Forma de gerenciamento do escopo | milestone | 0d | 2026-05-07 A | 2026-05-07 A |  | 100% | 2026-05-07 | 2026-05-07 | 0d |  |
| 11 | 1.4.6 | Requisitos de qualidade | milestone | 0d | 2026-05-07 A | 2026-05-07 A |  | 100% | 2026-05-07 | 2026-05-07 | 0d |  |
| 12 | 1.4.7 | Forma de gerenciamento da qualidade | milestone | 0d | 2026-05-07 A | 2026-05-07 A |  | 100% | 2026-05-07 | 2026-05-07 | 0d |  |
| 13 | 1.5 | **Definição de Subcontratadas necessárias** |  | 8d | 2026-07-15 A | 2026-07-24 A |  | 100% | 2026-07-15 | 2026-07-24 | 8d |  |
| 14 | 1.5.1 | Definir quais diciplinas e edificações devem ser cotadas externamente |  | 2d | 2026-07-15 A | 2026-07-16 A |  | 100% | 2026-07-15 | 2026-07-16 | 2d | start no earlier than 2026-07-15 |
| 15 | 1.5.2 | Envio e Resposta dos fornecedores |  | 2d | 2026-07-17 A | 2026-07-20 A | 14 | 100% | 2026-07-17 | 2026-07-20 | 2d |  |
| 16 | 1.5.3 | Seleção das subcontratações |  | 2d | 2026-07-21 A | 2026-07-22 A | 15 | 100% | 2026-07-21 | 2026-07-22 | 2d |  |
| 17 | 1.5.4 | Reunião Kickoff - Subcontratadas |  | 2d | 2026-07-23 A | 2026-07-24 A | 16 | 100% | 2026-07-23 | 2026-07-24 | 2d |  |
| 18 | 1.6 | **Elaborar/Ajustar Cronograma - compatível com o escopo do projeto** |  | 34d | 2026-06-10 A | 2026-07-27 A |  | 100% | 2026-06-10 | 2026-07-27 | 34d |  |
| 19 | 1.6.1 | Estruturação da EAP |  | 4d | 2026-06-10 A | 2026-06-15 A | 2SS+23d | 100% | 2026-06-10 | 2026-06-15 | 4d |  |
| 20 | 1.6.2 | Ajuste de prazos |  | 5d | 2026-06-16 A | 2026-06-22 A | 19 | 100% | 2026-06-16 | 2026-06-22 | 5d |  |
| 21 | 1.6.3 | Inclusão de recursos |  | 25d | 2026-06-23 A | 2026-07-27 A | 20 | 100% | 2026-06-23 | 2026-07-27 | 25d |  |
| 22 | 2 | **P0 - Serviços de campo** |  | 20d | 2026-05-07 A | 2026-06-03 A |  | 100% | 2026-05-07 | 2026-06-03 | 20d |  |
| 23 | 2.1 | Sondagem |  | 20d | 2026-05-07 A | 2026-06-03 A |  | 100% | 2026-05-07 | 2026-06-03 | 20d |  |
| 24 | 2.2 | **Topografia** |  | 17d | 2026-05-07 A | 2026-05-29 A |  | 100% | 2026-05-07 | 2026-05-29 | 17d |  |
| 25 | 2.2.1 | Levantamento topográfico |  | 2d | 2026-05-07 A | 2026-05-08 A |  | 100% | 2026-05-07 | 2026-05-08 | 2d |  |
| 26 | 2.2.2 | Processamento |  | 5d | 2026-05-11 A | 2026-05-15 A | 25 | 100% | 2026-05-11 | 2026-05-15 | 5d |  |
| 27 | 2.2.3 | Finalização do projeto topográfico |  | 5d | 2026-05-18 A | 2026-05-22 A | 26 | 100% | 2026-05-18 | 2026-05-22 | 5d |  |
| 28 | 2.2.4 | Levantamento de Dados e Visita de Campo (arquitetônico, scanner, legislação, entrevistas...) |  | 5d | 2026-05-25 A | 2026-05-29 A | 27 | 100% | 2026-05-25 | 2026-05-29 | 5d |  |
| 29 | 2.3 | Estudos/Laudo Ambiental | milestone | 0d | 2026-05-07 A | 2026-05-07 A |  | 100% | 2026-05-07 | 2026-05-07 | 0d |  |

| ID | WBS | Task | Duration | Start | Finish | Predecessors | Complete | Remaining | Baseline start | Baseline finish | Baseline duration | Total slack | Free slack |
| --- | --- | --- | --- | --- | --- | --- | --- | --- | --- | --- | --- | --- | --- |
| 30 | 3 | **P1 - Anteprojeto** | 100d | 2026-05-07 A | 2026-09-25 |  | 12% | 88.3d | 2026-05-07 | 2026-09-25 | 100d | 0d |  |
| 31 | 3.1 | **1 - Implantação** | 100d | 2026-05-07 | 2026-09-25 |  |  |  | 2026-05-07 | 2026-09-25 | 100d | 0d |  |
| 32 | 3.1.1 | **LOD 300 - ANTEPROJETO** | 61d | 2026-05-07 | 2026-07-31 |  |  |  | 2026-05-07 | 2026-07-31 | 61d | 39d |  |
| 33 | 3.1.1.1 | Indicar simbologias de representação gráfica, conforme NBR 6492:2021; | 61d | 2026-05-07 | 2026-07-31 |  |  |  | 2026-05-07 | 2026-07-31 | 61d | 39d |  |
| 34 | 3.1.1.2 | Compatibilização (verificar se está tudo conforme as normas e alinhar com o restante das disciplinas de engenharia) | 61d | 2026-05-07 | 2026-07-31 |  |  |  | 2026-05-07 | 2026-07-31 | 61d | 39d |  |
| 35 | 3.1.1.3 | Compatibilização (deixar tudo conforme padrão Quanta) | 61d | 2026-05-07 | 2026-07-31 |  |  |  | 2026-05-07 | 2026-07-31 | 61d | 39d |  |
| 36 | 3.1.1.4 | Indicação de Norte; | 61d | 2026-05-07 | 2026-07-31 |  |  |  | 2026-05-07 | 2026-07-31 | 61d | 39d |  |
| 37 | 3.1.1.5 | Indicação de Escala; | 61d | 2026-05-07 | 2026-07-31 |  |  |  | 2026-05-07 | 2026-07-31 | 61d | 39d |  |
| 38 | 3.1.1.6 | Vias de acesso e calçadas; | 61d | 2026-05-07 | 2026-07-31 |  |  |  | 2026-05-07 | 2026-07-31 | 61d | 39d |  |
| 39 | 3.1.1.7 | Definição dos Percursos e caminhos | 61d | 2026-05-07 | 2026-07-31 |  |  |  | 2026-05-07 | 2026-07-31 | 61d | 39d |  |
| 40 | 3.1.1.8 | Definição de desenhos de canteiros | 61d | 2026-05-07 | 2026-07-31 |  |  |  | 2026-05-07 | 2026-07-31 | 61d | 39d |  |
| 41 | 3.1.1.9 | Localização de Mobiliário | 61d | 2026-05-07 | 2026-07-31 |  |  |  | 2026-05-07 | 2026-07-31 | 61d | 39d |  |
| 42 | 3.1.1.10 | Acesso principal do objeto arquitetônico; | 61d | 2026-05-07 | 2026-07-31 |  |  |  | 2026-05-07 | 2026-07-31 | 61d | 39d |  |
| 43 | 3.1.1.11 | Definição de localização de rampas e escadarias | 61d | 2026-05-07 | 2026-07-31 |  |  |  | 2026-05-07 | 2026-07-31 | 61d | 39d |  |
| 44 | 3.1.1.12 | Platôs e taludes; | 61d | 2026-05-07 | 2026-07-31 |  |  |  | 2026-05-07 | 2026-07-31 | 61d | 39d |  |
| 45 | 3.1.1.13 | Perímetro do terreno, recuos e afastamentos; | 61d | 2026-05-07 | 2026-07-31 |  |  |  | 2026-05-07 | 2026-07-31 | 61d | 39d |  |
| 46 | 3.1.1.14 | Eixos do projeto com respectivo ponto de referência; | 61d | 2026-05-07 | 2026-07-31 |  |  |  | 2026-05-07 | 2026-07-31 | 61d | 39d |  |
| 47 | 3.1.1.15 | Denominação das edificações, blocos ou espaços; | 61d | 2026-05-07 | 2026-07-31 |  |  |  | 2026-05-07 | 2026-07-31 | 61d | 39d |  |
| 48 | 3.1.1.16 | Indicação de áreas cobertas e estacionamentos; | 61d | 2026-05-07 | 2026-07-31 |  |  |  | 2026-05-07 | 2026-07-31 | 61d | 39d |  |
| 49 | 3.1.1.17 | Cotas gerais | 61d | 2026-05-07 | 2026-07-31 |  |  |  | 2026-05-07 | 2026-07-31 | 61d | 39d |  |
| 50 | 3.1.1.18 | Cotas de nível principais | 61d | 2026-05-07 | 2026-07-31 |  |  |  | 2026-05-07 | 2026-07-31 | 61d | 39d |  |
| 51 | 3.1.1.19 | Quadro de áreas | 61d | 2026-05-07 | 2026-07-31 |  |  |  | 2026-05-07 | 2026-07-31 | 61d | 39d | 0d |
| 52 | 3.1.1.20 | Aprovação de Conformidade | 3d | 2026-07-29 | 2026-07-31 | 51FF |  |  | 2026-07-29 | 2026-07-31 | 3d | 39d |  |
| 53 | 3.1.1.21 | Material para entrega ao contrato | 3d | 2026-07-29 | 2026-07-31 | 51FF |  |  | 2026-07-29 | 2026-07-31 | 3d | 39d |  |

| ID | WBS | Task | Duration | Start | Finish | Predecessors | Baseline start | Baseline finish | Baseline duration | Total slack | Free slack | Constraint | Text3 |
| --- | --- | --- | --- | --- | --- | --- | --- | --- | --- | --- | --- | --- | --- |
| 54 | 3.1.2 | **Terraplanagem / Pavimentação** | 45d | 2026-07-06 | 2026-09-04 |  | 2026-07-06 | 2026-09-04 | 45d | 10d |  |  |  |
| 55 | 3.1.2.1 | **LOD 100 — Premissas, diretrizes e interfaces** | 25d | 2026-07-06 | 2026-08-07 |  | 2026-07-06 | 2026-08-07 | 25d | 10d |  |  | ܁$ |
| 56 | 3.1.2.1.1 | Avaliação geral de interferências e topografia local. | 5d | 2026-07-06 | 2026-07-10 |  | 2026-07-06 | 2026-07-10 | 5d | 10d | 0d | start no earlier than 2026-07-06 |  |
| 57 | 3.1.2.1.2 | Curvas de nível preliminares (quando disponíveis). | 5d | 2026-07-27 | 2026-07-31 | 56SS+15d | 2026-07-27 | 2026-07-31 | 5d | 34d | 0d |  |  |
| 58 | 3.1.2.1.3 | Levantamento topográfico inicial com representação genérica da área. | 5d | 2026-07-27 | 2026-07-31 | 56SS+15d | 2026-07-27 | 2026-07-31 | 5d | 10d | 0d |  |  |
| 59 | 3.1.2.1.4 | Análise estimativa de movimentação de terra. | 5d | 2026-08-03 | 2026-08-07 | 57 | 2026-08-03 | 2026-08-07 | 5d | 34d |  |  |  |
| 60 | 3.1.2.1.5 | Estudos de viabilidade | 5d | 2026-08-03 | 2026-08-07 | 57 | 2026-08-03 | 2026-08-07 | 5d | 34d |  |  |  |
| 61 | 3.1.2.1.6 | Elementos representados de forma simbólica sem georreferenciamento preciso. | 5d | 2026-08-03 | 2026-08-07 | 58 | 2026-08-03 | 2026-08-07 | 5d | 34d |  |  |  |
| 62 | 3.1.2.1.7 | Superfície genérica do terreno. | 5d | 2026-08-03 | 2026-08-07 | 58 | 2026-08-03 | 2026-08-07 | 5d | 10d | 0d |  |  |
| 63 | 3.1.2.2 | **LOD 200 — Validação interdisciplinar e solução preliminar** | 10d | 2026-08-10 | 2026-08-21 |  | 2026-08-10 | 2026-08-21 | 10d | 14d |  |  | ܁$ |
| 64 | 3.1.2.2.1 | Avaliação técnica detalhada. | 10d | 2026-08-10 | 2026-08-21 | 62 | 2026-08-10 | 2026-08-21 | 10d | 24d |  |  |  |
| 65 | 3.1.2.2.2 | Compatibilização inicial com drenagem, fundações e geometria. | 10d | 2026-08-10 | 2026-08-21 | 62 | 2026-08-10 | 2026-08-21 | 10d | 24d |  |  |  |
| 66 | 3.1.2.2.3 | Indicação dos pontos de sondagem em planta georreferenciada. | 10d | 2026-08-10 | 2026-08-21 | 62 | 2026-08-10 | 2026-08-21 | 10d | 24d |  |  |  |
| 67 | 3.1.2.2.4 | Sondagens geotécnicas: Cronograma de execução com áreas e quantidade de perfurações; Boletins informativos com planta de localização dos furos, profundidades e descrição estratigráfica (solo). | 10d | 2026-08-10 | 2026-08-21 | 62 | 2026-08-10 | 2026-08-21 | 10d | 24d |  |  |  |
| 68 | 3.1.2.2.5 | Levantamento topográfico: Arquivo em formato.dwg, com coordenadas georreferenciadas (latitude/longitude), curvas de nível, ortofoto e base planimétrica. | 10d | 2026-08-10 | 2026-08-21 | 62 | 2026-08-10 | 2026-08-21 | 10d | 24d |  |  |  |
| 69 | 3.1.2.2.6 | Planta topográfica com triangulação real (MDT). | 10d | 2026-08-10 | 2026-08-21 | 62 | 2026-08-10 | 2026-08-21 | 10d | 14d | 0d |  |  |
| 70 | 3.1.2.3 | **LOD 300 - Consolidação e documentação de entrega** | 10d | 2026-08-24 | 2026-09-04 |  | 2026-08-24 | 2026-09-04 | 10d | 14d |  |  | ܁$ |
| 71 | 3.1.2.3.1 | Alinhamentos de estaqueamento longitudinal e transversal. | 5d | 2026-08-24 | 2026-08-28 | 69 | 2026-08-24 | 2026-08-28 | 5d | 19d |  |  |  |
| 72 | 3.1.2.3.2 | Análise integrada dos dados topográficos e de sondagem. | 5d | 2026-08-24 | 2026-08-28 | 69 | 2026-08-24 | 2026-08-28 | 5d | 19d |  |  |  |
| 73 | 3.1.2.3.3 | Planta baixa georreferenciada com projeção de cortes e aterros. | 10d | 2026-08-24 | 2026-09-04 | 69 | 2026-08-24 | 2026-09-04 | 10d | 14d | 0d |  |  |
| 74 | 3.1.2.3.4 | Perfis longitudinais e transversais do terreno na situação atual e projetada. | 5d | 2026-08-24 | 2026-08-28 | 69 | 2026-08-24 | 2026-08-28 | 5d | 19d |  |  |  |
| 75 | 3.1.2.3.5 | Tabelas com variações altimétricas de corte e aterro. | 5d | 2026-08-31 | 2026-09-04 | 73FF | 2026-08-31 | 2026-09-04 | 5d | 14d |  |  |  |
| 76 | 3.1.2.3.6 | Aprovação de Conformidade | 3d | 2026-09-02 | 2026-09-04 | 73FF | 2026-09-02 | 2026-09-04 | 3d | 14d |  |  | ܁8 |
| 77 | 3.1.2.3.7 | Material para entrega ao contrato | 3d | 2026-09-02 | 2026-09-04 | 73FF | 2026-09-02 | 2026-09-04 | 3d | 14d |  |  | ܁8 |

| ID | WBS | Task | Duration | Start | Finish | Predecessors | Baseline start | Baseline finish | Baseline duration | Total slack | Free slack | Constraint | Text3 |
| --- | --- | --- | --- | --- | --- | --- | --- | --- | --- | --- | --- | --- | --- |
| 78 | 3.1.3 | **Drenagem** | 24d | 2026-08-10 | 2026-09-11 |  | 2026-08-10 | 2026-09-11 | 24d | 10d |  |  |  |
| 79 | 3.1.3.1 | **LOD 100 — Premissas, diretrizes e interfaces** | 5d | 2026-08-10 | 2026-08-14 |  | 2026-08-10 | 2026-08-14 | 5d | 10d |  |  |  |
| 80 | 3.1.3.1.1 | Diretrizes de espaço | 5d | 2026-08-10 | 2026-08-14 | 62 | 2026-08-10 | 2026-08-14 | 5d | 29d |  |  |  |
| 81 | 3.1.3.1.2 | Memorial preliminar | 5d | 2026-08-10 | 2026-08-14 | 62 | 2026-08-10 | 2026-08-14 | 5d | 29d |  |  |  |
| 82 | 3.1.3.1.3 | Análise climatológica | 5d | 2026-08-10 | 2026-08-14 | 62 | 2026-08-10 | 2026-08-14 | 5d | 29d |  |  |  |
| 83 | 3.1.3.1.4 | Delimitação de área de contribuição | 5d | 2026-08-10 | 2026-08-14 | 62 | 2026-08-10 | 2026-08-14 | 5d | 29d |  |  |  |
| 84 | 3.1.3.1.5 | Levantamento de elementos especiais dentre outras disciplinas de Engenharia e Arquitetura | 5d | 2026-08-10 | 2026-08-14 | 62 | 2026-08-10 | 2026-08-14 | 5d | 29d |  |  |  |
| 85 | 3.1.3.1.6 | Indicação de áreas técnicas | 5d | 2026-08-10 | 2026-08-14 | 62 | 2026-08-10 | 2026-08-14 | 5d | 29d |  |  |  |
| 86 | 3.1.3.1.7 | Planta baixa com traçado conceitual | 5d | 2026-08-10 | 2026-08-14 | 62 | 2026-08-10 | 2026-08-14 | 5d | 29d |  |  |  |
| 87 | 3.1.3.1.8 | Traçado geral de descidas pluviais | 5d | 2026-08-10 | 2026-08-14 | 62 | 2026-08-10 | 2026-08-14 | 5d | 10d | 0d |  |  |
| 88 | 3.1.3.2 | **LOD 200 — Validação interdisciplinar e solução preliminar** | 10d | 2026-08-17 | 2026-08-28 |  | 2026-08-17 | 2026-08-28 | 10d | 10d |  |  |  |
| 89 | 3.1.3.2.1 | Critérios normativos adotados (ABNT, concessionárias, etc.) | 5d | 2026-08-17 | 2026-08-21 | 87 | 2026-08-17 | 2026-08-21 | 5d | 10d | 0d |  |  |
| 90 | 3.1.3.2.2 | Lista preliminar de sistemas e interfaces envolvidos | 5d | 2026-08-17 | 2026-08-21 | 87 | 2026-08-17 | 2026-08-21 | 5d | 10d | 0d |  |  |
| 91 | 3.1.3.2.3 | Planta baixa e cortes estimada contendo: - Traçado preliminar de condutores verticais e horizontais - Dimensionamento inicial de calhas e condutores - Localização de elementos ou redes de drenagem existente - Indicação de áreas técnicas | 5d | 2026-08-17 | 2026-08-21 | 87 | 2026-08-17 | 2026-08-21 | 5d | 24d |  |  |  |
| 92 | 3.1.3.2.4 | Estudo de viabilidade técnica, econômica e ambiental | 5d | 2026-08-24 | 2026-08-28 | 89, 90 | 2026-08-24 | 2026-08-28 | 5d | 10d | 0d |  |  |
| 93 | 3.1.3.2.5 | Levantamento topográfico da área de contribuição e elementos existentes | 5d | 2026-08-24 | 2026-08-28 | 89, 90 | 2026-08-24 | 2026-08-28 | 5d | 10d | 0d |  |  |
| 94 | 3.1.3.2.6 | Sondagem (permeabilidade ou percolação) | 5d | 2026-08-24 | 2026-08-28 | 89, 90 | 2026-08-24 | 2026-08-28 | 5d | 19d |  |  |  |
| 95 | 3.1.3.3 | **LOD 300 - Consolidação e documentação de entrega** | 9d | 2026-08-31 | 2026-09-11 |  | 2026-08-31 | 2026-09-11 | 9d | 10d |  |  |  |
| 96 | 3.1.3.3.1 | Memorial descritivo | 3d | 2026-08-31 | 2026-09-02 | 93 | 2026-08-31 | 2026-09-02 | 3d | 10d | 0d |  |  |
| 97 | 3.1.3.3.2 | Memória de cálculo | 3d | 2026-08-31 | 2026-09-02 | 93, 92 | 2026-08-31 | 2026-09-02 | 3d | 10d | 0d |  |  |
| 98 | 3.1.3.3.3 | Planta, corte e detalhe isométrico contendo: - Detalhamento dos condutores com diâmetros, cotas e inclinações definitivas (condutores pluviais) - Calhas, bocas de lobo, dissipadores de energia e demais elementos/equipamentos definitivos | 3d | 2026-09-03 | 2026-09-08 | 96, 97 | 2026-09-03 | 2026-09-08 | 3d | 10d | 0d |  |  |
| 99 | 3.1.3.3.4 | Quantitativos e especificação técnica dos materiais | 3d | 2026-09-09 | 2026-09-11 | 98 | 2026-09-09 | 2026-09-11 | 3d | 10d | 0d |  |  |
| 100 | 3.1.3.3.5 | Aprovação de Conformidade | 3d | 2026-09-09 | 2026-09-11 | 99FF | 2026-09-09 | 2026-09-11 | 3d | 10d |  |  | ܁8 |
| 101 | 3.1.3.3.6 | Material para entrega ao contrato | 3d | 2026-09-09 | 2026-09-11 | 99FF | 2026-09-09 | 2026-09-11 | 3d | 10d |  |  | ܁8 |
| 102 | 3.1.4 | Rede de água | 34d | 2026-08-10 | 2026-09-25 |  | 2026-08-10 | 2026-09-25 | 34d | 0d |  | start no earlier than 2026-08-10 |  |
| 103 | 3.1.5 | Rede de esgoto | 34d | 2026-08-10 | 2026-09-25 |  | 2026-08-10 | 2026-09-25 | 34d | 0d |  | start no earlier than 2026-08-10 |  |

| ID | WBS | Task | Duration | Start | Finish | Predecessors | Complete | Remaining | Baseline start | Baseline finish | Baseline duration | Total slack |
| --- | --- | --- | --- | --- | --- | --- | --- | --- | --- | --- | --- | --- |
| 104 | 3.2 | **2 - Alameda dos Esportes** | 100d | 2026-05-07 A | 2026-09-25 |  | 10% | 89.71d | 2026-05-07 | 2026-09-25 | 100d | 0d |
| 105 | 3.2.1 | **Arquitetura** | 100d | 2026-05-07 A | 2026-09-25 |  | 18% | 81.58d | 2026-05-07 | 2026-09-25 | 100d | 0d |
| 106 | 3.2.1.1 | **Análise e Compatibilização (caso a gente receba o projeto e precise adequar)** | 84d | 2026-05-07 A | 2026-09-02 |  | 17% | 69.42d | 2026-05-07 | 2026-09-02 | 84d | 16d |
| 107 | 3.2.1.1.1 | Analisar topografia | 42d | 2026-05-07 | 2026-07-06 |  |  |  | 2026-05-07 | 2026-07-06 | 42d | 58d |
| 108 | 3.2.1.1.2 | Criação e georreferenciamento e ajuste de norte nos arquivos federado, arquitetura, implantação, layout | 42d | 2026-05-07 | 2026-07-06 |  |  |  | 2026-05-07 | 2026-07-06 | 42d | 0d |
| 109 | 3.2.1.1.3 | Analise geral do projeto | 42d | 2026-05-07 A | 2026-07-06 A |  | 100% |  | 2026-05-07 | 2026-07-06 | 42d |  |
| 110 | 3.2.1.1.4 | Verificar acessibilidade dos espaços de acordo com a norma e sistematizar ajustes | 42d | 2026-05-07 A | 2026-07-06 A |  | 100% |  | 2026-05-07 | 2026-07-06 | 42d |  |
| 111 | 3.2.1.1.5 | Conferir Esquadrias | 42d | 2026-05-07 | 2026-07-06 |  |  |  | 2026-05-07 | 2026-07-06 | 42d | 58d |
| 112 | 3.2.1.1.6 | Conferir Mobiliário | 42d | 2026-05-07 | 2026-07-06 |  |  |  | 2026-05-07 | 2026-07-06 | 42d | 58d |
| 113 | 3.2.1.1.7 | Compatibilização disciplinas engenharia e sistematização incrementos e ajustes | 42d | 2026-07-07 | 2026-09-02 | 108 |  |  | 2026-07-07 | 2026-09-02 | 42d | 16d |
| 114 | 3.2.1.1.8 | Compatibilização com normas técnicas | 38d | 2026-07-07 | 2026-08-27 | 108 |  |  | 2026-07-07 | 2026-08-27 | 38d | 0d |
| 115 | 3.2.1.1.9 | Compatibilização padrão Quanta | 38d | 2026-07-07 | 2026-08-27 | 108 |  |  | 2026-07-07 | 2026-08-27 | 38d | 20d |
| 116 | 3.2.1.1.10 | Verficar se elementos estão associados aos níveis corretos e sistematizar ajustes | 38d | 2026-07-07 | 2026-08-27 | 108 |  |  | 2026-07-07 | 2026-08-27 | 38d | 20d |
| 117 | 3.2.1.1.11 | Revisão de perímetro do terreno, recuos, taxa de ocupação e afastamentos | 38d | 2026-07-07 | 2026-08-27 | 108 |  |  | 2026-07-07 | 2026-08-27 | 38d | 20d |
| 118 | 3.2.1.1.12 | Relatório/Memorial de Compatibilização | 38d | 2026-07-07 | 2026-08-27 | 108 |  |  | 2026-07-07 | 2026-08-27 | 38d | 0d |
| 119 | 3.2.1.2 | **LOD 300 - ANTEPROJETO** | 20d | 2026-08-28 A | 2026-09-25 |  | 21% | 15.77d | 2026-08-28 | 2026-09-25 | 20d | 0d |
| 120 | 3.2.1.2.1 | **Modelagem e compatibilização** | 10d | 2026-08-28 A | 2026-09-11 |  | 40% | 6d | 2026-08-28 | 2026-09-11 | 10d | 10d |
| 121 | 3.2.1.2.1.1 | Modelagem ajustes topografia | 10d | 2026-08-28 | 2026-09-11 | 118 |  |  | 2026-08-28 | 2026-09-11 | 10d | 10d |
| 122 | 3.2.1.2.1.2 | Mudar esquadrias para o padrão Quanta | 10d | 2026-08-28 | 2026-09-11 | 118 |  |  | 2026-08-28 | 2026-09-11 | 10d | 10d |
| 123 | 3.2.1.2.1.3 | Mudar louças para o padrão Quanta | 10d | 2026-08-28 A | 2026-09-11 A | 118 | 100% |  | 2026-08-28 | 2026-09-11 | 10d |  |
| 124 | 3.2.1.2.1.4 | Modelagem acessos e vias necessárias a implantação | 10d | 2026-08-28 A | 2026-09-11 A | 118 | 100% |  | 2026-08-28 | 2026-09-11 | 10d |  |
| 125 | 3.2.1.2.1.5 | Modelagem passeios e canteiros | 10d | 2026-08-28 A | 2026-09-11 A | 118 | 100% |  | 2026-08-28 | 2026-09-11 | 10d |  |
| 126 | 3.2.1.2.1.6 | Modelagem estacionamentos | 10d | 2026-08-28 A | 2026-09-11 A | 118 | 100% |  | 2026-08-28 | 2026-09-11 | 10d |  |
| 127 | 3.2.1.2.1.7 | Modelagem subestação elétrica | 10d | 2026-08-28 | 2026-09-11 | 118 |  |  | 2026-08-28 | 2026-09-11 | 10d | 10d |
| 128 | 3.2.1.2.1.8 | Modelagem ETE | 10d | 2026-08-28 | 2026-09-11 | 118 |  |  | 2026-08-28 | 2026-09-11 | 10d | 10d |
| 129 | 3.2.1.2.1.9 | Modelagem PCI | 10d | 2026-08-28 | 2026-09-11 | 118 |  |  | 2026-08-28 | 2026-09-11 | 10d | 10d |
| 130 | 3.2.1.2.1.10 | Modelagem/ajustes caixa d'água | 10d | 2026-08-28 | 2026-09-11 | 118 |  |  | 2026-08-28 | 2026-09-11 | 10d | 0d |

| ID | WBS | Task | Duration | Start | Finish | Predecessors | Baseline start | Baseline finish | Baseline duration | Total slack |
| --- | --- | --- | --- | --- | --- | --- | --- | --- | --- | --- |
| 131 | 3.2.1.2.2 | **Situação** | 1d | 2026-09-14 | 2026-09-14 |  | 2026-09-14 | 2026-09-14 | 1d | 0d |
| 132 | 3.2.1.2.2.1 | Indicar simbologias de representação gráfica, conforme NBR 6492:2021; | 1d | 2026-09-14 | 2026-09-14 | 130 | 2026-09-14 | 2026-09-14 | 1d | 9d |
| 133 | 3.2.1.2.2.2 | Indicação Norte | 1d | 2026-09-14 | 2026-09-14 | 130 | 2026-09-14 | 2026-09-14 | 1d | 9d |
| 134 | 3.2.1.2.2.3 | Analisar, adicionar e fechar - Curvas de nível existentes e projetadas (conforme projetos de topografia e sondagem recebidos); | 1d | 2026-09-14 | 2026-09-14 | 130 | 2026-09-14 | 2026-09-14 | 1d | 9d |
| 135 | 3.2.1.2.2.4 | Indicação de Escala; | 1d | 2026-09-14 | 2026-09-14 | 130 | 2026-09-14 | 2026-09-14 | 1d | 9d |
| 136 | 3.2.1.2.2.5 | Vias de acesso ao conjunto, arruamento, logradouros adjacentes e calçadas com os respectivos equipamentos urbanos; | 1d | 2026-09-14 | 2026-09-14 | 130 | 2026-09-14 | 2026-09-14 | 1d | 9d |
| 137 | 3.2.1.2.2.6 | Platôs e taludes principais; | 1d | 2026-09-14 | 2026-09-14 | 130 | 2026-09-14 | 2026-09-14 | 1d | 9d |
| 138 | 3.2.1.2.2.7 | Perímetro do terreno, recuos e afastamentos; | 1d | 2026-09-14 | 2026-09-14 | 130 | 2026-09-14 | 2026-09-14 | 1d | 9d |
| 139 | 3.2.1.2.2.8 | Indicação das áreas a serem edificadas com o contorno da cobertura das edificações, estacionamentos e áreas permeáveis/impermeáveis; | 1d | 2026-09-14 | 2026-09-14 | 130 | 2026-09-14 | 2026-09-14 | 1d | 9d |
| 140 | 3.2.1.2.2.9 | Denominação das edificações, blocos ou espaços; | 1d | 2026-09-14 | 2026-09-14 | 130 | 2026-09-14 | 2026-09-14 | 1d | 9d |
| 141 | 3.2.1.2.2.10 | Cotas gerais | 1d | 2026-09-14 | 2026-09-14 | 130 | 2026-09-14 | 2026-09-14 | 1d | 9d |
| 142 | 3.2.1.2.2.11 | Cotas de nível principal. | 1d | 2026-09-14 | 2026-09-14 | 130 | 2026-09-14 | 2026-09-14 | 1d | 9d |
| 143 | 3.2.1.2.2.12 | Quadros de áreas | 1d | 2026-09-14 | 2026-09-14 | 130 | 2026-09-14 | 2026-09-14 | 1d | 0d |
| 144 | 3.2.1.2.3 | Planta com as cotas de nível projetadas e existentes | 1d | 2026-09-14 | 2026-09-14 | 143SS | 2026-09-14 | 2026-09-14 | 1d | 0d |
| 145 | 3.2.1.2.4 | **Plantas baixas (se tiver mais de um pavimento, duplicar bloco)** | 1d | 2026-09-15 | 2026-09-15 |  | 2026-09-15 | 2026-09-15 | 1d | 0d |
| 146 | 3.2.1.2.4.1 | Indicar simbologias de representação gráfica, conforme NBR 6492:2021; | 1d | 2026-09-15 | 2026-09-15 | 144 | 2026-09-15 | 2026-09-15 | 1d | 8d |
| 147 | 3.2.1.2.4.2 | Compatibilização (verificar se está tudo conforme as normas e alinhar com o restante das disciplinas de engenharia) | 1d | 2026-09-15 | 2026-09-15 | 144 | 2026-09-15 | 2026-09-15 | 1d | 8d |
| 148 | 3.2.1.2.4.3 | Compatibilização (deixar tudo conforme padrão Quanta) | 1d | 2026-09-15 | 2026-09-15 | 144 | 2026-09-15 | 2026-09-15 | 1d | 8d |
| 149 | 3.2.1.2.4.4 | Indicação de Norte; | 1d | 2026-09-15 | 2026-09-15 | 144 | 2026-09-15 | 2026-09-15 | 1d | 8d |
| 150 | 3.2.1.2.4.5 | Indicação de Escala; | 1d | 2026-09-15 | 2026-09-15 | 144 | 2026-09-15 | 2026-09-15 | 1d | 8d |
| 151 | 3.2.1.2.4.6 | Indicação de Acessos; | 1d | 2026-09-15 | 2026-09-15 | 144 | 2026-09-15 | 2026-09-15 | 1d | 8d |
| 152 | 3.2.1.2.4.7 | Elementos de vedação internos e externos; | 1d | 2026-09-15 | 2026-09-15 | 144 | 2026-09-15 | 2026-09-15 | 1d | 8d |
| 153 | 3.2.1.2.4.8 | Esquadrias (sem código e sem quadro); | 1d | 2026-09-15 | 2026-09-15 | 144 | 2026-09-15 | 2026-09-15 | 1d | 8d |
| 154 | 3.2.1.2.4.9 | Elementos estruturais principais; | 1d | 2026-09-15 | 2026-09-15 | 144 | 2026-09-15 | 2026-09-15 | 1d | 8d |
| 155 | 3.2.1.2.4.10 | Identificação dos ambientes e espaços (internos e externos); | 1d | 2026-09-15 | 2026-09-15 | 144 | 2026-09-15 | 2026-09-15 | 1d | 8d |
| 156 | 3.2.1.2.4.11 | Espaços de circulação internos e externos; | 1d | 2026-09-15 | 2026-09-15 | 144 | 2026-09-15 | 2026-09-15 | 1d | 8d |
| 157 | 3.2.1.2.4.12 | Áreas de serviço, funcionais e técnicas (internos e externos); | 1d | 2026-09-15 | 2026-09-15 | 144 | 2026-09-15 | 2026-09-15 | 1d | 8d |
| 158 | 3.2.1.2.4.13 | Projeções de níveis superiores; | 1d | 2026-09-15 | 2026-09-15 | 144 | 2026-09-15 | 2026-09-15 | 1d | 8d |
| 159 | 3.2.1.2.4.14 | Cotas gerais | 1d | 2026-09-15 | 2026-09-15 | 144 | 2026-09-15 | 2026-09-15 | 1d | 8d |
| 160 | 3.2.1.2.4.15 | Cotas de nível principal. | 1d | 2026-09-15 | 2026-09-15 | 144 | 2026-09-15 | 2026-09-15 | 1d | 8d |
| 161 | 3.2.1.2.4.16 | Tabelas de paredes, pisos, esquadrias e plantas | 1d | 2026-09-15 | 2026-09-15 | 144 | 2026-09-15 | 2026-09-15 | 1d | 8d |
| 162 | 3.2.1.2.4.17 | Quadro de áreas | 1d | 2026-09-15 | 2026-09-15 | 144 | 2026-09-15 | 2026-09-15 | 1d | 0d |

| ID | WBS | Task | Duration | Start | Finish | Predecessors | Baseline start | Baseline finish | Baseline duration | Total slack |
| --- | --- | --- | --- | --- | --- | --- | --- | --- | --- | --- |
| 163 | 3.2.1.2.5 | **Planta das coberturas** | 1d | 2026-09-16 | 2026-09-16 |  | 2026-09-16 | 2026-09-16 | 1d | 0d |
| 164 | 3.2.1.2.5.1 | Indicação do Norte | 1d | 2026-09-16 | 2026-09-16 | 162 | 2026-09-16 | 2026-09-16 | 1d | 7d |
| 165 | 3.2.1.2.5.2 | Indicação de escala | 1d | 2026-09-16 | 2026-09-16 | 162 | 2026-09-16 | 2026-09-16 | 1d | 7d |
| 166 | 3.2.1.2.5.3 | Curvas de nível | 1d | 2026-09-16 | 2026-09-16 | 162 | 2026-09-16 | 2026-09-16 | 1d | 7d |
| 167 | 3.2.1.2.5.4 | Indicação de Acessos; | 1d | 2026-09-16 | 2026-09-16 | 162 | 2026-09-16 | 2026-09-16 | 1d | 7d |
| 168 | 3.2.1.2.5.5 | Estacionamento e áreas cobertas | 1d | 2026-09-16 | 2026-09-16 | 162 | 2026-09-16 | 2026-09-16 | 1d | 7d |
| 169 | 3.2.1.2.5.6 | Cobertura das edificações | 1d | 2026-09-16 | 2026-09-16 | 162 | 2026-09-16 | 2026-09-16 | 1d | 7d |
| 170 | 3.2.1.2.5.7 | Sentido de escoamento das águas pluviais e inclinação | 1d | 2026-09-16 | 2026-09-16 | 162 | 2026-09-16 | 2026-09-16 | 1d | 7d |
| 171 | 3.2.1.2.5.8 | Cotas gerais | 1d | 2026-09-16 | 2026-09-16 | 162 | 2026-09-16 | 2026-09-16 | 1d | 7d |
| 172 | 3.2.1.2.5.9 | Cotas de nível principal | 1d | 2026-09-16 | 2026-09-16 | 162 | 2026-09-16 | 2026-09-16 | 1d | 0d |
| 173 | 3.2.1.2.6 | **Cortes longitudinais** | 1d | 2026-09-17 | 2026-09-17 |  | 2026-09-17 | 2026-09-17 | 1d | 0d |
| 174 | 3.2.1.2.6.1 | Indicar simbologias de representação gráfica, conforme NBR 6492:2021; | 1d | 2026-09-17 | 2026-09-17 | 172 | 2026-09-17 | 2026-09-17 | 1d | 6d |
| 175 | 3.2.1.2.6.2 | Indicação de Escala; | 1d | 2026-09-17 | 2026-09-17 | 172 | 2026-09-17 | 2026-09-17 | 1d | 6d |
| 176 | 3.2.1.2.6.3 | Elementos estruturais principais; | 1d | 2026-09-17 | 2026-09-17 | 172 | 2026-09-17 | 2026-09-17 | 1d | 6d |
| 177 | 3.2.1.2.6.4 | Elementos de vedação internos e externos; | 1d | 2026-09-17 | 2026-09-17 | 172 | 2026-09-17 | 2026-09-17 | 1d | 6d |
| 178 | 3.2.1.2.6.5 | Esquadrias; | 1d | 2026-09-17 | 2026-09-17 | 172 | 2026-09-17 | 2026-09-17 | 1d | 6d |
| 179 | 3.2.1.2.6.6 | Identificação dos ambientes; | 1d | 2026-09-17 | 2026-09-17 | 172 | 2026-09-17 | 2026-09-17 | 1d | 6d |
| 180 | 3.2.1.2.6.7 | Cobertura com indicação da respectiva inclinação; | 1d | 2026-09-17 | 2026-09-17 | 172 | 2026-09-17 | 2026-09-17 | 1d | 6d |
| 181 | 3.2.1.2.6.8 | Cotas gerais; | 1d | 2026-09-17 | 2026-09-17 | 172 | 2026-09-17 | 2026-09-17 | 1d | 6d |
| 182 | 3.2.1.2.6.9 | Cotas de nível principal; | 1d | 2026-09-17 | 2026-09-17 | 172 | 2026-09-17 | 2026-09-17 | 1d | 6d |
| 183 | 3.2.1.2.6.10 | Eixos do projeto; | 1d | 2026-09-17 | 2026-09-17 | 172 | 2026-09-17 | 2026-09-17 | 1d | 6d |
| 184 | 3.2.1.2.6.11 | Relevo construído; | 1d | 2026-09-17 | 2026-09-17 | 172 | 2026-09-17 | 2026-09-17 | 1d | 6d |
| 185 | 3.2.1.2.6.12 | Projeção da topografia natural. | 1d | 2026-09-17 | 2026-09-17 | 172 | 2026-09-17 | 2026-09-17 | 1d | 0d |
| 186 | 3.2.1.2.6.13 | Relatório | 1d | 2026-09-17 | 2026-09-17 | 172 | 2026-09-17 | 2026-09-17 | 1d | 0d |

| ID | WBS | Task | Duration | Start | Finish | Predecessors | Baseline start | Baseline finish | Baseline duration | Total slack |
| --- | --- | --- | --- | --- | --- | --- | --- | --- | --- | --- |
| 187 | 3.2.1.2.7 | **Cortes transversais** | 1d | 2026-09-18 | 2026-09-18 |  | 2026-09-18 | 2026-09-18 | 1d | 0d |
| 188 | 3.2.1.2.7.1 | Indicar simbologias de representação gráfica, conforme NBR 6492:2021; | 1d | 2026-09-18 | 2026-09-18 | 185 | 2026-09-18 | 2026-09-18 | 1d | 5d |
| 189 | 3.2.1.2.7.2 | Indicação de Escala; | 1d | 2026-09-18 | 2026-09-18 | 185 | 2026-09-18 | 2026-09-18 | 1d | 5d |
| 190 | 3.2.1.2.7.3 | Elementos estruturais principais; | 1d | 2026-09-18 | 2026-09-18 | 185 | 2026-09-18 | 2026-09-18 | 1d | 5d |
| 191 | 3.2.1.2.7.4 | Elementos de vedação internos e externos; | 1d | 2026-09-18 | 2026-09-18 | 185 | 2026-09-18 | 2026-09-18 | 1d | 5d |
| 192 | 3.2.1.2.7.5 | Esquadrias; | 1d | 2026-09-18 | 2026-09-18 | 185 | 2026-09-18 | 2026-09-18 | 1d | 5d |
| 193 | 3.2.1.2.7.6 | Identificação dos ambientes; | 1d | 2026-09-18 | 2026-09-18 | 185 | 2026-09-18 | 2026-09-18 | 1d | 5d |
| 194 | 3.2.1.2.7.7 | Cobertura com indicação da respectiva inclinação; | 1d | 2026-09-18 | 2026-09-18 | 185 | 2026-09-18 | 2026-09-18 | 1d | 5d |
| 195 | 3.2.1.2.7.8 | Cotas gerais; | 1d | 2026-09-18 | 2026-09-18 | 185 | 2026-09-18 | 2026-09-18 | 1d | 5d |
| 196 | 3.2.1.2.7.9 | Cotas de nível principal; | 1d | 2026-09-18 | 2026-09-18 | 185 | 2026-09-18 | 2026-09-18 | 1d | 5d |
| 197 | 3.2.1.2.7.10 | Eixos do projeto; | 1d | 2026-09-18 | 2026-09-18 | 185 | 2026-09-18 | 2026-09-18 | 1d | 5d |
| 198 | 3.2.1.2.7.11 | Relevo construído; | 1d | 2026-09-18 | 2026-09-18 | 185 | 2026-09-18 | 2026-09-18 | 1d | 5d |
| 199 | 3.2.1.2.7.12 | Projeção da topografia natural | 1d | 2026-09-18 | 2026-09-18 | 185 | 2026-09-18 | 2026-09-18 | 1d | 0d |
| 200 | 3.2.1.2.8 | **Elevações** | 1d | 2026-09-21 | 2026-09-21 |  | 2026-09-21 | 2026-09-21 | 1d | 0d |
| 201 | 3.2.1.2.8.1 | Indicar simbologias de representação gráfica, conforme NBR 6492:2021; | 1d | 2026-09-21 | 2026-09-21 | 199 | 2026-09-21 | 2026-09-21 | 1d | 4d |
| 202 | 3.2.1.2.8.2 | Indicação de Escala; | 1d | 2026-09-21 | 2026-09-21 | 199 | 2026-09-21 | 2026-09-21 | 1d | 4d |
| 203 | 3.2.1.2.8.3 | Elementos estruturais principais; | 1d | 2026-09-21 | 2026-09-21 | 199 | 2026-09-21 | 2026-09-21 | 1d | 4d |
| 204 | 3.2.1.2.8.4 | Elementos de vedação internos e externos; | 1d | 2026-09-21 | 2026-09-21 | 199 | 2026-09-21 | 2026-09-21 | 1d | 4d |
| 205 | 3.2.1.2.8.5 | Esquadrias (sem código e sem quadro); | 1d | 2026-09-21 | 2026-09-21 | 199 | 2026-09-21 | 2026-09-21 | 1d | 4d |
| 206 | 3.2.1.2.8.6 | Relevo construído; | 1d | 2026-09-21 | 2026-09-21 | 199 | 2026-09-21 | 2026-09-21 | 1d | 4d |
| 207 | 3.2.1.2.8.7 | Cotas gerais; | 1d | 2026-09-21 | 2026-09-21 | 199 | 2026-09-21 | 2026-09-21 | 1d | 4d |
| 208 | 3.2.1.2.8.8 | Cotas de nível principais; | 1d | 2026-09-21 | 2026-09-21 | 199 | 2026-09-21 | 2026-09-21 | 1d | 4d |
| 209 | 3.2.1.2.8.9 | Cobertura (quando aparente). | 1d | 2026-09-21 | 2026-09-21 | 199 | 2026-09-21 | 2026-09-21 | 1d | 0d |
| 210 | 3.2.1.2.9 | **Memorial Descritivo** | 4d | 2026-09-22 | 2026-09-25 |  | 2026-09-22 | 2026-09-25 | 4d | 0d |
| 211 | 3.2.1.2.9.1 | Descrição dos elementos da edificação | 4d | 2026-09-22 | 2026-09-25 | 209 | 2026-09-22 | 2026-09-25 | 4d | 0d |
| 212 | 3.2.1.2.9.2 | Geração de imagens representando os itens dissertados no relatório | 4d | 2026-09-22 | 2026-09-25 | 209 | 2026-09-22 | 2026-09-25 | 4d | 0d |
| 213 | 3.2.1.2.9.3 | Descrição dos componentes construtivos e materiais de construção | 4d | 2026-09-22 | 2026-09-25 | 209 | 2026-09-22 | 2026-09-25 | 4d | 0d |
| 214 | 3.2.1.2.9.4 | Lista de pranchas anexas e documentos | 4d | 2026-09-22 | 2026-09-25 | 209 | 2026-09-22 | 2026-09-25 | 4d | 0d |
| 215 | 3.2.2 | Aprovação de Conformidade | 3d | 2026-09-23 | 2026-09-25 | 210FF | 2026-09-23 | 2026-09-25 | 3d | 0d |
| 216 | 3.2.3 | Material para entrega ao contrato | 3d | 2026-09-23 | 2026-09-25 | 210FF | 2026-09-23 | 2026-09-25 | 3d | 0d |

| ID | WBS | Task | Duration | Start | Finish | Predecessors | Baseline start | Baseline finish | Baseline duration | Total slack | Free slack | Text3 |
| --- | --- | --- | --- | --- | --- | --- | --- | --- | --- | --- | --- | --- |
| 217 | 3.2.4 | **Engenharia** | 38d | 2026-08-04 | 2026-09-25 |  | 2026-08-04 | 2026-09-25 | 38d | 0d |  |  |
| 218 | 3.2.4.1 | **Hidrossanitário** | 38d | 2026-08-04 | 2026-09-25 |  | 2026-08-04 | 2026-09-25 | 38d | 0d |  |  |
| 219 | 3.2.4.1.1 | **LOD 100 — Premissas, diretrizes e interfaces** | 10d | 2026-08-04 | 2026-08-17 |  | 2026-08-04 | 2026-08-17 | 10d | 0d |  |  |
| 220 | 3.2.4.1.1.1 | Memorial preliminar | 10d | 2026-08-04 | 2026-08-17 | 1323SS+20d, 1067SS+20d, 811SS+20d, 555SS+20d, 299SS+20d, 114SS+20d | 2026-08-04 | 2026-08-17 | 10d | 28d |  |  |
| 221 | 3.2.4.1.1.2 | Indicação de áreas técnicas | 6d | 2026-08-04 | 2026-08-11 | 1323SS+20d, 1067SS+20d, 811SS+20d, 555SS+20d, 299SS+20d, 114SS+20d | 2026-08-04 | 2026-08-11 | 6d | 32d |  |  |
| 222 | 3.2.4.1.1.3 | Planta baixa com traçado conceitual | 6d | 2026-08-04 | 2026-08-11 | 1323SS+20d, 1067SS+20d, 811SS+20d, 555SS+20d, 299SS+20d, 114SS+20d | 2026-08-04 | 2026-08-11 | 6d | 32d |  |  |
| 223 | 3.2.4.1.1.4 | Pontos de consumo principais e coletas sanitárias | 6d | 2026-08-04 | 2026-08-11 | 1323SS+20d, 1067SS+20d, 811SS+20d, 555SS+20d, 299SS+20d, 114SS+20d | 2026-08-04 | 2026-08-11 | 6d | 32d |  |  |
| 224 | 3.2.4.1.1.5 | Classificação de uso | 10d | 2026-08-04 | 2026-08-17 | 1323SS+20d, 1067SS+20d, 811SS+20d, 555SS+20d, 299SS+20d, 114SS+20d | 2026-08-04 | 2026-08-17 | 10d | 28d |  |  |
| 225 | 3.2.4.1.1.6 | Diretrizes de espaço | 10d | 2026-08-04 | 2026-08-17 | 1323SS+20d, 1067SS+20d, 811SS+20d, 555SS+20d, 299SS+20d, 114SS+20d | 2026-08-04 | 2026-08-17 | 10d | 28d |  |  |
| 226 | 3.2.4.1.1.7 | Estimativa de demanda ou população de uso | 10d | 2026-08-04 | 2026-08-17 | 1323SS+20d, 1067SS+20d, 811SS+20d, 555SS+20d, 299SS+20d, 114SS+20d | 2026-08-04 | 2026-08-17 | 10d | 28d |  |  |
| 227 | 3.2.4.1.1.8 | Levantamento de elementos especiais dentre outras disciplinas de Engenharia e Arquitetura | 10d | 2026-08-04 | 2026-08-17 | 1323SS+20d, 1067SS+20d, 811SS+20d, 555SS+20d, 299SS+20d, 114SS+20d | 2026-08-04 | 2026-08-17 | 10d | 0d |  |  |
| 228 | 3.2.4.1.2 | **LOD 200 — Validação interdisciplinar e solução preliminar** | 20d | 2026-08-18 | 2026-09-15 |  | 2026-08-18 | 2026-09-15 | 20d | 0d |  |  |
| 229 | 3.2.4.1.2.1 | Critérios normativos adotados (ABNT, concessionárias, etc.) | 20d | 2026-08-18 | 2026-09-15 | 227 | 2026-08-18 | 2026-09-15 | 20d | 8d | 0d |  |
| 230 | 3.2.4.1.2.2 | Informações de demanda na concessionária (DPE ou AVT Aviso de Viabilidade Técnica) | 20d | 2026-08-18 | 2026-09-15 | 229SS | 2026-08-18 | 2026-09-15 | 20d | 8d |  |  |
| 231 | 3.2.4.1.2.3 | Estudo de viabilidade técnica, econômica e ambiental | 20d | 2026-08-18 | 2026-09-15 | 229SS | 2026-08-18 | 2026-09-15 | 20d | 8d |  |  |
| 232 | 3.2.4.1.2.4 | Lista preliminar de sistemas envolvidos. | 20d | 2026-08-18 | 2026-09-15 | 227 | 2026-08-18 | 2026-09-15 | 20d | 8d |  |  |
| 233 | 3.2.4.1.2.5 | Planta baixa estimada contendo: - Traçado preliminar | 20d | 2026-08-18 | 2026-09-15 | 227 | 2026-08-18 | 2026-09-15 | 20d | 0d |  |  |
| 234 | 3.2.4.1.3 | **LOD 300 - Consolidação e documentação de entrega** | 8d | 2026-09-16 | 2026-09-25 |  | 2026-09-16 | 2026-09-25 | 8d | 0d |  |  |
| 235 | 3.2.4.1.3.1 | Prancha simplificada do projeto | 8d | 2026-09-16 | 2026-09-25 | 233 | 2026-09-16 | 2026-09-25 | 8d | 0d |  |  |
| 236 | 3.2.4.1.3.2 | Memorial descritivo | 3d | 2026-09-23 | 2026-09-25 | 235FF | 2026-09-23 | 2026-09-25 | 3d | 0d |  |  |
| 237 | 3.2.4.1.3.3 | Memória de cálculo (pressão, vazão, diâmetros, perda de carga). | 3d | 2026-09-23 | 2026-09-25 | 233, 235FF | 2026-09-23 | 2026-09-25 | 3d | 0d |  |  |
| 238 | 3.2.4.1.4 | Aprovação de Conformidade | 3d | 2026-09-23 | 2026-09-25 | 234FF | 2026-09-23 | 2026-09-25 | 3d | 0d |  |  |
| 239 | 3.2.4.1.5 | Material para entrega ao contrato | 3d | 2026-09-23 | 2026-09-25 | 234FF | 2026-09-23 | 2026-09-25 | 3d | 0d |  |  |
| 240 | 3.2.4.2 | **PCI (Incêndio)** | 34d | 2026-08-10 | 2026-09-25 |  | 2026-08-10 | 2026-09-25 | 34d | 0d |  |  |
| 241 | 3.2.4.2.1 | **LOD 100 — Premissas, diretrizes e interfaces** | 10d | 2026-08-10 | 2026-08-21 |  | 2026-08-10 | 2026-08-21 | 10d | 0d |  | ܁# |
| 242 | 3.2.4.2.1.1 | Estudo e avaliação da arquitetura atendendo as normas competentes de PCI | 10d | 2026-08-10 | 2026-08-21 | 1323SS+24d, 1067SS+24d, 811SS+24d, 555SS+24d, 299SS+24d, 114SS+24d | 2026-08-10 | 2026-08-21 | 10d | 24d |  |  |
| 243 | 3.2.4.2.1.2 | Avaliação do espaço para CMI e Central de Gás. | 10d | 2026-08-10 | 2026-08-21 | 1323SS+24d, 1067SS+24d, 811SS+24d, 555SS+24d, 299SS+24d, 114SS+24d | 2026-08-10 | 2026-08-21 | 10d | 24d |  |  |
| 244 | 3.2.4.2.1.3 | Pontos locação para seus elementos no projeto arquitetônico | 10d | 2026-08-10 | 2026-08-21 | 1323SS+24d, 1067SS+24d, 811SS+24d, 555SS+24d, 299SS+24d, 114SS+24d | 2026-08-10 | 2026-08-21 | 10d | 0d |  |  |

| ID | WBS | Task | Duration | Start | Finish | Predecessors | Baseline start | Baseline finish | Baseline duration | Total slack | Text3 |
| --- | --- | --- | --- | --- | --- | --- | --- | --- | --- | --- | --- |
| 245 | 3.2.4.2.2 | **LOD 200 — Validação interdisciplinar e solução preliminar** | 24d | 2026-08-24 | 2026-09-25 |  | 2026-08-24 | 2026-09-25 | 24d | 0d | ܁# |
| 246 | 3.2.4.2.2.1 | Definição da classificação da edificação e o risco de incêndio | 24d | 2026-08-24 | 2026-09-25 | 244 | 2026-08-24 | 2026-09-25 | 24d | 0d |  |
| 247 | 3.2.4.2.2.2 | Cálculos pré-dimensionados dos extintores, hidrantes e bomba. | 24d | 2026-08-24 | 2026-09-25 | 244 | 2026-08-24 | 2026-09-25 | 24d | 0d |  |
| 248 | 3.2.4.2.2.3 | Avaliação das rotas de fuga, ventilação de CMI e outros elementos de importância para as normas de PCI | 24d | 2026-08-24 | 2026-09-25 | 244 | 2026-08-24 | 2026-09-25 | 24d | 0d |  |
| 249 | 3.2.4.2.3 | Aprovação de Conformidade | 3d | 2026-09-23 | 2026-09-25 | 245FF | 2026-09-23 | 2026-09-25 | 3d | 0d |  |
| 250 | 3.2.4.2.4 | Material para entrega ao contrato | 3d | 2026-09-23 | 2026-09-25 | 245FF | 2026-09-23 | 2026-09-25 | 3d | 0d |  |
| 251 | 3.2.4.3 | **Elétrica Baixa Tensão** | 34d | 2026-08-10 | 2026-09-25 |  | 2026-08-10 | 2026-09-25 | 34d | 0d |  |
| 252 | 3.2.4.3.1 | **LOD 100 — Concepção** | 10d | 2026-08-10 | 2026-08-21 |  | 2026-08-10 | 2026-08-21 | 10d | 0d |  |
| 253 | 3.2.4.3.1.1 | Avaliação e Diretrizes Técnicas para Arquitetura | 6d | 2026-08-10 | 2026-08-17 | 1323SS+24d, 1067SS+24d, 811SS+24d, 555SS+24d, 299SS+24d, 114SS+24d | 2026-08-10 | 2026-08-17 | 6d | 28d |  |
| 254 | 3.2.4.3.1.2 | Estimativa de Cargas e Demanda | 10d | 2026-08-10 | 2026-08-21 | 1323SS+24d, 1067SS+24d, 811SS+24d, 555SS+24d, 299SS+24d, 114SS+24d | 2026-08-10 | 2026-08-21 | 10d | 0d |  |
| 255 | 3.2.4.3.1.3 | Levantamento de Equipamentos de Outras Disciplinas | 6d | 2026-08-10 | 2026-08-17 | 1323SS+24d, 1067SS+24d, 811SS+24d, 555SS+24d, 299SS+24d, 114SS+24d | 2026-08-10 | 2026-08-17 | 6d | 4d |  |
| 256 | 3.2.4.3.2 | **LOD 200 — Anteprojeto** | 19d | 2026-08-24 | 2026-09-18 |  | 2026-08-24 | 2026-09-18 | 19d | 0d |  |
| 257 | 3.2.4.3.2.1 | TUGs Estimados | 19d | 2026-08-24 | 2026-09-18 | 254, 255 | 2026-08-24 | 2026-09-18 | 19d | 0d |  |
| 258 | 3.2.4.3.2.2 | Pontos de Luz Estimados | 19d | 2026-08-24 | 2026-09-18 | 254, 255 | 2026-08-24 | 2026-09-18 | 19d | 0d |  |
| 259 | 3.2.4.3.2.3 | TUEs e Quadros Estimados | 19d | 2026-08-24 | 2026-09-18 | 254, 255 | 2026-08-24 | 2026-09-18 | 19d | 0d |  |
| 260 | 3.2.4.3.3 | LOD 300 - Consolidação e documentação de entrega | 5d | 2026-09-21 | 2026-09-25 | 256 | 2026-09-21 | 2026-09-25 | 5d | 0d |  |
| 261 | 3.2.4.3.4 | Aprovação de Conformidade | 3d | 2026-09-23 | 2026-09-25 | 260FF | 2026-09-23 | 2026-09-25 | 3d | 0d |  |
| 262 | 3.2.4.3.5 | Material para entrega ao contrato | 3d | 2026-09-23 | 2026-09-25 | 260FF | 2026-09-23 | 2026-09-25 | 3d | 0d |  |
| 263 | 3.2.4.4 | **Subestação** | 34d | 2026-08-10 | 2026-09-25 |  | 2026-08-10 | 2026-09-25 | 34d | 0d |  |
| 264 | 3.2.4.4.1 | **LOD 100 — Concepção** | 10d | 2026-08-10 | 2026-08-21 |  | 2026-08-10 | 2026-08-21 | 10d | 0d |  |
| 265 | 3.2.4.4.1.1 | Avaliação e Diretrizes Técnicas para Arquitetura | 10d | 2026-08-10 | 2026-08-21 | 1323SS+24d, 1067SS+24d, 811SS+24d, 555SS+24d, 299SS+24d, 114SS+24d | 2026-08-10 | 2026-08-21 | 10d | 24d |  |
| 266 | 3.2.4.4.1.2 | Levantamento de Demanda, Perfil de Consumo e Ponto de Entrega | 10d | 2026-08-10 | 2026-08-21 | 1323SS+24d, 1067SS+24d, 811SS+24d, 555SS+24d, 299SS+24d, 114SS+24d | 2026-08-10 | 2026-08-21 | 10d | 24d |  |
| 267 | 3.2.4.4.1.3 | Estudo de Viabilidade Técnica e Atendimento ao Padrão da Concessionária | 10d | 2026-08-10 | 2026-08-21 | 1323SS+24d, 1067SS+24d, 811SS+24d, 555SS+24d, 299SS+24d, 114SS+24d | 2026-08-10 | 2026-08-21 | 10d | 0d |  |
| 268 | 3.2.4.4.2 | **LOD 200 — Anteprojeto** | 20d | 2026-08-24 | 2026-09-21 |  | 2026-08-24 | 2026-09-21 | 20d | 0d |  |
| 269 | 3.2.4.4.2.1 | Definição do Tipo de Subestação e Arranjo Físico Preliminar | 10d | 2026-08-24 | 2026-09-04 | 267 | 2026-08-24 | 2026-09-04 | 10d | 0d |  |
| 270 | 3.2.4.4.2.2 | Dimensionamento Preliminar do Transformador e Equipamentos Principais | 10d | 2026-09-08 | 2026-09-21 | 269 | 2026-09-08 | 2026-09-21 | 10d | 0d |  |
| 271 | 3.2.4.4.2.3 | Diretrizes Preliminares de Aterramento | 10d | 2026-09-08 | 2026-09-21 | 269 | 2026-09-08 | 2026-09-21 | 10d | 0d |  |
| 272 | 3.2.4.4.3 | LOD 300 - Consolidação e documentação de entrega | 4d | 2026-09-22 | 2026-09-25 | 268 | 2026-09-22 | 2026-09-25 | 4d | 0d |  |
| 273 | 3.2.4.4.4 | Aprovação de Conformidade | 3d | 2026-09-23 | 2026-09-25 | 272FF | 2026-09-23 | 2026-09-25 | 3d | 0d |  |
| 274 | 3.2.4.4.5 | Material para entrega ao contrato | 3d | 2026-09-23 | 2026-09-25 | 272FF | 2026-09-23 | 2026-09-25 | 3d | 0d |  |

| ID | WBS | Task | Duration | Start | Finish | Predecessors | Complete | Remaining | Baseline start | Baseline finish | Baseline duration | Total slack |
| --- | --- | --- | --- | --- | --- | --- | --- | --- | --- | --- | --- | --- |
| 275 | 3.2.4.5 | **SPDA** | 34d | 2026-08-10 | 2026-09-25 |  |  |  | 2026-08-10 | 2026-09-25 | 34d | 0d |
| 276 | 3.2.4.5.1 | **LOD 100 — Concepção** | 10d | 2026-08-10 | 2026-08-21 |  |  |  | 2026-08-10 | 2026-08-21 | 10d | 0d |
| 277 | 3.2.4.5.1.1 | Avaliação e Diretrizes Técnicas para Arquitetura | 10d | 2026-08-10 | 2026-08-21 | 1323SS+24d, 1067SS+24d, 811SS+24d, 555SS+24d, 299SS+24d, 114SS+24d |  |  | 2026-08-10 | 2026-08-21 | 10d | 24d |
| 278 | 3.2.4.5.1.2 | Coleta de Informações da Edificação e Análise de Risco (ABNT NBR 5419-2) | 10d | 2026-08-10 | 2026-08-21 | 1323SS+24d, 1067SS+24d, 811SS+24d, 555SS+24d, 299SS+24d, 114SS+24d |  |  | 2026-08-10 | 2026-08-21 | 10d | 24d |
| 279 | 3.2.4.5.1.3 | Estudo Preliminar de Necessidade e Nível de Proteção do SPDA | 10d | 2026-08-10 | 2026-08-21 | 1323SS+24d, 1067SS+24d, 811SS+24d, 555SS+24d, 299SS+24d, 114SS+24d |  |  | 2026-08-10 | 2026-08-21 | 10d | 0d |
| 280 | 3.2.4.5.2 | **LOD 200 — Anteprojeto** | 20d | 2026-08-24 | 2026-09-21 |  |  |  | 2026-08-24 | 2026-09-21 | 20d | 0d |
| 281 | 3.2.4.5.2.1 | Definição da Estratégia de Proteção e Soluções Técnicas | 10d | 2026-08-24 | 2026-09-04 | 279 |  |  | 2026-08-24 | 2026-09-04 | 10d | 0d |
| 282 | 3.2.4.5.2.2 | Zoneamento de Captação, Descida e Traçados Preliminares | 10d | 2026-09-08 | 2026-09-21 | 281 |  |  | 2026-09-08 | 2026-09-21 | 10d | 4d |
| 283 | 3.2.4.5.2.3 | Estudo de Interferências, Compatibilização e Métodos Construtivos | 10d | 2026-09-08 | 2026-09-21 | 281 |  |  | 2026-09-08 | 2026-09-21 | 10d | 0d |
| 284 | 3.2.4.5.3 | LOD 300 - Consolidação e documentação de entrega | 4d | 2026-09-22 | 2026-09-25 | 283 |  |  | 2026-09-22 | 2026-09-25 | 4d | 0d |
| 285 | 3.2.4.5.4 | Aprovação de Conformidade | 3d | 2026-09-23 | 2026-09-25 | 284FF |  |  | 2026-09-23 | 2026-09-25 | 3d | 0d |
| 286 | 3.2.4.5.5 | Material para entrega ao contrato | 3d | 2026-09-23 | 2026-09-25 | 284FF |  |  | 2026-09-23 | 2026-09-25 | 3d | 0d |
| 287 | 3.3 | **3 - Ed 01 - CT** | 100d | 2026-05-07 A | 2026-09-25 |  | 14% | 86.11d | 2026-05-07 | 2026-09-25 | 100d | 0d |
| 288 | 3.3.1 | **Arquitetura** | 100d | 2026-05-07 A | 2026-09-25 |  | 30% | 69.76d | 2026-05-07 | 2026-09-25 | 100d | 0d |
| 289 | 3.3.1.1 | **Análise e Compatibilização (caso a gente receba o projeto e precise adequar)** | 84d | 2026-05-07 A | 2026-09-02 |  | 30% | 59.16d | 2026-05-07 | 2026-09-02 | 84d | 16d |
| 290 | 3.3.1.1.1 | Analisar topografia | 42d | 2026-05-07 | 2026-07-06 |  |  |  | 2026-05-07 | 2026-07-06 | 42d | 58d |
| 291 | 3.3.1.1.2 | Criação e georreferenciamento e ajuste de norte nos arquivos federado, arquitetura, implantação, layout | 42d | 2026-05-07 | 2026-07-06 |  |  |  | 2026-05-07 | 2026-07-06 | 42d | 0d |
| 292 | 3.3.1.1.3 | Analise geral do projeto | 42d | 2026-05-07 A | 2026-07-06 A |  | 100% |  | 2026-05-07 | 2026-07-06 | 42d |  |
| 293 | 3.3.1.1.4 | Verificar acessibilidade dos espaços de acordo com a norma e sistematizar ajustes | 42d | 2026-05-07 A | 2026-07-06 A |  | 100% |  | 2026-05-07 | 2026-07-06 | 42d |  |
| 294 | 3.3.1.1.5 | Conferir paredes | 42d | 2026-05-07 A | 2026-07-06 A |  | 100% |  | 2026-05-07 | 2026-07-06 | 42d |  |
| 295 | 3.3.1.1.6 | Conferir Pisos | 42d | 2026-05-07 A | 2026-07-06 A |  | 100% |  | 2026-05-07 | 2026-07-06 | 42d |  |
| 296 | 3.3.1.1.7 | Conferir Esquadrias | 42d | 2026-05-07 | 2026-07-06 |  |  |  | 2026-05-07 | 2026-07-06 | 42d | 58d |
| 297 | 3.3.1.1.8 | Conferir Mobiliário | 42d | 2026-05-07 | 2026-07-06 |  |  |  | 2026-05-07 | 2026-07-06 | 42d | 58d |
| 298 | 3.3.1.1.9 | Compatibilização disciplinas engenharia e sistematização incrementos e ajustes | 42d | 2026-07-07 | 2026-09-02 | 291 |  |  | 2026-07-07 | 2026-09-02 | 42d | 16d |
| 299 | 3.3.1.1.10 | Compatibilização com normas técnicas | 38d | 2026-07-07 | 2026-08-27 | 291 |  |  | 2026-07-07 | 2026-08-27 | 38d | 0d |
| 300 | 3.3.1.1.11 | Compatibilização padrão Quanta | 38d | 2026-07-07 | 2026-08-27 | 291 |  |  | 2026-07-07 | 2026-08-27 | 38d | 20d |
| 301 | 3.3.1.1.12 | Verficar se elementos estão associados aos níveis corretos e sistematizar ajustes | 38d | 2026-07-07 | 2026-08-27 | 291 |  |  | 2026-07-07 | 2026-08-27 | 38d | 20d |
| 302 | 3.3.1.1.13 | Revisão de perímetro do terreno, recuos, taxa de ocupação e afastamentos | 38d | 2026-07-07 | 2026-08-27 | 291 |  |  | 2026-07-07 | 2026-08-27 | 38d | 20d |
| 303 | 3.3.1.1.14 | Relatório/Memorial de Compatibilização | 38d | 2026-07-07 | 2026-08-27 | 291 |  |  | 2026-07-07 | 2026-08-27 | 38d | 0d |

| ID | WBS | Task | Duration | Start | Finish | Predecessors | Complete | Remaining | Baseline start | Baseline finish | Baseline duration | Total slack |
| --- | --- | --- | --- | --- | --- | --- | --- | --- | --- | --- | --- | --- |
| 304 | 3.3.1.2 | **LOD 300 - ANTEPROJETO** | 20d | 2026-08-28 A | 2026-09-25 |  | 32% | 13.61d | 2026-08-28 | 2026-09-25 | 20d | 0d |
| 305 | 3.3.1.2.1 | **Modelagem e compatibilização** | 10d | 2026-08-28 A | 2026-09-11 |  | 54% | 4.62d | 2026-08-28 | 2026-09-11 | 10d | 10d |
| 306 | 3.3.1.2.1.1 | Modelagem ajustes topografia | 10d | 2026-08-28 | 2026-09-11 | 303 |  |  | 2026-08-28 | 2026-09-11 | 10d | 10d |
| 307 | 3.3.1.2.1.2 | Mudar pisos para o padrão Quanta | 10d | 2026-08-28 A | 2026-09-11 A | 303 | 100% |  | 2026-08-28 | 2026-09-11 | 10d |  |
| 308 | 3.3.1.2.1.3 | Mudar paredes para o padrão Quanta | 10d | 2026-08-28 A | 2026-09-11 A | 303 | 100% |  | 2026-08-28 | 2026-09-11 | 10d |  |
| 309 | 3.3.1.2.1.4 | Mudar esquadrias para o padrão Quanta | 10d | 2026-08-28 | 2026-09-11 | 303 |  |  | 2026-08-28 | 2026-09-11 | 10d | 10d |
| 310 | 3.3.1.2.1.5 | Mudar metais para o padrão Quanta | 10d | 2026-08-28 A | 2026-09-11 A | 303 | 100% |  | 2026-08-28 | 2026-09-11 | 10d |  |
| 311 | 3.3.1.2.1.6 | Mudar louças para o padrão Quanta | 10d | 2026-08-28 A | 2026-09-11 A | 303 | 100% |  | 2026-08-28 | 2026-09-11 | 10d |  |
| 312 | 3.3.1.2.1.7 | Modelagem acessos e vias necessárias a implantação | 10d | 2026-08-28 A | 2026-09-11 A | 303 | 100% |  | 2026-08-28 | 2026-09-11 | 10d |  |
| 313 | 3.3.1.2.1.8 | Modelagem passeios e canteiros | 10d | 2026-08-28 A | 2026-09-11 A | 303 | 100% |  | 2026-08-28 | 2026-09-11 | 10d |  |
| 314 | 3.3.1.2.1.9 | Modelagem estacionamentos | 10d | 2026-08-28 A | 2026-09-11 A | 303 | 100% |  | 2026-08-28 | 2026-09-11 | 10d |  |
| 315 | 3.3.1.2.1.10 | Modelagem subestação elétrica | 10d | 2026-08-28 | 2026-09-11 | 303 |  |  | 2026-08-28 | 2026-09-11 | 10d | 10d |
| 316 | 3.3.1.2.1.11 | Modelagem ETE | 10d | 2026-08-28 | 2026-09-11 | 303 |  |  | 2026-08-28 | 2026-09-11 | 10d | 10d |
| 317 | 3.3.1.2.1.12 | Modelagem PCI | 10d | 2026-08-28 | 2026-09-11 | 303 |  |  | 2026-08-28 | 2026-09-11 | 10d | 10d |
| 318 | 3.3.1.2.1.13 | Modelagem/ajustes caixa d'água | 10d | 2026-08-28 | 2026-09-11 | 303 |  |  | 2026-08-28 | 2026-09-11 | 10d | 0d |
| 319 | 3.3.1.2.2 | **Situação** | 1d | 2026-09-14 | 2026-09-14 |  |  |  | 2026-09-14 | 2026-09-14 | 1d | 0d |
| 320 | 3.3.1.2.2.1 | Indicar simbologias de representação gráfica, conforme NBR 6492:2021; | 1d | 2026-09-14 | 2026-09-14 | 318 |  |  | 2026-09-14 | 2026-09-14 | 1d | 9d |
| 321 | 3.3.1.2.2.2 | Indicação Norte | 1d | 2026-09-14 | 2026-09-14 | 318 |  |  | 2026-09-14 | 2026-09-14 | 1d | 9d |
| 322 | 3.3.1.2.2.3 | Analisar, adicionar e fechar - Curvas de nível existentes e projetadas (conforme projetos de topografia e sondagem recebidos); | 1d | 2026-09-14 | 2026-09-14 | 318 |  |  | 2026-09-14 | 2026-09-14 | 1d | 9d |
| 323 | 3.3.1.2.2.4 | Indicação de Escala; | 1d | 2026-09-14 | 2026-09-14 | 318 |  |  | 2026-09-14 | 2026-09-14 | 1d | 9d |
| 324 | 3.3.1.2.2.5 | Vias de acesso ao conjunto, arruamento, logradouros adjacentes e calçadas com os respectivos equipamentos urbanos; | 1d | 2026-09-14 | 2026-09-14 | 318 |  |  | 2026-09-14 | 2026-09-14 | 1d | 9d |
| 325 | 3.3.1.2.2.6 | Platôs e taludes principais; | 1d | 2026-09-14 | 2026-09-14 | 318 |  |  | 2026-09-14 | 2026-09-14 | 1d | 9d |
| 326 | 3.3.1.2.2.7 | Perímetro do terreno, recuos e afastamentos; | 1d | 2026-09-14 | 2026-09-14 | 318 |  |  | 2026-09-14 | 2026-09-14 | 1d | 9d |
| 327 | 3.3.1.2.2.8 | Indicação das áreas a serem edificadas com o contorno da cobertura das edificações, estacionamentos e áreas permeáveis/impermeáveis; | 1d | 2026-09-14 | 2026-09-14 | 318 |  |  | 2026-09-14 | 2026-09-14 | 1d | 9d |
| 328 | 3.3.1.2.2.9 | Denominação das edificações, blocos ou espaços; | 1d | 2026-09-14 | 2026-09-14 | 318 |  |  | 2026-09-14 | 2026-09-14 | 1d | 9d |
| 329 | 3.3.1.2.2.10 | Cotas gerais | 1d | 2026-09-14 | 2026-09-14 | 318 |  |  | 2026-09-14 | 2026-09-14 | 1d | 9d |
| 330 | 3.3.1.2.2.11 | Cotas de nível principal. | 1d | 2026-09-14 | 2026-09-14 | 318 |  |  | 2026-09-14 | 2026-09-14 | 1d | 9d |
| 331 | 3.3.1.2.2.12 | Quadros de áreas | 1d | 2026-09-14 | 2026-09-14 | 318 |  |  | 2026-09-14 | 2026-09-14 | 1d | 0d |
| 332 | 3.3.1.2.3 | Planta com as cotas de nível projetadas e existentes | 1d | 2026-09-14 | 2026-09-14 | 331SS |  |  | 2026-09-14 | 2026-09-14 | 1d | 0d |

| ID | WBS | Task | Duration | Start | Finish | Predecessors | Baseline start | Baseline finish | Baseline duration | Total slack |
| --- | --- | --- | --- | --- | --- | --- | --- | --- | --- | --- |
| 333 | 3.3.1.2.4 | **Plantas baixas (se tiver mais de um pavimento, duplicar bloco)** | 1d | 2026-09-15 | 2026-09-15 |  | 2026-09-15 | 2026-09-15 | 1d | 0d |
| 334 | 3.3.1.2.4.1 | Indicar simbologias de representação gráfica, conforme NBR 6492:2021; | 1d | 2026-09-15 | 2026-09-15 | 332 | 2026-09-15 | 2026-09-15 | 1d | 8d |
| 335 | 3.3.1.2.4.2 | Compatibilização (verificar se está tudo conforme as normas e alinhar com o restante das disciplinas de engenharia) | 1d | 2026-09-15 | 2026-09-15 | 332 | 2026-09-15 | 2026-09-15 | 1d | 8d |
| 336 | 3.3.1.2.4.3 | Compatibilização (deixar tudo conforme padrão Quanta) | 1d | 2026-09-15 | 2026-09-15 | 332 | 2026-09-15 | 2026-09-15 | 1d | 8d |
| 337 | 3.3.1.2.4.4 | Indicação de Norte; | 1d | 2026-09-15 | 2026-09-15 | 332 | 2026-09-15 | 2026-09-15 | 1d | 8d |
| 338 | 3.3.1.2.4.5 | Indicação de Escala; | 1d | 2026-09-15 | 2026-09-15 | 332 | 2026-09-15 | 2026-09-15 | 1d | 8d |
| 339 | 3.3.1.2.4.6 | Indicação de Acessos; | 1d | 2026-09-15 | 2026-09-15 | 332 | 2026-09-15 | 2026-09-15 | 1d | 8d |
| 340 | 3.3.1.2.4.7 | Elementos de vedação internos e externos; | 1d | 2026-09-15 | 2026-09-15 | 332 | 2026-09-15 | 2026-09-15 | 1d | 8d |
| 341 | 3.3.1.2.4.8 | Esquadrias (sem código e sem quadro); | 1d | 2026-09-15 | 2026-09-15 | 332 | 2026-09-15 | 2026-09-15 | 1d | 8d |
| 342 | 3.3.1.2.4.9 | Elementos estruturais principais; | 1d | 2026-09-15 | 2026-09-15 | 332 | 2026-09-15 | 2026-09-15 | 1d | 8d |
| 343 | 3.3.1.2.4.10 | Identificação dos ambientes e espaços (internos e externos); | 1d | 2026-09-15 | 2026-09-15 | 332 | 2026-09-15 | 2026-09-15 | 1d | 8d |
| 344 | 3.3.1.2.4.11 | Espaços de circulação internos e externos; | 1d | 2026-09-15 | 2026-09-15 | 332 | 2026-09-15 | 2026-09-15 | 1d | 8d |
| 345 | 3.3.1.2.4.12 | Áreas de serviço, funcionais e técnicas (internos e externos); | 1d | 2026-09-15 | 2026-09-15 | 332 | 2026-09-15 | 2026-09-15 | 1d | 8d |
| 346 | 3.3.1.2.4.13 | Projeções de níveis superiores; | 1d | 2026-09-15 | 2026-09-15 | 332 | 2026-09-15 | 2026-09-15 | 1d | 8d |
| 347 | 3.3.1.2.4.14 | Cotas gerais | 1d | 2026-09-15 | 2026-09-15 | 332 | 2026-09-15 | 2026-09-15 | 1d | 8d |
| 348 | 3.3.1.2.4.15 | Cotas de nível principal. | 1d | 2026-09-15 | 2026-09-15 | 332 | 2026-09-15 | 2026-09-15 | 1d | 8d |
| 349 | 3.3.1.2.4.16 | Tabelas de paredes, pisos, esquadrias e plantas | 1d | 2026-09-15 | 2026-09-15 | 332 | 2026-09-15 | 2026-09-15 | 1d | 8d |
| 350 | 3.3.1.2.4.17 | Quadro de áreas | 1d | 2026-09-15 | 2026-09-15 | 332 | 2026-09-15 | 2026-09-15 | 1d | 0d |
| 351 | 3.3.1.2.5 | **Planta das coberturas** | 1d | 2026-09-16 | 2026-09-16 |  | 2026-09-16 | 2026-09-16 | 1d | 0d |
| 352 | 3.3.1.2.5.1 | Indicação do Norte | 1d | 2026-09-16 | 2026-09-16 | 350 | 2026-09-16 | 2026-09-16 | 1d | 7d |
| 353 | 3.3.1.2.5.2 | Indicação de escala | 1d | 2026-09-16 | 2026-09-16 | 350 | 2026-09-16 | 2026-09-16 | 1d | 7d |
| 354 | 3.3.1.2.5.3 | Curvas de nível | 1d | 2026-09-16 | 2026-09-16 | 350 | 2026-09-16 | 2026-09-16 | 1d | 7d |
| 355 | 3.3.1.2.5.4 | Indicação de Acessos; | 1d | 2026-09-16 | 2026-09-16 | 350 | 2026-09-16 | 2026-09-16 | 1d | 7d |
| 356 | 3.3.1.2.5.5 | Estacionamento e áreas cobertas | 1d | 2026-09-16 | 2026-09-16 | 350 | 2026-09-16 | 2026-09-16 | 1d | 7d |
| 357 | 3.3.1.2.5.6 | Cobertura das edificações | 1d | 2026-09-16 | 2026-09-16 | 350 | 2026-09-16 | 2026-09-16 | 1d | 7d |
| 358 | 3.3.1.2.5.7 | Sentido de escoamento das águas pluviais e inclinação | 1d | 2026-09-16 | 2026-09-16 | 350 | 2026-09-16 | 2026-09-16 | 1d | 7d |
| 359 | 3.3.1.2.5.8 | Cotas gerais | 1d | 2026-09-16 | 2026-09-16 | 350 | 2026-09-16 | 2026-09-16 | 1d | 7d |
| 360 | 3.3.1.2.5.9 | Cotas de nível principal | 1d | 2026-09-16 | 2026-09-16 | 350 | 2026-09-16 | 2026-09-16 | 1d | 0d |

| ID | WBS | Task | Duration | Start | Finish | Predecessors | Baseline start | Baseline finish | Baseline duration | Total slack |
| --- | --- | --- | --- | --- | --- | --- | --- | --- | --- | --- |
| 361 | 3.3.1.2.6 | **Cortes longitudinais** | 1d | 2026-09-17 | 2026-09-17 |  | 2026-09-17 | 2026-09-17 | 1d | 0d |
| 362 | 3.3.1.2.6.1 | Indicar simbologias de representação gráfica, conforme NBR 6492:2021; | 1d | 2026-09-17 | 2026-09-17 | 360 | 2026-09-17 | 2026-09-17 | 1d | 6d |
| 363 | 3.3.1.2.6.2 | Indicação de Escala; | 1d | 2026-09-17 | 2026-09-17 | 360 | 2026-09-17 | 2026-09-17 | 1d | 6d |
| 364 | 3.3.1.2.6.3 | Elementos estruturais principais; | 1d | 2026-09-17 | 2026-09-17 | 360 | 2026-09-17 | 2026-09-17 | 1d | 6d |
| 365 | 3.3.1.2.6.4 | Elementos de vedação internos e externos; | 1d | 2026-09-17 | 2026-09-17 | 360 | 2026-09-17 | 2026-09-17 | 1d | 6d |
| 366 | 3.3.1.2.6.5 | Esquadrias; | 1d | 2026-09-17 | 2026-09-17 | 360 | 2026-09-17 | 2026-09-17 | 1d | 6d |
| 367 | 3.3.1.2.6.6 | Identificação dos ambientes; | 1d | 2026-09-17 | 2026-09-17 | 360 | 2026-09-17 | 2026-09-17 | 1d | 6d |
| 368 | 3.3.1.2.6.7 | Cobertura com indicação da respectiva inclinação; | 1d | 2026-09-17 | 2026-09-17 | 360 | 2026-09-17 | 2026-09-17 | 1d | 6d |
| 369 | 3.3.1.2.6.8 | Cotas gerais; | 1d | 2026-09-17 | 2026-09-17 | 360 | 2026-09-17 | 2026-09-17 | 1d | 6d |
| 370 | 3.3.1.2.6.9 | Cotas de nível principal; | 1d | 2026-09-17 | 2026-09-17 | 360 | 2026-09-17 | 2026-09-17 | 1d | 6d |
| 371 | 3.3.1.2.6.10 | Eixos do projeto; | 1d | 2026-09-17 | 2026-09-17 | 360 | 2026-09-17 | 2026-09-17 | 1d | 6d |
| 372 | 3.3.1.2.6.11 | Relevo construído; | 1d | 2026-09-17 | 2026-09-17 | 360 | 2026-09-17 | 2026-09-17 | 1d | 6d |
| 373 | 3.3.1.2.6.12 | Projeção da topografia natural. | 1d | 2026-09-17 | 2026-09-17 | 360 | 2026-09-17 | 2026-09-17 | 1d | 0d |
| 374 | 3.3.1.2.6.13 | Relatório | 1d | 2026-09-17 | 2026-09-17 | 360 | 2026-09-17 | 2026-09-17 | 1d | 0d |
| 375 | 3.3.1.2.7 | **Cortes transversais** | 1d | 2026-09-18 | 2026-09-18 |  | 2026-09-18 | 2026-09-18 | 1d | 0d |
| 376 | 3.3.1.2.7.1 | Indicar simbologias de representação gráfica, conforme NBR 6492:2021; | 1d | 2026-09-18 | 2026-09-18 | 373 | 2026-09-18 | 2026-09-18 | 1d | 5d |
| 377 | 3.3.1.2.7.2 | Indicação de Escala; | 1d | 2026-09-18 | 2026-09-18 | 373 | 2026-09-18 | 2026-09-18 | 1d | 5d |
| 378 | 3.3.1.2.7.3 | Elementos estruturais principais; | 1d | 2026-09-18 | 2026-09-18 | 373 | 2026-09-18 | 2026-09-18 | 1d | 5d |
| 379 | 3.3.1.2.7.4 | Elementos de vedação internos e externos; | 1d | 2026-09-18 | 2026-09-18 | 373 | 2026-09-18 | 2026-09-18 | 1d | 5d |
| 380 | 3.3.1.2.7.5 | Esquadrias; | 1d | 2026-09-18 | 2026-09-18 | 373 | 2026-09-18 | 2026-09-18 | 1d | 5d |
| 381 | 3.3.1.2.7.6 | Identificação dos ambientes; | 1d | 2026-09-18 | 2026-09-18 | 373 | 2026-09-18 | 2026-09-18 | 1d | 5d |
| 382 | 3.3.1.2.7.7 | Cobertura com indicação da respectiva inclinação; | 1d | 2026-09-18 | 2026-09-18 | 373 | 2026-09-18 | 2026-09-18 | 1d | 5d |
| 383 | 3.3.1.2.7.8 | Cotas gerais; | 1d | 2026-09-18 | 2026-09-18 | 373 | 2026-09-18 | 2026-09-18 | 1d | 5d |
| 384 | 3.3.1.2.7.9 | Cotas de nível principal; | 1d | 2026-09-18 | 2026-09-18 | 373 | 2026-09-18 | 2026-09-18 | 1d | 5d |
| 385 | 3.3.1.2.7.10 | Eixos do projeto; | 1d | 2026-09-18 | 2026-09-18 | 373 | 2026-09-18 | 2026-09-18 | 1d | 5d |
| 386 | 3.3.1.2.7.11 | Relevo construído; | 1d | 2026-09-18 | 2026-09-18 | 373 | 2026-09-18 | 2026-09-18 | 1d | 5d |
| 387 | 3.3.1.2.7.12 | Projeção da topografia natural | 1d | 2026-09-18 | 2026-09-18 | 373 | 2026-09-18 | 2026-09-18 | 1d | 0d |

| ID | WBS | Task | Duration | Start | Finish | Predecessors | Baseline start | Baseline finish | Baseline duration | Total slack |
| --- | --- | --- | --- | --- | --- | --- | --- | --- | --- | --- |
| 388 | 3.3.1.2.8 | **Elevações** | 1d | 2026-09-21 | 2026-09-21 |  | 2026-09-21 | 2026-09-21 | 1d | 0d |
| 389 | 3.3.1.2.8.1 | Indicar simbologias de representação gráfica, conforme NBR 6492:2021; | 1d | 2026-09-21 | 2026-09-21 | 387 | 2026-09-21 | 2026-09-21 | 1d | 4d |
| 390 | 3.3.1.2.8.2 | Indicação de Escala; | 1d | 2026-09-21 | 2026-09-21 | 387 | 2026-09-21 | 2026-09-21 | 1d | 4d |
| 391 | 3.3.1.2.8.3 | Elementos estruturais principais; | 1d | 2026-09-21 | 2026-09-21 | 387 | 2026-09-21 | 2026-09-21 | 1d | 4d |
| 392 | 3.3.1.2.8.4 | Elementos de vedação internos e externos; | 1d | 2026-09-21 | 2026-09-21 | 387 | 2026-09-21 | 2026-09-21 | 1d | 4d |
| 393 | 3.3.1.2.8.5 | Esquadrias (sem código e sem quadro); | 1d | 2026-09-21 | 2026-09-21 | 387 | 2026-09-21 | 2026-09-21 | 1d | 4d |
| 394 | 3.3.1.2.8.6 | Relevo construído; | 1d | 2026-09-21 | 2026-09-21 | 387 | 2026-09-21 | 2026-09-21 | 1d | 4d |
| 395 | 3.3.1.2.8.7 | Cotas gerais; | 1d | 2026-09-21 | 2026-09-21 | 387 | 2026-09-21 | 2026-09-21 | 1d | 4d |
| 396 | 3.3.1.2.8.8 | Cotas de nível principais; | 1d | 2026-09-21 | 2026-09-21 | 387 | 2026-09-21 | 2026-09-21 | 1d | 4d |
| 397 | 3.3.1.2.8.9 | Cobertura (quando aparente). | 1d | 2026-09-21 | 2026-09-21 | 387 | 2026-09-21 | 2026-09-21 | 1d | 0d |
| 398 | 3.3.1.2.9 | **Memorial Descritivo** | 4d | 2026-09-22 | 2026-09-25 |  | 2026-09-22 | 2026-09-25 | 4d | 0d |
| 399 | 3.3.1.2.9.1 | Descrição dos elementos da edificação | 4d | 2026-09-22 | 2026-09-25 | 397 | 2026-09-22 | 2026-09-25 | 4d | 0d |
| 400 | 3.3.1.2.9.2 | Geração de imagens representando os itens dissertados no relatório | 4d | 2026-09-22 | 2026-09-25 | 397 | 2026-09-22 | 2026-09-25 | 4d | 0d |
| 401 | 3.3.1.2.9.3 | Descrição dos componentes construtivos e materiais de construção | 4d | 2026-09-22 | 2026-09-25 | 397 | 2026-09-22 | 2026-09-25 | 4d | 0d |
| 402 | 3.3.1.2.9.4 | Lista de pranchas anexas e documentos | 4d | 2026-09-22 | 2026-09-25 | 397 | 2026-09-22 | 2026-09-25 | 4d | 0d |
| 403 | 3.3.2 | Aprovação de Conformidade | 3d | 2026-09-23 | 2026-09-25 | 398FF | 2026-09-23 | 2026-09-25 | 3d | 0d |
| 404 | 3.3.3 | Material para entrega ao contrato | 3d | 2026-09-23 | 2026-09-25 | 398FF | 2026-09-23 | 2026-09-25 | 3d | 0d |
| 405 | 3.3.4 | **Engenharia** | 38d | 2026-08-04 | 2026-09-25 |  | 2026-08-04 | 2026-09-25 | 38d | 0d |
| 406 | 3.3.4.1 | **Estrutura** | 34d | 2026-08-10 | 2026-09-25 |  | 2026-08-10 | 2026-09-25 | 34d | 0d |
| 407 | 3.3.4.1.1 | **LOD 100 — Premissas, diretrizes e interfaces** | 7d | 2026-08-10 | 2026-08-18 |  | 2026-08-10 | 2026-08-18 | 7d | 0d |
| 408 | 3.3.4.1.1.1 | Levantamento de tipos de cargas globais estimadas (permanentes, acidentais, vento e especiais). | 2d | 2026-08-10 | 2026-08-11 | 1323SS+24d, 1067SS+24d, 811SS+24d, 555SS+24d, 299SS+24d, 114SS+24d | 2026-08-10 | 2026-08-11 | 2d | 32d |
| 409 | 3.3.4.1.1.2 | Estudo volumétrico com modulação inicial de pilares, vigas e lajes. Entendendo vãos e desafios | 5d | 2026-08-10 | 2026-08-14 | 1323SS+24d, 1067SS+24d, 811SS+24d, 555SS+24d, 299SS+24d, 114SS+24d | 2026-08-10 | 2026-08-14 | 5d | 29d |
| 410 | 3.3.4.1.1.3 | Localização aproximada de elementos estruturais principais. Avaliando vãos e estudando posições | 2d | 2026-08-10 | 2026-08-11 | 1323SS+24d, 1067SS+24d, 811SS+24d, 555SS+24d, 299SS+24d, 114SS+24d | 2026-08-10 | 2026-08-11 | 2d | 0d |
| 411 | 3.3.4.1.1.4 | Estudo de viabilidade técnica e construtiva. | 3d | 2026-08-12 | 2026-08-14 | 410 | 2026-08-12 | 2026-08-14 | 3d | 0d |
| 412 | 3.3.4.1.1.5 | Definição preliminar do sistema estrutural (concreto armado, metálica ou mista). | 3d | 2026-08-12 | 2026-08-14 | 410 | 2026-08-12 | 2026-08-14 | 3d | 29d |
| 413 | 3.3.4.1.1.6 | Estimativa preliminar de tipologias de fundações (sapatas, blocos, estacas). | 2d | 2026-08-17 | 2026-08-18 | 411 | 2026-08-17 | 2026-08-18 | 2d | 27d |
| 414 | 3.3.4.1.1.7 | Previsão de áreas técnicas, casas de máquinas, reservatórios elevados e estrutura de cobertura. | 2d | 2026-08-17 | 2026-08-18 | 411 | 2026-08-17 | 2026-08-18 | 2d | 0d |

| ID | WBS | Task | Duration | Start | Finish | Predecessors | Baseline start | Baseline finish | Baseline duration | Total slack | Free slack |
| --- | --- | --- | --- | --- | --- | --- | --- | --- | --- | --- | --- |
| 415 | 3.3.4.1.2 | **LOD 200 — Validação interdisciplinar e solução preliminar** | 20d | 2026-08-19 | 2026-09-16 |  | 2026-08-19 | 2026-09-16 | 20d | 0d |  |
| 416 | 3.3.4.1.2.1 | Lista preliminar de cargas e ações para dimensionamento. | 5d | 2026-08-19 | 2026-08-25 | 414 | 2026-08-19 | 2026-08-25 | 5d | 0d |  |
| 417 | 3.3.4.1.2.2 | Definição preliminar de alturas de pavimentos e níveis de fundação. | 5d | 2026-08-19 | 2026-08-25 | 414 | 2026-08-19 | 2026-08-25 | 5d | 22d |  |
| 418 | 3.3.4.1.2.3 | Indicação aproximada do sistema de cobertura (tesouras, treliças, vigamento metálico ou concreto). | 5d | 2026-08-19 | 2026-08-25 | 414 | 2026-08-19 | 2026-08-25 | 5d | 22d |  |
| 419 | 3.3.4.1.2.4 | Modelagem genérica de pilares, vigas, lajes e fundações. | 5d | 2026-08-26 | 2026-09-01 | 416 | 2026-08-26 | 2026-09-01 | 5d | 17d |  |
| 420 | 3.3.4.1.2.5 | Traçado preliminar de elementos especiais (escadas, rampas estruturais, reservatórios). | 5d | 2026-08-26 | 2026-09-01 | 416 | 2026-08-26 | 2026-09-01 | 5d | 12d | 0d |
| 421 | 3.3.4.1.2.6 | Arquivo IFC, plantas de forma e planta de locação | 5d | 2026-08-26 | 2026-09-01 | 416 | 2026-08-26 | 2026-09-01 | 5d | 0d |  |
| 422 | 3.3.4.1.2.7 | Inserção de fundações com tipologia e dimensões preliminares. | 5d | 2026-09-02 | 2026-09-09 | 420 | 2026-09-02 | 2026-09-09 | 5d | 12d |  |
| 423 | 3.3.4.1.2.8 | Compatibilização inicial com arquitetura e demais disciplinas. | 5d | 2026-09-02 | 2026-09-09 | 421 | 2026-09-02 | 2026-09-09 | 5d | 12d |  |
| 424 | 3.3.4.1.2.9 | Indicação de passagens de infraestrutura (shafts, aberturas em lajes e vigas). | 5d | 2026-09-02 | 2026-09-09 | 421 | 2026-09-02 | 2026-09-09 | 5d | 12d |  |
| 425 | 3.3.4.1.2.10 | Modelagem assertiva de elementos principais com dimensões aproximadas (largura, altura, espessura). | 10d | 2026-09-02 | 2026-09-16 | 421 | 2026-09-02 | 2026-09-16 | 10d | 0d |  |
| 426 | 3.3.4.1.2.11 | Modelagem estimada de armaduras principais (em nível de concepção). | 5d | 2026-09-10 | 2026-09-16 | 425FF | 2026-09-10 | 2026-09-16 | 5d | 0d |  |
| 427 | 3.3.4.1.3 | **LOD 300 - Consolidação e documentação de entrega** | 7d | 2026-09-17 | 2026-09-25 |  | 2026-09-17 | 2026-09-25 | 7d | 0d |  |
| 428 | 3.3.4.1.3.1 | Indicação de níveis e cotas exatas. | 7d | 2026-09-17 | 2026-09-25 | 425, 426 | 2026-09-17 | 2026-09-25 | 7d | 0d |  |
| 429 | 3.3.4.1.3.2 | Quadro de cargas atualizado. | 7d | 2026-09-17 | 2026-09-25 | 425, 426 | 2026-09-17 | 2026-09-25 | 7d | 0d |  |
| 430 | 3.3.4.1.3.3 | Dimensionamento final de fundações conforme sondagem e cálculo estrutural. | 7d | 2026-09-17 | 2026-09-25 | 425, 426 | 2026-09-17 | 2026-09-25 | 7d | 0d |  |
| 431 | 3.3.4.1.3.4 | Definição final dos elementos da cobertura (treliças, vigas, chapas, purlins). | 7d | 2026-09-17 | 2026-09-25 | 425, 426 | 2026-09-17 | 2026-09-25 | 7d | 0d |  |
| 432 | 3.3.4.1.3.5 | Compatibilização final com arquitetura e instalações (aberturas, embutidos e passagens). | 7d | 2026-09-17 | 2026-09-25 | 425, 426 | 2026-09-17 | 2026-09-25 | 7d | 0d |  |
| 433 | 3.3.4.1.3.6 | Modelagem definitiva de pilares, vigas, lajes, blocos, sapatas e estacas. | 7d | 2026-09-17 | 2026-09-25 | 425, 426 | 2026-09-17 | 2026-09-25 | 7d | 0d |  |
| 434 | 3.3.4.1.3.7 | Planta estrutural com todos os elementos identificados. | 7d | 2026-09-17 | 2026-09-25 | 425, 426 | 2026-09-17 | 2026-09-25 | 7d | 0d |  |
| 435 | 3.3.4.1.3.8 | Memorial descritivo contendo: objetivos, justificativa, descrição do sistema, concepção de fundações/cobertura, especificações e quadro de cargas. | 7d | 2026-09-17 | 2026-09-25 | 425, 426 | 2026-09-17 | 2026-09-25 | 7d | 0d |  |
| 436 | 3.3.4.1.3.9 | Normas técnicas utilizadas (NBR 6118, 6120, 6122, 8800, etc.). | 7d | 2026-09-17 | 2026-09-25 | 425, 426 | 2026-09-17 | 2026-09-25 | 7d | 0d |  |
| 437 | 3.3.4.1.3.10 | Consolidar documentação de entrega e emissão formal da disciplina | 7d | 2026-09-17 | 2026-09-25 | 425, 426 | 2026-09-17 | 2026-09-25 | 7d | 0d |  |
| 438 | 3.3.4.1.4 | Aprovação de Conformidade | 3d | 2026-09-23 | 2026-09-25 | 427FF | 2026-09-23 | 2026-09-25 | 3d | 0d |  |
| 439 | 3.3.4.1.5 | Material para entrega ao contrato | 3d | 2026-09-23 | 2026-09-25 | 427FF | 2026-09-23 | 2026-09-25 | 3d | 0d |  |

| ID | WBS | Task | Duration | Start | Finish | Predecessors | Baseline start | Baseline finish | Baseline duration | Total slack | Free slack |
| --- | --- | --- | --- | --- | --- | --- | --- | --- | --- | --- | --- |
| 440 | 3.3.4.2 | **Hidrossanitário** | 38d | 2026-08-04 | 2026-09-25 |  | 2026-08-04 | 2026-09-25 | 38d | 0d |  |
| 441 | 3.3.4.2.1 | **LOD 100 — Premissas, diretrizes e interfaces** | 10d | 2026-08-04 | 2026-08-17 |  | 2026-08-04 | 2026-08-17 | 10d | 0d |  |
| 442 | 3.3.4.2.1.1 | Memorial preliminar | 10d | 2026-08-04 | 2026-08-17 | 1323SS+20d, 1067SS+20d, 811SS+20d, 555SS+20d, 299SS+20d, 114SS+20d | 2026-08-04 | 2026-08-17 | 10d | 28d |  |
| 443 | 3.3.4.2.1.2 | Indicação de áreas técnicas | 6d | 2026-08-04 | 2026-08-11 | 1323SS+20d, 1067SS+20d, 811SS+20d, 555SS+20d, 299SS+20d, 114SS+20d | 2026-08-04 | 2026-08-11 | 6d | 32d |  |
| 444 | 3.3.4.2.1.3 | Planta baixa com traçado conceitual | 6d | 2026-08-04 | 2026-08-11 | 1323SS+20d, 1067SS+20d, 811SS+20d, 555SS+20d, 299SS+20d, 114SS+20d | 2026-08-04 | 2026-08-11 | 6d | 32d |  |
| 445 | 3.3.4.2.1.4 | Pontos de consumo principais e coletas sanitárias | 6d | 2026-08-04 | 2026-08-11 | 1323SS+20d, 1067SS+20d, 811SS+20d, 555SS+20d, 299SS+20d, 114SS+20d | 2026-08-04 | 2026-08-11 | 6d | 32d |  |
| 446 | 3.3.4.2.1.5 | Classificação de uso | 10d | 2026-08-04 | 2026-08-17 | 1323SS+20d, 1067SS+20d, 811SS+20d, 555SS+20d, 299SS+20d, 114SS+20d | 2026-08-04 | 2026-08-17 | 10d | 28d |  |
| 447 | 3.3.4.2.1.6 | Diretrizes de espaço | 10d | 2026-08-04 | 2026-08-17 | 1323SS+20d, 1067SS+20d, 811SS+20d, 555SS+20d, 299SS+20d, 114SS+20d | 2026-08-04 | 2026-08-17 | 10d | 28d |  |
| 448 | 3.3.4.2.1.7 | Estimativa de demanda ou população de uso | 10d | 2026-08-04 | 2026-08-17 | 1323SS+20d, 1067SS+20d, 811SS+20d, 555SS+20d, 299SS+20d, 114SS+20d | 2026-08-04 | 2026-08-17 | 10d | 28d |  |
| 449 | 3.3.4.2.1.8 | Levantamento de elementos especiais dentre outras disciplinas de Engenharia e Arquitetura | 10d | 2026-08-04 | 2026-08-17 | 1323SS+20d, 1067SS+20d, 811SS+20d, 555SS+20d, 299SS+20d, 114SS+20d | 2026-08-04 | 2026-08-17 | 10d | 0d |  |
| 450 | 3.3.4.2.2 | **LOD 200 — Validação interdisciplinar e solução preliminar** | 20d | 2026-08-18 | 2026-09-15 |  | 2026-08-18 | 2026-09-15 | 20d | 0d |  |
| 451 | 3.3.4.2.2.1 | Critérios normativos adotados (ABNT, concessionárias, etc.) | 20d | 2026-08-18 | 2026-09-15 | 449 | 2026-08-18 | 2026-09-15 | 20d | 8d | 0d |
| 452 | 3.3.4.2.2.2 | Informações de demanda na concessionária (DPE ou AVT Aviso de Viabilidade Técnica) | 20d | 2026-08-18 | 2026-09-15 | 451SS | 2026-08-18 | 2026-09-15 | 20d | 8d |  |
| 453 | 3.3.4.2.2.3 | Estudo de viabilidade técnica, econômica e ambiental | 20d | 2026-08-18 | 2026-09-15 | 451SS | 2026-08-18 | 2026-09-15 | 20d | 8d |  |
| 454 | 3.3.4.2.2.4 | Lista preliminar de sistemas envolvidos. | 20d | 2026-08-18 | 2026-09-15 | 449 | 2026-08-18 | 2026-09-15 | 20d | 8d |  |
| 455 | 3.3.4.2.2.5 | Planta baixa estimada contendo: - Traçado preliminar | 20d | 2026-08-18 | 2026-09-15 | 449 | 2026-08-18 | 2026-09-15 | 20d | 0d |  |
| 456 | 3.3.4.2.3 | **LOD 300 - Consolidação e documentação de entrega** | 8d | 2026-09-16 | 2026-09-25 |  | 2026-09-16 | 2026-09-25 | 8d | 0d |  |
| 457 | 3.3.4.2.3.1 | Prancha simplificada do projeto | 8d | 2026-09-16 | 2026-09-25 | 455 | 2026-09-16 | 2026-09-25 | 8d | 0d |  |
| 458 | 3.3.4.2.3.2 | Memorial descritivo | 3d | 2026-09-23 | 2026-09-25 | 457FF | 2026-09-23 | 2026-09-25 | 3d | 0d |  |
| 459 | 3.3.4.2.3.3 | Memória de cálculo (pressão, vazão, diâmetros, perda de carga). | 3d | 2026-09-23 | 2026-09-25 | 455, 457FF | 2026-09-23 | 2026-09-25 | 3d | 0d |  |
| 460 | 3.3.4.2.4 | Aprovação de Conformidade | 3d | 2026-09-23 | 2026-09-25 | 456FF | 2026-09-23 | 2026-09-25 | 3d | 0d |  |
| 461 | 3.3.4.2.5 | Material para entrega ao contrato | 3d | 2026-09-23 | 2026-09-25 | 456FF | 2026-09-23 | 2026-09-25 | 3d | 0d |  |
| 462 | 3.3.4.3 | **AVAC** | 34d | 2026-08-10 | 2026-09-25 |  | 2026-08-10 | 2026-09-25 | 34d | 0d |  |
| 463 | 3.3.4.3.1 | **LOD 100 — Premissas, diretrizes e interfaces** | 10d | 2026-08-10 | 2026-08-21 |  | 2026-08-10 | 2026-08-21 | 10d | 0d |  |
| 464 | 3.3.4.3.1.1 | Estimativa de carga térmica por ambiente. | 10d | 2026-08-10 | 2026-08-21 | 1323SS+24d, 1067SS+24d, 811SS+24d, 555SS+24d, 299SS+24d, 114SS+24d | 2026-08-10 | 2026-08-21 | 10d | 24d |  |
| 465 | 3.3.4.3.1.2 | Estudo de viabilidade e rotas principais de distribuição de ar. | 10d | 2026-08-10 | 2026-08-21 | 1323SS+24d, 1067SS+24d, 811SS+24d, 555SS+24d, 299SS+24d, 114SS+24d | 2026-08-10 | 2026-08-21 | 10d | 24d |  |
| 466 | 3.3.4.3.1.3 | Reserva de espaços técnicos e shafts. | 10d | 2026-08-10 | 2026-08-21 | 1323SS+24d, 1067SS+24d, 811SS+24d, 555SS+24d, 299SS+24d, 114SS+24d | 2026-08-10 | 2026-08-21 | 10d | 0d |  |
| 467 | 3.3.4.3.1.4 | Levantamento de cargas especiais provenientes de outras disciplinas. | 10d | 2026-08-10 | 2026-08-21 | 1323SS+24d, 1067SS+24d, 811SS+24d, 555SS+24d, 299SS+24d, 114SS+24d | 2026-08-10 | 2026-08-21 | 10d | 24d |  |

| ID | WBS | Task | Duration | Start | Finish | Predecessors | Baseline start | Baseline finish | Baseline duration | Total slack | Text3 |
| --- | --- | --- | --- | --- | --- | --- | --- | --- | --- | --- | --- |
| 468 | 3.3.4.3.2 | **LOD 200 — Validação interdisciplinar e solução preliminar** | 24d | 2026-08-24 | 2026-09-25 |  | 2026-08-24 | 2026-09-25 | 24d | 0d |  |
| 469 | 3.3.4.3.2.1 | Lista preliminar de sistemas HVAC envolvidos (expansão direta, VRF, chillers, ventilação, exaustão). | 24d | 2026-08-24 | 2026-09-25 | 466 | 2026-08-24 | 2026-09-25 | 24d | 0d |  |
| 470 | 3.3.4.3.3 | Aprovação de Conformidade | 3d | 2026-09-23 | 2026-09-25 | 468FF | 2026-09-23 | 2026-09-25 | 3d | 0d |  |
| 471 | 3.3.4.3.4 | Material para entrega ao contrato | 3d | 2026-09-23 | 2026-09-25 | 468FF | 2026-09-23 | 2026-09-25 | 3d | 0d |  |
| 472 | 3.3.4.4 | **PCI (Incêndio)** | 34d | 2026-08-10 | 2026-09-25 |  | 2026-08-10 | 2026-09-25 | 34d | 0d |  |
| 473 | 3.3.4.4.1 | **LOD 100 — Premissas, diretrizes e interfaces** | 10d | 2026-08-10 | 2026-08-21 |  | 2026-08-10 | 2026-08-21 | 10d | 0d | ܁# |
| 474 | 3.3.4.4.1.1 | Estudo e avaliação da arquitetura atendendo as normas competentes de PCI | 10d | 2026-08-10 | 2026-08-21 | 1323SS+24d, 1067SS+24d, 811SS+24d, 555SS+24d, 299SS+24d, 114SS+24d | 2026-08-10 | 2026-08-21 | 10d | 24d |  |
| 475 | 3.3.4.4.1.2 | Avaliação do espaço para CMI e Central de Gás. | 10d | 2026-08-10 | 2026-08-21 | 1323SS+24d, 1067SS+24d, 811SS+24d, 555SS+24d, 299SS+24d, 114SS+24d | 2026-08-10 | 2026-08-21 | 10d | 24d |  |
| 476 | 3.3.4.4.1.3 | Pontos locação para seus elementos no projeto arquitetônico | 10d | 2026-08-10 | 2026-08-21 | 1323SS+24d, 1067SS+24d, 811SS+24d, 555SS+24d, 299SS+24d, 114SS+24d | 2026-08-10 | 2026-08-21 | 10d | 0d |  |
| 477 | 3.3.4.4.2 | **LOD 200 — Validação interdisciplinar e solução preliminar** | 24d | 2026-08-24 | 2026-09-25 |  | 2026-08-24 | 2026-09-25 | 24d | 0d | ܁# |
| 478 | 3.3.4.4.2.1 | Definição da classificação da edificação e o risco de incêndio | 24d | 2026-08-24 | 2026-09-25 | 476 | 2026-08-24 | 2026-09-25 | 24d | 0d |  |
| 479 | 3.3.4.4.2.2 | Cálculos pré-dimensionados dos extintores, hidrantes e bomba. | 24d | 2026-08-24 | 2026-09-25 | 476 | 2026-08-24 | 2026-09-25 | 24d | 0d |  |
| 480 | 3.3.4.4.2.3 | Avaliação das rotas de fuga, ventilação de CMI e outros elementos de importância para as normas de PCI | 24d | 2026-08-24 | 2026-09-25 | 476 | 2026-08-24 | 2026-09-25 | 24d | 0d |  |
| 481 | 3.3.4.4.3 | Aprovação de Conformidade | 3d | 2026-09-23 | 2026-09-25 | 477FF | 2026-09-23 | 2026-09-25 | 3d | 0d |  |
| 482 | 3.3.4.4.4 | Material para entrega ao contrato | 3d | 2026-09-23 | 2026-09-25 | 477FF | 2026-09-23 | 2026-09-25 | 3d | 0d |  |
| 483 | 3.3.4.5 | **Elétrica Baixa Tensão** | 34d | 2026-08-10 | 2026-09-25 |  | 2026-08-10 | 2026-09-25 | 34d | 0d |  |
| 484 | 3.3.4.5.1 | **LOD 100 — Concepção** | 10d | 2026-08-10 | 2026-08-21 |  | 2026-08-10 | 2026-08-21 | 10d | 0d |  |
| 485 | 3.3.4.5.1.1 | Avaliação e Diretrizes Técnicas para Arquitetura | 6d | 2026-08-10 | 2026-08-17 | 1323SS+24d, 1067SS+24d, 811SS+24d, 555SS+24d, 299SS+24d, 114SS+24d | 2026-08-10 | 2026-08-17 | 6d | 28d |  |
| 486 | 3.3.4.5.1.2 | Estimativa de Cargas e Demanda | 10d | 2026-08-10 | 2026-08-21 | 1323SS+24d, 1067SS+24d, 811SS+24d, 555SS+24d, 299SS+24d, 114SS+24d | 2026-08-10 | 2026-08-21 | 10d | 0d |  |
| 487 | 3.3.4.5.1.3 | Levantamento de Equipamentos de Outras Disciplinas | 6d | 2026-08-10 | 2026-08-17 | 1323SS+24d, 1067SS+24d, 811SS+24d, 555SS+24d, 299SS+24d, 114SS+24d | 2026-08-10 | 2026-08-17 | 6d | 4d |  |
| 488 | 3.3.4.5.2 | **LOD 200 — Anteprojeto** | 19d | 2026-08-24 | 2026-09-18 |  | 2026-08-24 | 2026-09-18 | 19d | 0d |  |
| 489 | 3.3.4.5.2.1 | TUGs Estimados | 19d | 2026-08-24 | 2026-09-18 | 486, 487 | 2026-08-24 | 2026-09-18 | 19d | 0d |  |
| 490 | 3.3.4.5.2.2 | Pontos de Luz Estimados | 19d | 2026-08-24 | 2026-09-18 | 486, 487 | 2026-08-24 | 2026-09-18 | 19d | 0d |  |
| 491 | 3.3.4.5.2.3 | TUEs e Quadros Estimados | 19d | 2026-08-24 | 2026-09-18 | 486, 487 | 2026-08-24 | 2026-09-18 | 19d | 0d |  |
| 492 | 3.3.4.5.3 | LOD 300 - Consolidação e documentação de entrega | 5d | 2026-09-21 | 2026-09-25 | 488 | 2026-09-21 | 2026-09-25 | 5d | 0d |  |
| 493 | 3.3.4.5.4 | Aprovação de Conformidade | 3d | 2026-09-23 | 2026-09-25 | 492FF | 2026-09-23 | 2026-09-25 | 3d | 0d |  |
| 494 | 3.3.4.5.5 | Material para entrega ao contrato | 3d | 2026-09-23 | 2026-09-25 | 492FF | 2026-09-23 | 2026-09-25 | 3d | 0d |  |

| ID | WBS | Task | Duration | Start | Finish | Predecessors | Baseline start | Baseline finish | Baseline duration | Total slack |
| --- | --- | --- | --- | --- | --- | --- | --- | --- | --- | --- |
| 495 | 3.3.4.6 | **Telecom** | 34d | 2026-08-10 | 2026-09-25 |  | 2026-08-10 | 2026-09-25 | 34d | 0d |
| 496 | 3.3.4.6.1 | **LOD 100 — Concepção** | 10d | 2026-08-10 | 2026-08-21 |  | 2026-08-10 | 2026-08-21 | 10d | 0d |
| 497 | 3.3.4.6.1.1 | Avaliação e Diretrizes Técnicas para Arquitetura | 10d | 2026-08-10 | 2026-08-21 | 1323SS+24d, 1067SS+24d, 811SS+24d, 555SS+24d, 299SS+24d, 114SS+24d | 2026-08-10 | 2026-08-21 | 10d | 24d |
| 498 | 3.3.4.6.1.2 | Estimativa de Demanda de Telecomunicações | 10d | 2026-08-10 | 2026-08-21 | 1323SS+24d, 1067SS+24d, 811SS+24d, 555SS+24d, 299SS+24d, 114SS+24d | 2026-08-10 | 2026-08-21 | 10d | 24d |
| 499 | 3.3.4.6.1.3 | Levantamento de Equipamentos e Interfaces com Outras Disciplinas | 10d | 2026-08-10 | 2026-08-21 | 1323SS+24d, 1067SS+24d, 811SS+24d, 555SS+24d, 299SS+24d, 114SS+24d | 2026-08-10 | 2026-08-21 | 10d | 0d |
| 500 | 3.3.4.6.2 | **LOD 200 — Anteprojeto** | 20d | 2026-08-24 | 2026-09-21 |  | 2026-08-24 | 2026-09-21 | 20d | 0d |
| 501 | 3.3.4.6.2.1 | Pontos de Telecomunicações Estimados (Rede, Voz, CFTV e Demais Sistemas) | 10d | 2026-08-24 | 2026-09-04 | 499 | 2026-08-24 | 2026-09-04 | 10d | 0d |
| 502 | 3.3.4.6.2.2 | Racks Estimados | 10d | 2026-08-24 | 2026-09-04 | 499 | 2026-08-24 | 2026-09-04 | 10d | 0d |
| 503 | 3.3.4.6.2.3 | Infraestrutura de Telecomunicações Preliminar | 10d | 2026-09-08 | 2026-09-21 | 501, 502 | 2026-09-08 | 2026-09-21 | 10d | 0d |
| 504 | 3.3.4.6.3 | LOD 300 - Consolidação e documentação de entrega | 4d | 2026-09-22 | 2026-09-25 | 500 | 2026-09-22 | 2026-09-25 | 4d | 0d |
| 505 | 3.3.4.6.4 | Aprovação de Conformidade | 3d | 2026-09-23 | 2026-09-25 | 504FF | 2026-09-23 | 2026-09-25 | 3d | 0d |
| 506 | 3.3.4.6.5 | Material para entrega ao contrato | 3d | 2026-09-23 | 2026-09-25 | 504FF | 2026-09-23 | 2026-09-25 | 3d | 0d |
| 507 | 3.3.4.7 | **Subestação** | 34d | 2026-08-10 | 2026-09-25 |  | 2026-08-10 | 2026-09-25 | 34d | 0d |
| 508 | 3.3.4.7.1 | **LOD 100 — Concepção** | 10d | 2026-08-10 | 2026-08-21 |  | 2026-08-10 | 2026-08-21 | 10d | 0d |
| 509 | 3.3.4.7.1.1 | Avaliação e Diretrizes Técnicas para Arquitetura | 10d | 2026-08-10 | 2026-08-21 | 1323SS+24d, 1067SS+24d, 811SS+24d, 555SS+24d, 299SS+24d, 114SS+24d | 2026-08-10 | 2026-08-21 | 10d | 24d |
| 510 | 3.3.4.7.1.2 | Levantamento de Demanda, Perfil de Consumo e Ponto de Entrega | 10d | 2026-08-10 | 2026-08-21 | 1323SS+24d, 1067SS+24d, 811SS+24d, 555SS+24d, 299SS+24d, 114SS+24d | 2026-08-10 | 2026-08-21 | 10d | 24d |
| 511 | 3.3.4.7.1.3 | Estudo de Viabilidade Técnica e Atendimento ao Padrão da Concessionária | 10d | 2026-08-10 | 2026-08-21 | 1323SS+24d, 1067SS+24d, 811SS+24d, 555SS+24d, 299SS+24d, 114SS+24d | 2026-08-10 | 2026-08-21 | 10d | 0d |
| 512 | 3.3.4.7.2 | **LOD 200 — Anteprojeto** | 20d | 2026-08-24 | 2026-09-21 |  | 2026-08-24 | 2026-09-21 | 20d | 0d |
| 513 | 3.3.4.7.2.1 | Definição do Tipo de Subestação e Arranjo Físico Preliminar | 10d | 2026-08-24 | 2026-09-04 | 511 | 2026-08-24 | 2026-09-04 | 10d | 0d |
| 514 | 3.3.4.7.2.2 | Dimensionamento Preliminar do Transformador e Equipamentos Principais | 10d | 2026-09-08 | 2026-09-21 | 513 | 2026-09-08 | 2026-09-21 | 10d | 0d |
| 515 | 3.3.4.7.2.3 | Diretrizes Preliminares de Aterramento | 10d | 2026-09-08 | 2026-09-21 | 513 | 2026-09-08 | 2026-09-21 | 10d | 0d |
| 516 | 3.3.4.7.3 | LOD 300 - Consolidação e documentação de entrega | 4d | 2026-09-22 | 2026-09-25 | 512 | 2026-09-22 | 2026-09-25 | 4d | 0d |
| 517 | 3.3.4.7.4 | Aprovação de Conformidade | 3d | 2026-09-23 | 2026-09-25 | 516FF | 2026-09-23 | 2026-09-25 | 3d | 0d |
| 518 | 3.3.4.7.5 | Material para entrega ao contrato | 3d | 2026-09-23 | 2026-09-25 | 516FF | 2026-09-23 | 2026-09-25 | 3d | 0d |

| ID | WBS | Task | Duration | Start | Finish | Predecessors | Baseline start | Baseline finish | Baseline duration | Total slack |
| --- | --- | --- | --- | --- | --- | --- | --- | --- | --- | --- |
| 519 | 3.3.4.8 | **SPDA** | 34d | 2026-08-10 | 2026-09-25 |  | 2026-08-10 | 2026-09-25 | 34d | 0d |
| 520 | 3.3.4.8.1 | **LOD 100 — Concepção** | 10d | 2026-08-10 | 2026-08-21 |  | 2026-08-10 | 2026-08-21 | 10d | 0d |
| 521 | 3.3.4.8.1.1 | Avaliação e Diretrizes Técnicas para Arquitetura | 10d | 2026-08-10 | 2026-08-21 | 1323SS+24d, 1067SS+24d, 811SS+24d, 555SS+24d, 299SS+24d, 114SS+24d | 2026-08-10 | 2026-08-21 | 10d | 24d |
| 522 | 3.3.4.8.1.2 | Coleta de Informações da Edificação e Análise de Risco (ABNT NBR 5419-2) | 10d | 2026-08-10 | 2026-08-21 | 1323SS+24d, 1067SS+24d, 811SS+24d, 555SS+24d, 299SS+24d, 114SS+24d | 2026-08-10 | 2026-08-21 | 10d | 24d |
| 523 | 3.3.4.8.1.3 | Estudo Preliminar de Necessidade e Nível de Proteção do SPDA | 10d | 2026-08-10 | 2026-08-21 | 1323SS+24d, 1067SS+24d, 811SS+24d, 555SS+24d, 299SS+24d, 114SS+24d | 2026-08-10 | 2026-08-21 | 10d | 0d |
| 524 | 3.3.4.8.2 | **LOD 200 — Anteprojeto** | 20d | 2026-08-24 | 2026-09-21 |  | 2026-08-24 | 2026-09-21 | 20d | 0d |
| 525 | 3.3.4.8.2.1 | Definição da Estratégia de Proteção e Soluções Técnicas | 10d | 2026-08-24 | 2026-09-04 | 523 | 2026-08-24 | 2026-09-04 | 10d | 0d |
| 526 | 3.3.4.8.2.2 | Zoneamento de Captação, Descida e Traçados Preliminares | 10d | 2026-09-08 | 2026-09-21 | 525 | 2026-09-08 | 2026-09-21 | 10d | 4d |
| 527 | 3.3.4.8.2.3 | Estudo de Interferências, Compatibilização e Métodos Construtivos | 10d | 2026-09-08 | 2026-09-21 | 525 | 2026-09-08 | 2026-09-21 | 10d | 0d |
| 528 | 3.3.4.8.3 | LOD 300 - Consolidação e documentação de entrega | 4d | 2026-09-22 | 2026-09-25 | 527 | 2026-09-22 | 2026-09-25 | 4d | 0d |
| 529 | 3.3.4.8.4 | Aprovação de Conformidade | 3d | 2026-09-23 | 2026-09-25 | 528FF | 2026-09-23 | 2026-09-25 | 3d | 0d |
| 530 | 3.3.4.8.5 | Material para entrega ao contrato | 3d | 2026-09-23 | 2026-09-25 | 528FF | 2026-09-23 | 2026-09-25 | 3d | 0d |
| 531 | 3.3.4.9 | **Energia Renovável** | 34d | 2026-08-10 | 2026-09-25 |  | 2026-08-10 | 2026-09-25 | 34d | 0d |
| 532 | 3.3.4.9.1 | **LOD 100 — Concepção** | 10d | 2026-08-10 | 2026-08-21 |  | 2026-08-10 | 2026-08-21 | 10d | 0d |
| 533 | 3.3.4.9.1.1 | Viabilidade e Premissas de Geração | 10d | 2026-08-10 | 2026-08-21 | 1323SS+24d, 1067SS+24d, 811SS+24d, 555SS+24d, 299SS+24d, 114SS+24d | 2026-08-10 | 2026-08-21 | 10d | 24d |
| 534 | 3.3.4.9.1.2 | Levantamento Preliminar de Áreas e Sombreamento | 10d | 2026-08-10 | 2026-08-21 | 1323SS+24d, 1067SS+24d, 811SS+24d, 555SS+24d, 299SS+24d, 114SS+24d | 2026-08-10 | 2026-08-21 | 10d | 0d |
| 535 | 3.3.4.9.1.3 | Avaliação e Diretrizes Técnicas para Arquitetônico | 10d | 2026-08-10 | 2026-08-21 | 1323SS+24d, 1067SS+24d, 811SS+24d, 555SS+24d, 299SS+24d, 114SS+24d | 2026-08-10 | 2026-08-21 | 10d | 24d |
| 536 | 3.3.4.9.2 | **LOD 200 — Anteprojeto** | 20d | 2026-08-24 | 2026-09-21 |  | 2026-08-24 | 2026-09-21 | 20d | 0d |
| 537 | 3.3.4.9.2.1 | Layout Preliminar de Módulos, Inversores e String Boxes | 20d | 2026-08-24 | 2026-09-21 | 534 | 2026-08-24 | 2026-09-21 | 20d | 0d |
| 538 | 3.3.4.9.2.2 | Infraestrutura e Rotas Técnicas Preliminares (DC/AC e Aterramento) | 20d | 2026-08-24 | 2026-09-21 | 534 | 2026-08-24 | 2026-09-21 | 20d | 0d |
| 539 | 3.3.4.9.2.3 | Critérios Preliminares de Proteção e Estimativa de Quantitativos | 20d | 2026-08-24 | 2026-09-21 | 534 | 2026-08-24 | 2026-09-21 | 20d | 0d |
| 540 | 3.3.4.9.3 | LOD 300 - Consolidação e documentação de entrega | 4d | 2026-09-22 | 2026-09-25 | 536 | 2026-09-22 | 2026-09-25 | 4d | 0d |
| 541 | 3.3.4.9.4 | Aprovação de Conformidade | 3d | 2026-09-23 | 2026-09-25 | 540FF | 2026-09-23 | 2026-09-25 | 3d | 0d |
| 542 | 3.3.4.9.5 | Material para entrega ao contrato | 3d | 2026-09-23 | 2026-09-25 | 540FF | 2026-09-23 | 2026-09-25 | 3d | 0d |

| ID | WBS | Task | Duration | Start | Finish | Predecessors | Complete | Remaining | Baseline start | Baseline finish | Baseline duration | Total slack |
| --- | --- | --- | --- | --- | --- | --- | --- | --- | --- | --- | --- | --- |
| 543 | 3.4 | **4 - Ed 02 - Alojamentos** | 100d | 2026-05-07 A | 2026-09-25 |  | 14% | 86.11d | 2026-05-07 | 2026-09-25 | 100d | 0d |
| 544 | 3.4.1 | **Arquitetura** | 100d | 2026-05-07 A | 2026-09-25 |  | 30% | 69.76d | 2026-05-07 | 2026-09-25 | 100d | 0d |
| 545 | 3.4.1.1 | **Análise e Compatibilização (caso a gente receba o projeto e precise adequar)** | 84d | 2026-05-07 A | 2026-09-02 |  | 30% | 59.16d | 2026-05-07 | 2026-09-02 | 84d | 16d |
| 546 | 3.4.1.1.1 | Analisar topografia | 42d | 2026-05-07 | 2026-07-06 |  |  |  | 2026-05-07 | 2026-07-06 | 42d | 58d |
| 547 | 3.4.1.1.2 | Criação e georreferenciamento e ajuste de norte nos arquivos federado, arquitetura, implantação, layout | 42d | 2026-05-07 | 2026-07-06 |  |  |  | 2026-05-07 | 2026-07-06 | 42d | 0d |
| 548 | 3.4.1.1.3 | Analise geral do projeto | 42d | 2026-05-07 A | 2026-07-06 A |  | 100% |  | 2026-05-07 | 2026-07-06 | 42d |  |
| 549 | 3.4.1.1.4 | Verificar acessibilidade dos espaços de acordo com a norma e sistematizar ajustes | 42d | 2026-05-07 A | 2026-07-06 A |  | 100% |  | 2026-05-07 | 2026-07-06 | 42d |  |
| 550 | 3.4.1.1.5 | Conferir paredes | 42d | 2026-05-07 A | 2026-07-06 A |  | 100% |  | 2026-05-07 | 2026-07-06 | 42d |  |
| 551 | 3.4.1.1.6 | Conferir Pisos | 42d | 2026-05-07 A | 2026-07-06 A |  | 100% |  | 2026-05-07 | 2026-07-06 | 42d |  |
| 552 | 3.4.1.1.7 | Conferir Esquadrias | 42d | 2026-05-07 | 2026-07-06 |  |  |  | 2026-05-07 | 2026-07-06 | 42d | 58d |
| 553 | 3.4.1.1.8 | Conferir Mobiliário | 42d | 2026-05-07 | 2026-07-06 |  |  |  | 2026-05-07 | 2026-07-06 | 42d | 58d |
| 554 | 3.4.1.1.9 | Compatibilização disciplinas engenharia e sistematização incrementos e ajustes | 42d | 2026-07-07 | 2026-09-02 | 547 |  |  | 2026-07-07 | 2026-09-02 | 42d | 16d |
| 555 | 3.4.1.1.10 | Compatibilização com normas técnicas | 38d | 2026-07-07 | 2026-08-27 | 547 |  |  | 2026-07-07 | 2026-08-27 | 38d | 0d |
| 556 | 3.4.1.1.11 | Compatibilização padrão Quanta | 38d | 2026-07-07 | 2026-08-27 | 547 |  |  | 2026-07-07 | 2026-08-27 | 38d | 20d |
| 557 | 3.4.1.1.12 | Verficar se elementos estão associados aos níveis corretos e sistematizar ajustes | 38d | 2026-07-07 | 2026-08-27 | 547 |  |  | 2026-07-07 | 2026-08-27 | 38d | 20d |
| 558 | 3.4.1.1.13 | Revisão de perímetro do terreno, recuos, taxa de ocupação e afastamentos | 38d | 2026-07-07 | 2026-08-27 | 547 |  |  | 2026-07-07 | 2026-08-27 | 38d | 20d |
| 559 | 3.4.1.1.14 | Relatório/Memorial de Compatibilização | 38d | 2026-07-07 | 2026-08-27 | 547 |  |  | 2026-07-07 | 2026-08-27 | 38d | 0d |
| 560 | 3.4.1.2 | **LOD 300 - ANTEPROJETO** | 20d | 2026-08-28 A | 2026-09-25 |  | 32% | 13.61d | 2026-08-28 | 2026-09-25 | 20d | 0d |
| 561 | 3.4.1.2.1 | **Modelagem e compatibilização** | 10d | 2026-08-28 A | 2026-09-11 |  | 54% | 4.62d | 2026-08-28 | 2026-09-11 | 10d | 10d |
| 562 | 3.4.1.2.1.1 | Modelagem ajustes topografia | 10d | 2026-08-28 | 2026-09-11 | 559 |  |  | 2026-08-28 | 2026-09-11 | 10d | 10d |
| 563 | 3.4.1.2.1.2 | Mudar pisos para o padrão Quanta | 10d | 2026-08-28 A | 2026-09-11 A | 559 | 100% |  | 2026-08-28 | 2026-09-11 | 10d |  |
| 564 | 3.4.1.2.1.3 | Mudar paredes para o padrão Quanta | 10d | 2026-08-28 A | 2026-09-11 A | 559 | 100% |  | 2026-08-28 | 2026-09-11 | 10d |  |
| 565 | 3.4.1.2.1.4 | Mudar esquadrias para o padrão Quanta | 10d | 2026-08-28 | 2026-09-11 | 559 |  |  | 2026-08-28 | 2026-09-11 | 10d | 10d |
| 566 | 3.4.1.2.1.5 | Mudar metais para o padrão Quanta | 10d | 2026-08-28 A | 2026-09-11 A | 559 | 100% |  | 2026-08-28 | 2026-09-11 | 10d |  |
| 567 | 3.4.1.2.1.6 | Mudar louças para o padrão Quanta | 10d | 2026-08-28 A | 2026-09-11 A | 559 | 100% |  | 2026-08-28 | 2026-09-11 | 10d |  |
| 568 | 3.4.1.2.1.7 | Modelagem acessos e vias necessárias a implantação | 10d | 2026-08-28 A | 2026-09-11 A | 559 | 100% |  | 2026-08-28 | 2026-09-11 | 10d |  |
| 569 | 3.4.1.2.1.8 | Modelagem passeios e canteiros | 10d | 2026-08-28 A | 2026-09-11 A | 559 | 100% |  | 2026-08-28 | 2026-09-11 | 10d |  |
| 570 | 3.4.1.2.1.9 | Modelagem estacionamentos | 10d | 2026-08-28 A | 2026-09-11 A | 559 | 100% |  | 2026-08-28 | 2026-09-11 | 10d |  |
| 571 | 3.4.1.2.1.10 | Modelagem subestação elétrica | 10d | 2026-08-28 | 2026-09-11 | 559 |  |  | 2026-08-28 | 2026-09-11 | 10d | 10d |
| 572 | 3.4.1.2.1.11 | Modelagem ETE | 10d | 2026-08-28 | 2026-09-11 | 559 |  |  | 2026-08-28 | 2026-09-11 | 10d | 10d |
| 573 | 3.4.1.2.1.12 | Modelagem PCI | 10d | 2026-08-28 | 2026-09-11 | 559 |  |  | 2026-08-28 | 2026-09-11 | 10d | 10d |
| 574 | 3.4.1.2.1.13 | Modelagem/ajustes caixa d'água | 10d | 2026-08-28 | 2026-09-11 | 559 |  |  | 2026-08-28 | 2026-09-11 | 10d | 0d |

| ID | WBS | Task | Duration | Start | Finish | Predecessors | Baseline start | Baseline finish | Baseline duration | Total slack |
| --- | --- | --- | --- | --- | --- | --- | --- | --- | --- | --- |
| 575 | 3.4.1.2.2 | **Situação** | 1d | 2026-09-14 | 2026-09-14 |  | 2026-09-14 | 2026-09-14 | 1d | 0d |
| 576 | 3.4.1.2.2.1 | Indicar simbologias de representação gráfica, conforme NBR 6492:2021; | 1d | 2026-09-14 | 2026-09-14 | 574 | 2026-09-14 | 2026-09-14 | 1d | 9d |
| 577 | 3.4.1.2.2.2 | Indicação Norte | 1d | 2026-09-14 | 2026-09-14 | 574 | 2026-09-14 | 2026-09-14 | 1d | 9d |
| 578 | 3.4.1.2.2.3 | Analisar, adicionar e fechar - Curvas de nível existentes e projetadas (conforme projetos de topografia e sondagem recebidos); | 1d | 2026-09-14 | 2026-09-14 | 574 | 2026-09-14 | 2026-09-14 | 1d | 9d |
| 579 | 3.4.1.2.2.4 | Indicação de Escala; | 1d | 2026-09-14 | 2026-09-14 | 574 | 2026-09-14 | 2026-09-14 | 1d | 9d |
| 580 | 3.4.1.2.2.5 | Vias de acesso ao conjunto, arruamento, logradouros adjacentes e calçadas com os respectivos equipamentos urbanos; | 1d | 2026-09-14 | 2026-09-14 | 574 | 2026-09-14 | 2026-09-14 | 1d | 9d |
| 581 | 3.4.1.2.2.6 | Platôs e taludes principais; | 1d | 2026-09-14 | 2026-09-14 | 574 | 2026-09-14 | 2026-09-14 | 1d | 9d |
| 582 | 3.4.1.2.2.7 | Perímetro do terreno, recuos e afastamentos; | 1d | 2026-09-14 | 2026-09-14 | 574 | 2026-09-14 | 2026-09-14 | 1d | 9d |
| 583 | 3.4.1.2.2.8 | Indicação das áreas a serem edificadas com o contorno da cobertura das edificações, estacionamentos e áreas permeáveis/impermeáveis; | 1d | 2026-09-14 | 2026-09-14 | 574 | 2026-09-14 | 2026-09-14 | 1d | 9d |
| 584 | 3.4.1.2.2.9 | Denominação das edificações, blocos ou espaços; | 1d | 2026-09-14 | 2026-09-14 | 574 | 2026-09-14 | 2026-09-14 | 1d | 9d |
| 585 | 3.4.1.2.2.10 | Cotas gerais | 1d | 2026-09-14 | 2026-09-14 | 574 | 2026-09-14 | 2026-09-14 | 1d | 9d |
| 586 | 3.4.1.2.2.11 | Cotas de nível principal. | 1d | 2026-09-14 | 2026-09-14 | 574 | 2026-09-14 | 2026-09-14 | 1d | 9d |
| 587 | 3.4.1.2.2.12 | Quadros de áreas | 1d | 2026-09-14 | 2026-09-14 | 574 | 2026-09-14 | 2026-09-14 | 1d | 0d |
| 588 | 3.4.1.2.3 | Planta com as cotas de nível projetadas e existentes | 1d | 2026-09-14 | 2026-09-14 | 587SS | 2026-09-14 | 2026-09-14 | 1d | 0d |
| 589 | 3.4.1.2.4 | **Plantas baixas (se tiver mais de um pavimento, duplicar bloco)** | 1d | 2026-09-15 | 2026-09-15 |  | 2026-09-15 | 2026-09-15 | 1d | 0d |
| 590 | 3.4.1.2.4.1 | Indicar simbologias de representação gráfica, conforme NBR 6492:2021; | 1d | 2026-09-15 | 2026-09-15 | 588 | 2026-09-15 | 2026-09-15 | 1d | 8d |
| 591 | 3.4.1.2.4.2 | Compatibilização (verificar se está tudo conforme as normas e alinhar com o restante das disciplinas de engenharia) | 1d | 2026-09-15 | 2026-09-15 | 588 | 2026-09-15 | 2026-09-15 | 1d | 8d |
| 592 | 3.4.1.2.4.3 | Compatibilização (deixar tudo conforme padrão Quanta) | 1d | 2026-09-15 | 2026-09-15 | 588 | 2026-09-15 | 2026-09-15 | 1d | 8d |
| 593 | 3.4.1.2.4.4 | Indicação de Norte; | 1d | 2026-09-15 | 2026-09-15 | 588 | 2026-09-15 | 2026-09-15 | 1d | 8d |
| 594 | 3.4.1.2.4.5 | Indicação de Escala; | 1d | 2026-09-15 | 2026-09-15 | 588 | 2026-09-15 | 2026-09-15 | 1d | 8d |
| 595 | 3.4.1.2.4.6 | Indicação de Acessos; | 1d | 2026-09-15 | 2026-09-15 | 588 | 2026-09-15 | 2026-09-15 | 1d | 8d |
| 596 | 3.4.1.2.4.7 | Elementos de vedação internos e externos; | 1d | 2026-09-15 | 2026-09-15 | 588 | 2026-09-15 | 2026-09-15 | 1d | 8d |
| 597 | 3.4.1.2.4.8 | Esquadrias (sem código e sem quadro); | 1d | 2026-09-15 | 2026-09-15 | 588 | 2026-09-15 | 2026-09-15 | 1d | 8d |
| 598 | 3.4.1.2.4.9 | Elementos estruturais principais; | 1d | 2026-09-15 | 2026-09-15 | 588 | 2026-09-15 | 2026-09-15 | 1d | 8d |
| 599 | 3.4.1.2.4.10 | Identificação dos ambientes e espaços (internos e externos); | 1d | 2026-09-15 | 2026-09-15 | 588 | 2026-09-15 | 2026-09-15 | 1d | 8d |
| 600 | 3.4.1.2.4.11 | Espaços de circulação internos e externos; | 1d | 2026-09-15 | 2026-09-15 | 588 | 2026-09-15 | 2026-09-15 | 1d | 8d |
| 601 | 3.4.1.2.4.12 | Áreas de serviço, funcionais e técnicas (internos e externos); | 1d | 2026-09-15 | 2026-09-15 | 588 | 2026-09-15 | 2026-09-15 | 1d | 8d |
| 602 | 3.4.1.2.4.13 | Projeções de níveis superiores; | 1d | 2026-09-15 | 2026-09-15 | 588 | 2026-09-15 | 2026-09-15 | 1d | 8d |
| 603 | 3.4.1.2.4.14 | Cotas gerais | 1d | 2026-09-15 | 2026-09-15 | 588 | 2026-09-15 | 2026-09-15 | 1d | 8d |
| 604 | 3.4.1.2.4.15 | Cotas de nível principal. | 1d | 2026-09-15 | 2026-09-15 | 588 | 2026-09-15 | 2026-09-15 | 1d | 8d |
| 605 | 3.4.1.2.4.16 | Tabelas de paredes, pisos, esquadrias e plantas | 1d | 2026-09-15 | 2026-09-15 | 588 | 2026-09-15 | 2026-09-15 | 1d | 8d |
| 606 | 3.4.1.2.4.17 | Quadro de áreas | 1d | 2026-09-15 | 2026-09-15 | 588 | 2026-09-15 | 2026-09-15 | 1d | 0d |

| ID | WBS | Task | Duration | Start | Finish | Predecessors | Baseline start | Baseline finish | Baseline duration | Total slack |
| --- | --- | --- | --- | --- | --- | --- | --- | --- | --- | --- |
| 607 | 3.4.1.2.5 | **Planta das coberturas** | 1d | 2026-09-16 | 2026-09-16 |  | 2026-09-16 | 2026-09-16 | 1d | 0d |
| 608 | 3.4.1.2.5.1 | Indicação do Norte | 1d | 2026-09-16 | 2026-09-16 | 606 | 2026-09-16 | 2026-09-16 | 1d | 7d |
| 609 | 3.4.1.2.5.2 | Indicação de escala | 1d | 2026-09-16 | 2026-09-16 | 606 | 2026-09-16 | 2026-09-16 | 1d | 7d |
| 610 | 3.4.1.2.5.3 | Curvas de nível | 1d | 2026-09-16 | 2026-09-16 | 606 | 2026-09-16 | 2026-09-16 | 1d | 7d |
| 611 | 3.4.1.2.5.4 | Indicação de Acessos; | 1d | 2026-09-16 | 2026-09-16 | 606 | 2026-09-16 | 2026-09-16 | 1d | 7d |
| 612 | 3.4.1.2.5.5 | Estacionamento e áreas cobertas | 1d | 2026-09-16 | 2026-09-16 | 606 | 2026-09-16 | 2026-09-16 | 1d | 7d |
| 613 | 3.4.1.2.5.6 | Cobertura das edificações | 1d | 2026-09-16 | 2026-09-16 | 606 | 2026-09-16 | 2026-09-16 | 1d | 7d |
| 614 | 3.4.1.2.5.7 | Sentido de escoamento das águas pluviais e inclinação | 1d | 2026-09-16 | 2026-09-16 | 606 | 2026-09-16 | 2026-09-16 | 1d | 7d |
| 615 | 3.4.1.2.5.8 | Cotas gerais | 1d | 2026-09-16 | 2026-09-16 | 606 | 2026-09-16 | 2026-09-16 | 1d | 7d |
| 616 | 3.4.1.2.5.9 | Cotas de nível principal | 1d | 2026-09-16 | 2026-09-16 | 606 | 2026-09-16 | 2026-09-16 | 1d | 0d |
| 617 | 3.4.1.2.6 | **Cortes longitudinais** | 1d | 2026-09-17 | 2026-09-17 |  | 2026-09-17 | 2026-09-17 | 1d | 0d |
| 618 | 3.4.1.2.6.1 | Indicar simbologias de representação gráfica, conforme NBR 6492:2021; | 1d | 2026-09-17 | 2026-09-17 | 616 | 2026-09-17 | 2026-09-17 | 1d | 6d |
| 619 | 3.4.1.2.6.2 | Indicação de Escala; | 1d | 2026-09-17 | 2026-09-17 | 616 | 2026-09-17 | 2026-09-17 | 1d | 6d |
| 620 | 3.4.1.2.6.3 | Elementos estruturais principais; | 1d | 2026-09-17 | 2026-09-17 | 616 | 2026-09-17 | 2026-09-17 | 1d | 6d |
| 621 | 3.4.1.2.6.4 | Elementos de vedação internos e externos; | 1d | 2026-09-17 | 2026-09-17 | 616 | 2026-09-17 | 2026-09-17 | 1d | 6d |
| 622 | 3.4.1.2.6.5 | Esquadrias; | 1d | 2026-09-17 | 2026-09-17 | 616 | 2026-09-17 | 2026-09-17 | 1d | 6d |
| 623 | 3.4.1.2.6.6 | Identificação dos ambientes; | 1d | 2026-09-17 | 2026-09-17 | 616 | 2026-09-17 | 2026-09-17 | 1d | 6d |
| 624 | 3.4.1.2.6.7 | Cobertura com indicação da respectiva inclinação; | 1d | 2026-09-17 | 2026-09-17 | 616 | 2026-09-17 | 2026-09-17 | 1d | 6d |
| 625 | 3.4.1.2.6.8 | Cotas gerais; | 1d | 2026-09-17 | 2026-09-17 | 616 | 2026-09-17 | 2026-09-17 | 1d | 6d |
| 626 | 3.4.1.2.6.9 | Cotas de nível principal; | 1d | 2026-09-17 | 2026-09-17 | 616 | 2026-09-17 | 2026-09-17 | 1d | 6d |
| 627 | 3.4.1.2.6.10 | Eixos do projeto; | 1d | 2026-09-17 | 2026-09-17 | 616 | 2026-09-17 | 2026-09-17 | 1d | 6d |
| 628 | 3.4.1.2.6.11 | Relevo construído; | 1d | 2026-09-17 | 2026-09-17 | 616 | 2026-09-17 | 2026-09-17 | 1d | 6d |
| 629 | 3.4.1.2.6.12 | Projeção da topografia natural. | 1d | 2026-09-17 | 2026-09-17 | 616 | 2026-09-17 | 2026-09-17 | 1d | 0d |
| 630 | 3.4.1.2.6.13 | Relatório | 1d | 2026-09-17 | 2026-09-17 | 616 | 2026-09-17 | 2026-09-17 | 1d | 0d |

| ID | WBS | Task | Duration | Start | Finish | Predecessors | Baseline start | Baseline finish | Baseline duration | Total slack |
| --- | --- | --- | --- | --- | --- | --- | --- | --- | --- | --- |
| 631 | 3.4.1.2.7 | **Cortes transversais** | 1d | 2026-09-18 | 2026-09-18 |  | 2026-09-18 | 2026-09-18 | 1d | 0d |
| 632 | 3.4.1.2.7.1 | Indicar simbologias de representação gráfica, conforme NBR 6492:2021; | 1d | 2026-09-18 | 2026-09-18 | 629 | 2026-09-18 | 2026-09-18 | 1d | 5d |
| 633 | 3.4.1.2.7.2 | Indicação de Escala; | 1d | 2026-09-18 | 2026-09-18 | 629 | 2026-09-18 | 2026-09-18 | 1d | 5d |
| 634 | 3.4.1.2.7.3 | Elementos estruturais principais; | 1d | 2026-09-18 | 2026-09-18 | 629 | 2026-09-18 | 2026-09-18 | 1d | 5d |
| 635 | 3.4.1.2.7.4 | Elementos de vedação internos e externos; | 1d | 2026-09-18 | 2026-09-18 | 629 | 2026-09-18 | 2026-09-18 | 1d | 5d |
| 636 | 3.4.1.2.7.5 | Esquadrias; | 1d | 2026-09-18 | 2026-09-18 | 629 | 2026-09-18 | 2026-09-18 | 1d | 5d |
| 637 | 3.4.1.2.7.6 | Identificação dos ambientes; | 1d | 2026-09-18 | 2026-09-18 | 629 | 2026-09-18 | 2026-09-18 | 1d | 5d |
| 638 | 3.4.1.2.7.7 | Cobertura com indicação da respectiva inclinação; | 1d | 2026-09-18 | 2026-09-18 | 629 | 2026-09-18 | 2026-09-18 | 1d | 5d |
| 639 | 3.4.1.2.7.8 | Cotas gerais; | 1d | 2026-09-18 | 2026-09-18 | 629 | 2026-09-18 | 2026-09-18 | 1d | 5d |
| 640 | 3.4.1.2.7.9 | Cotas de nível principal; | 1d | 2026-09-18 | 2026-09-18 | 629 | 2026-09-18 | 2026-09-18 | 1d | 5d |
| 641 | 3.4.1.2.7.10 | Eixos do projeto; | 1d | 2026-09-18 | 2026-09-18 | 629 | 2026-09-18 | 2026-09-18 | 1d | 5d |
| 642 | 3.4.1.2.7.11 | Relevo construído; | 1d | 2026-09-18 | 2026-09-18 | 629 | 2026-09-18 | 2026-09-18 | 1d | 5d |
| 643 | 3.4.1.2.7.12 | Projeção da topografia natural | 1d | 2026-09-18 | 2026-09-18 | 629 | 2026-09-18 | 2026-09-18 | 1d | 0d |
| 644 | 3.4.1.2.8 | **Elevações** | 1d | 2026-09-21 | 2026-09-21 |  | 2026-09-21 | 2026-09-21 | 1d | 0d |
| 645 | 3.4.1.2.8.1 | Indicar simbologias de representação gráfica, conforme NBR 6492:2021; | 1d | 2026-09-21 | 2026-09-21 | 643 | 2026-09-21 | 2026-09-21 | 1d | 4d |
| 646 | 3.4.1.2.8.2 | Indicação de Escala; | 1d | 2026-09-21 | 2026-09-21 | 643 | 2026-09-21 | 2026-09-21 | 1d | 4d |
| 647 | 3.4.1.2.8.3 | Elementos estruturais principais; | 1d | 2026-09-21 | 2026-09-21 | 643 | 2026-09-21 | 2026-09-21 | 1d | 4d |
| 648 | 3.4.1.2.8.4 | Elementos de vedação internos e externos; | 1d | 2026-09-21 | 2026-09-21 | 643 | 2026-09-21 | 2026-09-21 | 1d | 4d |
| 649 | 3.4.1.2.8.5 | Esquadrias (sem código e sem quadro); | 1d | 2026-09-21 | 2026-09-21 | 643 | 2026-09-21 | 2026-09-21 | 1d | 4d |
| 650 | 3.4.1.2.8.6 | Relevo construído; | 1d | 2026-09-21 | 2026-09-21 | 643 | 2026-09-21 | 2026-09-21 | 1d | 4d |
| 651 | 3.4.1.2.8.7 | Cotas gerais; | 1d | 2026-09-21 | 2026-09-21 | 643 | 2026-09-21 | 2026-09-21 | 1d | 4d |
| 652 | 3.4.1.2.8.8 | Cotas de nível principais; | 1d | 2026-09-21 | 2026-09-21 | 643 | 2026-09-21 | 2026-09-21 | 1d | 4d |
| 653 | 3.4.1.2.8.9 | Cobertura (quando aparente). | 1d | 2026-09-21 | 2026-09-21 | 643 | 2026-09-21 | 2026-09-21 | 1d | 0d |
| 654 | 3.4.1.2.9 | **Memorial Descritivo** | 4d | 2026-09-22 | 2026-09-25 |  | 2026-09-22 | 2026-09-25 | 4d | 0d |
| 655 | 3.4.1.2.9.1 | Descrição dos elementos da edificação | 4d | 2026-09-22 | 2026-09-25 | 653 | 2026-09-22 | 2026-09-25 | 4d | 0d |
| 656 | 3.4.1.2.9.2 | Geração de imagens representando os itens dissertados no relatório | 4d | 2026-09-22 | 2026-09-25 | 653 | 2026-09-22 | 2026-09-25 | 4d | 0d |
| 657 | 3.4.1.2.9.3 | Descrição dos componentes construtivos e materiais de construção | 4d | 2026-09-22 | 2026-09-25 | 653 | 2026-09-22 | 2026-09-25 | 4d | 0d |
| 658 | 3.4.1.2.9.4 | Lista de pranchas anexas e documentos | 4d | 2026-09-22 | 2026-09-25 | 653 | 2026-09-22 | 2026-09-25 | 4d | 0d |
| 659 | 3.4.2 | Aprovação de Conformidade | 3d | 2026-09-23 | 2026-09-25 | 654FF | 2026-09-23 | 2026-09-25 | 3d | 0d |
| 660 | 3.4.3 | Material para entrega ao contrato | 3d | 2026-09-23 | 2026-09-25 | 654FF | 2026-09-23 | 2026-09-25 | 3d | 0d |

| ID | WBS | Task | Duration | Start | Finish | Predecessors | Baseline start | Baseline finish | Baseline duration | Total slack | Free slack |
| --- | --- | --- | --- | --- | --- | --- | --- | --- | --- | --- | --- |
| 661 | 3.4.4 | **Engenharia** | 38d | 2026-08-04 | 2026-09-25 |  | 2026-08-04 | 2026-09-25 | 38d | 0d |  |
| 662 | 3.4.4.1 | **Estrutura** | 34d | 2026-08-10 | 2026-09-25 |  | 2026-08-10 | 2026-09-25 | 34d | 0d |  |
| 663 | 3.4.4.1.1 | **LOD 100 — Premissas, diretrizes e interfaces** | 7d | 2026-08-10 | 2026-08-18 |  | 2026-08-10 | 2026-08-18 | 7d | 0d |  |
| 664 | 3.4.4.1.1.1 | Levantamento de tipos de cargas globais estimadas (permanentes, acidentais, vento e especiais). | 2d | 2026-08-10 | 2026-08-11 | 1323SS+24d, 1067SS+24d, 811SS+24d, 555SS+24d, 299SS+24d, 114SS+24d | 2026-08-10 | 2026-08-11 | 2d | 32d |  |
| 665 | 3.4.4.1.1.2 | Estudo volumétrico com modulação inicial de pilares, vigas e lajes. Entendendo vãos e desafios | 5d | 2026-08-10 | 2026-08-14 | 1323SS+24d, 1067SS+24d, 811SS+24d, 555SS+24d, 299SS+24d, 114SS+24d | 2026-08-10 | 2026-08-14 | 5d | 29d |  |
| 666 | 3.4.4.1.1.3 | Localização aproximada de elementos estruturais principais. Avaliando vãos e estudando posições | 2d | 2026-08-10 | 2026-08-11 | 1323SS+24d, 1067SS+24d, 811SS+24d, 555SS+24d, 299SS+24d, 114SS+24d | 2026-08-10 | 2026-08-11 | 2d | 0d |  |
| 667 | 3.4.4.1.1.4 | Estudo de viabilidade técnica e construtiva. | 3d | 2026-08-12 | 2026-08-14 | 666 | 2026-08-12 | 2026-08-14 | 3d | 0d |  |
| 668 | 3.4.4.1.1.5 | Definição preliminar do sistema estrutural (concreto armado, metálica ou mista). | 3d | 2026-08-12 | 2026-08-14 | 666 | 2026-08-12 | 2026-08-14 | 3d | 29d |  |
| 669 | 3.4.4.1.1.6 | Estimativa preliminar de tipologias de fundações (sapatas, blocos, estacas). | 2d | 2026-08-17 | 2026-08-18 | 667 | 2026-08-17 | 2026-08-18 | 2d | 27d |  |
| 670 | 3.4.4.1.1.7 | Previsão de áreas técnicas, casas de máquinas, reservatórios elevados e estrutura de cobertura. | 2d | 2026-08-17 | 2026-08-18 | 667 | 2026-08-17 | 2026-08-18 | 2d | 0d |  |
| 671 | 3.4.4.1.2 | **LOD 200 — Validação interdisciplinar e solução preliminar** | 20d | 2026-08-19 | 2026-09-16 |  | 2026-08-19 | 2026-09-16 | 20d | 0d |  |
| 672 | 3.4.4.1.2.1 | Lista preliminar de cargas e ações para dimensionamento. | 5d | 2026-08-19 | 2026-08-25 | 670 | 2026-08-19 | 2026-08-25 | 5d | 0d |  |
| 673 | 3.4.4.1.2.2 | Definição preliminar de alturas de pavimentos e níveis de fundação. | 5d | 2026-08-19 | 2026-08-25 | 670 | 2026-08-19 | 2026-08-25 | 5d | 22d |  |
| 674 | 3.4.4.1.2.3 | Indicação aproximada do sistema de cobertura (tesouras, treliças, vigamento metálico ou concreto). | 5d | 2026-08-19 | 2026-08-25 | 670 | 2026-08-19 | 2026-08-25 | 5d | 22d |  |
| 675 | 3.4.4.1.2.4 | Modelagem genérica de pilares, vigas, lajes e fundações. | 5d | 2026-08-26 | 2026-09-01 | 672 | 2026-08-26 | 2026-09-01 | 5d | 17d |  |
| 676 | 3.4.4.1.2.5 | Traçado preliminar de elementos especiais (escadas, rampas estruturais, reservatórios). | 5d | 2026-08-26 | 2026-09-01 | 672 | 2026-08-26 | 2026-09-01 | 5d | 12d | 0d |
| 677 | 3.4.4.1.2.6 | Arquivo IFC, plantas de forma e planta de locação | 5d | 2026-08-26 | 2026-09-01 | 672 | 2026-08-26 | 2026-09-01 | 5d | 0d |  |
| 678 | 3.4.4.1.2.7 | Inserção de fundações com tipologia e dimensões preliminares. | 5d | 2026-09-02 | 2026-09-09 | 676 | 2026-09-02 | 2026-09-09 | 5d | 12d |  |
| 679 | 3.4.4.1.2.8 | Compatibilização inicial com arquitetura e demais disciplinas. | 5d | 2026-09-02 | 2026-09-09 | 677 | 2026-09-02 | 2026-09-09 | 5d | 12d |  |
| 680 | 3.4.4.1.2.9 | Indicação de passagens de infraestrutura (shafts, aberturas em lajes e vigas). | 5d | 2026-09-02 | 2026-09-09 | 677 | 2026-09-02 | 2026-09-09 | 5d | 12d |  |
| 681 | 3.4.4.1.2.10 | Modelagem assertiva de elementos principais com dimensões aproximadas (largura, altura, espessura). | 10d | 2026-09-02 | 2026-09-16 | 677 | 2026-09-02 | 2026-09-16 | 10d | 0d |  |
| 682 | 3.4.4.1.2.11 | Modelagem estimada de armaduras principais (em nível de concepção). | 5d | 2026-09-10 | 2026-09-16 | 681FF | 2026-09-10 | 2026-09-16 | 5d | 0d |  |
| 683 | 3.4.4.1.3 | **LOD 300 - Consolidação e documentação de entrega** | 7d | 2026-09-17 | 2026-09-25 |  | 2026-09-17 | 2026-09-25 | 7d | 0d |  |
| 684 | 3.4.4.1.3.1 | Indicação de níveis e cotas exatas. | 7d | 2026-09-17 | 2026-09-25 | 681, 682 | 2026-09-17 | 2026-09-25 | 7d | 0d |  |
| 685 | 3.4.4.1.3.2 | Quadro de cargas atualizado. | 7d | 2026-09-17 | 2026-09-25 | 681, 682 | 2026-09-17 | 2026-09-25 | 7d | 0d |  |
| 686 | 3.4.4.1.3.3 | Dimensionamento final de fundações conforme sondagem e cálculo estrutural. | 7d | 2026-09-17 | 2026-09-25 | 681, 682 | 2026-09-17 | 2026-09-25 | 7d | 0d |  |
| 687 | 3.4.4.1.3.4 | Definição final dos elementos da cobertura (treliças, vigas, chapas, purlins). | 7d | 2026-09-17 | 2026-09-25 | 681, 682 | 2026-09-17 | 2026-09-25 | 7d | 0d |  |
| 688 | 3.4.4.1.3.5 | Compatibilização final com arquitetura e instalações (aberturas, embutidos e passagens). | 7d | 2026-09-17 | 2026-09-25 | 681, 682 | 2026-09-17 | 2026-09-25 | 7d | 0d |  |
| 689 | 3.4.4.1.3.6 | Modelagem definitiva de pilares, vigas, lajes, blocos, sapatas e estacas. | 7d | 2026-09-17 | 2026-09-25 | 681, 682 | 2026-09-17 | 2026-09-25 | 7d | 0d |  |
| 690 | 3.4.4.1.3.7 | Planta estrutural com todos os elementos identificados. | 7d | 2026-09-17 | 2026-09-25 | 681, 682 | 2026-09-17 | 2026-09-25 | 7d | 0d |  |
| 691 | 3.4.4.1.3.8 | Memorial descritivo contendo: objetivos, justificativa, descrição do sistema, concepção de fundações/cobertura, especificações e quadro de cargas. | 7d | 2026-09-17 | 2026-09-25 | 681, 682 | 2026-09-17 | 2026-09-25 | 7d | 0d |  |
| 692 | 3.4.4.1.3.9 | Normas técnicas utilizadas (NBR 6118, 6120, 6122, 8800, etc.). | 7d | 2026-09-17 | 2026-09-25 | 681, 682 | 2026-09-17 | 2026-09-25 | 7d | 0d |  |
| 693 | 3.4.4.1.3.10 | Consolidar documentação de entrega e emissão formal da disciplina | 7d | 2026-09-17 | 2026-09-25 | 681, 682 | 2026-09-17 | 2026-09-25 | 7d | 0d |  |
| 694 | 3.4.4.1.4 | Aprovação de Conformidade | 3d | 2026-09-23 | 2026-09-25 | 683FF | 2026-09-23 | 2026-09-25 | 3d | 0d |  |
| 695 | 3.4.4.1.5 | Material para entrega ao contrato | 3d | 2026-09-23 | 2026-09-25 | 683FF | 2026-09-23 | 2026-09-25 | 3d | 0d |  |

| ID | WBS | Task | Duration | Start | Finish | Predecessors | Baseline start | Baseline finish | Baseline duration | Total slack | Free slack |
| --- | --- | --- | --- | --- | --- | --- | --- | --- | --- | --- | --- |
| 696 | 3.4.4.2 | **Hidrossanitário** | 38d | 2026-08-04 | 2026-09-25 |  | 2026-08-04 | 2026-09-25 | 38d | 0d |  |
| 697 | 3.4.4.2.1 | **LOD 100 — Premissas, diretrizes e interfaces** | 10d | 2026-08-04 | 2026-08-17 |  | 2026-08-04 | 2026-08-17 | 10d | 0d |  |
| 698 | 3.4.4.2.1.1 | Memorial preliminar | 10d | 2026-08-04 | 2026-08-17 | 1323SS+20d, 1067SS+20d, 811SS+20d, 555SS+20d, 299SS+20d, 114SS+20d | 2026-08-04 | 2026-08-17 | 10d | 28d |  |
| 699 | 3.4.4.2.1.2 | Indicação de áreas técnicas | 6d | 2026-08-04 | 2026-08-11 | 1323SS+20d, 1067SS+20d, 811SS+20d, 555SS+20d, 299SS+20d, 114SS+20d | 2026-08-04 | 2026-08-11 | 6d | 32d |  |
| 700 | 3.4.4.2.1.3 | Planta baixa com traçado conceitual | 6d | 2026-08-04 | 2026-08-11 | 1323SS+20d, 1067SS+20d, 811SS+20d, 555SS+20d, 299SS+20d, 114SS+20d | 2026-08-04 | 2026-08-11 | 6d | 32d |  |
| 701 | 3.4.4.2.1.4 | Pontos de consumo principais e coletas sanitárias | 6d | 2026-08-04 | 2026-08-11 | 1323SS+20d, 1067SS+20d, 811SS+20d, 555SS+20d, 299SS+20d, 114SS+20d | 2026-08-04 | 2026-08-11 | 6d | 32d |  |
| 702 | 3.4.4.2.1.5 | Classificação de uso | 10d | 2026-08-04 | 2026-08-17 | 1323SS+20d, 1067SS+20d, 811SS+20d, 555SS+20d, 299SS+20d, 114SS+20d | 2026-08-04 | 2026-08-17 | 10d | 28d |  |
| 703 | 3.4.4.2.1.6 | Diretrizes de espaço | 10d | 2026-08-04 | 2026-08-17 | 1323SS+20d, 1067SS+20d, 811SS+20d, 555SS+20d, 299SS+20d, 114SS+20d | 2026-08-04 | 2026-08-17 | 10d | 28d |  |
| 704 | 3.4.4.2.1.7 | Estimativa de demanda ou população de uso | 10d | 2026-08-04 | 2026-08-17 | 1323SS+20d, 1067SS+20d, 811SS+20d, 555SS+20d, 299SS+20d, 114SS+20d | 2026-08-04 | 2026-08-17 | 10d | 28d |  |
| 705 | 3.4.4.2.1.8 | Levantamento de elementos especiais dentre outras disciplinas de Engenharia e Arquitetura | 10d | 2026-08-04 | 2026-08-17 | 1323SS+20d, 1067SS+20d, 811SS+20d, 555SS+20d, 299SS+20d, 114SS+20d | 2026-08-04 | 2026-08-17 | 10d | 0d |  |
| 706 | 3.4.4.2.2 | **LOD 200 — Validação interdisciplinar e solução preliminar** | 20d | 2026-08-18 | 2026-09-15 |  | 2026-08-18 | 2026-09-15 | 20d | 0d |  |
| 707 | 3.4.4.2.2.1 | Critérios normativos adotados (ABNT, concessionárias, etc.) | 20d | 2026-08-18 | 2026-09-15 | 705 | 2026-08-18 | 2026-09-15 | 20d | 8d | 0d |
| 708 | 3.4.4.2.2.2 | Informações de demanda na concessionária (DPE ou AVT Aviso de Viabilidade Técnica) | 20d | 2026-08-18 | 2026-09-15 | 707SS | 2026-08-18 | 2026-09-15 | 20d | 8d |  |
| 709 | 3.4.4.2.2.3 | Estudo de viabilidade técnica, econômica e ambiental | 20d | 2026-08-18 | 2026-09-15 | 707SS | 2026-08-18 | 2026-09-15 | 20d | 8d |  |
| 710 | 3.4.4.2.2.4 | Lista preliminar de sistemas envolvidos. | 20d | 2026-08-18 | 2026-09-15 | 705 | 2026-08-18 | 2026-09-15 | 20d | 8d |  |
| 711 | 3.4.4.2.2.5 | Planta baixa estimada contendo: - Traçado preliminar | 20d | 2026-08-18 | 2026-09-15 | 705 | 2026-08-18 | 2026-09-15 | 20d | 0d |  |
| 712 | 3.4.4.2.3 | **LOD 300 - Consolidação e documentação de entrega** | 8d | 2026-09-16 | 2026-09-25 |  | 2026-09-16 | 2026-09-25 | 8d | 0d |  |
| 713 | 3.4.4.2.3.1 | Prancha simplificada do projeto | 8d | 2026-09-16 | 2026-09-25 | 711 | 2026-09-16 | 2026-09-25 | 8d | 0d |  |
| 714 | 3.4.4.2.3.2 | Memorial descritivo | 3d | 2026-09-23 | 2026-09-25 | 713FF | 2026-09-23 | 2026-09-25 | 3d | 0d |  |
| 715 | 3.4.4.2.3.3 | Memória de cálculo (pressão, vazão, diâmetros, perda de carga). | 3d | 2026-09-23 | 2026-09-25 | 711, 713FF | 2026-09-23 | 2026-09-25 | 3d | 0d |  |
| 716 | 3.4.4.2.4 | Aprovação de Conformidade | 3d | 2026-09-23 | 2026-09-25 | 712FF | 2026-09-23 | 2026-09-25 | 3d | 0d |  |
| 717 | 3.4.4.2.5 | Material para entrega ao contrato | 3d | 2026-09-23 | 2026-09-25 | 712FF | 2026-09-23 | 2026-09-25 | 3d | 0d |  |
| 718 | 3.4.4.3 | **AVAC** | 34d | 2026-08-10 | 2026-09-25 |  | 2026-08-10 | 2026-09-25 | 34d | 0d |  |
| 719 | 3.4.4.3.1 | **LOD 100 — Premissas, diretrizes e interfaces** | 10d | 2026-08-10 | 2026-08-21 |  | 2026-08-10 | 2026-08-21 | 10d | 0d |  |
| 720 | 3.4.4.3.1.1 | Estimativa de carga térmica por ambiente. | 10d | 2026-08-10 | 2026-08-21 | 1323SS+24d, 1067SS+24d, 811SS+24d, 555SS+24d, 299SS+24d, 114SS+24d | 2026-08-10 | 2026-08-21 | 10d | 24d |  |
| 721 | 3.4.4.3.1.2 | Estudo de viabilidade e rotas principais de distribuição de ar. | 10d | 2026-08-10 | 2026-08-21 | 1323SS+24d, 1067SS+24d, 811SS+24d, 555SS+24d, 299SS+24d, 114SS+24d | 2026-08-10 | 2026-08-21 | 10d | 24d |  |
| 722 | 3.4.4.3.1.3 | Reserva de espaços técnicos e shafts. | 10d | 2026-08-10 | 2026-08-21 | 1323SS+24d, 1067SS+24d, 811SS+24d, 555SS+24d, 299SS+24d, 114SS+24d | 2026-08-10 | 2026-08-21 | 10d | 0d |  |
| 723 | 3.4.4.3.1.4 | Levantamento de cargas especiais provenientes de outras disciplinas. | 10d | 2026-08-10 | 2026-08-21 | 1323SS+24d, 1067SS+24d, 811SS+24d, 555SS+24d, 299SS+24d, 114SS+24d | 2026-08-10 | 2026-08-21 | 10d | 24d |  |

| ID | WBS | Task | Duration | Start | Finish | Predecessors | Baseline start | Baseline finish | Baseline duration | Total slack | Text3 |
| --- | --- | --- | --- | --- | --- | --- | --- | --- | --- | --- | --- |
| 724 | 3.4.4.3.2 | **LOD 200 — Validação interdisciplinar e solução preliminar** | 24d | 2026-08-24 | 2026-09-25 |  | 2026-08-24 | 2026-09-25 | 24d | 0d |  |
| 725 | 3.4.4.3.2.1 | Lista preliminar de sistemas HVAC envolvidos (expansão direta, VRF, chillers, ventilação, exaustão). | 24d | 2026-08-24 | 2026-09-25 | 722 | 2026-08-24 | 2026-09-25 | 24d | 0d |  |
| 726 | 3.4.4.3.3 | Aprovação de Conformidade | 3d | 2026-09-23 | 2026-09-25 | 724FF | 2026-09-23 | 2026-09-25 | 3d | 0d |  |
| 727 | 3.4.4.3.4 | Material para entrega ao contrato | 3d | 2026-09-23 | 2026-09-25 | 724FF | 2026-09-23 | 2026-09-25 | 3d | 0d |  |
| 728 | 3.4.4.4 | **PCI (Incêndio)** | 34d | 2026-08-10 | 2026-09-25 |  | 2026-08-10 | 2026-09-25 | 34d | 0d |  |
| 729 | 3.4.4.4.1 | **LOD 100 — Premissas, diretrizes e interfaces** | 10d | 2026-08-10 | 2026-08-21 |  | 2026-08-10 | 2026-08-21 | 10d | 0d | ܁# |
| 730 | 3.4.4.4.1.1 | Estudo e avaliação da arquitetura atendendo as normas competentes de PCI | 10d | 2026-08-10 | 2026-08-21 | 1323SS+24d, 1067SS+24d, 811SS+24d, 555SS+24d, 299SS+24d, 114SS+24d | 2026-08-10 | 2026-08-21 | 10d | 24d |  |
| 731 | 3.4.4.4.1.2 | Avaliação do espaço para CMI e Central de Gás. | 10d | 2026-08-10 | 2026-08-21 | 1323SS+24d, 1067SS+24d, 811SS+24d, 555SS+24d, 299SS+24d, 114SS+24d | 2026-08-10 | 2026-08-21 | 10d | 24d |  |
| 732 | 3.4.4.4.1.3 | Pontos locação para seus elementos no projeto arquitetônico | 10d | 2026-08-10 | 2026-08-21 | 1323SS+24d, 1067SS+24d, 811SS+24d, 555SS+24d, 299SS+24d, 114SS+24d | 2026-08-10 | 2026-08-21 | 10d | 0d |  |
| 733 | 3.4.4.4.2 | **LOD 200 — Validação interdisciplinar e solução preliminar** | 24d | 2026-08-24 | 2026-09-25 |  | 2026-08-24 | 2026-09-25 | 24d | 0d | ܁# |
| 734 | 3.4.4.4.2.1 | Definição da classificação da edificação e o risco de incêndio | 24d | 2026-08-24 | 2026-09-25 | 732 | 2026-08-24 | 2026-09-25 | 24d | 0d |  |
| 735 | 3.4.4.4.2.2 | Cálculos pré-dimensionados dos extintores, hidrantes e bomba. | 24d | 2026-08-24 | 2026-09-25 | 732 | 2026-08-24 | 2026-09-25 | 24d | 0d |  |
| 736 | 3.4.4.4.2.3 | Avaliação das rotas de fuga, ventilação de CMI e outros elementos de importância para as normas de PCI | 24d | 2026-08-24 | 2026-09-25 | 732 | 2026-08-24 | 2026-09-25 | 24d | 0d |  |
| 737 | 3.4.4.4.3 | Aprovação de Conformidade | 3d | 2026-09-23 | 2026-09-25 | 733FF | 2026-09-23 | 2026-09-25 | 3d | 0d |  |
| 738 | 3.4.4.4.4 | Material para entrega ao contrato | 3d | 2026-09-23 | 2026-09-25 | 733FF | 2026-09-23 | 2026-09-25 | 3d | 0d |  |
| 739 | 3.4.4.5 | **Elétrica Baixa Tensão** | 34d | 2026-08-10 | 2026-09-25 |  | 2026-08-10 | 2026-09-25 | 34d | 0d |  |
| 740 | 3.4.4.5.1 | **LOD 100 — Concepção** | 10d | 2026-08-10 | 2026-08-21 |  | 2026-08-10 | 2026-08-21 | 10d | 0d |  |
| 741 | 3.4.4.5.1.1 | Avaliação e Diretrizes Técnicas para Arquitetura | 6d | 2026-08-10 | 2026-08-17 | 1323SS+24d, 1067SS+24d, 811SS+24d, 555SS+24d, 299SS+24d, 114SS+24d | 2026-08-10 | 2026-08-17 | 6d | 28d |  |
| 742 | 3.4.4.5.1.2 | Estimativa de Cargas e Demanda | 10d | 2026-08-10 | 2026-08-21 | 1323SS+24d, 1067SS+24d, 811SS+24d, 555SS+24d, 299SS+24d, 114SS+24d | 2026-08-10 | 2026-08-21 | 10d | 0d |  |
| 743 | 3.4.4.5.1.3 | Levantamento de Equipamentos de Outras Disciplinas | 6d | 2026-08-10 | 2026-08-17 | 1323SS+24d, 1067SS+24d, 811SS+24d, 555SS+24d, 299SS+24d, 114SS+24d | 2026-08-10 | 2026-08-17 | 6d | 4d |  |
| 744 | 3.4.4.5.2 | **LOD 200 — Anteprojeto** | 19d | 2026-08-24 | 2026-09-18 |  | 2026-08-24 | 2026-09-18 | 19d | 0d |  |
| 745 | 3.4.4.5.2.1 | TUGs Estimados | 19d | 2026-08-24 | 2026-09-18 | 742, 743 | 2026-08-24 | 2026-09-18 | 19d | 0d |  |
| 746 | 3.4.4.5.2.2 | Pontos de Luz Estimados | 19d | 2026-08-24 | 2026-09-18 | 742, 743 | 2026-08-24 | 2026-09-18 | 19d | 0d |  |
| 747 | 3.4.4.5.2.3 | TUEs e Quadros Estimados | 19d | 2026-08-24 | 2026-09-18 | 742, 743 | 2026-08-24 | 2026-09-18 | 19d | 0d |  |
| 748 | 3.4.4.5.3 | LOD 300 - Consolidação e documentação de entrega | 5d | 2026-09-21 | 2026-09-25 | 744 | 2026-09-21 | 2026-09-25 | 5d | 0d |  |
| 749 | 3.4.4.5.4 | Aprovação de Conformidade | 3d | 2026-09-23 | 2026-09-25 | 748FF | 2026-09-23 | 2026-09-25 | 3d | 0d |  |
| 750 | 3.4.4.5.5 | Material para entrega ao contrato | 3d | 2026-09-23 | 2026-09-25 | 748FF | 2026-09-23 | 2026-09-25 | 3d | 0d |  |

| ID | WBS | Task | Duration | Start | Finish | Predecessors | Baseline start | Baseline finish | Baseline duration | Total slack |
| --- | --- | --- | --- | --- | --- | --- | --- | --- | --- | --- |
| 751 | 3.4.4.6 | **Telecom** | 34d | 2026-08-10 | 2026-09-25 |  | 2026-08-10 | 2026-09-25 | 34d | 0d |
| 752 | 3.4.4.6.1 | **LOD 100 — Concepção** | 10d | 2026-08-10 | 2026-08-21 |  | 2026-08-10 | 2026-08-21 | 10d | 0d |
| 753 | 3.4.4.6.1.1 | Avaliação e Diretrizes Técnicas para Arquitetura | 10d | 2026-08-10 | 2026-08-21 | 1323SS+24d, 1067SS+24d, 811SS+24d, 555SS+24d, 299SS+24d, 114SS+24d | 2026-08-10 | 2026-08-21 | 10d | 24d |
| 754 | 3.4.4.6.1.2 | Estimativa de Demanda de Telecomunicações | 10d | 2026-08-10 | 2026-08-21 | 1323SS+24d, 1067SS+24d, 811SS+24d, 555SS+24d, 299SS+24d, 114SS+24d | 2026-08-10 | 2026-08-21 | 10d | 24d |
| 755 | 3.4.4.6.1.3 | Levantamento de Equipamentos e Interfaces com Outras Disciplinas | 10d | 2026-08-10 | 2026-08-21 | 1323SS+24d, 1067SS+24d, 811SS+24d, 555SS+24d, 299SS+24d, 114SS+24d | 2026-08-10 | 2026-08-21 | 10d | 0d |
| 756 | 3.4.4.6.2 | **LOD 200 — Anteprojeto** | 20d | 2026-08-24 | 2026-09-21 |  | 2026-08-24 | 2026-09-21 | 20d | 0d |
| 757 | 3.4.4.6.2.1 | Pontos de Telecomunicações Estimados (Rede, Voz, CFTV e Demais Sistemas) | 10d | 2026-08-24 | 2026-09-04 | 755 | 2026-08-24 | 2026-09-04 | 10d | 0d |
| 758 | 3.4.4.6.2.2 | Racks Estimados | 10d | 2026-08-24 | 2026-09-04 | 755 | 2026-08-24 | 2026-09-04 | 10d | 0d |
| 759 | 3.4.4.6.2.3 | Infraestrutura de Telecomunicações Preliminar | 10d | 2026-09-08 | 2026-09-21 | 757, 758 | 2026-09-08 | 2026-09-21 | 10d | 0d |
| 760 | 3.4.4.6.3 | LOD 300 - Consolidação e documentação de entrega | 4d | 2026-09-22 | 2026-09-25 | 756 | 2026-09-22 | 2026-09-25 | 4d | 0d |
| 761 | 3.4.4.6.4 | Aprovação de Conformidade | 3d | 2026-09-23 | 2026-09-25 | 760FF | 2026-09-23 | 2026-09-25 | 3d | 0d |
| 762 | 3.4.4.6.5 | Material para entrega ao contrato | 3d | 2026-09-23 | 2026-09-25 | 760FF | 2026-09-23 | 2026-09-25 | 3d | 0d |
| 763 | 3.4.4.7 | **Subestação** | 34d | 2026-08-10 | 2026-09-25 |  | 2026-08-10 | 2026-09-25 | 34d | 0d |
| 764 | 3.4.4.7.1 | **LOD 100 — Concepção** | 10d | 2026-08-10 | 2026-08-21 |  | 2026-08-10 | 2026-08-21 | 10d | 0d |
| 765 | 3.4.4.7.1.1 | Avaliação e Diretrizes Técnicas para Arquitetura | 10d | 2026-08-10 | 2026-08-21 | 1323SS+24d, 1067SS+24d, 811SS+24d, 555SS+24d, 299SS+24d, 114SS+24d | 2026-08-10 | 2026-08-21 | 10d | 24d |
| 766 | 3.4.4.7.1.2 | Levantamento de Demanda, Perfil de Consumo e Ponto de Entrega | 10d | 2026-08-10 | 2026-08-21 | 1323SS+24d, 1067SS+24d, 811SS+24d, 555SS+24d, 299SS+24d, 114SS+24d | 2026-08-10 | 2026-08-21 | 10d | 24d |
| 767 | 3.4.4.7.1.3 | Estudo de Viabilidade Técnica e Atendimento ao Padrão da Concessionária | 10d | 2026-08-10 | 2026-08-21 | 1323SS+24d, 1067SS+24d, 811SS+24d, 555SS+24d, 299SS+24d, 114SS+24d | 2026-08-10 | 2026-08-21 | 10d | 0d |
| 768 | 3.4.4.7.2 | **LOD 200 — Anteprojeto** | 20d | 2026-08-24 | 2026-09-21 |  | 2026-08-24 | 2026-09-21 | 20d | 0d |
| 769 | 3.4.4.7.2.1 | Definição do Tipo de Subestação e Arranjo Físico Preliminar | 10d | 2026-08-24 | 2026-09-04 | 767 | 2026-08-24 | 2026-09-04 | 10d | 0d |
| 770 | 3.4.4.7.2.2 | Dimensionamento Preliminar do Transformador e Equipamentos Principais | 10d | 2026-09-08 | 2026-09-21 | 769 | 2026-09-08 | 2026-09-21 | 10d | 0d |
| 771 | 3.4.4.7.2.3 | Diretrizes Preliminares de Aterramento | 10d | 2026-09-08 | 2026-09-21 | 769 | 2026-09-08 | 2026-09-21 | 10d | 0d |
| 772 | 3.4.4.7.3 | LOD 300 - Consolidação e documentação de entrega | 4d | 2026-09-22 | 2026-09-25 | 768 | 2026-09-22 | 2026-09-25 | 4d | 0d |
| 773 | 3.4.4.7.4 | Aprovação de Conformidade | 3d | 2026-09-23 | 2026-09-25 | 772FF | 2026-09-23 | 2026-09-25 | 3d | 0d |
| 774 | 3.4.4.7.5 | Material para entrega ao contrato | 3d | 2026-09-23 | 2026-09-25 | 772FF | 2026-09-23 | 2026-09-25 | 3d | 0d |

| ID | WBS | Task | Duration | Start | Finish | Predecessors | Baseline start | Baseline finish | Baseline duration | Total slack |
| --- | --- | --- | --- | --- | --- | --- | --- | --- | --- | --- |
| 775 | 3.4.4.8 | **SPDA** | 34d | 2026-08-10 | 2026-09-25 |  | 2026-08-10 | 2026-09-25 | 34d | 0d |
| 776 | 3.4.4.8.1 | **LOD 100 — Concepção** | 10d | 2026-08-10 | 2026-08-21 |  | 2026-08-10 | 2026-08-21 | 10d | 0d |
| 777 | 3.4.4.8.1.1 | Avaliação e Diretrizes Técnicas para Arquitetura | 10d | 2026-08-10 | 2026-08-21 | 1323SS+24d, 1067SS+24d, 811SS+24d, 555SS+24d, 299SS+24d, 114SS+24d | 2026-08-10 | 2026-08-21 | 10d | 24d |
| 778 | 3.4.4.8.1.2 | Coleta de Informações da Edificação e Análise de Risco (ABNT NBR 5419-2) | 10d | 2026-08-10 | 2026-08-21 | 1323SS+24d, 1067SS+24d, 811SS+24d, 555SS+24d, 299SS+24d, 114SS+24d | 2026-08-10 | 2026-08-21 | 10d | 24d |
| 779 | 3.4.4.8.1.3 | Estudo Preliminar de Necessidade e Nível de Proteção do SPDA | 10d | 2026-08-10 | 2026-08-21 | 1323SS+24d, 1067SS+24d, 811SS+24d, 555SS+24d, 299SS+24d, 114SS+24d | 2026-08-10 | 2026-08-21 | 10d | 0d |
| 780 | 3.4.4.8.2 | **LOD 200 — Anteprojeto** | 20d | 2026-08-24 | 2026-09-21 |  | 2026-08-24 | 2026-09-21 | 20d | 0d |
| 781 | 3.4.4.8.2.1 | Definição da Estratégia de Proteção e Soluções Técnicas | 10d | 2026-08-24 | 2026-09-04 | 779 | 2026-08-24 | 2026-09-04 | 10d | 0d |
| 782 | 3.4.4.8.2.2 | Zoneamento de Captação, Descida e Traçados Preliminares | 10d | 2026-09-08 | 2026-09-21 | 781 | 2026-09-08 | 2026-09-21 | 10d | 4d |
| 783 | 3.4.4.8.2.3 | Estudo de Interferências, Compatibilização e Métodos Construtivos | 10d | 2026-09-08 | 2026-09-21 | 781 | 2026-09-08 | 2026-09-21 | 10d | 0d |
| 784 | 3.4.4.8.3 | LOD 300 - Consolidação e documentação de entrega | 4d | 2026-09-22 | 2026-09-25 | 783 | 2026-09-22 | 2026-09-25 | 4d | 0d |
| 785 | 3.4.4.8.4 | Aprovação de Conformidade | 3d | 2026-09-23 | 2026-09-25 | 784FF | 2026-09-23 | 2026-09-25 | 3d | 0d |
| 786 | 3.4.4.8.5 | Material para entrega ao contrato | 3d | 2026-09-23 | 2026-09-25 | 784FF | 2026-09-23 | 2026-09-25 | 3d | 0d |
| 787 | 3.4.4.9 | **Energia Renovável** | 34d | 2026-08-10 | 2026-09-25 |  | 2026-08-10 | 2026-09-25 | 34d | 0d |
| 788 | 3.4.4.9.1 | **LOD 100 — Concepção** | 10d | 2026-08-10 | 2026-08-21 |  | 2026-08-10 | 2026-08-21 | 10d | 0d |
| 789 | 3.4.4.9.1.1 | Viabilidade e Premissas de Geração | 10d | 2026-08-10 | 2026-08-21 | 1323SS+24d, 1067SS+24d, 811SS+24d, 555SS+24d, 299SS+24d, 114SS+24d | 2026-08-10 | 2026-08-21 | 10d | 24d |
| 790 | 3.4.4.9.1.2 | Levantamento Preliminar de Áreas e Sombreamento | 10d | 2026-08-10 | 2026-08-21 | 1323SS+24d, 1067SS+24d, 811SS+24d, 555SS+24d, 299SS+24d, 114SS+24d | 2026-08-10 | 2026-08-21 | 10d | 0d |
| 791 | 3.4.4.9.1.3 | Avaliação e Diretrizes Técnicas para Arquitetônico | 10d | 2026-08-10 | 2026-08-21 | 1323SS+24d, 1067SS+24d, 811SS+24d, 555SS+24d, 299SS+24d, 114SS+24d | 2026-08-10 | 2026-08-21 | 10d | 24d |
| 792 | 3.4.4.9.2 | **LOD 200 — Anteprojeto** | 20d | 2026-08-24 | 2026-09-21 |  | 2026-08-24 | 2026-09-21 | 20d | 0d |
| 793 | 3.4.4.9.2.1 | Layout Preliminar de Módulos, Inversores e String Boxes | 20d | 2026-08-24 | 2026-09-21 | 790 | 2026-08-24 | 2026-09-21 | 20d | 0d |
| 794 | 3.4.4.9.2.2 | Infraestrutura e Rotas Técnicas Preliminares (DC/AC e Aterramento) | 20d | 2026-08-24 | 2026-09-21 | 790 | 2026-08-24 | 2026-09-21 | 20d | 0d |
| 795 | 3.4.4.9.2.3 | Critérios Preliminares de Proteção e Estimativa de Quantitativos | 20d | 2026-08-24 | 2026-09-21 | 790 | 2026-08-24 | 2026-09-21 | 20d | 0d |
| 796 | 3.4.4.9.3 | LOD 300 - Consolidação e documentação de entrega | 4d | 2026-09-22 | 2026-09-25 | 792 | 2026-09-22 | 2026-09-25 | 4d | 0d |
| 797 | 3.4.4.9.4 | Aprovação de Conformidade | 3d | 2026-09-23 | 2026-09-25 | 796FF | 2026-09-23 | 2026-09-25 | 3d | 0d |
| 798 | 3.4.4.9.5 | Material para entrega ao contrato | 3d | 2026-09-23 | 2026-09-25 | 796FF | 2026-09-23 | 2026-09-25 | 3d | 0d |

| ID | WBS | Task | Duration | Start | Finish | Predecessors | Complete | Remaining | Baseline start | Baseline finish | Baseline duration | Total slack |
| --- | --- | --- | --- | --- | --- | --- | --- | --- | --- | --- | --- | --- |
| 799 | 3.5 | **5 - Cafeteria** | 100d | 2026-05-07 A | 2026-09-25 |  | 14% | 86.11d | 2026-05-07 | 2026-09-25 | 100d | 0d |
| 800 | 3.5.1 | **Arquitetura** | 100d | 2026-05-07 A | 2026-09-25 |  | 30% | 69.76d | 2026-05-07 | 2026-09-25 | 100d | 0d |
| 801 | 3.5.1.1 | **Análise e Compatibilização (caso a gente receba o projeto e precise adequar)** | 84d | 2026-05-07 A | 2026-09-02 |  | 30% | 59.16d | 2026-05-07 | 2026-09-02 | 84d | 16d |
| 802 | 3.5.1.1.1 | Analisar topografia | 42d | 2026-05-07 | 2026-07-06 |  |  |  | 2026-05-07 | 2026-07-06 | 42d | 58d |
| 803 | 3.5.1.1.2 | Criação e georreferenciamento e ajuste de norte nos arquivos federado, arquitetura, implantação, layout | 42d | 2026-05-07 | 2026-07-06 |  |  |  | 2026-05-07 | 2026-07-06 | 42d | 0d |
| 804 | 3.5.1.1.3 | Analise geral do projeto | 42d | 2026-05-07 A | 2026-07-06 A |  | 100% |  | 2026-05-07 | 2026-07-06 | 42d |  |
| 805 | 3.5.1.1.4 | Verificar acessibilidade dos espaços de acordo com a norma e sistematizar ajustes | 42d | 2026-05-07 A | 2026-07-06 A |  | 100% |  | 2026-05-07 | 2026-07-06 | 42d |  |
| 806 | 3.5.1.1.5 | Conferir paredes | 42d | 2026-05-07 A | 2026-07-06 A |  | 100% |  | 2026-05-07 | 2026-07-06 | 42d |  |
| 807 | 3.5.1.1.6 | Conferir Pisos | 42d | 2026-05-07 A | 2026-07-06 A |  | 100% |  | 2026-05-07 | 2026-07-06 | 42d |  |
| 808 | 3.5.1.1.7 | Conferir Esquadrias | 42d | 2026-05-07 | 2026-07-06 |  |  |  | 2026-05-07 | 2026-07-06 | 42d | 58d |
| 809 | 3.5.1.1.8 | Conferir Mobiliário | 42d | 2026-05-07 | 2026-07-06 |  |  |  | 2026-05-07 | 2026-07-06 | 42d | 58d |
| 810 | 3.5.1.1.9 | Compatibilização disciplinas engenharia e sistematização incrementos e ajustes | 42d | 2026-07-07 | 2026-09-02 | 803 |  |  | 2026-07-07 | 2026-09-02 | 42d | 16d |
| 811 | 3.5.1.1.10 | Compatibilização com normas técnicas | 38d | 2026-07-07 | 2026-08-27 | 803 |  |  | 2026-07-07 | 2026-08-27 | 38d | 0d |
| 812 | 3.5.1.1.11 | Compatibilização padrão Quanta | 38d | 2026-07-07 | 2026-08-27 | 803 |  |  | 2026-07-07 | 2026-08-27 | 38d | 20d |
| 813 | 3.5.1.1.12 | Verficar se elementos estão associados aos níveis corretos e sistematizar ajustes | 38d | 2026-07-07 | 2026-08-27 | 803 |  |  | 2026-07-07 | 2026-08-27 | 38d | 20d |
| 814 | 3.5.1.1.13 | Revisão de perímetro do terreno, recuos, taxa de ocupação e afastamentos | 38d | 2026-07-07 | 2026-08-27 | 803 |  |  | 2026-07-07 | 2026-08-27 | 38d | 20d |
| 815 | 3.5.1.1.14 | Relatório/Memorial de Compatibilização | 38d | 2026-07-07 | 2026-08-27 | 803 |  |  | 2026-07-07 | 2026-08-27 | 38d | 0d |
| 816 | 3.5.1.2 | **LOD 300 - ANTEPROJETO** | 20d | 2026-08-28 A | 2026-09-25 |  | 32% | 13.61d | 2026-08-28 | 2026-09-25 | 20d | 0d |
| 817 | 3.5.1.2.1 | **Modelagem e compatibilização** | 10d | 2026-08-28 A | 2026-09-11 |  | 54% | 4.62d | 2026-08-28 | 2026-09-11 | 10d | 10d |
| 818 | 3.5.1.2.1.1 | Modelagem ajustes topografia | 10d | 2026-08-28 | 2026-09-11 | 815 |  |  | 2026-08-28 | 2026-09-11 | 10d | 10d |
| 819 | 3.5.1.2.1.2 | Mudar pisos para o padrão Quanta | 10d | 2026-08-28 A | 2026-09-11 A | 815 | 100% |  | 2026-08-28 | 2026-09-11 | 10d |  |
| 820 | 3.5.1.2.1.3 | Mudar paredes para o padrão Quanta | 10d | 2026-08-28 A | 2026-09-11 A | 815 | 100% |  | 2026-08-28 | 2026-09-11 | 10d |  |
| 821 | 3.5.1.2.1.4 | Mudar esquadrias para o padrão Quanta | 10d | 2026-08-28 | 2026-09-11 | 815 |  |  | 2026-08-28 | 2026-09-11 | 10d | 10d |
| 822 | 3.5.1.2.1.5 | Mudar metais para o padrão Quanta | 10d | 2026-08-28 A | 2026-09-11 A | 815 | 100% |  | 2026-08-28 | 2026-09-11 | 10d |  |
| 823 | 3.5.1.2.1.6 | Mudar louças para o padrão Quanta | 10d | 2026-08-28 A | 2026-09-11 A | 815 | 100% |  | 2026-08-28 | 2026-09-11 | 10d |  |
| 824 | 3.5.1.2.1.7 | Modelagem acessos e vias necessárias a implantação | 10d | 2026-08-28 A | 2026-09-11 A | 815 | 100% |  | 2026-08-28 | 2026-09-11 | 10d |  |
| 825 | 3.5.1.2.1.8 | Modelagem passeios e canteiros | 10d | 2026-08-28 A | 2026-09-11 A | 815 | 100% |  | 2026-08-28 | 2026-09-11 | 10d |  |
| 826 | 3.5.1.2.1.9 | Modelagem estacionamentos | 10d | 2026-08-28 A | 2026-09-11 A | 815 | 100% |  | 2026-08-28 | 2026-09-11 | 10d |  |
| 827 | 3.5.1.2.1.10 | Modelagem subestação elétrica | 10d | 2026-08-28 | 2026-09-11 | 815 |  |  | 2026-08-28 | 2026-09-11 | 10d | 10d |
| 828 | 3.5.1.2.1.11 | Modelagem ETE | 10d | 2026-08-28 | 2026-09-11 | 815 |  |  | 2026-08-28 | 2026-09-11 | 10d | 10d |
| 829 | 3.5.1.2.1.12 | Modelagem PCI | 10d | 2026-08-28 | 2026-09-11 | 815 |  |  | 2026-08-28 | 2026-09-11 | 10d | 10d |
| 830 | 3.5.1.2.1.13 | Modelagem/ajustes caixa d'água | 10d | 2026-08-28 | 2026-09-11 | 815 |  |  | 2026-08-28 | 2026-09-11 | 10d | 0d |

| ID | WBS | Task | Duration | Start | Finish | Predecessors | Baseline start | Baseline finish | Baseline duration | Total slack |
| --- | --- | --- | --- | --- | --- | --- | --- | --- | --- | --- |
| 831 | 3.5.1.2.2 | **Situação** | 1d | 2026-09-14 | 2026-09-14 |  | 2026-09-14 | 2026-09-14 | 1d | 0d |
| 832 | 3.5.1.2.2.1 | Indicar simbologias de representação gráfica, conforme NBR 6492:2021; | 1d | 2026-09-14 | 2026-09-14 | 830 | 2026-09-14 | 2026-09-14 | 1d | 9d |
| 833 | 3.5.1.2.2.2 | Indicação Norte | 1d | 2026-09-14 | 2026-09-14 | 830 | 2026-09-14 | 2026-09-14 | 1d | 9d |
| 834 | 3.5.1.2.2.3 | Analisar, adicionar e fechar - Curvas de nível existentes e projetadas (conforme projetos de topografia e sondagem recebidos); | 1d | 2026-09-14 | 2026-09-14 | 830 | 2026-09-14 | 2026-09-14 | 1d | 9d |
| 835 | 3.5.1.2.2.4 | Indicação de Escala; | 1d | 2026-09-14 | 2026-09-14 | 830 | 2026-09-14 | 2026-09-14 | 1d | 9d |
| 836 | 3.5.1.2.2.5 | Vias de acesso ao conjunto, arruamento, logradouros adjacentes e calçadas com os respectivos equipamentos urbanos; | 1d | 2026-09-14 | 2026-09-14 | 830 | 2026-09-14 | 2026-09-14 | 1d | 9d |
| 837 | 3.5.1.2.2.6 | Platôs e taludes principais; | 1d | 2026-09-14 | 2026-09-14 | 830 | 2026-09-14 | 2026-09-14 | 1d | 9d |
| 838 | 3.5.1.2.2.7 | Perímetro do terreno, recuos e afastamentos; | 1d | 2026-09-14 | 2026-09-14 | 830 | 2026-09-14 | 2026-09-14 | 1d | 9d |
| 839 | 3.5.1.2.2.8 | Indicação das áreas a serem edificadas com o contorno da cobertura das edificações, estacionamentos e áreas permeáveis/impermeáveis; | 1d | 2026-09-14 | 2026-09-14 | 830 | 2026-09-14 | 2026-09-14 | 1d | 9d |
| 840 | 3.5.1.2.2.9 | Denominação das edificações, blocos ou espaços; | 1d | 2026-09-14 | 2026-09-14 | 830 | 2026-09-14 | 2026-09-14 | 1d | 9d |
| 841 | 3.5.1.2.2.10 | Cotas gerais | 1d | 2026-09-14 | 2026-09-14 | 830 | 2026-09-14 | 2026-09-14 | 1d | 9d |
| 842 | 3.5.1.2.2.11 | Cotas de nível principal. | 1d | 2026-09-14 | 2026-09-14 | 830 | 2026-09-14 | 2026-09-14 | 1d | 9d |
| 843 | 3.5.1.2.2.12 | Quadros de áreas | 1d | 2026-09-14 | 2026-09-14 | 830 | 2026-09-14 | 2026-09-14 | 1d | 0d |
| 844 | 3.5.1.2.3 | Planta com as cotas de nível projetadas e existentes | 1d | 2026-09-14 | 2026-09-14 | 843SS | 2026-09-14 | 2026-09-14 | 1d | 0d |
| 845 | 3.5.1.2.4 | **Plantas baixas (se tiver mais de um pavimento, duplicar bloco)** | 1d | 2026-09-15 | 2026-09-15 |  | 2026-09-15 | 2026-09-15 | 1d | 0d |
| 846 | 3.5.1.2.4.1 | Indicar simbologias de representação gráfica, conforme NBR 6492:2021; | 1d | 2026-09-15 | 2026-09-15 | 844 | 2026-09-15 | 2026-09-15 | 1d | 8d |
| 847 | 3.5.1.2.4.2 | Compatibilização (verificar se está tudo conforme as normas e alinhar com o restante das disciplinas de engenharia) | 1d | 2026-09-15 | 2026-09-15 | 844 | 2026-09-15 | 2026-09-15 | 1d | 8d |
| 848 | 3.5.1.2.4.3 | Compatibilização (deixar tudo conforme padrão Quanta) | 1d | 2026-09-15 | 2026-09-15 | 844 | 2026-09-15 | 2026-09-15 | 1d | 8d |
| 849 | 3.5.1.2.4.4 | Indicação de Norte; | 1d | 2026-09-15 | 2026-09-15 | 844 | 2026-09-15 | 2026-09-15 | 1d | 8d |
| 850 | 3.5.1.2.4.5 | Indicação de Escala; | 1d | 2026-09-15 | 2026-09-15 | 844 | 2026-09-15 | 2026-09-15 | 1d | 8d |
| 851 | 3.5.1.2.4.6 | Indicação de Acessos; | 1d | 2026-09-15 | 2026-09-15 | 844 | 2026-09-15 | 2026-09-15 | 1d | 8d |
| 852 | 3.5.1.2.4.7 | Elementos de vedação internos e externos; | 1d | 2026-09-15 | 2026-09-15 | 844 | 2026-09-15 | 2026-09-15 | 1d | 8d |
| 853 | 3.5.1.2.4.8 | Esquadrias (sem código e sem quadro); | 1d | 2026-09-15 | 2026-09-15 | 844 | 2026-09-15 | 2026-09-15 | 1d | 8d |
| 854 | 3.5.1.2.4.9 | Elementos estruturais principais; | 1d | 2026-09-15 | 2026-09-15 | 844 | 2026-09-15 | 2026-09-15 | 1d | 8d |
| 855 | 3.5.1.2.4.10 | Identificação dos ambientes e espaços (internos e externos); | 1d | 2026-09-15 | 2026-09-15 | 844 | 2026-09-15 | 2026-09-15 | 1d | 8d |
| 856 | 3.5.1.2.4.11 | Espaços de circulação internos e externos; | 1d | 2026-09-15 | 2026-09-15 | 844 | 2026-09-15 | 2026-09-15 | 1d | 8d |
| 857 | 3.5.1.2.4.12 | Áreas de serviço, funcionais e técnicas (internos e externos); | 1d | 2026-09-15 | 2026-09-15 | 844 | 2026-09-15 | 2026-09-15 | 1d | 8d |
| 858 | 3.5.1.2.4.13 | Projeções de níveis superiores; | 1d | 2026-09-15 | 2026-09-15 | 844 | 2026-09-15 | 2026-09-15 | 1d | 8d |
| 859 | 3.5.1.2.4.14 | Cotas gerais | 1d | 2026-09-15 | 2026-09-15 | 844 | 2026-09-15 | 2026-09-15 | 1d | 8d |
| 860 | 3.5.1.2.4.15 | Cotas de nível principal. | 1d | 2026-09-15 | 2026-09-15 | 844 | 2026-09-15 | 2026-09-15 | 1d | 8d |
| 861 | 3.5.1.2.4.16 | Tabelas de paredes, pisos, esquadrias e plantas | 1d | 2026-09-15 | 2026-09-15 | 844 | 2026-09-15 | 2026-09-15 | 1d | 8d |
| 862 | 3.5.1.2.4.17 | Quadro de áreas | 1d | 2026-09-15 | 2026-09-15 | 844 | 2026-09-15 | 2026-09-15 | 1d | 0d |

| ID | WBS | Task | Duration | Start | Finish | Predecessors | Baseline start | Baseline finish | Baseline duration | Total slack |
| --- | --- | --- | --- | --- | --- | --- | --- | --- | --- | --- |
| 863 | 3.5.1.2.5 | **Planta das coberturas** | 1d | 2026-09-16 | 2026-09-16 |  | 2026-09-16 | 2026-09-16 | 1d | 0d |
| 864 | 3.5.1.2.5.1 | Indicação do Norte | 1d | 2026-09-16 | 2026-09-16 | 862 | 2026-09-16 | 2026-09-16 | 1d | 7d |
| 865 | 3.5.1.2.5.2 | Indicação de escala | 1d | 2026-09-16 | 2026-09-16 | 862 | 2026-09-16 | 2026-09-16 | 1d | 7d |
| 866 | 3.5.1.2.5.3 | Curvas de nível | 1d | 2026-09-16 | 2026-09-16 | 862 | 2026-09-16 | 2026-09-16 | 1d | 7d |
| 867 | 3.5.1.2.5.4 | Indicação de Acessos; | 1d | 2026-09-16 | 2026-09-16 | 862 | 2026-09-16 | 2026-09-16 | 1d | 7d |
| 868 | 3.5.1.2.5.5 | Estacionamento e áreas cobertas | 1d | 2026-09-16 | 2026-09-16 | 862 | 2026-09-16 | 2026-09-16 | 1d | 7d |
| 869 | 3.5.1.2.5.6 | Cobertura das edificações | 1d | 2026-09-16 | 2026-09-16 | 862 | 2026-09-16 | 2026-09-16 | 1d | 7d |
| 870 | 3.5.1.2.5.7 | Sentido de escoamento das águas pluviais e inclinação | 1d | 2026-09-16 | 2026-09-16 | 862 | 2026-09-16 | 2026-09-16 | 1d | 7d |
| 871 | 3.5.1.2.5.8 | Cotas gerais | 1d | 2026-09-16 | 2026-09-16 | 862 | 2026-09-16 | 2026-09-16 | 1d | 7d |
| 872 | 3.5.1.2.5.9 | Cotas de nível principal | 1d | 2026-09-16 | 2026-09-16 | 862 | 2026-09-16 | 2026-09-16 | 1d | 0d |
| 873 | 3.5.1.2.6 | **Cortes longitudinais** | 1d | 2026-09-17 | 2026-09-17 |  | 2026-09-17 | 2026-09-17 | 1d | 0d |
| 874 | 3.5.1.2.6.1 | Indicar simbologias de representação gráfica, conforme NBR 6492:2021; | 1d | 2026-09-17 | 2026-09-17 | 872 | 2026-09-17 | 2026-09-17 | 1d | 6d |
| 875 | 3.5.1.2.6.2 | Indicação de Escala; | 1d | 2026-09-17 | 2026-09-17 | 872 | 2026-09-17 | 2026-09-17 | 1d | 6d |
| 876 | 3.5.1.2.6.3 | Elementos estruturais principais; | 1d | 2026-09-17 | 2026-09-17 | 872 | 2026-09-17 | 2026-09-17 | 1d | 6d |
| 877 | 3.5.1.2.6.4 | Elementos de vedação internos e externos; | 1d | 2026-09-17 | 2026-09-17 | 872 | 2026-09-17 | 2026-09-17 | 1d | 6d |
| 878 | 3.5.1.2.6.5 | Esquadrias; | 1d | 2026-09-17 | 2026-09-17 | 872 | 2026-09-17 | 2026-09-17 | 1d | 6d |
| 879 | 3.5.1.2.6.6 | Identificação dos ambientes; | 1d | 2026-09-17 | 2026-09-17 | 872 | 2026-09-17 | 2026-09-17 | 1d | 6d |
| 880 | 3.5.1.2.6.7 | Cobertura com indicação da respectiva inclinação; | 1d | 2026-09-17 | 2026-09-17 | 872 | 2026-09-17 | 2026-09-17 | 1d | 6d |
| 881 | 3.5.1.2.6.8 | Cotas gerais; | 1d | 2026-09-17 | 2026-09-17 | 872 | 2026-09-17 | 2026-09-17 | 1d | 6d |
| 882 | 3.5.1.2.6.9 | Cotas de nível principal; | 1d | 2026-09-17 | 2026-09-17 | 872 | 2026-09-17 | 2026-09-17 | 1d | 6d |
| 883 | 3.5.1.2.6.10 | Eixos do projeto; | 1d | 2026-09-17 | 2026-09-17 | 872 | 2026-09-17 | 2026-09-17 | 1d | 6d |
| 884 | 3.5.1.2.6.11 | Relevo construído; | 1d | 2026-09-17 | 2026-09-17 | 872 | 2026-09-17 | 2026-09-17 | 1d | 6d |
| 885 | 3.5.1.2.6.12 | Projeção da topografia natural. | 1d | 2026-09-17 | 2026-09-17 | 872 | 2026-09-17 | 2026-09-17 | 1d | 0d |
| 886 | 3.5.1.2.6.13 | Relatório | 1d | 2026-09-17 | 2026-09-17 | 872 | 2026-09-17 | 2026-09-17 | 1d | 0d |

| ID | WBS | Task | Duration | Start | Finish | Predecessors | Baseline start | Baseline finish | Baseline duration | Total slack |
| --- | --- | --- | --- | --- | --- | --- | --- | --- | --- | --- |
| 887 | 3.5.1.2.7 | **Cortes transversais** | 1d | 2026-09-18 | 2026-09-18 |  | 2026-09-18 | 2026-09-18 | 1d | 0d |
| 888 | 3.5.1.2.7.1 | Indicar simbologias de representação gráfica, conforme NBR 6492:2021; | 1d | 2026-09-18 | 2026-09-18 | 885 | 2026-09-18 | 2026-09-18 | 1d | 5d |
| 889 | 3.5.1.2.7.2 | Indicação de Escala; | 1d | 2026-09-18 | 2026-09-18 | 885 | 2026-09-18 | 2026-09-18 | 1d | 5d |
| 890 | 3.5.1.2.7.3 | Elementos estruturais principais; | 1d | 2026-09-18 | 2026-09-18 | 885 | 2026-09-18 | 2026-09-18 | 1d | 5d |
| 891 | 3.5.1.2.7.4 | Elementos de vedação internos e externos; | 1d | 2026-09-18 | 2026-09-18 | 885 | 2026-09-18 | 2026-09-18 | 1d | 5d |
| 892 | 3.5.1.2.7.5 | Esquadrias; | 1d | 2026-09-18 | 2026-09-18 | 885 | 2026-09-18 | 2026-09-18 | 1d | 5d |
| 893 | 3.5.1.2.7.6 | Identificação dos ambientes; | 1d | 2026-09-18 | 2026-09-18 | 885 | 2026-09-18 | 2026-09-18 | 1d | 5d |
| 894 | 3.5.1.2.7.7 | Cobertura com indicação da respectiva inclinação; | 1d | 2026-09-18 | 2026-09-18 | 885 | 2026-09-18 | 2026-09-18 | 1d | 5d |
| 895 | 3.5.1.2.7.8 | Cotas gerais; | 1d | 2026-09-18 | 2026-09-18 | 885 | 2026-09-18 | 2026-09-18 | 1d | 5d |
| 896 | 3.5.1.2.7.9 | Cotas de nível principal; | 1d | 2026-09-18 | 2026-09-18 | 885 | 2026-09-18 | 2026-09-18 | 1d | 5d |
| 897 | 3.5.1.2.7.10 | Eixos do projeto; | 1d | 2026-09-18 | 2026-09-18 | 885 | 2026-09-18 | 2026-09-18 | 1d | 5d |
| 898 | 3.5.1.2.7.11 | Relevo construído; | 1d | 2026-09-18 | 2026-09-18 | 885 | 2026-09-18 | 2026-09-18 | 1d | 5d |
| 899 | 3.5.1.2.7.12 | Projeção da topografia natural | 1d | 2026-09-18 | 2026-09-18 | 885 | 2026-09-18 | 2026-09-18 | 1d | 0d |
| 900 | 3.5.1.2.8 | **Elevações** | 1d | 2026-09-21 | 2026-09-21 |  | 2026-09-21 | 2026-09-21 | 1d | 0d |
| 901 | 3.5.1.2.8.1 | Indicar simbologias de representação gráfica, conforme NBR 6492:2021; | 1d | 2026-09-21 | 2026-09-21 | 899 | 2026-09-21 | 2026-09-21 | 1d | 4d |
| 902 | 3.5.1.2.8.2 | Indicação de Escala; | 1d | 2026-09-21 | 2026-09-21 | 899 | 2026-09-21 | 2026-09-21 | 1d | 4d |
| 903 | 3.5.1.2.8.3 | Elementos estruturais principais; | 1d | 2026-09-21 | 2026-09-21 | 899 | 2026-09-21 | 2026-09-21 | 1d | 4d |
| 904 | 3.5.1.2.8.4 | Elementos de vedação internos e externos; | 1d | 2026-09-21 | 2026-09-21 | 899 | 2026-09-21 | 2026-09-21 | 1d | 4d |
| 905 | 3.5.1.2.8.5 | Esquadrias (sem código e sem quadro); | 1d | 2026-09-21 | 2026-09-21 | 899 | 2026-09-21 | 2026-09-21 | 1d | 4d |
| 906 | 3.5.1.2.8.6 | Relevo construído; | 1d | 2026-09-21 | 2026-09-21 | 899 | 2026-09-21 | 2026-09-21 | 1d | 4d |
| 907 | 3.5.1.2.8.7 | Cotas gerais; | 1d | 2026-09-21 | 2026-09-21 | 899 | 2026-09-21 | 2026-09-21 | 1d | 4d |
| 908 | 3.5.1.2.8.8 | Cotas de nível principais; | 1d | 2026-09-21 | 2026-09-21 | 899 | 2026-09-21 | 2026-09-21 | 1d | 4d |
| 909 | 3.5.1.2.8.9 | Cobertura (quando aparente). | 1d | 2026-09-21 | 2026-09-21 | 899 | 2026-09-21 | 2026-09-21 | 1d | 0d |
| 910 | 3.5.1.2.9 | **Memorial Descritivo** | 4d | 2026-09-22 | 2026-09-25 |  | 2026-09-22 | 2026-09-25 | 4d | 0d |
| 911 | 3.5.1.2.9.1 | Descrição dos elementos da edificação | 4d | 2026-09-22 | 2026-09-25 | 909 | 2026-09-22 | 2026-09-25 | 4d | 0d |
| 912 | 3.5.1.2.9.2 | Geração de imagens representando os itens dissertados no relatório | 4d | 2026-09-22 | 2026-09-25 | 909 | 2026-09-22 | 2026-09-25 | 4d | 0d |
| 913 | 3.5.1.2.9.3 | Descrição dos componentes construtivos e materiais de construção | 4d | 2026-09-22 | 2026-09-25 | 909 | 2026-09-22 | 2026-09-25 | 4d | 0d |
| 914 | 3.5.1.2.9.4 | Lista de pranchas anexas e documentos | 4d | 2026-09-22 | 2026-09-25 | 909 | 2026-09-22 | 2026-09-25 | 4d | 0d |
| 915 | 3.5.2 | Aprovação de Conformidade | 3d | 2026-09-23 | 2026-09-25 | 910FF | 2026-09-23 | 2026-09-25 | 3d | 0d |
| 916 | 3.5.3 | Material para entrega ao contrato | 3d | 2026-09-23 | 2026-09-25 | 910FF | 2026-09-23 | 2026-09-25 | 3d | 0d |

| ID | WBS | Task | Duration | Start | Finish | Predecessors | Baseline start | Baseline finish | Baseline duration | Total slack | Free slack |
| --- | --- | --- | --- | --- | --- | --- | --- | --- | --- | --- | --- |
| 917 | 3.5.4 | **Engenharia** | 38d | 2026-08-04 | 2026-09-25 |  | 2026-08-04 | 2026-09-25 | 38d | 0d |  |
| 918 | 3.5.4.1 | **Estrutura** | 34d | 2026-08-10 | 2026-09-25 |  | 2026-08-10 | 2026-09-25 | 34d | 0d |  |
| 919 | 3.5.4.1.1 | **LOD 100 — Premissas, diretrizes e interfaces** | 7d | 2026-08-10 | 2026-08-18 |  | 2026-08-10 | 2026-08-18 | 7d | 0d |  |
| 920 | 3.5.4.1.1.1 | Levantamento de tipos de cargas globais estimadas (permanentes, acidentais, vento e especiais). | 2d | 2026-08-10 | 2026-08-11 | 1323SS+24d, 1067SS+24d, 811SS+24d, 555SS+24d, 299SS+24d, 114SS+24d | 2026-08-10 | 2026-08-11 | 2d | 32d |  |
| 921 | 3.5.4.1.1.2 | Estudo volumétrico com modulação inicial de pilares, vigas e lajes. Entendendo vãos e desafios | 5d | 2026-08-10 | 2026-08-14 | 1323SS+24d, 1067SS+24d, 811SS+24d, 555SS+24d, 299SS+24d, 114SS+24d | 2026-08-10 | 2026-08-14 | 5d | 29d |  |
| 922 | 3.5.4.1.1.3 | Localização aproximada de elementos estruturais principais. Avaliando vãos e estudando posições | 2d | 2026-08-10 | 2026-08-11 | 1323SS+24d, 1067SS+24d, 811SS+24d, 555SS+24d, 299SS+24d, 114SS+24d | 2026-08-10 | 2026-08-11 | 2d | 0d |  |
| 923 | 3.5.4.1.1.4 | Estudo de viabilidade técnica e construtiva. | 3d | 2026-08-12 | 2026-08-14 | 922 | 2026-08-12 | 2026-08-14 | 3d | 0d |  |
| 924 | 3.5.4.1.1.5 | Definição preliminar do sistema estrutural (concreto armado, metálica ou mista). | 3d | 2026-08-12 | 2026-08-14 | 922 | 2026-08-12 | 2026-08-14 | 3d | 29d |  |
| 925 | 3.5.4.1.1.6 | Estimativa preliminar de tipologias de fundações (sapatas, blocos, estacas). | 2d | 2026-08-17 | 2026-08-18 | 923 | 2026-08-17 | 2026-08-18 | 2d | 27d |  |
| 926 | 3.5.4.1.1.7 | Previsão de áreas técnicas, casas de máquinas, reservatórios elevados e estrutura de cobertura. | 2d | 2026-08-17 | 2026-08-18 | 923 | 2026-08-17 | 2026-08-18 | 2d | 0d |  |
| 927 | 3.5.4.1.2 | **LOD 200 — Validação interdisciplinar e solução preliminar** | 20d | 2026-08-19 | 2026-09-16 |  | 2026-08-19 | 2026-09-16 | 20d | 0d |  |
| 928 | 3.5.4.1.2.1 | Lista preliminar de cargas e ações para dimensionamento. | 5d | 2026-08-19 | 2026-08-25 | 926 | 2026-08-19 | 2026-08-25 | 5d | 0d |  |
| 929 | 3.5.4.1.2.2 | Definição preliminar de alturas de pavimentos e níveis de fundação. | 5d | 2026-08-19 | 2026-08-25 | 926 | 2026-08-19 | 2026-08-25 | 5d | 22d |  |
| 930 | 3.5.4.1.2.3 | Indicação aproximada do sistema de cobertura (tesouras, treliças, vigamento metálico ou concreto). | 5d | 2026-08-19 | 2026-08-25 | 926 | 2026-08-19 | 2026-08-25 | 5d | 22d |  |
| 931 | 3.5.4.1.2.4 | Modelagem genérica de pilares, vigas, lajes e fundações. | 5d | 2026-08-26 | 2026-09-01 | 928 | 2026-08-26 | 2026-09-01 | 5d | 17d |  |
| 932 | 3.5.4.1.2.5 | Traçado preliminar de elementos especiais (escadas, rampas estruturais, reservatórios). | 5d | 2026-08-26 | 2026-09-01 | 928 | 2026-08-26 | 2026-09-01 | 5d | 12d | 0d |
| 933 | 3.5.4.1.2.6 | Arquivo IFC, plantas de forma e planta de locação | 5d | 2026-08-26 | 2026-09-01 | 928 | 2026-08-26 | 2026-09-01 | 5d | 0d |  |
| 934 | 3.5.4.1.2.7 | Inserção de fundações com tipologia e dimensões preliminares. | 5d | 2026-09-02 | 2026-09-09 | 932 | 2026-09-02 | 2026-09-09 | 5d | 12d |  |
| 935 | 3.5.4.1.2.8 | Compatibilização inicial com arquitetura e demais disciplinas. | 5d | 2026-09-02 | 2026-09-09 | 933 | 2026-09-02 | 2026-09-09 | 5d | 12d |  |
| 936 | 3.5.4.1.2.9 | Indicação de passagens de infraestrutura (shafts, aberturas em lajes e vigas). | 5d | 2026-09-02 | 2026-09-09 | 933 | 2026-09-02 | 2026-09-09 | 5d | 12d |  |
| 937 | 3.5.4.1.2.10 | Modelagem assertiva de elementos principais com dimensões aproximadas (largura, altura, espessura). | 10d | 2026-09-02 | 2026-09-16 | 933 | 2026-09-02 | 2026-09-16 | 10d | 0d |  |
| 938 | 3.5.4.1.2.11 | Modelagem estimada de armaduras principais (em nível de concepção). | 5d | 2026-09-10 | 2026-09-16 | 937FF | 2026-09-10 | 2026-09-16 | 5d | 0d |  |
| 939 | 3.5.4.1.3 | **LOD 300 - Consolidação e documentação de entrega** | 7d | 2026-09-17 | 2026-09-25 |  | 2026-09-17 | 2026-09-25 | 7d | 0d |  |
| 940 | 3.5.4.1.3.1 | Indicação de níveis e cotas exatas. | 7d | 2026-09-17 | 2026-09-25 | 937, 938 | 2026-09-17 | 2026-09-25 | 7d | 0d |  |
| 941 | 3.5.4.1.3.2 | Quadro de cargas atualizado. | 7d | 2026-09-17 | 2026-09-25 | 937, 938 | 2026-09-17 | 2026-09-25 | 7d | 0d |  |
| 942 | 3.5.4.1.3.3 | Dimensionamento final de fundações conforme sondagem e cálculo estrutural. | 7d | 2026-09-17 | 2026-09-25 | 937, 938 | 2026-09-17 | 2026-09-25 | 7d | 0d |  |
| 943 | 3.5.4.1.3.4 | Definição final dos elementos da cobertura (treliças, vigas, chapas, purlins). | 7d | 2026-09-17 | 2026-09-25 | 937, 938 | 2026-09-17 | 2026-09-25 | 7d | 0d |  |
| 944 | 3.5.4.1.3.5 | Compatibilização final com arquitetura e instalações (aberturas, embutidos e passagens). | 7d | 2026-09-17 | 2026-09-25 | 937, 938 | 2026-09-17 | 2026-09-25 | 7d | 0d |  |
| 945 | 3.5.4.1.3.6 | Modelagem definitiva de pilares, vigas, lajes, blocos, sapatas e estacas. | 7d | 2026-09-17 | 2026-09-25 | 937, 938 | 2026-09-17 | 2026-09-25 | 7d | 0d |  |
| 946 | 3.5.4.1.3.7 | Planta estrutural com todos os elementos identificados. | 7d | 2026-09-17 | 2026-09-25 | 937, 938 | 2026-09-17 | 2026-09-25 | 7d | 0d |  |
| 947 | 3.5.4.1.3.8 | Memorial descritivo contendo: objetivos, justificativa, descrição do sistema, concepção de fundações/cobertura, especificações e quadro de cargas. | 7d | 2026-09-17 | 2026-09-25 | 937, 938 | 2026-09-17 | 2026-09-25 | 7d | 0d |  |
| 948 | 3.5.4.1.3.9 | Normas técnicas utilizadas (NBR 6118, 6120, 6122, 8800, etc.). | 7d | 2026-09-17 | 2026-09-25 | 937, 938 | 2026-09-17 | 2026-09-25 | 7d | 0d |  |
| 949 | 3.5.4.1.3.10 | Consolidar documentação de entrega e emissão formal da disciplina | 7d | 2026-09-17 | 2026-09-25 | 937, 938 | 2026-09-17 | 2026-09-25 | 7d | 0d |  |
| 950 | 3.5.4.1.4 | Aprovação de Conformidade | 3d | 2026-09-23 | 2026-09-25 | 939FF | 2026-09-23 | 2026-09-25 | 3d | 0d |  |
| 951 | 3.5.4.1.5 | Material para entrega ao contrato | 3d | 2026-09-23 | 2026-09-25 | 939FF | 2026-09-23 | 2026-09-25 | 3d | 0d |  |

| ID | WBS | Task | Duration | Start | Finish | Predecessors | Baseline start | Baseline finish | Baseline duration | Total slack | Free slack |
| --- | --- | --- | --- | --- | --- | --- | --- | --- | --- | --- | --- |
| 952 | 3.5.4.2 | **Hidrossanitário** | 38d | 2026-08-04 | 2026-09-25 |  | 2026-08-04 | 2026-09-25 | 38d | 0d |  |
| 953 | 3.5.4.2.1 | **LOD 100 — Premissas, diretrizes e interfaces** | 10d | 2026-08-04 | 2026-08-17 |  | 2026-08-04 | 2026-08-17 | 10d | 0d |  |
| 954 | 3.5.4.2.1.1 | Memorial preliminar | 10d | 2026-08-04 | 2026-08-17 | 1323SS+20d, 1067SS+20d, 811SS+20d, 555SS+20d, 299SS+20d, 114SS+20d | 2026-08-04 | 2026-08-17 | 10d | 28d |  |
| 955 | 3.5.4.2.1.2 | Indicação de áreas técnicas | 6d | 2026-08-04 | 2026-08-11 | 1323SS+20d, 1067SS+20d, 811SS+20d, 555SS+20d, 299SS+20d, 114SS+20d | 2026-08-04 | 2026-08-11 | 6d | 32d |  |
| 956 | 3.5.4.2.1.3 | Planta baixa com traçado conceitual | 6d | 2026-08-04 | 2026-08-11 | 1323SS+20d, 1067SS+20d, 811SS+20d, 555SS+20d, 299SS+20d, 114SS+20d | 2026-08-04 | 2026-08-11 | 6d | 32d |  |
| 957 | 3.5.4.2.1.4 | Pontos de consumo principais e coletas sanitárias | 6d | 2026-08-04 | 2026-08-11 | 1323SS+20d, 1067SS+20d, 811SS+20d, 555SS+20d, 299SS+20d, 114SS+20d | 2026-08-04 | 2026-08-11 | 6d | 32d |  |
| 958 | 3.5.4.2.1.5 | Classificação de uso | 10d | 2026-08-04 | 2026-08-17 | 1323SS+20d, 1067SS+20d, 811SS+20d, 555SS+20d, 299SS+20d, 114SS+20d | 2026-08-04 | 2026-08-17 | 10d | 28d |  |
| 959 | 3.5.4.2.1.6 | Diretrizes de espaço | 10d | 2026-08-04 | 2026-08-17 | 1323SS+20d, 1067SS+20d, 811SS+20d, 555SS+20d, 299SS+20d, 114SS+20d | 2026-08-04 | 2026-08-17 | 10d | 28d |  |
| 960 | 3.5.4.2.1.7 | Estimativa de demanda ou população de uso | 10d | 2026-08-04 | 2026-08-17 | 1323SS+20d, 1067SS+20d, 811SS+20d, 555SS+20d, 299SS+20d, 114SS+20d | 2026-08-04 | 2026-08-17 | 10d | 28d |  |
| 961 | 3.5.4.2.1.8 | Levantamento de elementos especiais dentre outras disciplinas de Engenharia e Arquitetura | 10d | 2026-08-04 | 2026-08-17 | 1323SS+20d, 1067SS+20d, 811SS+20d, 555SS+20d, 299SS+20d, 114SS+20d | 2026-08-04 | 2026-08-17 | 10d | 0d |  |
| 962 | 3.5.4.2.2 | **LOD 200 — Validação interdisciplinar e solução preliminar** | 20d | 2026-08-18 | 2026-09-15 |  | 2026-08-18 | 2026-09-15 | 20d | 0d |  |
| 963 | 3.5.4.2.2.1 | Critérios normativos adotados (ABNT, concessionárias, etc.) | 20d | 2026-08-18 | 2026-09-15 | 961 | 2026-08-18 | 2026-09-15 | 20d | 8d | 0d |
| 964 | 3.5.4.2.2.2 | Informações de demanda na concessionária (DPE ou AVT Aviso de Viabilidade Técnica) | 20d | 2026-08-18 | 2026-09-15 | 963SS | 2026-08-18 | 2026-09-15 | 20d | 8d |  |
| 965 | 3.5.4.2.2.3 | Estudo de viabilidade técnica, econômica e ambiental | 20d | 2026-08-18 | 2026-09-15 | 963SS | 2026-08-18 | 2026-09-15 | 20d | 8d |  |
| 966 | 3.5.4.2.2.4 | Lista preliminar de sistemas envolvidos. | 20d | 2026-08-18 | 2026-09-15 | 961 | 2026-08-18 | 2026-09-15 | 20d | 8d |  |
| 967 | 3.5.4.2.2.5 | Planta baixa estimada contendo: - Traçado preliminar | 20d | 2026-08-18 | 2026-09-15 | 961 | 2026-08-18 | 2026-09-15 | 20d | 0d |  |
| 968 | 3.5.4.2.3 | **LOD 300 - Consolidação e documentação de entrega** | 8d | 2026-09-16 | 2026-09-25 |  | 2026-09-16 | 2026-09-25 | 8d | 0d |  |
| 969 | 3.5.4.2.3.1 | Prancha simplificada do projeto | 8d | 2026-09-16 | 2026-09-25 | 967 | 2026-09-16 | 2026-09-25 | 8d | 0d |  |
| 970 | 3.5.4.2.3.2 | Memorial descritivo | 3d | 2026-09-23 | 2026-09-25 | 969FF | 2026-09-23 | 2026-09-25 | 3d | 0d |  |
| 971 | 3.5.4.2.3.3 | Memória de cálculo (pressão, vazão, diâmetros, perda de carga). | 3d | 2026-09-23 | 2026-09-25 | 967, 969FF | 2026-09-23 | 2026-09-25 | 3d | 0d |  |
| 972 | 3.5.4.2.4 | Aprovação de Conformidade | 3d | 2026-09-23 | 2026-09-25 | 968FF | 2026-09-23 | 2026-09-25 | 3d | 0d |  |
| 973 | 3.5.4.2.5 | Material para entrega ao contrato | 3d | 2026-09-23 | 2026-09-25 | 968FF | 2026-09-23 | 2026-09-25 | 3d | 0d |  |
| 974 | 3.5.4.3 | **AVAC** | 34d | 2026-08-10 | 2026-09-25 |  | 2026-08-10 | 2026-09-25 | 34d | 0d |  |
| 975 | 3.5.4.3.1 | **LOD 100 — Premissas, diretrizes e interfaces** | 10d | 2026-08-10 | 2026-08-21 |  | 2026-08-10 | 2026-08-21 | 10d | 0d |  |
| 976 | 3.5.4.3.1.1 | Estimativa de carga térmica por ambiente. | 10d | 2026-08-10 | 2026-08-21 | 1323SS+24d, 1067SS+24d, 811SS+24d, 555SS+24d, 299SS+24d, 114SS+24d | 2026-08-10 | 2026-08-21 | 10d | 24d |  |
| 977 | 3.5.4.3.1.2 | Estudo de viabilidade e rotas principais de distribuição de ar. | 10d | 2026-08-10 | 2026-08-21 | 1323SS+24d, 1067SS+24d, 811SS+24d, 555SS+24d, 299SS+24d, 114SS+24d | 2026-08-10 | 2026-08-21 | 10d | 24d |  |
| 978 | 3.5.4.3.1.3 | Reserva de espaços técnicos e shafts. | 10d | 2026-08-10 | 2026-08-21 | 1323SS+24d, 1067SS+24d, 811SS+24d, 555SS+24d, 299SS+24d, 114SS+24d | 2026-08-10 | 2026-08-21 | 10d | 0d |  |
| 979 | 3.5.4.3.1.4 | Levantamento de cargas especiais provenientes de outras disciplinas. | 10d | 2026-08-10 | 2026-08-21 | 1323SS+24d, 1067SS+24d, 811SS+24d, 555SS+24d, 299SS+24d, 114SS+24d | 2026-08-10 | 2026-08-21 | 10d | 24d |  |

| ID | WBS | Task | Duration | Start | Finish | Predecessors | Baseline start | Baseline finish | Baseline duration | Total slack | Text3 |
| --- | --- | --- | --- | --- | --- | --- | --- | --- | --- | --- | --- |
| 980 | 3.5.4.3.2 | **LOD 200 — Validação interdisciplinar e solução preliminar** | 24d | 2026-08-24 | 2026-09-25 |  | 2026-08-24 | 2026-09-25 | 24d | 0d |  |
| 981 | 3.5.4.3.2.1 | Lista preliminar de sistemas HVAC envolvidos (expansão direta, VRF, chillers, ventilação, exaustão). | 24d | 2026-08-24 | 2026-09-25 | 978 | 2026-08-24 | 2026-09-25 | 24d | 0d |  |
| 982 | 3.5.4.3.3 | Aprovação de Conformidade | 3d | 2026-09-23 | 2026-09-25 | 980FF | 2026-09-23 | 2026-09-25 | 3d | 0d |  |
| 983 | 3.5.4.3.4 | Material para entrega ao contrato | 3d | 2026-09-23 | 2026-09-25 | 980FF | 2026-09-23 | 2026-09-25 | 3d | 0d |  |
| 984 | 3.5.4.4 | **PCI (Incêndio)** | 34d | 2026-08-10 | 2026-09-25 |  | 2026-08-10 | 2026-09-25 | 34d | 0d |  |
| 985 | 3.5.4.4.1 | **LOD 100 — Premissas, diretrizes e interfaces** | 10d | 2026-08-10 | 2026-08-21 |  | 2026-08-10 | 2026-08-21 | 10d | 0d | ܁# |
| 986 | 3.5.4.4.1.1 | Estudo e avaliação da arquitetura atendendo as normas competentes de PCI | 10d | 2026-08-10 | 2026-08-21 | 1323SS+24d, 1067SS+24d, 811SS+24d, 555SS+24d, 299SS+24d, 114SS+24d | 2026-08-10 | 2026-08-21 | 10d | 24d |  |
| 987 | 3.5.4.4.1.2 | Avaliação do espaço para CMI e Central de Gás. | 10d | 2026-08-10 | 2026-08-21 | 1323SS+24d, 1067SS+24d, 811SS+24d, 555SS+24d, 299SS+24d, 114SS+24d | 2026-08-10 | 2026-08-21 | 10d | 24d |  |
| 988 | 3.5.4.4.1.3 | Pontos locação para seus elementos no projeto arquitetônico | 10d | 2026-08-10 | 2026-08-21 | 1323SS+24d, 1067SS+24d, 811SS+24d, 555SS+24d, 299SS+24d, 114SS+24d | 2026-08-10 | 2026-08-21 | 10d | 0d |  |
| 989 | 3.5.4.4.2 | **LOD 200 — Validação interdisciplinar e solução preliminar** | 24d | 2026-08-24 | 2026-09-25 |  | 2026-08-24 | 2026-09-25 | 24d | 0d | ܁# |
| 990 | 3.5.4.4.2.1 | Definição da classificação da edificação e o risco de incêndio | 24d | 2026-08-24 | 2026-09-25 | 988 | 2026-08-24 | 2026-09-25 | 24d | 0d |  |
| 991 | 3.5.4.4.2.2 | Cálculos pré-dimensionados dos extintores, hidrantes e bomba. | 24d | 2026-08-24 | 2026-09-25 | 988 | 2026-08-24 | 2026-09-25 | 24d | 0d |  |
| 992 | 3.5.4.4.2.3 | Avaliação das rotas de fuga, ventilação de CMI e outros elementos de importância para as normas de PCI | 24d | 2026-08-24 | 2026-09-25 | 988 | 2026-08-24 | 2026-09-25 | 24d | 0d |  |
| 993 | 3.5.4.4.3 | Aprovação de Conformidade | 3d | 2026-09-23 | 2026-09-25 | 989FF | 2026-09-23 | 2026-09-25 | 3d | 0d |  |
| 994 | 3.5.4.4.4 | Material para entrega ao contrato | 3d | 2026-09-23 | 2026-09-25 | 989FF | 2026-09-23 | 2026-09-25 | 3d | 0d |  |
| 995 | 3.5.4.5 | **Elétrica Baixa Tensão** | 34d | 2026-08-10 | 2026-09-25 |  | 2026-08-10 | 2026-09-25 | 34d | 0d |  |
| 996 | 3.5.4.5.1 | **LOD 100 — Concepção** | 10d | 2026-08-10 | 2026-08-21 |  | 2026-08-10 | 2026-08-21 | 10d | 0d |  |
| 997 | 3.5.4.5.1.1 | Avaliação e Diretrizes Técnicas para Arquitetura | 6d | 2026-08-10 | 2026-08-17 | 1323SS+24d, 1067SS+24d, 811SS+24d, 555SS+24d, 299SS+24d, 114SS+24d | 2026-08-10 | 2026-08-17 | 6d | 28d |  |
| 998 | 3.5.4.5.1.2 | Estimativa de Cargas e Demanda | 10d | 2026-08-10 | 2026-08-21 | 1323SS+24d, 1067SS+24d, 811SS+24d, 555SS+24d, 299SS+24d, 114SS+24d | 2026-08-10 | 2026-08-21 | 10d | 0d |  |
| 999 | 3.5.4.5.1.3 | Levantamento de Equipamentos de Outras Disciplinas | 6d | 2026-08-10 | 2026-08-17 | 1323SS+24d, 1067SS+24d, 811SS+24d, 555SS+24d, 299SS+24d, 114SS+24d | 2026-08-10 | 2026-08-17 | 6d | 4d |  |
| 1000 | 3.5.4.5.2 | **LOD 200 — Anteprojeto** | 19d | 2026-08-24 | 2026-09-18 |  | 2026-08-24 | 2026-09-18 | 19d | 0d |  |
| 1001 | 3.5.4.5.2.1 | TUGs Estimados | 19d | 2026-08-24 | 2026-09-18 | 998, 999 | 2026-08-24 | 2026-09-18 | 19d | 0d |  |
| 1002 | 3.5.4.5.2.2 | Pontos de Luz Estimados | 19d | 2026-08-24 | 2026-09-18 | 998, 999 | 2026-08-24 | 2026-09-18 | 19d | 0d |  |
| 1003 | 3.5.4.5.2.3 | TUEs e Quadros Estimados | 19d | 2026-08-24 | 2026-09-18 | 998, 999 | 2026-08-24 | 2026-09-18 | 19d | 0d |  |
| 1004 | 3.5.4.5.3 | LOD 300 - Consolidação e documentação de entrega | 5d | 2026-09-21 | 2026-09-25 | 1000 | 2026-09-21 | 2026-09-25 | 5d | 0d |  |
| 1005 | 3.5.4.5.4 | Aprovação de Conformidade | 3d | 2026-09-23 | 2026-09-25 | 1004FF | 2026-09-23 | 2026-09-25 | 3d | 0d |  |
| 1006 | 3.5.4.5.5 | Material para entrega ao contrato | 3d | 2026-09-23 | 2026-09-25 | 1004FF | 2026-09-23 | 2026-09-25 | 3d | 0d |  |

| ID | WBS | Task | Duration | Start | Finish | Predecessors | Baseline start | Baseline finish | Baseline duration | Total slack |
| --- | --- | --- | --- | --- | --- | --- | --- | --- | --- | --- |
| 1007 | 3.5.4.6 | **Telecom** | 34d | 2026-08-10 | 2026-09-25 |  | 2026-08-10 | 2026-09-25 | 34d | 0d |
| 1008 | 3.5.4.6.1 | **LOD 100 — Concepção** | 10d | 2026-08-10 | 2026-08-21 |  | 2026-08-10 | 2026-08-21 | 10d | 0d |
| 1009 | 3.5.4.6.1.1 | Avaliação e Diretrizes Técnicas para Arquitetura | 10d | 2026-08-10 | 2026-08-21 | 1323SS+24d, 1067SS+24d, 811SS+24d, 555SS+24d, 299SS+24d, 114SS+24d | 2026-08-10 | 2026-08-21 | 10d | 24d |
| 1010 | 3.5.4.6.1.2 | Estimativa de Demanda de Telecomunicações | 10d | 2026-08-10 | 2026-08-21 | 1323SS+24d, 1067SS+24d, 811SS+24d, 555SS+24d, 299SS+24d, 114SS+24d | 2026-08-10 | 2026-08-21 | 10d | 24d |
| 1011 | 3.5.4.6.1.3 | Levantamento de Equipamentos e Interfaces com Outras Disciplinas | 10d | 2026-08-10 | 2026-08-21 | 1323SS+24d, 1067SS+24d, 811SS+24d, 555SS+24d, 299SS+24d, 114SS+24d | 2026-08-10 | 2026-08-21 | 10d | 0d |
| 1012 | 3.5.4.6.2 | **LOD 200 — Anteprojeto** | 20d | 2026-08-24 | 2026-09-21 |  | 2026-08-24 | 2026-09-21 | 20d | 0d |
| 1013 | 3.5.4.6.2.1 | Pontos de Telecomunicações Estimados (Rede, Voz, CFTV e Demais Sistemas) | 10d | 2026-08-24 | 2026-09-04 | 1011 | 2026-08-24 | 2026-09-04 | 10d | 0d |
| 1014 | 3.5.4.6.2.2 | Racks Estimados | 10d | 2026-08-24 | 2026-09-04 | 1011 | 2026-08-24 | 2026-09-04 | 10d | 0d |
| 1015 | 3.5.4.6.2.3 | Infraestrutura de Telecomunicações Preliminar | 10d | 2026-09-08 | 2026-09-21 | 1013, 1014 | 2026-09-08 | 2026-09-21 | 10d | 0d |
| 1016 | 3.5.4.6.3 | LOD 300 - Consolidação e documentação de entrega | 4d | 2026-09-22 | 2026-09-25 | 1012 | 2026-09-22 | 2026-09-25 | 4d | 0d |
| 1017 | 3.5.4.6.4 | Aprovação de Conformidade | 3d | 2026-09-23 | 2026-09-25 | 1016FF | 2026-09-23 | 2026-09-25 | 3d | 0d |
| 1018 | 3.5.4.6.5 | Material para entrega ao contrato | 3d | 2026-09-23 | 2026-09-25 | 1016FF | 2026-09-23 | 2026-09-25 | 3d | 0d |
| 1019 | 3.5.4.7 | **Subestação** | 34d | 2026-08-10 | 2026-09-25 |  | 2026-08-10 | 2026-09-25 | 34d | 0d |
| 1020 | 3.5.4.7.1 | **LOD 100 — Concepção** | 10d | 2026-08-10 | 2026-08-21 |  | 2026-08-10 | 2026-08-21 | 10d | 0d |
| 1021 | 3.5.4.7.1.1 | Avaliação e Diretrizes Técnicas para Arquitetura | 10d | 2026-08-10 | 2026-08-21 | 1323SS+24d, 1067SS+24d, 811SS+24d, 555SS+24d, 299SS+24d, 114SS+24d | 2026-08-10 | 2026-08-21 | 10d | 24d |
| 1022 | 3.5.4.7.1.2 | Levantamento de Demanda, Perfil de Consumo e Ponto de Entrega | 10d | 2026-08-10 | 2026-08-21 | 1323SS+24d, 1067SS+24d, 811SS+24d, 555SS+24d, 299SS+24d, 114SS+24d | 2026-08-10 | 2026-08-21 | 10d | 24d |
| 1023 | 3.5.4.7.1.3 | Estudo de Viabilidade Técnica e Atendimento ao Padrão da Concessionária | 10d | 2026-08-10 | 2026-08-21 | 1323SS+24d, 1067SS+24d, 811SS+24d, 555SS+24d, 299SS+24d, 114SS+24d | 2026-08-10 | 2026-08-21 | 10d | 0d |
| 1024 | 3.5.4.7.2 | **LOD 200 — Anteprojeto** | 20d | 2026-08-24 | 2026-09-21 |  | 2026-08-24 | 2026-09-21 | 20d | 0d |
| 1025 | 3.5.4.7.2.1 | Definição do Tipo de Subestação e Arranjo Físico Preliminar | 10d | 2026-08-24 | 2026-09-04 | 1023 | 2026-08-24 | 2026-09-04 | 10d | 0d |
| 1026 | 3.5.4.7.2.2 | Dimensionamento Preliminar do Transformador e Equipamentos Principais | 10d | 2026-09-08 | 2026-09-21 | 1025 | 2026-09-08 | 2026-09-21 | 10d | 0d |
| 1027 | 3.5.4.7.2.3 | Diretrizes Preliminares de Aterramento | 10d | 2026-09-08 | 2026-09-21 | 1025 | 2026-09-08 | 2026-09-21 | 10d | 0d |
| 1028 | 3.5.4.7.3 | LOD 300 - Consolidação e documentação de entrega | 4d | 2026-09-22 | 2026-09-25 | 1024 | 2026-09-22 | 2026-09-25 | 4d | 0d |
| 1029 | 3.5.4.7.4 | Aprovação de Conformidade | 3d | 2026-09-23 | 2026-09-25 | 1028FF | 2026-09-23 | 2026-09-25 | 3d | 0d |
| 1030 | 3.5.4.7.5 | Material para entrega ao contrato | 3d | 2026-09-23 | 2026-09-25 | 1028FF | 2026-09-23 | 2026-09-25 | 3d | 0d |

| ID | WBS | Task | Duration | Start | Finish | Predecessors | Baseline start | Baseline finish | Baseline duration | Total slack |
| --- | --- | --- | --- | --- | --- | --- | --- | --- | --- | --- |
| 1031 | 3.5.4.8 | **SPDA** | 34d | 2026-08-10 | 2026-09-25 |  | 2026-08-10 | 2026-09-25 | 34d | 0d |
| 1032 | 3.5.4.8.1 | **LOD 100 — Concepção** | 10d | 2026-08-10 | 2026-08-21 |  | 2026-08-10 | 2026-08-21 | 10d | 0d |
| 1033 | 3.5.4.8.1.1 | Avaliação e Diretrizes Técnicas para Arquitetura | 10d | 2026-08-10 | 2026-08-21 | 1323SS+24d, 1067SS+24d, 811SS+24d, 555SS+24d, 299SS+24d, 114SS+24d | 2026-08-10 | 2026-08-21 | 10d | 24d |
| 1034 | 3.5.4.8.1.2 | Coleta de Informações da Edificação e Análise de Risco (ABNT NBR 5419-2) | 10d | 2026-08-10 | 2026-08-21 | 1323SS+24d, 1067SS+24d, 811SS+24d, 555SS+24d, 299SS+24d, 114SS+24d | 2026-08-10 | 2026-08-21 | 10d | 24d |
| 1035 | 3.5.4.8.1.3 | Estudo Preliminar de Necessidade e Nível de Proteção do SPDA | 10d | 2026-08-10 | 2026-08-21 | 1323SS+24d, 1067SS+24d, 811SS+24d, 555SS+24d, 299SS+24d, 114SS+24d | 2026-08-10 | 2026-08-21 | 10d | 0d |
| 1036 | 3.5.4.8.2 | **LOD 200 — Anteprojeto** | 20d | 2026-08-24 | 2026-09-21 |  | 2026-08-24 | 2026-09-21 | 20d | 0d |
| 1037 | 3.5.4.8.2.1 | Definição da Estratégia de Proteção e Soluções Técnicas | 10d | 2026-08-24 | 2026-09-04 | 1035 | 2026-08-24 | 2026-09-04 | 10d | 0d |
| 1038 | 3.5.4.8.2.2 | Zoneamento de Captação, Descida e Traçados Preliminares | 10d | 2026-09-08 | 2026-09-21 | 1037 | 2026-09-08 | 2026-09-21 | 10d | 4d |
| 1039 | 3.5.4.8.2.3 | Estudo de Interferências, Compatibilização e Métodos Construtivos | 10d | 2026-09-08 | 2026-09-21 | 1037 | 2026-09-08 | 2026-09-21 | 10d | 0d |
| 1040 | 3.5.4.8.3 | LOD 300 - Consolidação e documentação de entrega | 4d | 2026-09-22 | 2026-09-25 | 1039 | 2026-09-22 | 2026-09-25 | 4d | 0d |
| 1041 | 3.5.4.8.4 | Aprovação de Conformidade | 3d | 2026-09-23 | 2026-09-25 | 1040FF | 2026-09-23 | 2026-09-25 | 3d | 0d |
| 1042 | 3.5.4.8.5 | Material para entrega ao contrato | 3d | 2026-09-23 | 2026-09-25 | 1040FF | 2026-09-23 | 2026-09-25 | 3d | 0d |
| 1043 | 3.5.4.9 | **Energia Renovável** | 34d | 2026-08-10 | 2026-09-25 |  | 2026-08-10 | 2026-09-25 | 34d | 0d |
| 1044 | 3.5.4.9.1 | **LOD 100 — Concepção** | 10d | 2026-08-10 | 2026-08-21 |  | 2026-08-10 | 2026-08-21 | 10d | 0d |
| 1045 | 3.5.4.9.1.1 | Viabilidade e Premissas de Geração | 10d | 2026-08-10 | 2026-08-21 | 1323SS+24d, 1067SS+24d, 811SS+24d, 555SS+24d, 299SS+24d, 114SS+24d | 2026-08-10 | 2026-08-21 | 10d | 24d |
| 1046 | 3.5.4.9.1.2 | Levantamento Preliminar de Áreas e Sombreamento | 10d | 2026-08-10 | 2026-08-21 | 1323SS+24d, 1067SS+24d, 811SS+24d, 555SS+24d, 299SS+24d, 114SS+24d | 2026-08-10 | 2026-08-21 | 10d | 0d |
| 1047 | 3.5.4.9.1.3 | Avaliação e Diretrizes Técnicas para Arquitetônico | 10d | 2026-08-10 | 2026-08-21 | 1323SS+24d, 1067SS+24d, 811SS+24d, 555SS+24d, 299SS+24d, 114SS+24d | 2026-08-10 | 2026-08-21 | 10d | 24d |
| 1048 | 3.5.4.9.2 | **LOD 200 — Anteprojeto** | 20d | 2026-08-24 | 2026-09-21 |  | 2026-08-24 | 2026-09-21 | 20d | 0d |
| 1049 | 3.5.4.9.2.1 | Layout Preliminar de Módulos, Inversores e String Boxes | 20d | 2026-08-24 | 2026-09-21 | 1046 | 2026-08-24 | 2026-09-21 | 20d | 0d |
| 1050 | 3.5.4.9.2.2 | Infraestrutura e Rotas Técnicas Preliminares (DC/AC e Aterramento) | 20d | 2026-08-24 | 2026-09-21 | 1046 | 2026-08-24 | 2026-09-21 | 20d | 0d |
| 1051 | 3.5.4.9.2.3 | Critérios Preliminares de Proteção e Estimativa de Quantitativos | 20d | 2026-08-24 | 2026-09-21 | 1046 | 2026-08-24 | 2026-09-21 | 20d | 0d |
| 1052 | 3.5.4.9.3 | LOD 300 - Consolidação e documentação de entrega | 4d | 2026-09-22 | 2026-09-25 | 1048 | 2026-09-22 | 2026-09-25 | 4d | 0d |
| 1053 | 3.5.4.9.4 | Aprovação de Conformidade | 3d | 2026-09-23 | 2026-09-25 | 1052FF | 2026-09-23 | 2026-09-25 | 3d | 0d |
| 1054 | 3.5.4.9.5 | Material para entrega ao contrato | 3d | 2026-09-23 | 2026-09-25 | 1052FF | 2026-09-23 | 2026-09-25 | 3d | 0d |

| ID | WBS | Task | Duration | Start | Finish | Predecessors | Complete | Remaining | Baseline start | Baseline finish | Baseline duration | Total slack |
| --- | --- | --- | --- | --- | --- | --- | --- | --- | --- | --- | --- | --- |
| 1055 | 3.6 | **6 - Vestiário e redário** | 100d | 2026-05-07 A | 2026-09-25 |  | 14% | 86.11d | 2026-05-07 | 2026-09-25 | 100d | 0d |
| 1056 | 3.6.1 | **Arquitetura** | 100d | 2026-05-07 A | 2026-09-25 |  | 30% | 69.76d | 2026-05-07 | 2026-09-25 | 100d | 0d |
| 1057 | 3.6.1.1 | **Análise e Compatibilização (caso a gente receba o projeto e precise adequar)** | 84d | 2026-05-07 A | 2026-09-02 |  | 30% | 59.16d | 2026-05-07 | 2026-09-02 | 84d | 16d |
| 1058 | 3.6.1.1.1 | Analisar topografia | 42d | 2026-05-07 | 2026-07-06 |  |  |  | 2026-05-07 | 2026-07-06 | 42d | 58d |
| 1059 | 3.6.1.1.2 | Criação e georreferenciamento e ajuste de norte nos arquivos federado, arquitetura, implantação, layout | 42d | 2026-05-07 | 2026-07-06 |  |  |  | 2026-05-07 | 2026-07-06 | 42d | 0d |
| 1060 | 3.6.1.1.3 | Analise geral do projeto | 42d | 2026-05-07 A | 2026-07-06 A |  | 100% |  | 2026-05-07 | 2026-07-06 | 42d |  |
| 1061 | 3.6.1.1.4 | Verificar acessibilidade dos espaços de acordo com a norma e sistematizar ajustes | 42d | 2026-05-07 A | 2026-07-06 A |  | 100% |  | 2026-05-07 | 2026-07-06 | 42d |  |
| 1062 | 3.6.1.1.5 | Conferir paredes | 42d | 2026-05-07 A | 2026-07-06 A |  | 100% |  | 2026-05-07 | 2026-07-06 | 42d |  |
| 1063 | 3.6.1.1.6 | Conferir Pisos | 42d | 2026-05-07 A | 2026-07-06 A |  | 100% |  | 2026-05-07 | 2026-07-06 | 42d |  |
| 1064 | 3.6.1.1.7 | Conferir Esquadrias | 42d | 2026-05-07 | 2026-07-06 |  |  |  | 2026-05-07 | 2026-07-06 | 42d | 58d |
| 1065 | 3.6.1.1.8 | Conferir Mobiliário | 42d | 2026-05-07 | 2026-07-06 |  |  |  | 2026-05-07 | 2026-07-06 | 42d | 58d |
| 1066 | 3.6.1.1.9 | Compatibilização disciplinas engenharia e sistematização incrementos e ajustes | 42d | 2026-07-07 | 2026-09-02 | 1059 |  |  | 2026-07-07 | 2026-09-02 | 42d | 16d |
| 1067 | 3.6.1.1.10 | Compatibilização com normas técnicas | 38d | 2026-07-07 | 2026-08-27 | 1059 |  |  | 2026-07-07 | 2026-08-27 | 38d | 0d |
| 1068 | 3.6.1.1.11 | Compatibilização padrão Quanta | 38d | 2026-07-07 | 2026-08-27 | 1059 |  |  | 2026-07-07 | 2026-08-27 | 38d | 20d |
| 1069 | 3.6.1.1.12 | Verficar se elementos estão associados aos níveis corretos e sistematizar ajustes | 38d | 2026-07-07 | 2026-08-27 | 1059 |  |  | 2026-07-07 | 2026-08-27 | 38d | 20d |
| 1070 | 3.6.1.1.13 | Revisão de perímetro do terreno, recuos, taxa de ocupação e afastamentos | 38d | 2026-07-07 | 2026-08-27 | 1059 |  |  | 2026-07-07 | 2026-08-27 | 38d | 20d |
| 1071 | 3.6.1.1.14 | Relatório/Memorial de Compatibilização | 38d | 2026-07-07 | 2026-08-27 | 1059 |  |  | 2026-07-07 | 2026-08-27 | 38d | 0d |
| 1072 | 3.6.1.2 | **LOD 300 - ANTEPROJETO** | 20d | 2026-08-28 A | 2026-09-25 |  | 32% | 13.61d | 2026-08-28 | 2026-09-25 | 20d | 0d |
| 1073 | 3.6.1.2.1 | **Modelagem e compatibilização** | 10d | 2026-08-28 A | 2026-09-11 |  | 54% | 4.62d | 2026-08-28 | 2026-09-11 | 10d | 10d |
| 1074 | 3.6.1.2.1.1 | Modelagem ajustes topografia | 10d | 2026-08-28 | 2026-09-11 | 1071 |  |  | 2026-08-28 | 2026-09-11 | 10d | 10d |
| 1075 | 3.6.1.2.1.2 | Mudar pisos para o padrão Quanta | 10d | 2026-08-28 A | 2026-09-11 A | 1071 | 100% |  | 2026-08-28 | 2026-09-11 | 10d |  |
| 1076 | 3.6.1.2.1.3 | Mudar paredes para o padrão Quanta | 10d | 2026-08-28 A | 2026-09-11 A | 1071 | 100% |  | 2026-08-28 | 2026-09-11 | 10d |  |
| 1077 | 3.6.1.2.1.4 | Mudar esquadrias para o padrão Quanta | 10d | 2026-08-28 | 2026-09-11 | 1071 |  |  | 2026-08-28 | 2026-09-11 | 10d | 10d |
| 1078 | 3.6.1.2.1.5 | Mudar metais para o padrão Quanta | 10d | 2026-08-28 A | 2026-09-11 A | 1071 | 100% |  | 2026-08-28 | 2026-09-11 | 10d |  |
| 1079 | 3.6.1.2.1.6 | Mudar louças para o padrão Quanta | 10d | 2026-08-28 A | 2026-09-11 A | 1071 | 100% |  | 2026-08-28 | 2026-09-11 | 10d |  |
| 1080 | 3.6.1.2.1.7 | Modelagem acessos e vias necessárias a implantação | 10d | 2026-08-28 A | 2026-09-11 A | 1071 | 100% |  | 2026-08-28 | 2026-09-11 | 10d |  |
| 1081 | 3.6.1.2.1.8 | Modelagem passeios e canteiros | 10d | 2026-08-28 A | 2026-09-11 A | 1071 | 100% |  | 2026-08-28 | 2026-09-11 | 10d |  |
| 1082 | 3.6.1.2.1.9 | Modelagem estacionamentos | 10d | 2026-08-28 A | 2026-09-11 A | 1071 | 100% |  | 2026-08-28 | 2026-09-11 | 10d |  |
| 1083 | 3.6.1.2.1.10 | Modelagem subestação elétrica | 10d | 2026-08-28 | 2026-09-11 | 1071 |  |  | 2026-08-28 | 2026-09-11 | 10d | 10d |
| 1084 | 3.6.1.2.1.11 | Modelagem ETE | 10d | 2026-08-28 | 2026-09-11 | 1071 |  |  | 2026-08-28 | 2026-09-11 | 10d | 10d |
| 1085 | 3.6.1.2.1.12 | Modelagem PCI | 10d | 2026-08-28 | 2026-09-11 | 1071 |  |  | 2026-08-28 | 2026-09-11 | 10d | 10d |
| 1086 | 3.6.1.2.1.13 | Modelagem/ajustes caixa d'água | 10d | 2026-08-28 | 2026-09-11 | 1071 |  |  | 2026-08-28 | 2026-09-11 | 10d | 0d |

| ID | WBS | Task | Duration | Start | Finish | Predecessors | Baseline start | Baseline finish | Baseline duration | Total slack |
| --- | --- | --- | --- | --- | --- | --- | --- | --- | --- | --- |
| 1087 | 3.6.1.2.2 | **Situação** | 1d | 2026-09-14 | 2026-09-14 |  | 2026-09-14 | 2026-09-14 | 1d | 0d |
| 1088 | 3.6.1.2.2.1 | Indicar simbologias de representação gráfica, conforme NBR 6492:2021; | 1d | 2026-09-14 | 2026-09-14 | 1086 | 2026-09-14 | 2026-09-14 | 1d | 9d |
| 1089 | 3.6.1.2.2.2 | Indicação Norte | 1d | 2026-09-14 | 2026-09-14 | 1086 | 2026-09-14 | 2026-09-14 | 1d | 9d |
| 1090 | 3.6.1.2.2.3 | Analisar, adicionar e fechar - Curvas de nível existentes e projetadas (conforme projetos de topografia e sondagem recebidos); | 1d | 2026-09-14 | 2026-09-14 | 1086 | 2026-09-14 | 2026-09-14 | 1d | 9d |
| 1091 | 3.6.1.2.2.4 | Indicação de Escala; | 1d | 2026-09-14 | 2026-09-14 | 1086 | 2026-09-14 | 2026-09-14 | 1d | 9d |
| 1092 | 3.6.1.2.2.5 | Vias de acesso ao conjunto, arruamento, logradouros adjacentes e calçadas com os respectivos equipamentos urbanos; | 1d | 2026-09-14 | 2026-09-14 | 1086 | 2026-09-14 | 2026-09-14 | 1d | 9d |
| 1093 | 3.6.1.2.2.6 | Platôs e taludes principais; | 1d | 2026-09-14 | 2026-09-14 | 1086 | 2026-09-14 | 2026-09-14 | 1d | 9d |
| 1094 | 3.6.1.2.2.7 | Perímetro do terreno, recuos e afastamentos; | 1d | 2026-09-14 | 2026-09-14 | 1086 | 2026-09-14 | 2026-09-14 | 1d | 9d |
| 1095 | 3.6.1.2.2.8 | Indicação das áreas a serem edificadas com o contorno da cobertura das edificações, estacionamentos e áreas permeáveis/impermeáveis; | 1d | 2026-09-14 | 2026-09-14 | 1086 | 2026-09-14 | 2026-09-14 | 1d | 9d |
| 1096 | 3.6.1.2.2.9 | Denominação das edificações, blocos ou espaços; | 1d | 2026-09-14 | 2026-09-14 | 1086 | 2026-09-14 | 2026-09-14 | 1d | 9d |
| 1097 | 3.6.1.2.2.10 | Cotas gerais | 1d | 2026-09-14 | 2026-09-14 | 1086 | 2026-09-14 | 2026-09-14 | 1d | 9d |
| 1098 | 3.6.1.2.2.11 | Cotas de nível principal. | 1d | 2026-09-14 | 2026-09-14 | 1086 | 2026-09-14 | 2026-09-14 | 1d | 9d |
| 1099 | 3.6.1.2.2.12 | Quadros de áreas | 1d | 2026-09-14 | 2026-09-14 | 1086 | 2026-09-14 | 2026-09-14 | 1d | 0d |
| 1100 | 3.6.1.2.3 | Planta com as cotas de nível projetadas e existentes | 1d | 2026-09-14 | 2026-09-14 | 1099SS | 2026-09-14 | 2026-09-14 | 1d | 0d |
| 1101 | 3.6.1.2.4 | **Plantas baixas (se tiver mais de um pavimento, duplicar bloco)** | 1d | 2026-09-15 | 2026-09-15 |  | 2026-09-15 | 2026-09-15 | 1d | 0d |
| 1102 | 3.6.1.2.4.1 | Indicar simbologias de representação gráfica, conforme NBR 6492:2021; | 1d | 2026-09-15 | 2026-09-15 | 1100 | 2026-09-15 | 2026-09-15 | 1d | 8d |
| 1103 | 3.6.1.2.4.2 | Compatibilização (verificar se está tudo conforme as normas e alinhar com o restante das disciplinas de engenharia) | 1d | 2026-09-15 | 2026-09-15 | 1100 | 2026-09-15 | 2026-09-15 | 1d | 8d |
| 1104 | 3.6.1.2.4.3 | Compatibilização (deixar tudo conforme padrão Quanta) | 1d | 2026-09-15 | 2026-09-15 | 1100 | 2026-09-15 | 2026-09-15 | 1d | 8d |
| 1105 | 3.6.1.2.4.4 | Indicação de Norte; | 1d | 2026-09-15 | 2026-09-15 | 1100 | 2026-09-15 | 2026-09-15 | 1d | 8d |
| 1106 | 3.6.1.2.4.5 | Indicação de Escala; | 1d | 2026-09-15 | 2026-09-15 | 1100 | 2026-09-15 | 2026-09-15 | 1d | 8d |
| 1107 | 3.6.1.2.4.6 | Indicação de Acessos; | 1d | 2026-09-15 | 2026-09-15 | 1100 | 2026-09-15 | 2026-09-15 | 1d | 8d |
| 1108 | 3.6.1.2.4.7 | Elementos de vedação internos e externos; | 1d | 2026-09-15 | 2026-09-15 | 1100 | 2026-09-15 | 2026-09-15 | 1d | 8d |
| 1109 | 3.6.1.2.4.8 | Esquadrias (sem código e sem quadro); | 1d | 2026-09-15 | 2026-09-15 | 1100 | 2026-09-15 | 2026-09-15 | 1d | 8d |
| 1110 | 3.6.1.2.4.9 | Elementos estruturais principais; | 1d | 2026-09-15 | 2026-09-15 | 1100 | 2026-09-15 | 2026-09-15 | 1d | 8d |
| 1111 | 3.6.1.2.4.10 | Identificação dos ambientes e espaços (internos e externos); | 1d | 2026-09-15 | 2026-09-15 | 1100 | 2026-09-15 | 2026-09-15 | 1d | 8d |
| 1112 | 3.6.1.2.4.11 | Espaços de circulação internos e externos; | 1d | 2026-09-15 | 2026-09-15 | 1100 | 2026-09-15 | 2026-09-15 | 1d | 8d |
| 1113 | 3.6.1.2.4.12 | Áreas de serviço, funcionais e técnicas (internos e externos); | 1d | 2026-09-15 | 2026-09-15 | 1100 | 2026-09-15 | 2026-09-15 | 1d | 8d |
| 1114 | 3.6.1.2.4.13 | Projeções de níveis superiores; | 1d | 2026-09-15 | 2026-09-15 | 1100 | 2026-09-15 | 2026-09-15 | 1d | 8d |
| 1115 | 3.6.1.2.4.14 | Cotas gerais | 1d | 2026-09-15 | 2026-09-15 | 1100 | 2026-09-15 | 2026-09-15 | 1d | 8d |
| 1116 | 3.6.1.2.4.15 | Cotas de nível principal. | 1d | 2026-09-15 | 2026-09-15 | 1100 | 2026-09-15 | 2026-09-15 | 1d | 8d |
| 1117 | 3.6.1.2.4.16 | Tabelas de paredes, pisos, esquadrias e plantas | 1d | 2026-09-15 | 2026-09-15 | 1100 | 2026-09-15 | 2026-09-15 | 1d | 8d |
| 1118 | 3.6.1.2.4.17 | Quadro de áreas | 1d | 2026-09-15 | 2026-09-15 | 1100 | 2026-09-15 | 2026-09-15 | 1d | 0d |

| ID | WBS | Task | Duration | Start | Finish | Predecessors | Baseline start | Baseline finish | Baseline duration | Total slack |
| --- | --- | --- | --- | --- | --- | --- | --- | --- | --- | --- |
| 1119 | 3.6.1.2.5 | **Planta das coberturas** | 1d | 2026-09-16 | 2026-09-16 |  | 2026-09-16 | 2026-09-16 | 1d | 0d |
| 1120 | 3.6.1.2.5.1 | Indicação do Norte | 1d | 2026-09-16 | 2026-09-16 | 1118 | 2026-09-16 | 2026-09-16 | 1d | 7d |
| 1121 | 3.6.1.2.5.2 | Indicação de escala | 1d | 2026-09-16 | 2026-09-16 | 1118 | 2026-09-16 | 2026-09-16 | 1d | 7d |
| 1122 | 3.6.1.2.5.3 | Curvas de nível | 1d | 2026-09-16 | 2026-09-16 | 1118 | 2026-09-16 | 2026-09-16 | 1d | 7d |
| 1123 | 3.6.1.2.5.4 | Indicação de Acessos; | 1d | 2026-09-16 | 2026-09-16 | 1118 | 2026-09-16 | 2026-09-16 | 1d | 7d |
| 1124 | 3.6.1.2.5.5 | Estacionamento e áreas cobertas | 1d | 2026-09-16 | 2026-09-16 | 1118 | 2026-09-16 | 2026-09-16 | 1d | 7d |
| 1125 | 3.6.1.2.5.6 | Cobertura das edificações | 1d | 2026-09-16 | 2026-09-16 | 1118 | 2026-09-16 | 2026-09-16 | 1d | 7d |
| 1126 | 3.6.1.2.5.7 | Sentido de escoamento das águas pluviais e inclinação | 1d | 2026-09-16 | 2026-09-16 | 1118 | 2026-09-16 | 2026-09-16 | 1d | 7d |
| 1127 | 3.6.1.2.5.8 | Cotas gerais | 1d | 2026-09-16 | 2026-09-16 | 1118 | 2026-09-16 | 2026-09-16 | 1d | 7d |
| 1128 | 3.6.1.2.5.9 | Cotas de nível principal | 1d | 2026-09-16 | 2026-09-16 | 1118 | 2026-09-16 | 2026-09-16 | 1d | 0d |
| 1129 | 3.6.1.2.6 | **Cortes longitudinais** | 1d | 2026-09-17 | 2026-09-17 |  | 2026-09-17 | 2026-09-17 | 1d | 0d |
| 1130 | 3.6.1.2.6.1 | Indicar simbologias de representação gráfica, conforme NBR 6492:2021; | 1d | 2026-09-17 | 2026-09-17 | 1128 | 2026-09-17 | 2026-09-17 | 1d | 6d |
| 1131 | 3.6.1.2.6.2 | Indicação de Escala; | 1d | 2026-09-17 | 2026-09-17 | 1128 | 2026-09-17 | 2026-09-17 | 1d | 6d |
| 1132 | 3.6.1.2.6.3 | Elementos estruturais principais; | 1d | 2026-09-17 | 2026-09-17 | 1128 | 2026-09-17 | 2026-09-17 | 1d | 6d |
| 1133 | 3.6.1.2.6.4 | Elementos de vedação internos e externos; | 1d | 2026-09-17 | 2026-09-17 | 1128 | 2026-09-17 | 2026-09-17 | 1d | 6d |
| 1134 | 3.6.1.2.6.5 | Esquadrias; | 1d | 2026-09-17 | 2026-09-17 | 1128 | 2026-09-17 | 2026-09-17 | 1d | 6d |
| 1135 | 3.6.1.2.6.6 | Identificação dos ambientes; | 1d | 2026-09-17 | 2026-09-17 | 1128 | 2026-09-17 | 2026-09-17 | 1d | 6d |
| 1136 | 3.6.1.2.6.7 | Cobertura com indicação da respectiva inclinação; | 1d | 2026-09-17 | 2026-09-17 | 1128 | 2026-09-17 | 2026-09-17 | 1d | 6d |
| 1137 | 3.6.1.2.6.8 | Cotas gerais; | 1d | 2026-09-17 | 2026-09-17 | 1128 | 2026-09-17 | 2026-09-17 | 1d | 6d |
| 1138 | 3.6.1.2.6.9 | Cotas de nível principal; | 1d | 2026-09-17 | 2026-09-17 | 1128 | 2026-09-17 | 2026-09-17 | 1d | 6d |
| 1139 | 3.6.1.2.6.10 | Eixos do projeto; | 1d | 2026-09-17 | 2026-09-17 | 1128 | 2026-09-17 | 2026-09-17 | 1d | 6d |
| 1140 | 3.6.1.2.6.11 | Relevo construído; | 1d | 2026-09-17 | 2026-09-17 | 1128 | 2026-09-17 | 2026-09-17 | 1d | 6d |
| 1141 | 3.6.1.2.6.12 | Projeção da topografia natural. | 1d | 2026-09-17 | 2026-09-17 | 1128 | 2026-09-17 | 2026-09-17 | 1d | 0d |
| 1142 | 3.6.1.2.6.13 | Relatório | 1d | 2026-09-17 | 2026-09-17 | 1128 | 2026-09-17 | 2026-09-17 | 1d | 0d |

| ID | WBS | Task | Duration | Start | Finish | Predecessors | Baseline start | Baseline finish | Baseline duration | Total slack |
| --- | --- | --- | --- | --- | --- | --- | --- | --- | --- | --- |
| 1143 | 3.6.1.2.7 | **Cortes transversais** | 1d | 2026-09-18 | 2026-09-18 |  | 2026-09-18 | 2026-09-18 | 1d | 0d |
| 1144 | 3.6.1.2.7.1 | Indicar simbologias de representação gráfica, conforme NBR 6492:2021; | 1d | 2026-09-18 | 2026-09-18 | 1141 | 2026-09-18 | 2026-09-18 | 1d | 5d |
| 1145 | 3.6.1.2.7.2 | Indicação de Escala; | 1d | 2026-09-18 | 2026-09-18 | 1141 | 2026-09-18 | 2026-09-18 | 1d | 5d |
| 1146 | 3.6.1.2.7.3 | Elementos estruturais principais; | 1d | 2026-09-18 | 2026-09-18 | 1141 | 2026-09-18 | 2026-09-18 | 1d | 5d |
| 1147 | 3.6.1.2.7.4 | Elementos de vedação internos e externos; | 1d | 2026-09-18 | 2026-09-18 | 1141 | 2026-09-18 | 2026-09-18 | 1d | 5d |
| 1148 | 3.6.1.2.7.5 | Esquadrias; | 1d | 2026-09-18 | 2026-09-18 | 1141 | 2026-09-18 | 2026-09-18 | 1d | 5d |
| 1149 | 3.6.1.2.7.6 | Identificação dos ambientes; | 1d | 2026-09-18 | 2026-09-18 | 1141 | 2026-09-18 | 2026-09-18 | 1d | 5d |
| 1150 | 3.6.1.2.7.7 | Cobertura com indicação da respectiva inclinação; | 1d | 2026-09-18 | 2026-09-18 | 1141 | 2026-09-18 | 2026-09-18 | 1d | 5d |
| 1151 | 3.6.1.2.7.8 | Cotas gerais; | 1d | 2026-09-18 | 2026-09-18 | 1141 | 2026-09-18 | 2026-09-18 | 1d | 5d |
| 1152 | 3.6.1.2.7.9 | Cotas de nível principal; | 1d | 2026-09-18 | 2026-09-18 | 1141 | 2026-09-18 | 2026-09-18 | 1d | 5d |
| 1153 | 3.6.1.2.7.10 | Eixos do projeto; | 1d | 2026-09-18 | 2026-09-18 | 1141 | 2026-09-18 | 2026-09-18 | 1d | 5d |
| 1154 | 3.6.1.2.7.11 | Relevo construído; | 1d | 2026-09-18 | 2026-09-18 | 1141 | 2026-09-18 | 2026-09-18 | 1d | 5d |
| 1155 | 3.6.1.2.7.12 | Projeção da topografia natural | 1d | 2026-09-18 | 2026-09-18 | 1141 | 2026-09-18 | 2026-09-18 | 1d | 0d |
| 1156 | 3.6.1.2.8 | **Elevações** | 1d | 2026-09-21 | 2026-09-21 |  | 2026-09-21 | 2026-09-21 | 1d | 0d |
| 1157 | 3.6.1.2.8.1 | Indicar simbologias de representação gráfica, conforme NBR 6492:2021; | 1d | 2026-09-21 | 2026-09-21 | 1155 | 2026-09-21 | 2026-09-21 | 1d | 4d |
| 1158 | 3.6.1.2.8.2 | Indicação de Escala; | 1d | 2026-09-21 | 2026-09-21 | 1155 | 2026-09-21 | 2026-09-21 | 1d | 4d |
| 1159 | 3.6.1.2.8.3 | Elementos estruturais principais; | 1d | 2026-09-21 | 2026-09-21 | 1155 | 2026-09-21 | 2026-09-21 | 1d | 4d |
| 1160 | 3.6.1.2.8.4 | Elementos de vedação internos e externos; | 1d | 2026-09-21 | 2026-09-21 | 1155 | 2026-09-21 | 2026-09-21 | 1d | 4d |
| 1161 | 3.6.1.2.8.5 | Esquadrias (sem código e sem quadro); | 1d | 2026-09-21 | 2026-09-21 | 1155 | 2026-09-21 | 2026-09-21 | 1d | 4d |
| 1162 | 3.6.1.2.8.6 | Relevo construído; | 1d | 2026-09-21 | 2026-09-21 | 1155 | 2026-09-21 | 2026-09-21 | 1d | 4d |
| 1163 | 3.6.1.2.8.7 | Cotas gerais; | 1d | 2026-09-21 | 2026-09-21 | 1155 | 2026-09-21 | 2026-09-21 | 1d | 4d |
| 1164 | 3.6.1.2.8.8 | Cotas de nível principais; | 1d | 2026-09-21 | 2026-09-21 | 1155 | 2026-09-21 | 2026-09-21 | 1d | 4d |
| 1165 | 3.6.1.2.8.9 | Cobertura (quando aparente). | 1d | 2026-09-21 | 2026-09-21 | 1155 | 2026-09-21 | 2026-09-21 | 1d | 0d |
| 1166 | 3.6.1.2.9 | **Memorial Descritivo** | 4d | 2026-09-22 | 2026-09-25 |  | 2026-09-22 | 2026-09-25 | 4d | 0d |
| 1167 | 3.6.1.2.9.1 | Descrição dos elementos da edificação | 4d | 2026-09-22 | 2026-09-25 | 1165 | 2026-09-22 | 2026-09-25 | 4d | 0d |
| 1168 | 3.6.1.2.9.2 | Geração de imagens representando os itens dissertados no relatório | 4d | 2026-09-22 | 2026-09-25 | 1165 | 2026-09-22 | 2026-09-25 | 4d | 0d |
| 1169 | 3.6.1.2.9.3 | Descrição dos componentes construtivos e materiais de construção | 4d | 2026-09-22 | 2026-09-25 | 1165 | 2026-09-22 | 2026-09-25 | 4d | 0d |
| 1170 | 3.6.1.2.9.4 | Lista de pranchas anexas e documentos | 4d | 2026-09-22 | 2026-09-25 | 1165 | 2026-09-22 | 2026-09-25 | 4d | 0d |
| 1171 | 3.6.2 | Aprovação de Conformidade | 3d | 2026-09-23 | 2026-09-25 | 1166FF | 2026-09-23 | 2026-09-25 | 3d | 0d |
| 1172 | 3.6.3 | Material para entrega ao contrato | 3d | 2026-09-23 | 2026-09-25 | 1166FF | 2026-09-23 | 2026-09-25 | 3d | 0d |

| ID | WBS | Task | Duration | Start | Finish | Predecessors | Baseline start | Baseline finish | Baseline duration | Total slack | Free slack |
| --- | --- | --- | --- | --- | --- | --- | --- | --- | --- | --- | --- |
| 1173 | 3.6.4 | **Engenharia** | 38d | 2026-08-04 | 2026-09-25 |  | 2026-08-04 | 2026-09-25 | 38d | 0d |  |
| 1174 | 3.6.4.1 | **Estrutura** | 34d | 2026-08-10 | 2026-09-25 |  | 2026-08-10 | 2026-09-25 | 34d | 0d |  |
| 1175 | 3.6.4.1.1 | **LOD 100 — Premissas, diretrizes e interfaces** | 7d | 2026-08-10 | 2026-08-18 |  | 2026-08-10 | 2026-08-18 | 7d | 0d |  |
| 1176 | 3.6.4.1.1.1 | Levantamento de tipos de cargas globais estimadas (permanentes, acidentais, vento e especiais). | 2d | 2026-08-10 | 2026-08-11 | 1323SS+24d, 1067SS+24d, 811SS+24d, 555SS+24d, 299SS+24d, 114SS+24d | 2026-08-10 | 2026-08-11 | 2d | 32d |  |
| 1177 | 3.6.4.1.1.2 | Estudo volumétrico com modulação inicial de pilares, vigas e lajes. Entendendo vãos e desafios | 5d | 2026-08-10 | 2026-08-14 | 1323SS+24d, 1067SS+24d, 811SS+24d, 555SS+24d, 299SS+24d, 114SS+24d | 2026-08-10 | 2026-08-14 | 5d | 29d |  |
| 1178 | 3.6.4.1.1.3 | Localização aproximada de elementos estruturais principais. Avaliando vãos e estudando posições | 2d | 2026-08-10 | 2026-08-11 | 1323SS+24d, 1067SS+24d, 811SS+24d, 555SS+24d, 299SS+24d, 114SS+24d | 2026-08-10 | 2026-08-11 | 2d | 0d |  |
| 1179 | 3.6.4.1.1.4 | Estudo de viabilidade técnica e construtiva. | 3d | 2026-08-12 | 2026-08-14 | 1178 | 2026-08-12 | 2026-08-14 | 3d | 0d |  |
| 1180 | 3.6.4.1.1.5 | Definição preliminar do sistema estrutural (concreto armado, metálica ou mista). | 3d | 2026-08-12 | 2026-08-14 | 1178 | 2026-08-12 | 2026-08-14 | 3d | 29d |  |
| 1181 | 3.6.4.1.1.6 | Estimativa preliminar de tipologias de fundações (sapatas, blocos, estacas). | 2d | 2026-08-17 | 2026-08-18 | 1179 | 2026-08-17 | 2026-08-18 | 2d | 27d |  |
| 1182 | 3.6.4.1.1.7 | Previsão de áreas técnicas, casas de máquinas, reservatórios elevados e estrutura de cobertura. | 2d | 2026-08-17 | 2026-08-18 | 1179 | 2026-08-17 | 2026-08-18 | 2d | 0d |  |
| 1183 | 3.6.4.1.2 | **LOD 200 — Validação interdisciplinar e solução preliminar** | 20d | 2026-08-19 | 2026-09-16 |  | 2026-08-19 | 2026-09-16 | 20d | 0d |  |
| 1184 | 3.6.4.1.2.1 | Lista preliminar de cargas e ações para dimensionamento. | 5d | 2026-08-19 | 2026-08-25 | 1182 | 2026-08-19 | 2026-08-25 | 5d | 0d |  |
| 1185 | 3.6.4.1.2.2 | Definição preliminar de alturas de pavimentos e níveis de fundação. | 5d | 2026-08-19 | 2026-08-25 | 1182 | 2026-08-19 | 2026-08-25 | 5d | 22d |  |
| 1186 | 3.6.4.1.2.3 | Indicação aproximada do sistema de cobertura (tesouras, treliças, vigamento metálico ou concreto). | 5d | 2026-08-19 | 2026-08-25 | 1182 | 2026-08-19 | 2026-08-25 | 5d | 22d |  |
| 1187 | 3.6.4.1.2.4 | Modelagem genérica de pilares, vigas, lajes e fundações. | 5d | 2026-08-26 | 2026-09-01 | 1184 | 2026-08-26 | 2026-09-01 | 5d | 17d |  |
| 1188 | 3.6.4.1.2.5 | Traçado preliminar de elementos especiais (escadas, rampas estruturais, reservatórios). | 5d | 2026-08-26 | 2026-09-01 | 1184 | 2026-08-26 | 2026-09-01 | 5d | 12d | 0d |
| 1189 | 3.6.4.1.2.6 | Arquivo IFC, plantas de forma e planta de locação | 5d | 2026-08-26 | 2026-09-01 | 1184 | 2026-08-26 | 2026-09-01 | 5d | 0d |  |
| 1190 | 3.6.4.1.2.7 | Inserção de fundações com tipologia e dimensões preliminares. | 5d | 2026-09-02 | 2026-09-09 | 1188 | 2026-09-02 | 2026-09-09 | 5d | 12d |  |
| 1191 | 3.6.4.1.2.8 | Compatibilização inicial com arquitetura e demais disciplinas. | 5d | 2026-09-02 | 2026-09-09 | 1189 | 2026-09-02 | 2026-09-09 | 5d | 12d |  |
| 1192 | 3.6.4.1.2.9 | Indicação de passagens de infraestrutura (shafts, aberturas em lajes e vigas). | 5d | 2026-09-02 | 2026-09-09 | 1189 | 2026-09-02 | 2026-09-09 | 5d | 12d |  |
| 1193 | 3.6.4.1.2.10 | Modelagem assertiva de elementos principais com dimensões aproximadas (largura, altura, espessura). | 10d | 2026-09-02 | 2026-09-16 | 1189 | 2026-09-02 | 2026-09-16 | 10d | 0d |  |
| 1194 | 3.6.4.1.2.11 | Modelagem estimada de armaduras principais (em nível de concepção). | 5d | 2026-09-10 | 2026-09-16 | 1193FF | 2026-09-10 | 2026-09-16 | 5d | 0d |  |
| 1195 | 3.6.4.1.3 | **LOD 300 - Consolidação e documentação de entrega** | 7d | 2026-09-17 | 2026-09-25 |  | 2026-09-17 | 2026-09-25 | 7d | 0d |  |
| 1196 | 3.6.4.1.3.1 | Indicação de níveis e cotas exatas. | 7d | 2026-09-17 | 2026-09-25 | 1193, 1194 | 2026-09-17 | 2026-09-25 | 7d | 0d |  |
| 1197 | 3.6.4.1.3.2 | Quadro de cargas atualizado. | 7d | 2026-09-17 | 2026-09-25 | 1193, 1194 | 2026-09-17 | 2026-09-25 | 7d | 0d |  |
| 1198 | 3.6.4.1.3.3 | Dimensionamento final de fundações conforme sondagem e cálculo estrutural. | 7d | 2026-09-17 | 2026-09-25 | 1193, 1194 | 2026-09-17 | 2026-09-25 | 7d | 0d |  |
| 1199 | 3.6.4.1.3.4 | Definição final dos elementos da cobertura (treliças, vigas, chapas, purlins). | 7d | 2026-09-17 | 2026-09-25 | 1193, 1194 | 2026-09-17 | 2026-09-25 | 7d | 0d |  |
| 1200 | 3.6.4.1.3.5 | Compatibilização final com arquitetura e instalações (aberturas, embutidos e passagens). | 7d | 2026-09-17 | 2026-09-25 | 1193, 1194 | 2026-09-17 | 2026-09-25 | 7d | 0d |  |
| 1201 | 3.6.4.1.3.6 | Modelagem definitiva de pilares, vigas, lajes, blocos, sapatas e estacas. | 7d | 2026-09-17 | 2026-09-25 | 1193, 1194 | 2026-09-17 | 2026-09-25 | 7d | 0d |  |
| 1202 | 3.6.4.1.3.7 | Planta estrutural com todos os elementos identificados. | 7d | 2026-09-17 | 2026-09-25 | 1193, 1194 | 2026-09-17 | 2026-09-25 | 7d | 0d |  |
| 1203 | 3.6.4.1.3.8 | Memorial descritivo contendo: objetivos, justificativa, descrição do sistema, concepção de fundações/cobertura, especificações e quadro de cargas. | 7d | 2026-09-17 | 2026-09-25 | 1193, 1194 | 2026-09-17 | 2026-09-25 | 7d | 0d |  |
| 1204 | 3.6.4.1.3.9 | Normas técnicas utilizadas (NBR 6118, 6120, 6122, 8800, etc.). | 7d | 2026-09-17 | 2026-09-25 | 1193, 1194 | 2026-09-17 | 2026-09-25 | 7d | 0d |  |
| 1205 | 3.6.4.1.3.10 | Consolidar documentação de entrega e emissão formal da disciplina | 7d | 2026-09-17 | 2026-09-25 | 1193, 1194 | 2026-09-17 | 2026-09-25 | 7d | 0d |  |
| 1206 | 3.6.4.1.4 | Aprovação de Conformidade | 3d | 2026-09-23 | 2026-09-25 | 1195FF | 2026-09-23 | 2026-09-25 | 3d | 0d |  |
| 1207 | 3.6.4.1.5 | Material para entrega ao contrato | 3d | 2026-09-23 | 2026-09-25 | 1195FF | 2026-09-23 | 2026-09-25 | 3d | 0d |  |

| ID | WBS | Task | Duration | Start | Finish | Predecessors | Baseline start | Baseline finish | Baseline duration | Total slack | Free slack |
| --- | --- | --- | --- | --- | --- | --- | --- | --- | --- | --- | --- |
| 1208 | 3.6.4.2 | **Hidrossanitário** | 38d | 2026-08-04 | 2026-09-25 |  | 2026-08-04 | 2026-09-25 | 38d | 0d |  |
| 1209 | 3.6.4.2.1 | **LOD 100 — Premissas, diretrizes e interfaces** | 10d | 2026-08-04 | 2026-08-17 |  | 2026-08-04 | 2026-08-17 | 10d | 0d |  |
| 1210 | 3.6.4.2.1.1 | Memorial preliminar | 10d | 2026-08-04 | 2026-08-17 | 1323SS+20d, 1067SS+20d, 811SS+20d, 555SS+20d, 299SS+20d, 114SS+20d | 2026-08-04 | 2026-08-17 | 10d | 28d |  |
| 1211 | 3.6.4.2.1.2 | Indicação de áreas técnicas | 6d | 2026-08-04 | 2026-08-11 | 1323SS+20d, 1067SS+20d, 811SS+20d, 555SS+20d, 299SS+20d, 114SS+20d | 2026-08-04 | 2026-08-11 | 6d | 32d |  |
| 1212 | 3.6.4.2.1.3 | Planta baixa com traçado conceitual | 6d | 2026-08-04 | 2026-08-11 | 1323SS+20d, 1067SS+20d, 811SS+20d, 555SS+20d, 299SS+20d, 114SS+20d | 2026-08-04 | 2026-08-11 | 6d | 32d |  |
| 1213 | 3.6.4.2.1.4 | Pontos de consumo principais e coletas sanitárias | 6d | 2026-08-04 | 2026-08-11 | 1323SS+20d, 1067SS+20d, 811SS+20d, 555SS+20d, 299SS+20d, 114SS+20d | 2026-08-04 | 2026-08-11 | 6d | 32d |  |
| 1214 | 3.6.4.2.1.5 | Classificação de uso | 10d | 2026-08-04 | 2026-08-17 | 1323SS+20d, 1067SS+20d, 811SS+20d, 555SS+20d, 299SS+20d, 114SS+20d | 2026-08-04 | 2026-08-17 | 10d | 28d |  |
| 1215 | 3.6.4.2.1.6 | Diretrizes de espaço | 10d | 2026-08-04 | 2026-08-17 | 1323SS+20d, 1067SS+20d, 811SS+20d, 555SS+20d, 299SS+20d, 114SS+20d | 2026-08-04 | 2026-08-17 | 10d | 28d |  |
| 1216 | 3.6.4.2.1.7 | Estimativa de demanda ou população de uso | 10d | 2026-08-04 | 2026-08-17 | 1323SS+20d, 1067SS+20d, 811SS+20d, 555SS+20d, 299SS+20d, 114SS+20d | 2026-08-04 | 2026-08-17 | 10d | 28d |  |
| 1217 | 3.6.4.2.1.8 | Levantamento de elementos especiais dentre outras disciplinas de Engenharia e Arquitetura | 10d | 2026-08-04 | 2026-08-17 | 1323SS+20d, 1067SS+20d, 811SS+20d, 555SS+20d, 299SS+20d, 114SS+20d | 2026-08-04 | 2026-08-17 | 10d | 0d |  |
| 1218 | 3.6.4.2.2 | **LOD 200 — Validação interdisciplinar e solução preliminar** | 20d | 2026-08-18 | 2026-09-15 |  | 2026-08-18 | 2026-09-15 | 20d | 0d |  |
| 1219 | 3.6.4.2.2.1 | Critérios normativos adotados (ABNT, concessionárias, etc.) | 20d | 2026-08-18 | 2026-09-15 | 1217 | 2026-08-18 | 2026-09-15 | 20d | 8d | 0d |
| 1220 | 3.6.4.2.2.2 | Informações de demanda na concessionária (DPE ou AVT Aviso de Viabilidade Técnica) | 20d | 2026-08-18 | 2026-09-15 | 1219SS | 2026-08-18 | 2026-09-15 | 20d | 8d |  |
| 1221 | 3.6.4.2.2.3 | Estudo de viabilidade técnica, econômica e ambiental | 20d | 2026-08-18 | 2026-09-15 | 1219SS | 2026-08-18 | 2026-09-15 | 20d | 8d |  |
| 1222 | 3.6.4.2.2.4 | Lista preliminar de sistemas envolvidos. | 20d | 2026-08-18 | 2026-09-15 | 1217 | 2026-08-18 | 2026-09-15 | 20d | 8d |  |
| 1223 | 3.6.4.2.2.5 | Planta baixa estimada contendo: - Traçado preliminar | 20d | 2026-08-18 | 2026-09-15 | 1217 | 2026-08-18 | 2026-09-15 | 20d | 0d |  |
| 1224 | 3.6.4.2.3 | **LOD 300 - Consolidação e documentação de entrega** | 8d | 2026-09-16 | 2026-09-25 |  | 2026-09-16 | 2026-09-25 | 8d | 0d |  |
| 1225 | 3.6.4.2.3.1 | Prancha simplificada do projeto | 8d | 2026-09-16 | 2026-09-25 | 1223 | 2026-09-16 | 2026-09-25 | 8d | 0d |  |
| 1226 | 3.6.4.2.3.2 | Memorial descritivo | 3d | 2026-09-23 | 2026-09-25 | 1225FF | 2026-09-23 | 2026-09-25 | 3d | 0d |  |
| 1227 | 3.6.4.2.3.3 | Memória de cálculo (pressão, vazão, diâmetros, perda de carga). | 3d | 2026-09-23 | 2026-09-25 | 1223, 1225FF | 2026-09-23 | 2026-09-25 | 3d | 0d |  |
| 1228 | 3.6.4.2.4 | Aprovação de Conformidade | 3d | 2026-09-23 | 2026-09-25 | 1224FF | 2026-09-23 | 2026-09-25 | 3d | 0d |  |
| 1229 | 3.6.4.2.5 | Material para entrega ao contrato | 3d | 2026-09-23 | 2026-09-25 | 1224FF | 2026-09-23 | 2026-09-25 | 3d | 0d |  |
| 1230 | 3.6.4.3 | **AVAC** | 34d | 2026-08-10 | 2026-09-25 |  | 2026-08-10 | 2026-09-25 | 34d | 0d |  |
| 1231 | 3.6.4.3.1 | **LOD 100 — Premissas, diretrizes e interfaces** | 10d | 2026-08-10 | 2026-08-21 |  | 2026-08-10 | 2026-08-21 | 10d | 0d |  |
| 1232 | 3.6.4.3.1.1 | Estimativa de carga térmica por ambiente. | 10d | 2026-08-10 | 2026-08-21 | 1323SS+24d, 1067SS+24d, 811SS+24d, 555SS+24d, 299SS+24d, 114SS+24d | 2026-08-10 | 2026-08-21 | 10d | 24d |  |
| 1233 | 3.6.4.3.1.2 | Estudo de viabilidade e rotas principais de distribuição de ar. | 10d | 2026-08-10 | 2026-08-21 | 1323SS+24d, 1067SS+24d, 811SS+24d, 555SS+24d, 299SS+24d, 114SS+24d | 2026-08-10 | 2026-08-21 | 10d | 24d |  |
| 1234 | 3.6.4.3.1.3 | Reserva de espaços técnicos e shafts. | 10d | 2026-08-10 | 2026-08-21 | 1323SS+24d, 1067SS+24d, 811SS+24d, 555SS+24d, 299SS+24d, 114SS+24d | 2026-08-10 | 2026-08-21 | 10d | 0d |  |
| 1235 | 3.6.4.3.1.4 | Levantamento de cargas especiais provenientes de outras disciplinas. | 10d | 2026-08-10 | 2026-08-21 | 1323SS+24d, 1067SS+24d, 811SS+24d, 555SS+24d, 299SS+24d, 114SS+24d | 2026-08-10 | 2026-08-21 | 10d | 24d |  |

| ID | WBS | Task | Duration | Start | Finish | Predecessors | Baseline start | Baseline finish | Baseline duration | Total slack | Text3 |
| --- | --- | --- | --- | --- | --- | --- | --- | --- | --- | --- | --- |
| 1236 | 3.6.4.3.2 | **LOD 200 — Validação interdisciplinar e solução preliminar** | 24d | 2026-08-24 | 2026-09-25 |  | 2026-08-24 | 2026-09-25 | 24d | 0d |  |
| 1237 | 3.6.4.3.2.1 | Lista preliminar de sistemas HVAC envolvidos (expansão direta, VRF, chillers, ventilação, exaustão). | 24d | 2026-08-24 | 2026-09-25 | 1234 | 2026-08-24 | 2026-09-25 | 24d | 0d |  |
| 1238 | 3.6.4.3.3 | Aprovação de Conformidade | 3d | 2026-09-23 | 2026-09-25 | 1236FF | 2026-09-23 | 2026-09-25 | 3d | 0d |  |
| 1239 | 3.6.4.3.4 | Material para entrega ao contrato | 3d | 2026-09-23 | 2026-09-25 | 1236FF | 2026-09-23 | 2026-09-25 | 3d | 0d |  |
| 1240 | 3.6.4.4 | **PCI (Incêndio)** | 34d | 2026-08-10 | 2026-09-25 |  | 2026-08-10 | 2026-09-25 | 34d | 0d |  |
| 1241 | 3.6.4.4.1 | **LOD 100 — Premissas, diretrizes e interfaces** | 10d | 2026-08-10 | 2026-08-21 |  | 2026-08-10 | 2026-08-21 | 10d | 0d | ܁# |
| 1242 | 3.6.4.4.1.1 | Estudo e avaliação da arquitetura atendendo as normas competentes de PCI | 10d | 2026-08-10 | 2026-08-21 | 1323SS+24d, 1067SS+24d, 811SS+24d, 555SS+24d, 299SS+24d, 114SS+24d | 2026-08-10 | 2026-08-21 | 10d | 24d |  |
| 1243 | 3.6.4.4.1.2 | Avaliação do espaço para CMI e Central de Gás. | 10d | 2026-08-10 | 2026-08-21 | 1323SS+24d, 1067SS+24d, 811SS+24d, 555SS+24d, 299SS+24d, 114SS+24d | 2026-08-10 | 2026-08-21 | 10d | 24d |  |
| 1244 | 3.6.4.4.1.3 | Pontos locação para seus elementos no projeto arquitetônico | 10d | 2026-08-10 | 2026-08-21 | 1323SS+24d, 1067SS+24d, 811SS+24d, 555SS+24d, 299SS+24d, 114SS+24d | 2026-08-10 | 2026-08-21 | 10d | 0d |  |
| 1245 | 3.6.4.4.2 | **LOD 200 — Validação interdisciplinar e solução preliminar** | 24d | 2026-08-24 | 2026-09-25 |  | 2026-08-24 | 2026-09-25 | 24d | 0d | ܁# |
| 1246 | 3.6.4.4.2.1 | Definição da classificação da edificação e o risco de incêndio | 24d | 2026-08-24 | 2026-09-25 | 1244 | 2026-08-24 | 2026-09-25 | 24d | 0d |  |
| 1247 | 3.6.4.4.2.2 | Cálculos pré-dimensionados dos extintores, hidrantes e bomba. | 24d | 2026-08-24 | 2026-09-25 | 1244 | 2026-08-24 | 2026-09-25 | 24d | 0d |  |
| 1248 | 3.6.4.4.2.3 | Avaliação das rotas de fuga, ventilação de CMI e outros elementos de importância para as normas de PCI | 24d | 2026-08-24 | 2026-09-25 | 1244 | 2026-08-24 | 2026-09-25 | 24d | 0d |  |
| 1249 | 3.6.4.4.3 | Aprovação de Conformidade | 3d | 2026-09-23 | 2026-09-25 | 1245FF | 2026-09-23 | 2026-09-25 | 3d | 0d |  |
| 1250 | 3.6.4.4.4 | Material para entrega ao contrato | 3d | 2026-09-23 | 2026-09-25 | 1245FF | 2026-09-23 | 2026-09-25 | 3d | 0d |  |
| 1251 | 3.6.4.5 | **Elétrica Baixa Tensão** | 34d | 2026-08-10 | 2026-09-25 |  | 2026-08-10 | 2026-09-25 | 34d | 0d |  |
| 1252 | 3.6.4.5.1 | **LOD 100 — Concepção** | 10d | 2026-08-10 | 2026-08-21 |  | 2026-08-10 | 2026-08-21 | 10d | 0d |  |
| 1253 | 3.6.4.5.1.1 | Avaliação e Diretrizes Técnicas para Arquitetura | 6d | 2026-08-10 | 2026-08-17 | 1323SS+24d, 1067SS+24d, 811SS+24d, 555SS+24d, 299SS+24d, 114SS+24d | 2026-08-10 | 2026-08-17 | 6d | 28d |  |
| 1254 | 3.6.4.5.1.2 | Estimativa de Cargas e Demanda | 10d | 2026-08-10 | 2026-08-21 | 1323SS+24d, 1067SS+24d, 811SS+24d, 555SS+24d, 299SS+24d, 114SS+24d | 2026-08-10 | 2026-08-21 | 10d | 0d |  |
| 1255 | 3.6.4.5.1.3 | Levantamento de Equipamentos de Outras Disciplinas | 6d | 2026-08-10 | 2026-08-17 | 1323SS+24d, 1067SS+24d, 811SS+24d, 555SS+24d, 299SS+24d, 114SS+24d | 2026-08-10 | 2026-08-17 | 6d | 4d |  |
| 1256 | 3.6.4.5.2 | **LOD 200 — Anteprojeto** | 19d | 2026-08-24 | 2026-09-18 |  | 2026-08-24 | 2026-09-18 | 19d | 0d |  |
| 1257 | 3.6.4.5.2.1 | TUGs Estimados | 19d | 2026-08-24 | 2026-09-18 | 1254, 1255 | 2026-08-24 | 2026-09-18 | 19d | 0d |  |
| 1258 | 3.6.4.5.2.2 | Pontos de Luz Estimados | 19d | 2026-08-24 | 2026-09-18 | 1254, 1255 | 2026-08-24 | 2026-09-18 | 19d | 0d |  |
| 1259 | 3.6.4.5.2.3 | TUEs e Quadros Estimados | 19d | 2026-08-24 | 2026-09-18 | 1254, 1255 | 2026-08-24 | 2026-09-18 | 19d | 0d |  |
| 1260 | 3.6.4.5.3 | LOD 300 - Consolidação e documentação de entrega | 5d | 2026-09-21 | 2026-09-25 | 1256 | 2026-09-21 | 2026-09-25 | 5d | 0d |  |
| 1261 | 3.6.4.5.4 | Aprovação de Conformidade | 3d | 2026-09-23 | 2026-09-25 | 1260FF | 2026-09-23 | 2026-09-25 | 3d | 0d |  |
| 1262 | 3.6.4.5.5 | Material para entrega ao contrato | 3d | 2026-09-23 | 2026-09-25 | 1260FF | 2026-09-23 | 2026-09-25 | 3d | 0d |  |

| ID | WBS | Task | Duration | Start | Finish | Predecessors | Baseline start | Baseline finish | Baseline duration | Total slack |
| --- | --- | --- | --- | --- | --- | --- | --- | --- | --- | --- |
| 1263 | 3.6.4.6 | **Telecom** | 34d | 2026-08-10 | 2026-09-25 |  | 2026-08-10 | 2026-09-25 | 34d | 0d |
| 1264 | 3.6.4.6.1 | **LOD 100 — Concepção** | 10d | 2026-08-10 | 2026-08-21 |  | 2026-08-10 | 2026-08-21 | 10d | 0d |
| 1265 | 3.6.4.6.1.1 | Avaliação e Diretrizes Técnicas para Arquitetura | 10d | 2026-08-10 | 2026-08-21 | 1323SS+24d, 1067SS+24d, 811SS+24d, 555SS+24d, 299SS+24d, 114SS+24d | 2026-08-10 | 2026-08-21 | 10d | 24d |
| 1266 | 3.6.4.6.1.2 | Estimativa de Demanda de Telecomunicações | 10d | 2026-08-10 | 2026-08-21 | 1323SS+24d, 1067SS+24d, 811SS+24d, 555SS+24d, 299SS+24d, 114SS+24d | 2026-08-10 | 2026-08-21 | 10d | 24d |
| 1267 | 3.6.4.6.1.3 | Levantamento de Equipamentos e Interfaces com Outras Disciplinas | 10d | 2026-08-10 | 2026-08-21 | 1323SS+24d, 1067SS+24d, 811SS+24d, 555SS+24d, 299SS+24d, 114SS+24d | 2026-08-10 | 2026-08-21 | 10d | 0d |
| 1268 | 3.6.4.6.2 | **LOD 200 — Anteprojeto** | 20d | 2026-08-24 | 2026-09-21 |  | 2026-08-24 | 2026-09-21 | 20d | 0d |
| 1269 | 3.6.4.6.2.1 | Pontos de Telecomunicações Estimados (Rede, Voz, CFTV e Demais Sistemas) | 10d | 2026-08-24 | 2026-09-04 | 1267 | 2026-08-24 | 2026-09-04 | 10d | 0d |
| 1270 | 3.6.4.6.2.2 | Racks Estimados | 10d | 2026-08-24 | 2026-09-04 | 1267 | 2026-08-24 | 2026-09-04 | 10d | 0d |
| 1271 | 3.6.4.6.2.3 | Infraestrutura de Telecomunicações Preliminar | 10d | 2026-09-08 | 2026-09-21 | 1269, 1270 | 2026-09-08 | 2026-09-21 | 10d | 0d |
| 1272 | 3.6.4.6.3 | LOD 300 - Consolidação e documentação de entrega | 4d | 2026-09-22 | 2026-09-25 | 1268 | 2026-09-22 | 2026-09-25 | 4d | 0d |
| 1273 | 3.6.4.6.4 | Aprovação de Conformidade | 3d | 2026-09-23 | 2026-09-25 | 1272FF | 2026-09-23 | 2026-09-25 | 3d | 0d |
| 1274 | 3.6.4.6.5 | Material para entrega ao contrato | 3d | 2026-09-23 | 2026-09-25 | 1272FF | 2026-09-23 | 2026-09-25 | 3d | 0d |
| 1275 | 3.6.4.7 | **Subestação** | 34d | 2026-08-10 | 2026-09-25 |  | 2026-08-10 | 2026-09-25 | 34d | 0d |
| 1276 | 3.6.4.7.1 | **LOD 100 — Concepção** | 10d | 2026-08-10 | 2026-08-21 |  | 2026-08-10 | 2026-08-21 | 10d | 0d |
| 1277 | 3.6.4.7.1.1 | Avaliação e Diretrizes Técnicas para Arquitetura | 10d | 2026-08-10 | 2026-08-21 | 1323SS+24d, 1067SS+24d, 811SS+24d, 555SS+24d, 299SS+24d, 114SS+24d | 2026-08-10 | 2026-08-21 | 10d | 24d |
| 1278 | 3.6.4.7.1.2 | Levantamento de Demanda, Perfil de Consumo e Ponto de Entrega | 10d | 2026-08-10 | 2026-08-21 | 1323SS+24d, 1067SS+24d, 811SS+24d, 555SS+24d, 299SS+24d, 114SS+24d | 2026-08-10 | 2026-08-21 | 10d | 24d |
| 1279 | 3.6.4.7.1.3 | Estudo de Viabilidade Técnica e Atendimento ao Padrão da Concessionária | 10d | 2026-08-10 | 2026-08-21 | 1323SS+24d, 1067SS+24d, 811SS+24d, 555SS+24d, 299SS+24d, 114SS+24d | 2026-08-10 | 2026-08-21 | 10d | 0d |
| 1280 | 3.6.4.7.2 | **LOD 200 — Anteprojeto** | 20d | 2026-08-24 | 2026-09-21 |  | 2026-08-24 | 2026-09-21 | 20d | 0d |
| 1281 | 3.6.4.7.2.1 | Definição do Tipo de Subestação e Arranjo Físico Preliminar | 10d | 2026-08-24 | 2026-09-04 | 1279 | 2026-08-24 | 2026-09-04 | 10d | 0d |
| 1282 | 3.6.4.7.2.2 | Dimensionamento Preliminar do Transformador e Equipamentos Principais | 10d | 2026-09-08 | 2026-09-21 | 1281 | 2026-09-08 | 2026-09-21 | 10d | 0d |
| 1283 | 3.6.4.7.2.3 | Diretrizes Preliminares de Aterramento | 10d | 2026-09-08 | 2026-09-21 | 1281 | 2026-09-08 | 2026-09-21 | 10d | 0d |
| 1284 | 3.6.4.7.3 | LOD 300 - Consolidação e documentação de entrega | 4d | 2026-09-22 | 2026-09-25 | 1280 | 2026-09-22 | 2026-09-25 | 4d | 0d |
| 1285 | 3.6.4.7.4 | Aprovação de Conformidade | 3d | 2026-09-23 | 2026-09-25 | 1284FF | 2026-09-23 | 2026-09-25 | 3d | 0d |
| 1286 | 3.6.4.7.5 | Material para entrega ao contrato | 3d | 2026-09-23 | 2026-09-25 | 1284FF | 2026-09-23 | 2026-09-25 | 3d | 0d |

| ID | WBS | Task | Duration | Start | Finish | Predecessors | Baseline start | Baseline finish | Baseline duration | Total slack |
| --- | --- | --- | --- | --- | --- | --- | --- | --- | --- | --- |
| 1287 | 3.6.4.8 | **SPDA** | 34d | 2026-08-10 | 2026-09-25 |  | 2026-08-10 | 2026-09-25 | 34d | 0d |
| 1288 | 3.6.4.8.1 | **LOD 100 — Concepção** | 10d | 2026-08-10 | 2026-08-21 |  | 2026-08-10 | 2026-08-21 | 10d | 0d |
| 1289 | 3.6.4.8.1.1 | Avaliação e Diretrizes Técnicas para Arquitetura | 10d | 2026-08-10 | 2026-08-21 | 1323SS+24d, 1067SS+24d, 811SS+24d, 555SS+24d, 299SS+24d, 114SS+24d | 2026-08-10 | 2026-08-21 | 10d | 24d |
| 1290 | 3.6.4.8.1.2 | Coleta de Informações da Edificação e Análise de Risco (ABNT NBR 5419-2) | 10d | 2026-08-10 | 2026-08-21 | 1323SS+24d, 1067SS+24d, 811SS+24d, 555SS+24d, 299SS+24d, 114SS+24d | 2026-08-10 | 2026-08-21 | 10d | 24d |
| 1291 | 3.6.4.8.1.3 | Estudo Preliminar de Necessidade e Nível de Proteção do SPDA | 10d | 2026-08-10 | 2026-08-21 | 1323SS+24d, 1067SS+24d, 811SS+24d, 555SS+24d, 299SS+24d, 114SS+24d | 2026-08-10 | 2026-08-21 | 10d | 0d |
| 1292 | 3.6.4.8.2 | **LOD 200 — Anteprojeto** | 20d | 2026-08-24 | 2026-09-21 |  | 2026-08-24 | 2026-09-21 | 20d | 0d |
| 1293 | 3.6.4.8.2.1 | Definição da Estratégia de Proteção e Soluções Técnicas | 10d | 2026-08-24 | 2026-09-04 | 1291 | 2026-08-24 | 2026-09-04 | 10d | 0d |
| 1294 | 3.6.4.8.2.2 | Zoneamento de Captação, Descida e Traçados Preliminares | 10d | 2026-09-08 | 2026-09-21 | 1293 | 2026-09-08 | 2026-09-21 | 10d | 4d |
| 1295 | 3.6.4.8.2.3 | Estudo de Interferências, Compatibilização e Métodos Construtivos | 10d | 2026-09-08 | 2026-09-21 | 1293 | 2026-09-08 | 2026-09-21 | 10d | 0d |
| 1296 | 3.6.4.8.3 | LOD 300 - Consolidação e documentação de entrega | 4d | 2026-09-22 | 2026-09-25 | 1295 | 2026-09-22 | 2026-09-25 | 4d | 0d |
| 1297 | 3.6.4.8.4 | Aprovação de Conformidade | 3d | 2026-09-23 | 2026-09-25 | 1296FF | 2026-09-23 | 2026-09-25 | 3d | 0d |
| 1298 | 3.6.4.8.5 | Material para entrega ao contrato | 3d | 2026-09-23 | 2026-09-25 | 1296FF | 2026-09-23 | 2026-09-25 | 3d | 0d |
| 1299 | 3.6.4.9 | **Energia Renovável** | 34d | 2026-08-10 | 2026-09-25 |  | 2026-08-10 | 2026-09-25 | 34d | 0d |
| 1300 | 3.6.4.9.1 | **LOD 100 — Concepção** | 10d | 2026-08-10 | 2026-08-21 |  | 2026-08-10 | 2026-08-21 | 10d | 0d |
| 1301 | 3.6.4.9.1.1 | Viabilidade e Premissas de Geração | 10d | 2026-08-10 | 2026-08-21 | 1323SS+24d, 1067SS+24d, 811SS+24d, 555SS+24d, 299SS+24d, 114SS+24d | 2026-08-10 | 2026-08-21 | 10d | 24d |
| 1302 | 3.6.4.9.1.2 | Levantamento Preliminar de Áreas e Sombreamento | 10d | 2026-08-10 | 2026-08-21 | 1323SS+24d, 1067SS+24d, 811SS+24d, 555SS+24d, 299SS+24d, 114SS+24d | 2026-08-10 | 2026-08-21 | 10d | 0d |
| 1303 | 3.6.4.9.1.3 | Avaliação e Diretrizes Técnicas para Arquitetônico | 10d | 2026-08-10 | 2026-08-21 | 1323SS+24d, 1067SS+24d, 811SS+24d, 555SS+24d, 299SS+24d, 114SS+24d | 2026-08-10 | 2026-08-21 | 10d | 24d |
| 1304 | 3.6.4.9.2 | **LOD 200 — Anteprojeto** | 20d | 2026-08-24 | 2026-09-21 |  | 2026-08-24 | 2026-09-21 | 20d | 0d |
| 1305 | 3.6.4.9.2.1 | Layout Preliminar de Módulos, Inversores e String Boxes | 20d | 2026-08-24 | 2026-09-21 | 1302 | 2026-08-24 | 2026-09-21 | 20d | 0d |
| 1306 | 3.6.4.9.2.2 | Infraestrutura e Rotas Técnicas Preliminares (DC/AC e Aterramento) | 20d | 2026-08-24 | 2026-09-21 | 1302 | 2026-08-24 | 2026-09-21 | 20d | 0d |
| 1307 | 3.6.4.9.2.3 | Critérios Preliminares de Proteção e Estimativa de Quantitativos | 20d | 2026-08-24 | 2026-09-21 | 1302 | 2026-08-24 | 2026-09-21 | 20d | 0d |
| 1308 | 3.6.4.9.3 | LOD 300 - Consolidação e documentação de entrega | 4d | 2026-09-22 | 2026-09-25 | 1304 | 2026-09-22 | 2026-09-25 | 4d | 0d |
| 1309 | 3.6.4.9.4 | Aprovação de Conformidade | 3d | 2026-09-23 | 2026-09-25 | 1308FF | 2026-09-23 | 2026-09-25 | 3d | 0d |
| 1310 | 3.6.4.9.5 | Material para entrega ao contrato | 3d | 2026-09-23 | 2026-09-25 | 1308FF | 2026-09-23 | 2026-09-25 | 3d | 0d |

| ID | WBS | Task | Duration | Start | Finish | Predecessors | Complete | Remaining | Baseline start | Baseline finish | Baseline duration | Total slack |
| --- | --- | --- | --- | --- | --- | --- | --- | --- | --- | --- | --- | --- |
| 1311 | 3.7 | **7 - Cmp Profissionais** | 100d | 2026-05-07 A | 2026-09-25 |  | 14% | 86.11d | 2026-05-07 | 2026-09-25 | 100d | 0d |
| 1312 | 3.7.1 | **Arquitetura** | 100d | 2026-05-07 A | 2026-09-25 |  | 30% | 69.76d | 2026-05-07 | 2026-09-25 | 100d | 0d |
| 1313 | 3.7.1.1 | **Análise e Compatibilização (caso a gente receba o projeto e precise adequar)** | 84d | 2026-05-07 A | 2026-09-02 |  | 30% | 59.16d | 2026-05-07 | 2026-09-02 | 84d | 16d |
| 1314 | 3.7.1.1.1 | Analisar topografia | 42d | 2026-05-07 | 2026-07-06 |  |  |  | 2026-05-07 | 2026-07-06 | 42d | 58d |
| 1315 | 3.7.1.1.2 | Criação e georreferenciamento e ajuste de norte nos arquivos federado, arquitetura, implantação, layout | 42d | 2026-05-07 | 2026-07-06 |  |  |  | 2026-05-07 | 2026-07-06 | 42d | 0d |
| 1316 | 3.7.1.1.3 | Analise geral do projeto | 42d | 2026-05-07 A | 2026-07-06 A |  | 100% |  | 2026-05-07 | 2026-07-06 | 42d |  |
| 1317 | 3.7.1.1.4 | Verificar acessibilidade dos espaços de acordo com a norma e sistematizar ajustes | 42d | 2026-05-07 A | 2026-07-06 A |  | 100% |  | 2026-05-07 | 2026-07-06 | 42d |  |
| 1318 | 3.7.1.1.5 | Conferir paredes | 42d | 2026-05-07 A | 2026-07-06 A |  | 100% |  | 2026-05-07 | 2026-07-06 | 42d |  |
| 1319 | 3.7.1.1.6 | Conferir Pisos | 42d | 2026-05-07 A | 2026-07-06 A |  | 100% |  | 2026-05-07 | 2026-07-06 | 42d |  |
| 1320 | 3.7.1.1.7 | Conferir Esquadrias | 42d | 2026-05-07 | 2026-07-06 |  |  |  | 2026-05-07 | 2026-07-06 | 42d | 58d |
| 1321 | 3.7.1.1.8 | Conferir Mobiliário | 42d | 2026-05-07 | 2026-07-06 |  |  |  | 2026-05-07 | 2026-07-06 | 42d | 58d |
| 1322 | 3.7.1.1.9 | Compatibilização disciplinas engenharia e sistematização incrementos e ajustes | 42d | 2026-07-07 | 2026-09-02 | 1315 |  |  | 2026-07-07 | 2026-09-02 | 42d | 16d |
| 1323 | 3.7.1.1.10 | Compatibilização com normas técnicas | 38d | 2026-07-07 | 2026-08-27 | 1315 |  |  | 2026-07-07 | 2026-08-27 | 38d | 0d |
| 1324 | 3.7.1.1.11 | Compatibilização padrão Quanta | 38d | 2026-07-07 | 2026-08-27 | 1315 |  |  | 2026-07-07 | 2026-08-27 | 38d | 20d |
| 1325 | 3.7.1.1.12 | Verficar se elementos estão associados aos níveis corretos e sistematizar ajustes | 38d | 2026-07-07 | 2026-08-27 | 1315 |  |  | 2026-07-07 | 2026-08-27 | 38d | 20d |
| 1326 | 3.7.1.1.13 | Revisão de perímetro do terreno, recuos, taxa de ocupação e afastamentos | 38d | 2026-07-07 | 2026-08-27 | 1315 |  |  | 2026-07-07 | 2026-08-27 | 38d | 20d |
| 1327 | 3.7.1.1.14 | Relatório/Memorial de Compatibilização | 38d | 2026-07-07 | 2026-08-27 | 1315 |  |  | 2026-07-07 | 2026-08-27 | 38d | 0d |
| 1328 | 3.7.1.2 | **LOD 300 - ANTEPROJETO** | 20d | 2026-08-28 A | 2026-09-25 |  | 32% | 13.61d | 2026-08-28 | 2026-09-25 | 20d | 0d |
| 1329 | 3.7.1.2.1 | **Modelagem e compatibilização** | 10d | 2026-08-28 A | 2026-09-11 |  | 54% | 4.62d | 2026-08-28 | 2026-09-11 | 10d | 10d |
| 1330 | 3.7.1.2.1.1 | Modelagem ajustes topografia | 10d | 2026-08-28 | 2026-09-11 | 1327 |  |  | 2026-08-28 | 2026-09-11 | 10d | 10d |
| 1331 | 3.7.1.2.1.2 | Mudar pisos para o padrão Quanta | 10d | 2026-08-28 A | 2026-09-11 A | 1327 | 100% |  | 2026-08-28 | 2026-09-11 | 10d |  |
| 1332 | 3.7.1.2.1.3 | Mudar paredes para o padrão Quanta | 10d | 2026-08-28 A | 2026-09-11 A | 1327 | 100% |  | 2026-08-28 | 2026-09-11 | 10d |  |
| 1333 | 3.7.1.2.1.4 | Mudar esquadrias para o padrão Quanta | 10d | 2026-08-28 | 2026-09-11 | 1327 |  |  | 2026-08-28 | 2026-09-11 | 10d | 10d |
| 1334 | 3.7.1.2.1.5 | Mudar metais para o padrão Quanta | 10d | 2026-08-28 A | 2026-09-11 A | 1327 | 100% |  | 2026-08-28 | 2026-09-11 | 10d |  |
| 1335 | 3.7.1.2.1.6 | Mudar louças para o padrão Quanta | 10d | 2026-08-28 A | 2026-09-11 A | 1327 | 100% |  | 2026-08-28 | 2026-09-11 | 10d |  |
| 1336 | 3.7.1.2.1.7 | Modelagem acessos e vias necessárias a implantação | 10d | 2026-08-28 A | 2026-09-11 A | 1327 | 100% |  | 2026-08-28 | 2026-09-11 | 10d |  |
| 1337 | 3.7.1.2.1.8 | Modelagem passeios e canteiros | 10d | 2026-08-28 A | 2026-09-11 A | 1327 | 100% |  | 2026-08-28 | 2026-09-11 | 10d |  |
| 1338 | 3.7.1.2.1.9 | Modelagem estacionamentos | 10d | 2026-08-28 A | 2026-09-11 A | 1327 | 100% |  | 2026-08-28 | 2026-09-11 | 10d |  |
| 1339 | 3.7.1.2.1.10 | Modelagem subestação elétrica | 10d | 2026-08-28 | 2026-09-11 | 1327 |  |  | 2026-08-28 | 2026-09-11 | 10d | 10d |
| 1340 | 3.7.1.2.1.11 | Modelagem ETE | 10d | 2026-08-28 | 2026-09-11 | 1327 |  |  | 2026-08-28 | 2026-09-11 | 10d | 10d |
| 1341 | 3.7.1.2.1.12 | Modelagem PCI | 10d | 2026-08-28 | 2026-09-11 | 1327 |  |  | 2026-08-28 | 2026-09-11 | 10d | 10d |
| 1342 | 3.7.1.2.1.13 | Modelagem/ajustes caixa d'água | 10d | 2026-08-28 | 2026-09-11 | 1327 |  |  | 2026-08-28 | 2026-09-11 | 10d | 0d |

| ID | WBS | Task | Duration | Start | Finish | Predecessors | Baseline start | Baseline finish | Baseline duration | Total slack |
| --- | --- | --- | --- | --- | --- | --- | --- | --- | --- | --- |
| 1343 | 3.7.1.2.2 | **Situação** | 1d | 2026-09-14 | 2026-09-14 |  | 2026-09-14 | 2026-09-14 | 1d | 0d |
| 1344 | 3.7.1.2.2.1 | Indicar simbologias de representação gráfica, conforme NBR 6492:2021; | 1d | 2026-09-14 | 2026-09-14 | 1342 | 2026-09-14 | 2026-09-14 | 1d | 9d |
| 1345 | 3.7.1.2.2.2 | Indicação Norte | 1d | 2026-09-14 | 2026-09-14 | 1342 | 2026-09-14 | 2026-09-14 | 1d | 9d |
| 1346 | 3.7.1.2.2.3 | Analisar, adicionar e fechar - Curvas de nível existentes e projetadas (conforme projetos de topografia e sondagem recebidos); | 1d | 2026-09-14 | 2026-09-14 | 1342 | 2026-09-14 | 2026-09-14 | 1d | 9d |
| 1347 | 3.7.1.2.2.4 | Indicação de Escala; | 1d | 2026-09-14 | 2026-09-14 | 1342 | 2026-09-14 | 2026-09-14 | 1d | 9d |
| 1348 | 3.7.1.2.2.5 | Vias de acesso ao conjunto, arruamento, logradouros adjacentes e calçadas com os respectivos equipamentos urbanos; | 1d | 2026-09-14 | 2026-09-14 | 1342 | 2026-09-14 | 2026-09-14 | 1d | 9d |
| 1349 | 3.7.1.2.2.6 | Platôs e taludes principais; | 1d | 2026-09-14 | 2026-09-14 | 1342 | 2026-09-14 | 2026-09-14 | 1d | 9d |
| 1350 | 3.7.1.2.2.7 | Perímetro do terreno, recuos e afastamentos; | 1d | 2026-09-14 | 2026-09-14 | 1342 | 2026-09-14 | 2026-09-14 | 1d | 9d |
| 1351 | 3.7.1.2.2.8 | Indicação das áreas a serem edificadas com o contorno da cobertura das edificações, estacionamentos e áreas permeáveis/impermeáveis; | 1d | 2026-09-14 | 2026-09-14 | 1342 | 2026-09-14 | 2026-09-14 | 1d | 9d |
| 1352 | 3.7.1.2.2.9 | Denominação das edificações, blocos ou espaços; | 1d | 2026-09-14 | 2026-09-14 | 1342 | 2026-09-14 | 2026-09-14 | 1d | 9d |
| 1353 | 3.7.1.2.2.10 | Cotas gerais | 1d | 2026-09-14 | 2026-09-14 | 1342 | 2026-09-14 | 2026-09-14 | 1d | 9d |
| 1354 | 3.7.1.2.2.11 | Cotas de nível principal. | 1d | 2026-09-14 | 2026-09-14 | 1342 | 2026-09-14 | 2026-09-14 | 1d | 9d |
| 1355 | 3.7.1.2.2.12 | Quadros de áreas | 1d | 2026-09-14 | 2026-09-14 | 1342 | 2026-09-14 | 2026-09-14 | 1d | 0d |
| 1356 | 3.7.1.2.3 | Planta com as cotas de nível projetadas e existentes | 1d | 2026-09-14 | 2026-09-14 | 1355SS | 2026-09-14 | 2026-09-14 | 1d | 0d |
| 1357 | 3.7.1.2.4 | **Plantas baixas (se tiver mais de um pavimento, duplicar bloco)** | 1d | 2026-09-15 | 2026-09-15 |  | 2026-09-15 | 2026-09-15 | 1d | 0d |
| 1358 | 3.7.1.2.4.1 | Indicar simbologias de representação gráfica, conforme NBR 6492:2021; | 1d | 2026-09-15 | 2026-09-15 | 1356 | 2026-09-15 | 2026-09-15 | 1d | 8d |
| 1359 | 3.7.1.2.4.2 | Compatibilização (verificar se está tudo conforme as normas e alinhar com o restante das disciplinas de engenharia) | 1d | 2026-09-15 | 2026-09-15 | 1356 | 2026-09-15 | 2026-09-15 | 1d | 8d |
| 1360 | 3.7.1.2.4.3 | Compatibilização (deixar tudo conforme padrão Quanta) | 1d | 2026-09-15 | 2026-09-15 | 1356 | 2026-09-15 | 2026-09-15 | 1d | 8d |
| 1361 | 3.7.1.2.4.4 | Indicação de Norte; | 1d | 2026-09-15 | 2026-09-15 | 1356 | 2026-09-15 | 2026-09-15 | 1d | 8d |
| 1362 | 3.7.1.2.4.5 | Indicação de Escala; | 1d | 2026-09-15 | 2026-09-15 | 1356 | 2026-09-15 | 2026-09-15 | 1d | 8d |
| 1363 | 3.7.1.2.4.6 | Indicação de Acessos; | 1d | 2026-09-15 | 2026-09-15 | 1356 | 2026-09-15 | 2026-09-15 | 1d | 8d |
| 1364 | 3.7.1.2.4.7 | Elementos de vedação internos e externos; | 1d | 2026-09-15 | 2026-09-15 | 1356 | 2026-09-15 | 2026-09-15 | 1d | 8d |
| 1365 | 3.7.1.2.4.8 | Esquadrias (sem código e sem quadro); | 1d | 2026-09-15 | 2026-09-15 | 1356 | 2026-09-15 | 2026-09-15 | 1d | 8d |
| 1366 | 3.7.1.2.4.9 | Elementos estruturais principais; | 1d | 2026-09-15 | 2026-09-15 | 1356 | 2026-09-15 | 2026-09-15 | 1d | 8d |
| 1367 | 3.7.1.2.4.10 | Identificação dos ambientes e espaços (internos e externos); | 1d | 2026-09-15 | 2026-09-15 | 1356 | 2026-09-15 | 2026-09-15 | 1d | 8d |
| 1368 | 3.7.1.2.4.11 | Espaços de circulação internos e externos; | 1d | 2026-09-15 | 2026-09-15 | 1356 | 2026-09-15 | 2026-09-15 | 1d | 8d |
| 1369 | 3.7.1.2.4.12 | Áreas de serviço, funcionais e técnicas (internos e externos); | 1d | 2026-09-15 | 2026-09-15 | 1356 | 2026-09-15 | 2026-09-15 | 1d | 8d |
| 1370 | 3.7.1.2.4.13 | Projeções de níveis superiores; | 1d | 2026-09-15 | 2026-09-15 | 1356 | 2026-09-15 | 2026-09-15 | 1d | 8d |
| 1371 | 3.7.1.2.4.14 | Cotas gerais | 1d | 2026-09-15 | 2026-09-15 | 1356 | 2026-09-15 | 2026-09-15 | 1d | 8d |
| 1372 | 3.7.1.2.4.15 | Cotas de nível principal. | 1d | 2026-09-15 | 2026-09-15 | 1356 | 2026-09-15 | 2026-09-15 | 1d | 8d |
| 1373 | 3.7.1.2.4.16 | Tabelas de paredes, pisos, esquadrias e plantas | 1d | 2026-09-15 | 2026-09-15 | 1356 | 2026-09-15 | 2026-09-15 | 1d | 8d |
| 1374 | 3.7.1.2.4.17 | Quadro de áreas | 1d | 2026-09-15 | 2026-09-15 | 1356 | 2026-09-15 | 2026-09-15 | 1d | 0d |

| ID | WBS | Task | Duration | Start | Finish | Predecessors | Baseline start | Baseline finish | Baseline duration | Total slack |
| --- | --- | --- | --- | --- | --- | --- | --- | --- | --- | --- |
| 1375 | 3.7.1.2.5 | **Planta das coberturas** | 1d | 2026-09-16 | 2026-09-16 |  | 2026-09-16 | 2026-09-16 | 1d | 0d |
| 1376 | 3.7.1.2.5.1 | Indicação do Norte | 1d | 2026-09-16 | 2026-09-16 | 1374 | 2026-09-16 | 2026-09-16 | 1d | 7d |
| 1377 | 3.7.1.2.5.2 | Indicação de escala | 1d | 2026-09-16 | 2026-09-16 | 1374 | 2026-09-16 | 2026-09-16 | 1d | 7d |
| 1378 | 3.7.1.2.5.3 | Curvas de nível | 1d | 2026-09-16 | 2026-09-16 | 1374 | 2026-09-16 | 2026-09-16 | 1d | 7d |
| 1379 | 3.7.1.2.5.4 | Indicação de Acessos; | 1d | 2026-09-16 | 2026-09-16 | 1374 | 2026-09-16 | 2026-09-16 | 1d | 7d |
| 1380 | 3.7.1.2.5.5 | Estacionamento e áreas cobertas | 1d | 2026-09-16 | 2026-09-16 | 1374 | 2026-09-16 | 2026-09-16 | 1d | 7d |
| 1381 | 3.7.1.2.5.6 | Cobertura das edificações | 1d | 2026-09-16 | 2026-09-16 | 1374 | 2026-09-16 | 2026-09-16 | 1d | 7d |
| 1382 | 3.7.1.2.5.7 | Sentido de escoamento das águas pluviais e inclinação | 1d | 2026-09-16 | 2026-09-16 | 1374 | 2026-09-16 | 2026-09-16 | 1d | 7d |
| 1383 | 3.7.1.2.5.8 | Cotas gerais | 1d | 2026-09-16 | 2026-09-16 | 1374 | 2026-09-16 | 2026-09-16 | 1d | 7d |
| 1384 | 3.7.1.2.5.9 | Cotas de nível principal | 1d | 2026-09-16 | 2026-09-16 | 1374 | 2026-09-16 | 2026-09-16 | 1d | 0d |
| 1385 | 3.7.1.2.6 | **Cortes longitudinais** | 1d | 2026-09-17 | 2026-09-17 |  | 2026-09-17 | 2026-09-17 | 1d | 0d |
| 1386 | 3.7.1.2.6.1 | Indicar simbologias de representação gráfica, conforme NBR 6492:2021; | 1d | 2026-09-17 | 2026-09-17 | 1384 | 2026-09-17 | 2026-09-17 | 1d | 6d |
| 1387 | 3.7.1.2.6.2 | Indicação de Escala; | 1d | 2026-09-17 | 2026-09-17 | 1384 | 2026-09-17 | 2026-09-17 | 1d | 6d |
| 1388 | 3.7.1.2.6.3 | Elementos estruturais principais; | 1d | 2026-09-17 | 2026-09-17 | 1384 | 2026-09-17 | 2026-09-17 | 1d | 6d |
| 1389 | 3.7.1.2.6.4 | Elementos de vedação internos e externos; | 1d | 2026-09-17 | 2026-09-17 | 1384 | 2026-09-17 | 2026-09-17 | 1d | 6d |
| 1390 | 3.7.1.2.6.5 | Esquadrias; | 1d | 2026-09-17 | 2026-09-17 | 1384 | 2026-09-17 | 2026-09-17 | 1d | 6d |
| 1391 | 3.7.1.2.6.6 | Identificação dos ambientes; | 1d | 2026-09-17 | 2026-09-17 | 1384 | 2026-09-17 | 2026-09-17 | 1d | 6d |
| 1392 | 3.7.1.2.6.7 | Cobertura com indicação da respectiva inclinação; | 1d | 2026-09-17 | 2026-09-17 | 1384 | 2026-09-17 | 2026-09-17 | 1d | 6d |
| 1393 | 3.7.1.2.6.8 | Cotas gerais; | 1d | 2026-09-17 | 2026-09-17 | 1384 | 2026-09-17 | 2026-09-17 | 1d | 6d |
| 1394 | 3.7.1.2.6.9 | Cotas de nível principal; | 1d | 2026-09-17 | 2026-09-17 | 1384 | 2026-09-17 | 2026-09-17 | 1d | 6d |
| 1395 | 3.7.1.2.6.10 | Eixos do projeto; | 1d | 2026-09-17 | 2026-09-17 | 1384 | 2026-09-17 | 2026-09-17 | 1d | 6d |
| 1396 | 3.7.1.2.6.11 | Relevo construído; | 1d | 2026-09-17 | 2026-09-17 | 1384 | 2026-09-17 | 2026-09-17 | 1d | 6d |
| 1397 | 3.7.1.2.6.12 | Projeção da topografia natural. | 1d | 2026-09-17 | 2026-09-17 | 1384 | 2026-09-17 | 2026-09-17 | 1d | 0d |
| 1398 | 3.7.1.2.6.13 | Relatório | 1d | 2026-09-17 | 2026-09-17 | 1384 | 2026-09-17 | 2026-09-17 | 1d | 0d |

| ID | WBS | Task | Duration | Start | Finish | Predecessors | Baseline start | Baseline finish | Baseline duration | Total slack |
| --- | --- | --- | --- | --- | --- | --- | --- | --- | --- | --- |
| 1399 | 3.7.1.2.7 | **Cortes transversais** | 1d | 2026-09-18 | 2026-09-18 |  | 2026-09-18 | 2026-09-18 | 1d | 0d |
| 1400 | 3.7.1.2.7.1 | Indicar simbologias de representação gráfica, conforme NBR 6492:2021; | 1d | 2026-09-18 | 2026-09-18 | 1397, 1398, 1142, 886, 630, 374, 186 | 2026-09-18 | 2026-09-18 | 1d | 5d |
| 1401 | 3.7.1.2.7.2 | Indicação de Escala; | 1d | 2026-09-18 | 2026-09-18 | 1397, 1398, 1142, 886, 630, 374, 186 | 2026-09-18 | 2026-09-18 | 1d | 5d |
| 1402 | 3.7.1.2.7.3 | Elementos estruturais principais; | 1d | 2026-09-18 | 2026-09-18 | 1397, 1398, 1142, 886, 630, 374, 186 | 2026-09-18 | 2026-09-18 | 1d | 5d |
| 1403 | 3.7.1.2.7.4 | Elementos de vedação internos e externos; | 1d | 2026-09-18 | 2026-09-18 | 1397, 1398, 1142, 886, 630, 374, 186 | 2026-09-18 | 2026-09-18 | 1d | 5d |
| 1404 | 3.7.1.2.7.5 | Esquadrias; | 1d | 2026-09-18 | 2026-09-18 | 1397, 1398, 1142, 886, 630, 374, 186 | 2026-09-18 | 2026-09-18 | 1d | 5d |
| 1405 | 3.7.1.2.7.6 | Identificação dos ambientes; | 1d | 2026-09-18 | 2026-09-18 | 1397, 1398, 1142, 886, 630, 374, 186 | 2026-09-18 | 2026-09-18 | 1d | 5d |
| 1406 | 3.7.1.2.7.7 | Cobertura com indicação da respectiva inclinação; | 1d | 2026-09-18 | 2026-09-18 | 1397, 1398, 1142, 886, 630, 374, 186 | 2026-09-18 | 2026-09-18 | 1d | 5d |
| 1407 | 3.7.1.2.7.8 | Cotas gerais; | 1d | 2026-09-18 | 2026-09-18 | 1397, 1398, 1142, 886, 630, 374, 186 | 2026-09-18 | 2026-09-18 | 1d | 5d |
| 1408 | 3.7.1.2.7.9 | Cotas de nível principal; | 1d | 2026-09-18 | 2026-09-18 | 1397, 1398, 1142, 886, 630, 374, 186 | 2026-09-18 | 2026-09-18 | 1d | 5d |
| 1409 | 3.7.1.2.7.10 | Eixos do projeto; | 1d | 2026-09-18 | 2026-09-18 | 1397, 1398, 1142, 886, 630, 374, 186 | 2026-09-18 | 2026-09-18 | 1d | 5d |
| 1410 | 3.7.1.2.7.11 | Relevo construído; | 1d | 2026-09-18 | 2026-09-18 | 1397, 1398, 1142, 886, 630, 374, 186 | 2026-09-18 | 2026-09-18 | 1d | 5d |
| 1411 | 3.7.1.2.7.12 | Projeção da topografia natural | 1d | 2026-09-18 | 2026-09-18 | 1397, 1398, 1142, 886, 630, 374, 186 | 2026-09-18 | 2026-09-18 | 1d | 0d |
| 1412 | 3.7.1.2.8 | **Elevações** | 1d | 2026-09-21 | 2026-09-21 |  | 2026-09-21 | 2026-09-21 | 1d | 0d |
| 1413 | 3.7.1.2.8.1 | Indicar simbologias de representação gráfica, conforme NBR 6492:2021; | 1d | 2026-09-21 | 2026-09-21 | 1411 | 2026-09-21 | 2026-09-21 | 1d | 4d |
| 1414 | 3.7.1.2.8.2 | Indicação de Escala; | 1d | 2026-09-21 | 2026-09-21 | 1411 | 2026-09-21 | 2026-09-21 | 1d | 4d |
| 1415 | 3.7.1.2.8.3 | Elementos estruturais principais; | 1d | 2026-09-21 | 2026-09-21 | 1411 | 2026-09-21 | 2026-09-21 | 1d | 4d |
| 1416 | 3.7.1.2.8.4 | Elementos de vedação internos e externos; | 1d | 2026-09-21 | 2026-09-21 | 1411 | 2026-09-21 | 2026-09-21 | 1d | 4d |
| 1417 | 3.7.1.2.8.5 | Esquadrias (sem código e sem quadro); | 1d | 2026-09-21 | 2026-09-21 | 1411 | 2026-09-21 | 2026-09-21 | 1d | 4d |
| 1418 | 3.7.1.2.8.6 | Relevo construído; | 1d | 2026-09-21 | 2026-09-21 | 1411 | 2026-09-21 | 2026-09-21 | 1d | 4d |
| 1419 | 3.7.1.2.8.7 | Cotas gerais; | 1d | 2026-09-21 | 2026-09-21 | 1411 | 2026-09-21 | 2026-09-21 | 1d | 4d |
| 1420 | 3.7.1.2.8.8 | Cotas de nível principais; | 1d | 2026-09-21 | 2026-09-21 | 1411 | 2026-09-21 | 2026-09-21 | 1d | 4d |
| 1421 | 3.7.1.2.8.9 | Cobertura (quando aparente). | 1d | 2026-09-21 | 2026-09-21 | 1411 | 2026-09-21 | 2026-09-21 | 1d | 0d |
| 1422 | 3.7.1.2.9 | **Memorial Descritivo** | 4d | 2026-09-22 | 2026-09-25 |  | 2026-09-22 | 2026-09-25 | 4d | 0d |
| 1423 | 3.7.1.2.9.1 | Descrição dos elementos da edificação | 4d | 2026-09-22 | 2026-09-25 | 1421 | 2026-09-22 | 2026-09-25 | 4d | 0d |
| 1424 | 3.7.1.2.9.2 | Geração de imagens representando os itens dissertados no relatório | 4d | 2026-09-22 | 2026-09-25 | 1421 | 2026-09-22 | 2026-09-25 | 4d | 0d |
| 1425 | 3.7.1.2.9.3 | Descrição dos componentes construtivos e materiais de construção | 4d | 2026-09-22 | 2026-09-25 | 1421 | 2026-09-22 | 2026-09-25 | 4d | 0d |
| 1426 | 3.7.1.2.9.4 | Lista de pranchas anexas e documentos | 4d | 2026-09-22 | 2026-09-25 | 1421 | 2026-09-22 | 2026-09-25 | 4d | 0d |
| 1427 | 3.7.2 | Aprovação de Conformidade | 3d | 2026-09-23 | 2026-09-25 | 1422FF | 2026-09-23 | 2026-09-25 | 3d | 0d |
| 1428 | 3.7.3 | Material para entrega ao contrato | 3d | 2026-09-23 | 2026-09-25 | 1422FF | 2026-09-23 | 2026-09-25 | 3d | 0d |

| ID | WBS | Task | Duration | Start | Finish | Predecessors | Baseline start | Baseline finish | Baseline duration | Total slack | Free slack |
| --- | --- | --- | --- | --- | --- | --- | --- | --- | --- | --- | --- |
| 1429 | 3.7.4 | **Engenharia** | 38d | 2026-08-04 | 2026-09-25 |  | 2026-08-04 | 2026-09-25 | 38d | 0d |  |
| 1430 | 3.7.4.1 | **Estrutura** | 34d | 2026-08-10 | 2026-09-25 |  | 2026-08-10 | 2026-09-25 | 34d | 0d |  |
| 1431 | 3.7.4.1.1 | **LOD 100 — Premissas, diretrizes e interfaces** | 7d | 2026-08-10 | 2026-08-18 |  | 2026-08-10 | 2026-08-18 | 7d | 0d |  |
| 1432 | 3.7.4.1.1.1 | Levantamento de tipos de cargas globais estimadas (permanentes, acidentais, vento e especiais). | 2d | 2026-08-10 | 2026-08-11 | 1323SS+24d, 1067SS+24d, 811SS+24d, 555SS+24d, 299SS+24d, 114SS+24d | 2026-08-10 | 2026-08-11 | 2d | 32d |  |
| 1433 | 3.7.4.1.1.2 | Estudo volumétrico com modulação inicial de pilares, vigas e lajes. Entendendo vãos e desafios | 5d | 2026-08-10 | 2026-08-14 | 1323SS+24d, 1067SS+24d, 811SS+24d, 555SS+24d, 299SS+24d, 114SS+24d | 2026-08-10 | 2026-08-14 | 5d | 29d |  |
| 1434 | 3.7.4.1.1.3 | Localização aproximada de elementos estruturais principais. Avaliando vãos e estudando posições | 2d | 2026-08-10 | 2026-08-11 | 1323SS+24d, 1067SS+24d, 811SS+24d, 555SS+24d, 299SS+24d, 114SS+24d | 2026-08-10 | 2026-08-11 | 2d | 0d |  |
| 1435 | 3.7.4.1.1.4 | Estudo de viabilidade técnica e construtiva. | 3d | 2026-08-12 | 2026-08-14 | 1434 | 2026-08-12 | 2026-08-14 | 3d | 0d |  |
| 1436 | 3.7.4.1.1.5 | Definição preliminar do sistema estrutural (concreto armado, metálica ou mista). | 3d | 2026-08-12 | 2026-08-14 | 1434 | 2026-08-12 | 2026-08-14 | 3d | 29d |  |
| 1437 | 3.7.4.1.1.6 | Estimativa preliminar de tipologias de fundações (sapatas, blocos, estacas). | 2d | 2026-08-17 | 2026-08-18 | 1435 | 2026-08-17 | 2026-08-18 | 2d | 27d |  |
| 1438 | 3.7.4.1.1.7 | Previsão de áreas técnicas, casas de máquinas, reservatórios elevados e estrutura de cobertura. | 2d | 2026-08-17 | 2026-08-18 | 1435 | 2026-08-17 | 2026-08-18 | 2d | 0d |  |
| 1439 | 3.7.4.1.2 | **LOD 200 — Validação interdisciplinar e solução preliminar** | 20d | 2026-08-19 | 2026-09-16 |  | 2026-08-19 | 2026-09-16 | 20d | 0d |  |
| 1440 | 3.7.4.1.2.1 | Lista preliminar de cargas e ações para dimensionamento. | 5d | 2026-08-19 | 2026-08-25 | 1438 | 2026-08-19 | 2026-08-25 | 5d | 0d |  |
| 1441 | 3.7.4.1.2.2 | Definição preliminar de alturas de pavimentos e níveis de fundação. | 5d | 2026-08-19 | 2026-08-25 | 1438 | 2026-08-19 | 2026-08-25 | 5d | 22d |  |
| 1442 | 3.7.4.1.2.3 | Indicação aproximada do sistema de cobertura (tesouras, treliças, vigamento metálico ou concreto). | 5d | 2026-08-19 | 2026-08-25 | 1438 | 2026-08-19 | 2026-08-25 | 5d | 22d |  |
| 1443 | 3.7.4.1.2.4 | Modelagem genérica de pilares, vigas, lajes e fundações. | 5d | 2026-08-26 | 2026-09-01 | 1440 | 2026-08-26 | 2026-09-01 | 5d | 17d |  |
| 1444 | 3.7.4.1.2.5 | Traçado preliminar de elementos especiais (escadas, rampas estruturais, reservatórios). | 5d | 2026-08-26 | 2026-09-01 | 1440 | 2026-08-26 | 2026-09-01 | 5d | 12d | 0d |
| 1445 | 3.7.4.1.2.6 | Arquivo IFC, plantas de forma e planta de locação | 5d | 2026-08-26 | 2026-09-01 | 1440 | 2026-08-26 | 2026-09-01 | 5d | 0d |  |
| 1446 | 3.7.4.1.2.7 | Inserção de fundações com tipologia e dimensões preliminares. | 5d | 2026-09-02 | 2026-09-09 | 1444 | 2026-09-02 | 2026-09-09 | 5d | 12d |  |
| 1447 | 3.7.4.1.2.8 | Compatibilização inicial com arquitetura e demais disciplinas. | 5d | 2026-09-02 | 2026-09-09 | 1445 | 2026-09-02 | 2026-09-09 | 5d | 12d |  |
| 1448 | 3.7.4.1.2.9 | Indicação de passagens de infraestrutura (shafts, aberturas em lajes e vigas). | 5d | 2026-09-02 | 2026-09-09 | 1445 | 2026-09-02 | 2026-09-09 | 5d | 12d |  |
| 1449 | 3.7.4.1.2.10 | Modelagem assertiva de elementos principais com dimensões aproximadas (largura, altura, espessura). | 10d | 2026-09-02 | 2026-09-16 | 1445 | 2026-09-02 | 2026-09-16 | 10d | 0d |  |
| 1450 | 3.7.4.1.2.11 | Modelagem estimada de armaduras principais (em nível de concepção). | 5d | 2026-09-10 | 2026-09-16 | 1449FF | 2026-09-10 | 2026-09-16 | 5d | 0d |  |
| 1451 | 3.7.4.1.3 | **LOD 300 - Consolidação e documentação de entrega** | 7d | 2026-09-17 | 2026-09-25 |  | 2026-09-17 | 2026-09-25 | 7d | 0d |  |
| 1452 | 3.7.4.1.3.1 | Indicação de níveis e cotas exatas. | 7d | 2026-09-17 | 2026-09-25 | 1449, 1450 | 2026-09-17 | 2026-09-25 | 7d | 0d |  |
| 1453 | 3.7.4.1.3.2 | Quadro de cargas atualizado. | 7d | 2026-09-17 | 2026-09-25 | 1449, 1450 | 2026-09-17 | 2026-09-25 | 7d | 0d |  |
| 1454 | 3.7.4.1.3.3 | Dimensionamento final de fundações conforme sondagem e cálculo estrutural. | 7d | 2026-09-17 | 2026-09-25 | 1449, 1450 | 2026-09-17 | 2026-09-25 | 7d | 0d |  |
| 1455 | 3.7.4.1.3.4 | Definição final dos elementos da cobertura (treliças, vigas, chapas, purlins). | 7d | 2026-09-17 | 2026-09-25 | 1449, 1450 | 2026-09-17 | 2026-09-25 | 7d | 0d |  |
| 1456 | 3.7.4.1.3.5 | Compatibilização final com arquitetura e instalações (aberturas, embutidos e passagens). | 7d | 2026-09-17 | 2026-09-25 | 1449, 1450 | 2026-09-17 | 2026-09-25 | 7d | 0d |  |
| 1457 | 3.7.4.1.3.6 | Modelagem definitiva de pilares, vigas, lajes, blocos, sapatas e estacas. | 7d | 2026-09-17 | 2026-09-25 | 1449, 1450 | 2026-09-17 | 2026-09-25 | 7d | 0d |  |
| 1458 | 3.7.4.1.3.7 | Planta estrutural com todos os elementos identificados. | 7d | 2026-09-17 | 2026-09-25 | 1449, 1450 | 2026-09-17 | 2026-09-25 | 7d | 0d |  |
| 1459 | 3.7.4.1.3.8 | Memorial descritivo contendo: objetivos, justificativa, descrição do sistema, concepção de fundações/cobertura, especificações e quadro de cargas. | 7d | 2026-09-17 | 2026-09-25 | 1449, 1450 | 2026-09-17 | 2026-09-25 | 7d | 0d |  |
| 1460 | 3.7.4.1.3.9 | Normas técnicas utilizadas (NBR 6118, 6120, 6122, 8800, etc.). | 7d | 2026-09-17 | 2026-09-25 | 1449, 1450 | 2026-09-17 | 2026-09-25 | 7d | 0d |  |
| 1461 | 3.7.4.1.3.10 | Consolidar documentação de entrega e emissão formal da disciplina | 7d | 2026-09-17 | 2026-09-25 | 1449, 1450 | 2026-09-17 | 2026-09-25 | 7d | 0d |  |
| 1462 | 3.7.4.1.4 | Aprovação de Conformidade | 3d | 2026-09-23 | 2026-09-25 | 1451FF | 2026-09-23 | 2026-09-25 | 3d | 0d |  |
| 1463 | 3.7.4.1.5 | Material para entrega ao contrato | 3d | 2026-09-23 | 2026-09-25 | 1451FF | 2026-09-23 | 2026-09-25 | 3d | 0d |  |

| ID | WBS | Task | Duration | Start | Finish | Predecessors | Baseline start | Baseline finish | Baseline duration | Total slack | Free slack |
| --- | --- | --- | --- | --- | --- | --- | --- | --- | --- | --- | --- |
| 1464 | 3.7.4.2 | **Hidrossanitário** | 38d | 2026-08-04 | 2026-09-25 |  | 2026-08-04 | 2026-09-25 | 38d | 0d |  |
| 1465 | 3.7.4.2.1 | **LOD 100 — Premissas, diretrizes e interfaces** | 10d | 2026-08-04 | 2026-08-17 |  | 2026-08-04 | 2026-08-17 | 10d | 0d |  |
| 1466 | 3.7.4.2.1.1 | Memorial preliminar | 10d | 2026-08-04 | 2026-08-17 | 1323SS+20d, 1067SS+20d, 811SS+20d, 555SS+20d, 299SS+20d, 114SS+20d | 2026-08-04 | 2026-08-17 | 10d | 28d |  |
| 1467 | 3.7.4.2.1.2 | Indicação de áreas técnicas | 6d | 2026-08-04 | 2026-08-11 | 1323SS+20d, 1067SS+20d, 811SS+20d, 555SS+20d, 299SS+20d, 114SS+20d | 2026-08-04 | 2026-08-11 | 6d | 32d |  |
| 1468 | 3.7.4.2.1.3 | Planta baixa com traçado conceitual | 6d | 2026-08-04 | 2026-08-11 | 1323SS+20d, 1067SS+20d, 811SS+20d, 555SS+20d, 299SS+20d, 114SS+20d | 2026-08-04 | 2026-08-11 | 6d | 32d |  |
| 1469 | 3.7.4.2.1.4 | Pontos de consumo principais e coletas sanitárias | 6d | 2026-08-04 | 2026-08-11 | 1323SS+20d, 1067SS+20d, 811SS+20d, 555SS+20d, 299SS+20d, 114SS+20d | 2026-08-04 | 2026-08-11 | 6d | 32d |  |
| 1470 | 3.7.4.2.1.5 | Classificação de uso | 10d | 2026-08-04 | 2026-08-17 | 1323SS+20d, 1067SS+20d, 811SS+20d, 555SS+20d, 299SS+20d, 114SS+20d | 2026-08-04 | 2026-08-17 | 10d | 28d |  |
| 1471 | 3.7.4.2.1.6 | Diretrizes de espaço | 10d | 2026-08-04 | 2026-08-17 | 1323SS+20d, 1067SS+20d, 811SS+20d, 555SS+20d, 299SS+20d, 114SS+20d | 2026-08-04 | 2026-08-17 | 10d | 28d |  |
| 1472 | 3.7.4.2.1.7 | Estimativa de demanda ou população de uso | 10d | 2026-08-04 | 2026-08-17 | 1323SS+20d, 1067SS+20d, 811SS+20d, 555SS+20d, 299SS+20d, 114SS+20d | 2026-08-04 | 2026-08-17 | 10d | 28d |  |
| 1473 | 3.7.4.2.1.8 | Levantamento de elementos especiais dentre outras disciplinas de Engenharia e Arquitetura | 10d | 2026-08-04 | 2026-08-17 | 1323SS+20d, 1067SS+20d, 811SS+20d, 555SS+20d, 299SS+20d, 114SS+20d | 2026-08-04 | 2026-08-17 | 10d | 0d |  |
| 1474 | 3.7.4.2.2 | **LOD 200 — Validação interdisciplinar e solução preliminar** | 20d | 2026-08-18 | 2026-09-15 |  | 2026-08-18 | 2026-09-15 | 20d | 0d |  |
| 1475 | 3.7.4.2.2.1 | Critérios normativos adotados (ABNT, concessionárias, etc.) | 20d | 2026-08-18 | 2026-09-15 | 1473 | 2026-08-18 | 2026-09-15 | 20d | 8d | 0d |
| 1476 | 3.7.4.2.2.2 | Informações de demanda na concessionária (DPE ou AVT Aviso de Viabilidade Técnica) | 20d | 2026-08-18 | 2026-09-15 | 1475SS | 2026-08-18 | 2026-09-15 | 20d | 8d |  |
| 1477 | 3.7.4.2.2.3 | Estudo de viabilidade técnica, econômica e ambiental | 20d | 2026-08-18 | 2026-09-15 | 1475SS | 2026-08-18 | 2026-09-15 | 20d | 8d |  |
| 1478 | 3.7.4.2.2.4 | Lista preliminar de sistemas envolvidos. | 20d | 2026-08-18 | 2026-09-15 | 1473 | 2026-08-18 | 2026-09-15 | 20d | 8d |  |
| 1479 | 3.7.4.2.2.5 | Planta baixa estimada contendo: - Traçado preliminar | 20d | 2026-08-18 | 2026-09-15 | 1473 | 2026-08-18 | 2026-09-15 | 20d | 0d |  |
| 1480 | 3.7.4.2.3 | **LOD 300 - Consolidação e documentação de entrega** | 8d | 2026-09-16 | 2026-09-25 |  | 2026-09-16 | 2026-09-25 | 8d | 0d |  |
| 1481 | 3.7.4.2.3.1 | Prancha simplificada do projeto | 8d | 2026-09-16 | 2026-09-25 | 1479 | 2026-09-16 | 2026-09-25 | 8d | 0d |  |
| 1482 | 3.7.4.2.3.2 | Memorial descritivo | 3d | 2026-09-23 | 2026-09-25 | 1481FF | 2026-09-23 | 2026-09-25 | 3d | 0d |  |
| 1483 | 3.7.4.2.3.3 | Memória de cálculo (pressão, vazão, diâmetros, perda de carga). | 3d | 2026-09-23 | 2026-09-25 | 1479, 1481FF | 2026-09-23 | 2026-09-25 | 3d | 0d |  |
| 1484 | 3.7.4.2.4 | Aprovação de Conformidade | 3d | 2026-09-23 | 2026-09-25 | 1480FF | 2026-09-23 | 2026-09-25 | 3d | 0d |  |
| 1485 | 3.7.4.2.5 | Material para entrega ao contrato | 3d | 2026-09-23 | 2026-09-25 | 1480FF | 2026-09-23 | 2026-09-25 | 3d | 0d |  |
| 1486 | 3.7.4.3 | **AVAC** | 34d | 2026-08-10 | 2026-09-25 |  | 2026-08-10 | 2026-09-25 | 34d | 0d |  |
| 1487 | 3.7.4.3.1 | **LOD 100 — Premissas, diretrizes e interfaces** | 10d | 2026-08-10 | 2026-08-21 |  | 2026-08-10 | 2026-08-21 | 10d | 0d |  |
| 1488 | 3.7.4.3.1.1 | Estimativa de carga térmica por ambiente. | 10d | 2026-08-10 | 2026-08-21 | 1323SS+24d, 1067SS+24d, 811SS+24d, 555SS+24d, 299SS+24d, 114SS+24d | 2026-08-10 | 2026-08-21 | 10d | 24d |  |
| 1489 | 3.7.4.3.1.2 | Estudo de viabilidade e rotas principais de distribuição de ar. | 10d | 2026-08-10 | 2026-08-21 | 1323SS+24d, 1067SS+24d, 811SS+24d, 555SS+24d, 299SS+24d, 114SS+24d | 2026-08-10 | 2026-08-21 | 10d | 24d |  |
| 1490 | 3.7.4.3.1.3 | Reserva de espaços técnicos e shafts. | 10d | 2026-08-10 | 2026-08-21 | 1323SS+24d, 1067SS+24d, 811SS+24d, 555SS+24d, 299SS+24d, 114SS+24d | 2026-08-10 | 2026-08-21 | 10d | 0d |  |
| 1491 | 3.7.4.3.1.4 | Levantamento de cargas especiais provenientes de outras disciplinas. | 10d | 2026-08-10 | 2026-08-21 | 1323SS+24d, 1067SS+24d, 811SS+24d, 555SS+24d, 299SS+24d, 114SS+24d | 2026-08-10 | 2026-08-21 | 10d | 24d |  |

| ID | WBS | Task | Duration | Start | Finish | Predecessors | Baseline start | Baseline finish | Baseline duration | Total slack | Text3 |
| --- | --- | --- | --- | --- | --- | --- | --- | --- | --- | --- | --- |
| 1492 | 3.7.4.3.2 | **LOD 200 — Validação interdisciplinar e solução preliminar** | 24d | 2026-08-24 | 2026-09-25 |  | 2026-08-24 | 2026-09-25 | 24d | 0d |  |
| 1493 | 3.7.4.3.2.1 | Lista preliminar de sistemas HVAC envolvidos (expansão direta, VRF, chillers, ventilação, exaustão). | 24d | 2026-08-24 | 2026-09-25 | 1490 | 2026-08-24 | 2026-09-25 | 24d | 0d |  |
| 1494 | 3.7.4.3.3 | Aprovação de Conformidade | 3d | 2026-09-23 | 2026-09-25 | 1492FF | 2026-09-23 | 2026-09-25 | 3d | 0d |  |
| 1495 | 3.7.4.3.4 | Material para entrega ao contrato | 3d | 2026-09-23 | 2026-09-25 | 1492FF | 2026-09-23 | 2026-09-25 | 3d | 0d |  |
| 1496 | 3.7.4.4 | **PCI (Incêndio)** | 34d | 2026-08-10 | 2026-09-25 |  | 2026-08-10 | 2026-09-25 | 34d | 0d |  |
| 1497 | 3.7.4.4.1 | **LOD 100 — Premissas, diretrizes e interfaces** | 10d | 2026-08-10 | 2026-08-21 |  | 2026-08-10 | 2026-08-21 | 10d | 0d | ܁# |
| 1498 | 3.7.4.4.1.1 | Estudo e avaliação da arquitetura atendendo as normas competentes de PCI | 10d | 2026-08-10 | 2026-08-21 | 1323SS+24d, 1067SS+24d, 811SS+24d, 555SS+24d, 299SS+24d, 114SS+24d | 2026-08-10 | 2026-08-21 | 10d | 24d |  |
| 1499 | 3.7.4.4.1.2 | Avaliação do espaço para CMI e Central de Gás. | 10d | 2026-08-10 | 2026-08-21 | 1323SS+24d, 1067SS+24d, 811SS+24d, 555SS+24d, 299SS+24d, 114SS+24d | 2026-08-10 | 2026-08-21 | 10d | 24d |  |
| 1500 | 3.7.4.4.1.3 | Pontos locação para seus elementos no projeto arquitetônico | 10d | 2026-08-10 | 2026-08-21 | 1323SS+24d, 1067SS+24d, 811SS+24d, 555SS+24d, 299SS+24d, 114SS+24d | 2026-08-10 | 2026-08-21 | 10d | 0d |  |
| 1501 | 3.7.4.4.2 | **LOD 200 — Validação interdisciplinar e solução preliminar** | 24d | 2026-08-24 | 2026-09-25 |  | 2026-08-24 | 2026-09-25 | 24d | 0d | ܁# |
| 1502 | 3.7.4.4.2.1 | Definição da classificação da edificação e o risco de incêndio | 24d | 2026-08-24 | 2026-09-25 | 1500 | 2026-08-24 | 2026-09-25 | 24d | 0d |  |
| 1503 | 3.7.4.4.2.2 | Cálculos pré-dimensionados dos extintores, hidrantes e bomba. | 24d | 2026-08-24 | 2026-09-25 | 1500 | 2026-08-24 | 2026-09-25 | 24d | 0d |  |
| 1504 | 3.7.4.4.2.3 | Avaliação das rotas de fuga, ventilação de CMI e outros elementos de importância para as normas de PCI | 24d | 2026-08-24 | 2026-09-25 | 1500 | 2026-08-24 | 2026-09-25 | 24d | 0d |  |
| 1505 | 3.7.4.4.3 | Aprovação de Conformidade | 3d | 2026-09-23 | 2026-09-25 | 1501FF | 2026-09-23 | 2026-09-25 | 3d | 0d |  |
| 1506 | 3.7.4.4.4 | Material para entrega ao contrato | 3d | 2026-09-23 | 2026-09-25 | 1501FF | 2026-09-23 | 2026-09-25 | 3d | 0d |  |
| 1507 | 3.7.4.5 | **Elétrica Baixa Tensão** | 34d | 2026-08-10 | 2026-09-25 |  | 2026-08-10 | 2026-09-25 | 34d | 0d |  |
| 1508 | 3.7.4.5.1 | **LOD 100 — Concepção** | 10d | 2026-08-10 | 2026-08-21 |  | 2026-08-10 | 2026-08-21 | 10d | 0d |  |
| 1509 | 3.7.4.5.1.1 | Avaliação e Diretrizes Técnicas para Arquitetura | 6d | 2026-08-10 | 2026-08-17 | 1323SS+24d, 1067SS+24d, 811SS+24d, 555SS+24d, 299SS+24d, 114SS+24d | 2026-08-10 | 2026-08-17 | 6d | 28d |  |
| 1510 | 3.7.4.5.1.2 | Estimativa de Cargas e Demanda | 10d | 2026-08-10 | 2026-08-21 | 1323SS+24d, 1067SS+24d, 811SS+24d, 555SS+24d, 299SS+24d, 114SS+24d | 2026-08-10 | 2026-08-21 | 10d | 0d |  |
| 1511 | 3.7.4.5.1.3 | Levantamento de Equipamentos de Outras Disciplinas | 6d | 2026-08-10 | 2026-08-17 | 1323SS+24d, 1067SS+24d, 811SS+24d, 555SS+24d, 299SS+24d, 114SS+24d | 2026-08-10 | 2026-08-17 | 6d | 4d |  |
| 1512 | 3.7.4.5.2 | **LOD 200 — Anteprojeto** | 19d | 2026-08-24 | 2026-09-18 |  | 2026-08-24 | 2026-09-18 | 19d | 0d |  |
| 1513 | 3.7.4.5.2.1 | TUGs Estimados | 19d | 2026-08-24 | 2026-09-18 | 1510, 1511 | 2026-08-24 | 2026-09-18 | 19d | 0d |  |
| 1514 | 3.7.4.5.2.2 | Pontos de Luz Estimados | 19d | 2026-08-24 | 2026-09-18 | 1510, 1511 | 2026-08-24 | 2026-09-18 | 19d | 0d |  |
| 1515 | 3.7.4.5.2.3 | TUEs e Quadros Estimados | 19d | 2026-08-24 | 2026-09-18 | 1510, 1511 | 2026-08-24 | 2026-09-18 | 19d | 0d |  |
| 1516 | 3.7.4.5.3 | LOD 300 - Consolidação e documentação de entrega | 5d | 2026-09-21 | 2026-09-25 | 1512 | 2026-09-21 | 2026-09-25 | 5d | 0d |  |
| 1517 | 3.7.4.5.4 | Aprovação de Conformidade | 3d | 2026-09-23 | 2026-09-25 | 1516FF | 2026-09-23 | 2026-09-25 | 3d | 0d |  |
| 1518 | 3.7.4.5.5 | Material para entrega ao contrato | 3d | 2026-09-23 | 2026-09-25 | 1516FF | 2026-09-23 | 2026-09-25 | 3d | 0d |  |

| ID | WBS | Task | Duration | Start | Finish | Predecessors | Baseline start | Baseline finish | Baseline duration | Total slack |
| --- | --- | --- | --- | --- | --- | --- | --- | --- | --- | --- |
| 1519 | 3.7.4.6 | **Telecom** | 34d | 2026-08-10 | 2026-09-25 |  | 2026-08-10 | 2026-09-25 | 34d | 0d |
| 1520 | 3.7.4.6.1 | **LOD 100 — Concepção** | 10d | 2026-08-10 | 2026-08-21 |  | 2026-08-10 | 2026-08-21 | 10d | 0d |
| 1521 | 3.7.4.6.1.1 | Avaliação e Diretrizes Técnicas para Arquitetura | 10d | 2026-08-10 | 2026-08-21 | 1323SS+24d, 1067SS+24d, 811SS+24d, 555SS+24d, 299SS+24d, 114SS+24d | 2026-08-10 | 2026-08-21 | 10d | 24d |
| 1522 | 3.7.4.6.1.2 | Estimativa de Demanda de Telecomunicações | 10d | 2026-08-10 | 2026-08-21 | 1323SS+24d, 1067SS+24d, 811SS+24d, 555SS+24d, 299SS+24d, 114SS+24d | 2026-08-10 | 2026-08-21 | 10d | 24d |
| 1523 | 3.7.4.6.1.3 | Levantamento de Equipamentos e Interfaces com Outras Disciplinas | 10d | 2026-08-10 | 2026-08-21 | 1323SS+24d, 1067SS+24d, 811SS+24d, 555SS+24d, 299SS+24d, 114SS+24d | 2026-08-10 | 2026-08-21 | 10d | 0d |
| 1524 | 3.7.4.6.2 | **LOD 200 — Anteprojeto** | 20d | 2026-08-24 | 2026-09-21 |  | 2026-08-24 | 2026-09-21 | 20d | 0d |
| 1525 | 3.7.4.6.2.1 | Pontos de Telecomunicações Estimados (Rede, Voz, CFTV e Demais Sistemas) | 10d | 2026-08-24 | 2026-09-04 | 1523 | 2026-08-24 | 2026-09-04 | 10d | 0d |
| 1526 | 3.7.4.6.2.2 | Racks Estimados | 10d | 2026-08-24 | 2026-09-04 | 1523 | 2026-08-24 | 2026-09-04 | 10d | 0d |
| 1527 | 3.7.4.6.2.3 | Infraestrutura de Telecomunicações Preliminar | 10d | 2026-09-08 | 2026-09-21 | 1525, 1526 | 2026-09-08 | 2026-09-21 | 10d | 0d |
| 1528 | 3.7.4.6.3 | LOD 300 - Consolidação e documentação de entrega | 4d | 2026-09-22 | 2026-09-25 | 1524 | 2026-09-22 | 2026-09-25 | 4d | 0d |
| 1529 | 3.7.4.6.4 | Aprovação de Conformidade | 3d | 2026-09-23 | 2026-09-25 | 1528FF | 2026-09-23 | 2026-09-25 | 3d | 0d |
| 1530 | 3.7.4.6.5 | Material para entrega ao contrato | 3d | 2026-09-23 | 2026-09-25 | 1528FF | 2026-09-23 | 2026-09-25 | 3d | 0d |
| 1531 | 3.7.4.7 | **Subestação** | 34d | 2026-08-10 | 2026-09-25 |  | 2026-08-10 | 2026-09-25 | 34d | 0d |
| 1532 | 3.7.4.7.1 | **LOD 100 — Concepção** | 10d | 2026-08-10 | 2026-08-21 |  | 2026-08-10 | 2026-08-21 | 10d | 0d |
| 1533 | 3.7.4.7.1.1 | Avaliação e Diretrizes Técnicas para Arquitetura | 10d | 2026-08-10 | 2026-08-21 | 1323SS+24d, 1067SS+24d, 811SS+24d, 555SS+24d, 299SS+24d, 114SS+24d | 2026-08-10 | 2026-08-21 | 10d | 24d |
| 1534 | 3.7.4.7.1.2 | Levantamento de Demanda, Perfil de Consumo e Ponto de Entrega | 10d | 2026-08-10 | 2026-08-21 | 1323SS+24d, 1067SS+24d, 811SS+24d, 555SS+24d, 299SS+24d, 114SS+24d | 2026-08-10 | 2026-08-21 | 10d | 24d |
| 1535 | 3.7.4.7.1.3 | Estudo de Viabilidade Técnica e Atendimento ao Padrão da Concessionária | 10d | 2026-08-10 | 2026-08-21 | 1323SS+24d, 1067SS+24d, 811SS+24d, 555SS+24d, 299SS+24d, 114SS+24d | 2026-08-10 | 2026-08-21 | 10d | 0d |
| 1536 | 3.7.4.7.2 | **LOD 200 — Anteprojeto** | 20d | 2026-08-24 | 2026-09-21 |  | 2026-08-24 | 2026-09-21 | 20d | 0d |
| 1537 | 3.7.4.7.2.1 | Definição do Tipo de Subestação e Arranjo Físico Preliminar | 10d | 2026-08-24 | 2026-09-04 | 1535 | 2026-08-24 | 2026-09-04 | 10d | 0d |
| 1538 | 3.7.4.7.2.2 | Dimensionamento Preliminar do Transformador e Equipamentos Principais | 10d | 2026-09-08 | 2026-09-21 | 1537 | 2026-09-08 | 2026-09-21 | 10d | 0d |
| 1539 | 3.7.4.7.2.3 | Diretrizes Preliminares de Aterramento | 10d | 2026-09-08 | 2026-09-21 | 1537 | 2026-09-08 | 2026-09-21 | 10d | 0d |
| 1540 | 3.7.4.7.3 | LOD 300 - Consolidação e documentação de entrega | 4d | 2026-09-22 | 2026-09-25 | 1536 | 2026-09-22 | 2026-09-25 | 4d | 0d |
| 1541 | 3.7.4.7.4 | Aprovação de Conformidade | 3d | 2026-09-23 | 2026-09-25 | 1540FF | 2026-09-23 | 2026-09-25 | 3d | 0d |
| 1542 | 3.7.4.7.5 | Material para entrega ao contrato | 3d | 2026-09-23 | 2026-09-25 | 1540FF | 2026-09-23 | 2026-09-25 | 3d | 0d |

| ID | WBS | Task | Type | Duration | Start | Finish | Predecessors | Baseline start | Baseline finish | Baseline duration | Total slack |
| --- | --- | --- | --- | --- | --- | --- | --- | --- | --- | --- | --- |
| 1543 | 3.7.4.8 | **SPDA** |  | 34d | 2026-08-10 | 2026-09-25 |  | 2026-08-10 | 2026-09-25 | 34d | 0d |
| 1544 | 3.7.4.8.1 | **LOD 100 — Concepção** |  | 10d | 2026-08-10 | 2026-08-21 |  | 2026-08-10 | 2026-08-21 | 10d | 0d |
| 1545 | 3.7.4.8.1.1 | Avaliação e Diretrizes Técnicas para Arquitetura |  | 10d | 2026-08-10 | 2026-08-21 | 1323SS+24d, 1067SS+24d, 811SS+24d, 555SS+24d, 299SS+24d, 114SS+24d | 2026-08-10 | 2026-08-21 | 10d | 24d |
| 1546 | 3.7.4.8.1.2 | Coleta de Informações da Edificação e Análise de Risco (ABNT NBR 5419-2) |  | 10d | 2026-08-10 | 2026-08-21 | 1323SS+24d, 1067SS+24d, 811SS+24d, 555SS+24d, 299SS+24d, 114SS+24d | 2026-08-10 | 2026-08-21 | 10d | 24d |
| 1547 | 3.7.4.8.1.3 | Estudo Preliminar de Necessidade e Nível de Proteção do SPDA |  | 10d | 2026-08-10 | 2026-08-21 | 1323SS+24d, 1067SS+24d, 811SS+24d, 555SS+24d, 299SS+24d, 114SS+24d | 2026-08-10 | 2026-08-21 | 10d | 0d |
| 1548 | 3.7.4.8.2 | **LOD 200 — Anteprojeto** |  | 20d | 2026-08-24 | 2026-09-21 |  | 2026-08-24 | 2026-09-21 | 20d | 0d |
| 1549 | 3.7.4.8.2.1 | Definição da Estratégia de Proteção e Soluções Técnicas |  | 10d | 2026-08-24 | 2026-09-04 | 1547 | 2026-08-24 | 2026-09-04 | 10d | 0d |
| 1550 | 3.7.4.8.2.2 | Zoneamento de Captação, Descida e Traçados Preliminares |  | 10d | 2026-09-08 | 2026-09-21 | 1549 | 2026-09-08 | 2026-09-21 | 10d | 4d |
| 1551 | 3.7.4.8.2.3 | Estudo de Interferências, Compatibilização e Métodos Construtivos |  | 10d | 2026-09-08 | 2026-09-21 | 1549 | 2026-09-08 | 2026-09-21 | 10d | 0d |
| 1552 | 3.7.4.8.3 | LOD 300 - Consolidação e documentação de entrega |  | 4d | 2026-09-22 | 2026-09-25 | 1551 | 2026-09-22 | 2026-09-25 | 4d | 0d |
| 1553 | 3.7.4.8.4 | Aprovação de Conformidade |  | 3d | 2026-09-23 | 2026-09-25 | 1552FF | 2026-09-23 | 2026-09-25 | 3d | 0d |
| 1554 | 3.7.4.8.5 | Material para entrega ao contrato |  | 3d | 2026-09-23 | 2026-09-25 | 1552FF | 2026-09-23 | 2026-09-25 | 3d | 0d |
| 1555 | 3.7.4.9 | **Energia Renovável** |  | 34d | 2026-08-10 | 2026-09-25 |  | 2026-08-10 | 2026-09-25 | 34d | 0d |
| 1556 | 3.7.4.9.1 | **LOD 100 — Concepção** |  | 10d | 2026-08-10 | 2026-08-21 |  | 2026-08-10 | 2026-08-21 | 10d | 0d |
| 1557 | 3.7.4.9.1.1 | Viabilidade e Premissas de Geração |  | 10d | 2026-08-10 | 2026-08-21 | 1323SS+24d, 1067SS+24d, 811SS+24d, 555SS+24d, 299SS+24d, 114SS+24d | 2026-08-10 | 2026-08-21 | 10d | 24d |
| 1558 | 3.7.4.9.1.2 | Levantamento Preliminar de Áreas e Sombreamento |  | 10d | 2026-08-10 | 2026-08-21 | 1323SS+24d, 1067SS+24d, 811SS+24d, 555SS+24d, 299SS+24d, 114SS+24d | 2026-08-10 | 2026-08-21 | 10d | 0d |
| 1559 | 3.7.4.9.1.3 | Avaliação e Diretrizes Técnicas para Arquitetônico |  | 10d | 2026-08-10 | 2026-08-21 | 1323SS+24d, 1067SS+24d, 811SS+24d, 555SS+24d, 299SS+24d, 114SS+24d | 2026-08-10 | 2026-08-21 | 10d | 24d |
| 1560 | 3.7.4.9.2 | **LOD 200 — Anteprojeto** |  | 20d | 2026-08-24 | 2026-09-21 |  | 2026-08-24 | 2026-09-21 | 20d | 0d |
| 1561 | 3.7.4.9.2.1 | Layout Preliminar de Módulos, Inversores e String Boxes |  | 20d | 2026-08-24 | 2026-09-21 | 1558 | 2026-08-24 | 2026-09-21 | 20d | 0d |
| 1562 | 3.7.4.9.2.2 | Infraestrutura e Rotas Técnicas Preliminares (DC/AC e Aterramento) |  | 20d | 2026-08-24 | 2026-09-21 | 1558 | 2026-08-24 | 2026-09-21 | 20d | 0d |
| 1563 | 3.7.4.9.2.3 | Critérios Preliminares de Proteção e Estimativa de Quantitativos |  | 20d | 2026-08-24 | 2026-09-21 | 1558 | 2026-08-24 | 2026-09-21 | 20d | 0d |
| 1564 | 3.7.4.9.3 | LOD 300 - Consolidação e documentação de entrega |  | 4d | 2026-09-22 | 2026-09-25 | 1560 | 2026-09-22 | 2026-09-25 | 4d | 0d |
| 1565 | 3.7.4.9.4 | Aprovação de Conformidade |  | 3d | 2026-09-23 | 2026-09-25 | 1564FF | 2026-09-23 | 2026-09-25 | 3d | 0d |
| 1566 | 3.7.4.9.5 | Material para entrega ao contrato |  | 3d | 2026-09-23 | 2026-09-25 | 1564FF | 2026-09-23 | 2026-09-25 | 3d | 0d |
| 1567 | 4 | P2 - Orçamento/Cronograma |  | 20d | 2026-09-28 | 2026-10-26 | 30 | 2026-09-28 | 2026-10-26 | 20d | 0d |
| 1568 | 5 | P3 - Modelagem Econômico Financeira |  | 10d | 2026-10-13 | 2026-10-26 | 1567FF | 2026-10-13 | 2026-10-26 | 10d | 0d |
| 1569 | 6 | P4 - Modelagem Jurídica |  | 10d | 2026-10-13 | 2026-10-26 | 1567FF | 2026-10-13 | 2026-10-26 | 10d | 0d |
| 1570 | 7 | Periodo de revisão se necessário | milestone | 0d | 2026-05-07 | 2026-05-07 |  | 2026-05-07 | 2026-05-07 | 0d | 120d |
