# OS XXX - Projeto Básico - CBA

Schedule from MS Project, 2026-05-07 to 2026-07-30, status date 2026-06-08.

## Calendars

- Calendário 1: Mon-Fri 09:00-12:00, 13:00-18:00; Sat-Sun off. Exceptions (off unless hours are given): 2026-06-04 (Feriado Corpus Christi).

## Resources

| Resource | Group |
| --- | --- |
| SMI Engenharia | SMI |
| Rui Raoli BIM |  |
| Tecra Engenharia | Tecra |
| Dorothea Heirichs | Dorothea |
| Yuka Ogawa | Yuka |
| Jurídico Quanta |  |
| Priscila Abreu EST |  |
| Leomar Delgado | Leomar |
| Limonge de Almeida | Limonge |
| AeB Engenharia | AeB engenharia |
| Fernanda Garruti EST |  |
| Rodrigo Goes EST |  |
| Nous Engenharia (Wanessa) | Nous Engenharia |
| Abel Lopes HID |  |
| Matheus Ferreira HID |  |
| Kayke Cheli PROJ |  |
| João Gabriel PROJ |  |
| Alan Albuquerque ELE |  |
| Leo Ferrari ELE |  |
| Marcelo Ricardo ELE |  |
| Gabriel Caurim | Gcaurin |
| MOB Eng | MOB |
| Heitor Rubio ELE |  |
| Paulo G. ELE |  |
| Thaíza Rodrig. ELE |  |
| Rafael Menna ENE |  |
| Lucas Pacheco ENE |  |
| Lucas Silva ENE Estag |  |
| Amanda W. HID |  |
| Neemias PCI/GAS |  |
| Anderson F. HVAC |  |
| Alexandre Blumel |  |
| Vanessa Maia ORC |  |
| Bruno Souza ORC |  |
| Romulo Santos ORC |  |
| Diego Bieger | Diego Bieger |
| Tiago Carlos TER |  |
| Raquel Morano |  |
| Guilherme ECO |  |
| Setor Jurídico |  |
| Vinicius Delgado |  |
| Morena Braga |  |
| P/ TERCEIRIZAR |  |
| MAFRA | MAFRA |
| BLR | BLR |
| COTRAL | COTRAL |
| Prime | PRIME |
| CODEMAR | Cliente |
| SEMED | Cliente |
| Carlos Alberto (Casoba) |  |
| Cezar Augusto ELE |  |
| Carlos Santos TER |  |
| Maíra Rocha |  |
| Jairo Diniz |  |
| Eloá Honaiser |  |
| Erick Lima |  |
| Tarcísio Marques CPT |  |
| Igor Freire DADOS |  |
| Hagata Oliveira DADOS |  |
| Marcel Silva CNF |  |
| Gustavo Oliveira CNF |  |
| Letícia Gonç. CNF |  |
| Equipe Energia |  |
| Petras |  |
| Pilotis |  |
| Rodofer |  |
| TMSilva |  |
| STCGEO |  |
| Vitor Sales GEO |  |
| Prossema | Prossema |
| Proseng | Prosseng |
| Pamplona | Pamplona |
| PeX | PeX |
| Eoliver | Eoliver |
| Aleff Moura |  |
| S&A Engenharia |  |
| Matheus Barboza MOBILIDADE |  |
| Neemias Eloy PCI/GAS |  |
| TecTON |  |
| Anderson F. HVAC |  |
| Gabriela Gama ARQ |  |
| Bruno Almeida ARQ |  |
| Richard Marx ARQ |  |
| Lorena ARQ |  |
| Camila ARQ |  |
| Mariana ARQ |  |
| Érica ARQ |  |
| Maria Lis ARQ |  |
| Antônio Alves ARQ |  |
| Juliana ARQ |  |
| Caio Ary ARQ |  |
| Roberto Mattos ARQ |  |
| Camilla Bessa CNF |  |
| Alex Matoso SUP |  |
| Aline Bonsanto CPT |  |
| Pavanello |  |
| AKKERMAN |  |
| RiO RAMP |  |

## Schedule

| ID | WBS | Task | Duration | Start | Finish | Predecessors | Total slack | Free slack | Text3 |
| --- | --- | --- | --- | --- | --- | --- | --- | --- | --- |
| 1 | 1 | **P1 - Anteprojeto** | 40d? | 2026-05-07 | 2026-07-02 |  | 0d |  |  |
| 2 | 1.1 | **Implantação** | 40d? | 2026-05-07 | 2026-07-02 |  | 0d |  |  |
| 3 | 1.1.1 | **LOD 300 - ANTEPROJETO** | 20d? | 2026-05-07 | 2026-06-03 |  | 20d |  |  |
| 4 | 1.1.1.1 | Indicar simbologias de representação gráfica, conforme NBR 6492:2021; | 20d | 2026-05-07 | 2026-06-03 |  | 20d |  |  |
| 5 | 1.1.1.2 | Compatibilização (verificar se está tudo conforme as normas e alinhar com o restante das disciplinas de engenharia) | 20d | 2026-05-07 | 2026-06-03 |  | 20d |  |  |
| 6 | 1.1.1.3 | Compatibilização (deixar tudo conforme padrão Quanta) | 20d | 2026-05-07 | 2026-06-03 |  | 20d |  |  |
| 7 | 1.1.1.4 | Indicação de Norte; | 20d | 2026-05-07 | 2026-06-03 |  | 20d |  |  |
| 8 | 1.1.1.5 | Indicação de Escala; | 20d | 2026-05-07 | 2026-06-03 |  | 20d |  |  |
| 9 | 1.1.1.6 | Vias de acesso e calçadas; | 20d | 2026-05-07 | 2026-06-03 |  | 20d |  |  |
| 10 | 1.1.1.7 | Definição dos Percursos e caminhos | 20d | 2026-05-07 | 2026-06-03 |  | 20d |  |  |
| 11 | 1.1.1.8 | Definição de desenhos de canteiros | 20d | 2026-05-07 | 2026-06-03 |  | 20d |  |  |
| 12 | 1.1.1.9 | Localização de Mobiliário | 20d | 2026-05-07 | 2026-06-03 |  | 20d |  |  |
| 13 | 1.1.1.10 | Acesso principal do objeto arquitetônico; | 20d | 2026-05-07 | 2026-06-03 |  | 20d |  |  |
| 14 | 1.1.1.11 | Definição de localização de rampas e escadarias | 20d | 2026-05-07 | 2026-06-03 |  | 20d |  |  |
| 15 | 1.1.1.12 | Platôs e taludes; | 20d | 2026-05-07 | 2026-06-03 |  | 20d |  |  |
| 16 | 1.1.1.13 | Perímetro do terreno, recuos e afastamentos; | 20d | 2026-05-07 | 2026-06-03 |  | 20d |  |  |
| 17 | 1.1.1.14 | Eixos do projeto com respectivo ponto de referência; | 20d | 2026-05-07 | 2026-06-03 |  | 20d |  |  |
| 18 | 1.1.1.15 | Denominação das edificações, blocos ou espaços; | 20d | 2026-05-07 | 2026-06-03 |  | 20d |  |  |
| 19 | 1.1.1.16 | Indicação de áreas cobertas e estacionamentos; | 20d | 2026-05-07 | 2026-06-03 |  | 20d |  |  |
| 20 | 1.1.1.17 | Cotas gerais | 20d | 2026-05-07 | 2026-06-03 |  | 20d |  |  |
| 21 | 1.1.1.18 | Cotas de nível principais | 20d | 2026-05-07 | 2026-06-03 |  | 20d |  |  |
| 22 | 1.1.1.19 | Quadro de áreas | 20d | 2026-05-07 | 2026-06-03 |  | 20d | 0d |  |
| 23 | 1.1.1.20 | Relatório | 5d | 2026-05-28 | 2026-06-03 | 22FF | 20d | 0d |  |
| 24 | 1.1.1.21 | Aprovação de Conformidade | 3d | 2026-06-01 | 2026-06-03 | 23FF | 20d |  | ܁8 |
| 25 | 1.1.1.22 | Aprovação de Compatibilidade | 1d? | 2026-06-03 | 2026-06-03 | 23FF | 20d |  | ܁* |
| 26 | 1.1.1.23 | Material para entrega ao contrato | 3d | 2026-06-01 | 2026-06-03 | 23FF | 20d |  | ܁8 |

| ID | WBS | Task | Duration | Start | Finish | Predecessors | Total slack | Free slack | Text3 |
| --- | --- | --- | --- | --- | --- | --- | --- | --- | --- |
| 27 | 1.1.2 | **Terraplanagem / Pavimentação** | 40d? | 2026-05-07 | 2026-07-02 |  | 0d |  |  |
| 28 | 1.1.2.1 | **LOD 100 — Premissas, diretrizes e interfaces** | 10d | 2026-05-07 | 2026-05-20 |  | 0d |  | ܁$ |
| 29 | 1.1.2.1.1 | Avaliação geral de interferências e topografia local. | 5d | 2026-05-07 | 2026-05-13 |  | 0d |  |  |
| 30 | 1.1.2.1.2 | Curvas de nível preliminares (quando disponíveis). | 5d | 2026-05-07 | 2026-05-13 | 29SS | 30d | 0d |  |
| 31 | 1.1.2.1.3 | Levantamento topográfico inicial com representação genérica da área. | 5d | 2026-05-07 | 2026-05-13 | 29SS | 0d |  |  |
| 32 | 1.1.2.1.4 | Análise estimativa de movimentação de terra. | 5d | 2026-05-14 | 2026-05-20 | 30 | 30d |  |  |
| 33 | 1.1.2.1.5 | Estudos de viabilidade | 5d | 2026-05-14 | 2026-05-20 | 30 | 30d |  |  |
| 34 | 1.1.2.1.6 | Elementos representados de forma simbólica sem georreferenciamento preciso. | 5d | 2026-05-14 | 2026-05-20 | 31 | 30d |  |  |
| 35 | 1.1.2.1.7 | Superfície genérica do terreno. | 5d | 2026-05-14 | 2026-05-20 | 31 | 0d |  |  |
| 36 | 1.1.2.2 | **LOD 200 — Dimensionamento e definições técnicas iniciais** | 20d | 2026-05-21 | 2026-06-18 |  | 0d |  | ܁$ |
| 37 | 1.1.2.2.1 | Avaliação técnica detalhada. | 20d | 2026-05-21 | 2026-06-18 | 35 | 10d |  |  |
| 38 | 1.1.2.2.2 | Compatibilização inicial com drenagem, fundações e geometria. | 20d | 2026-05-21 | 2026-06-18 | 35 | 10d |  |  |
| 39 | 1.1.2.2.3 | Indicação dos pontos de sondagem em planta georreferenciada. | 20d | 2026-05-21 | 2026-06-18 | 35 | 10d |  |  |
| 40 | 1.1.2.2.4 | Sondagens geotécnicas: Cronograma de execução com áreas e quantidade de perfurações; Boletins informativos com planta de localização dos furos, profundidades e descrição estratigráfica (solo). | 20d | 2026-05-21 | 2026-06-18 | 35 | 10d |  |  |
| 41 | 1.1.2.2.5 | Levantamento topográfico: Arquivo em formato.dwg, com coordenadas georreferenciadas (latitude/longitude), curvas de nível, ortofoto e base planimétrica. | 20d | 2026-05-21 | 2026-06-18 | 35 | 10d |  |  |
| 42 | 1.1.2.2.6 | Planta topográfica com triangulação real (MDT). | 20d | 2026-05-21 | 2026-06-18 | 35 | 0d |  |  |
| 43 | 1.1.2.3 | **LOD 300 — Modelagem, compatibilização técnica e quantitativos** | 10d | 2026-06-19 | 2026-07-02 |  | 0d |  | ܁$ |
| 44 | 1.1.2.3.1 | Alinhamentos de estaqueamento longitudinal e transversal. | 5d | 2026-06-19 | 2026-06-25 | 42 | 5d |  |  |
| 45 | 1.1.2.3.2 | Análise integrada dos dados topográficos e de sondagem. | 5d | 2026-06-19 | 2026-06-25 | 42 | 5d |  |  |
| 46 | 1.1.2.3.3 | Planta baixa georreferenciada com projeção de cortes e aterros. | 10d | 2026-06-19 | 2026-07-02 | 42 | 0d |  |  |
| 47 | 1.1.2.3.4 | Perfis longitudinais e transversais do terreno na situação atual e projetada. | 5d | 2026-06-19 | 2026-06-25 | 42 | 5d |  |  |
| 48 | 1.1.2.3.5 | Tabelas com variações altimétricas de corte e aterro. | 5d | 2026-06-26 | 2026-07-02 | 46FF | 0d |  |  |
| 49 | 1.1.2.4 | **LOD 350 — Consolidação e documentação de entrega** | 40d? | 2026-05-07 | 2026-07-02 |  | 0d |  | ܁$ |
| 50 | 1.1.2.4.1 | Detalhamento de interseções típicas com respectivos inclinações e ângulos | 1d? | 2026-05-07 | 2026-05-07 |  | 39d |  |  |
| 51 | 1.1.2.4.2 | Detalhamento de seções típicas como sub-base, base e revestimento. | 1d? | 2026-05-07 | 2026-05-07 |  | 39d |  |  |
| 52 | 1.1.2.4.3 | Especificação de insumos: Definição dos materiais a serem utilizados em cada camada, com base nas análises de solo e em normas técnicas aplicáveis, priorizando o uso de materiais locais adequados. | 1d? | 2026-05-07 | 2026-05-07 |  | 39d |  |  |
| 53 | 1.1.2.4.4 | Perfis transversais com as seções típicas. | 1d? | 2026-05-07 | 2026-05-07 |  | 39d |  |  |
| 54 | 1.1.2.4.5 | Estudo do tráfego com capacidade de níveis de serviço conforme normativas. | 1d? | 2026-05-07 | 2026-05-07 |  | 39d |  |  |
| 55 | 1.1.2.4.6 | Cálculo de Volumes: Determinação precisa geométricas e dos volumes de movimentação de terra. | 1d? | 2026-05-07 | 2026-05-07 |  | 39d |  |  |
| 56 | 1.1.2.4.7 | Tabelas com volumetrias de massas acumulativas e aproveitamento | 1d? | 2026-05-07 | 2026-05-07 |  | 39d |  |  |
| 57 | 1.1.2.4.8 | Aprovação de Conformidade | 3d | 2026-06-30 | 2026-07-02 | 46FF | 0d |  | ܁8 |
| 58 | 1.1.2.4.9 | Material para entrega ao contrato | 3d | 2026-06-30 | 2026-07-02 | 46FF | 0d |  | ܁8 |

| ID | WBS | Task | Duration | Start | Finish | Predecessors | Total slack | Text3 |
| --- | --- | --- | --- | --- | --- | --- | --- | --- |
| 59 | 1.1.3 | **Drenagem** | 40d? | 2026-05-07 | 2026-07-02 |  | 0d |  |
| 60 | 1.1.3.1 | **LOD 100 — Premissas, diretrizes e interfaces** | 5d | 2026-05-21 | 2026-05-27 |  | 0d |  |
| 61 | 1.1.3.1.1 | Diretrizes de espaço | 5d | 2026-05-21 | 2026-05-27 | 35 | 25d |  |
| 62 | 1.1.3.1.2 | Memorial preliminar | 5d | 2026-05-21 | 2026-05-27 | 35 | 25d |  |
| 63 | 1.1.3.1.3 | Análise climatológica | 5d | 2026-05-21 | 2026-05-27 | 35 | 25d |  |
| 64 | 1.1.3.1.4 | Delimitação de área de contribuição | 5d | 2026-05-21 | 2026-05-27 | 35 | 25d |  |
| 65 | 1.1.3.1.5 | Levantamento de elementos especiais dentre outras disciplinas de Engenharia e Arquitetura | 5d | 2026-05-21 | 2026-05-27 | 35 | 25d |  |
| 66 | 1.1.3.1.6 | Indicação de áreas técnicas | 5d | 2026-05-21 | 2026-05-27 | 35 | 25d |  |
| 67 | 1.1.3.1.7 | Planta baixa com traçado conceitual | 5d | 2026-05-21 | 2026-05-27 | 35 | 25d |  |
| 68 | 1.1.3.1.8 | Traçado geral de descidas pluviais | 5d | 2026-05-21 | 2026-05-27 | 35 | 0d |  |
| 69 | 1.1.3.2 | **LOD 200 — Dimensionamento e definições técnicas iniciais** | 12d | 2026-05-28 | 2026-06-15 |  | 0d |  |
| 70 | 1.1.3.2.1 | Critérios normativos adotados (ABNT, concessionárias, etc.) | 6d | 2026-05-28 | 2026-06-05 | 68 | 0d |  |
| 71 | 1.1.3.2.2 | Lista preliminar de sistemas e interfaces envolvidos | 6d | 2026-05-28 | 2026-06-05 | 68 | 0d |  |
| 72 | 1.1.3.2.3 | Planta baixa e cortes estimada contendo: - Traçado preliminar de condutores verticais e horizontais - Dimensionamento inicial de calhas e condutores - Localização de elementos ou redes de drenagem existente - Indicação de áreas técnicas | 6d | 2026-05-28 | 2026-06-05 | 68 | 19d |  |
| 73 | 1.1.3.2.4 | Estudo de viabilidade técnica, econômica e ambiental | 6d | 2026-06-08 | 2026-06-15 | 70, 71 | 0d |  |
| 74 | 1.1.3.2.5 | Levantamento topográfico da área de contribuição e elementos existentes | 6d | 2026-06-08 | 2026-06-15 | 70, 71 | 0d |  |
| 75 | 1.1.3.2.6 | Sondagem (permeabilidade ou percolação) | 6d | 2026-06-08 | 2026-06-15 | 70, 71 | 13d |  |
| 76 | 1.1.3.3 | **LOD 300 — Modelagem, compatibilização técnica e quantitativos** | 13d | 2026-06-16 | 2026-07-02 |  | 0d |  |
| 77 | 1.1.3.3.1 | Memorial descritivo | 3d | 2026-06-16 | 2026-06-18 | 74 | 2d |  |
| 78 | 1.1.3.3.2 | Memória de cálculo | 5d | 2026-06-16 | 2026-06-22 | 74, 73 | 0d |  |
| 79 | 1.1.3.3.3 | Planta, corte e detalhe isométrico contendo: - Detalhamento dos condutores com diâmetros, cotas e inclinações definitivas (condutores pluviais) - Calhas, bocas de lobo, dissipadores de energia e demais elementos/equipamentos definitivos | 5d | 2026-06-23 | 2026-06-29 | 77, 78 | 0d |  |
| 80 | 1.1.3.3.4 | Quantitativos e especificação técnica dos materiais | 3d | 2026-06-30 | 2026-07-02 | 79 | 0d |  |
| 81 | 1.1.3.4 | **LOD 350 — Consolidação e documentação de entrega** | 40d? | 2026-05-07 | 2026-07-02 |  | 0d |  |
| 82 | 1.1.3.4.1 | Compatibilização técnica entre disciplinas | 1d? | 2026-05-07 | 2026-05-07 |  | 39d |  |
| 83 | 1.1.3.4.2 | Detalhes construtivos de passagem em estrutura | 1d? | 2026-05-07 | 2026-05-07 |  | 39d |  |
| 84 | 1.1.3.4.3 | Inclusão de suportes e pontos de ancoragem e conexões especiais | 1d? | 2026-05-07 | 2026-05-07 |  | 39d |  |
| 85 | 1.1.3.4.4 | Planta esquemática da localização das obras de drenagem | 1d? | 2026-05-07 | 2026-05-07 |  | 39d |  |
| 86 | 1.1.3.4.5 | Plantas e desenhos-tipo dos diversos dispositivos de drenagem utilizados | 1d? | 2026-05-07 | 2026-05-07 |  | 39d |  |
| 87 | 1.1.3.4.6 | Vista frontal contendo detalhes das instalações | 1d? | 2026-05-07 | 2026-05-07 |  | 39d |  |
| 88 | 1.1.3.4.7 | Consolidar documentação de entrega e emissão formal da disciplina | 1d? | 2026-05-07 | 2026-05-07 |  | 39d |  |
| 89 | 1.1.3.4.8 | Esquema ou isométrico tridimensional da solução | 1d? | 2026-05-07 | 2026-05-07 |  | 39d |  |
| 90 | 1.1.3.4.9 | Plantas baixas da disciplina em todos os pavimentos aplicáveis | 1d? | 2026-05-07 | 2026-05-07 |  | 39d |  |
| 91 | 1.1.3.4.10 | Legenda completa de componentes e parâmetros da disciplina | 1d? | 2026-05-07 | 2026-05-07 |  | 39d |  |
| 92 | 1.1.3.4.11 | Memorial de cálculo padronizado em pdf e doc comtendo: - Normas Técnicas Utilizadas - Plantas que compõem o projeto - Cálculo do dimensionamento das tubulações, retenções, equipamentos e outros elementos - Especificação técnica dos materiais/insumos e cri | 1d? | 2026-05-07 | 2026-05-07 |  | 39d |  |
| 93 | 1.1.3.4.12 | Memorial descritivo padronizado em pdf e doc contendo: - Normas Técnicas Utilizadas - Objetivos do Projeto - Justificativa do Projeto - Descrição Geral das Instalações - Critérios de dimensionamento - Especificações técnicas de todos os elementos - Conclu | 1d? | 2026-05-07 | 2026-05-07 |  | 39d |  |
| 94 | 1.1.3.4.13 | Esquema de distribuição vertical | 1d? | 2026-05-07 | 2026-05-07 |  | 39d |  |
| 95 | 1.1.3.4.14 | Planta baixa com marcação da rede de tubulação de águas pluviais e drenagem | 1d? | 2026-05-07 | 2026-05-07 |  | 39d |  |
| 96 | 1.1.3.4.15 | Plantas corte e detalhe isométrico (rvt, ifc, pdf, dwg) | 1d? | 2026-05-07 | 2026-05-07 |  | 39d |  |
| 97 | 1.1.3.4.16 | Aprovação de Conformidade | 3d | 2026-06-30 | 2026-07-02 | 80FF | 0d | ܁8 |
| 98 | 1.1.3.4.17 | Material para entrega ao contrato | 3d | 2026-06-30 | 2026-07-02 | 80FF | 0d | ܁8 |

| ID | WBS | Task | Duration | Start | Finish | Total slack |
| --- | --- | --- | --- | --- | --- | --- |
| 99 | 1.2 | **001 - Edificação principal** | 38d? | 2026-05-07 | 2026-06-30 | 2d |
| 100 | 1.2.1 | **Arquitetura** | 1d? | 2026-05-07 | 2026-05-07 | 39d |
| 101 | 1.2.1.1 | **LOD 350 - PROJETO BÁSICO** | 1d? | 2026-05-07 | 2026-05-07 | 39d |
| 102 | 1.2.1.1.1 | **Modelagem e compatibilização** | 1d? | 2026-05-07 | 2026-05-07 | 39d |
| 103 | 1.2.1.1.1.1 | Ajuste na topografia (se necessário) | 1d? | 2026-05-07 | 2026-05-07 | 39d |
| 104 | 1.2.1.1.1.2 | Inserir mobiliário padrão Quanta - duplicar linha por pav ou ambiente | 1d? | 2026-05-07 | 2026-05-07 | 39d |
| 105 | 1.2.1.1.1.3 | Ajuste nos pisos (se necessário) - duplicar linha por pav ou ambiente | 1d? | 2026-05-07 | 2026-05-07 | 39d |
| 106 | 1.2.1.1.1.4 | Ajustes coberta (se necessário) - duplicar linha por pav ou ambiente | 1d? | 2026-05-07 | 2026-05-07 | 39d |
| 107 | 1.2.1.1.1.5 | Inserir paisagismo | 1d? | 2026-05-07 | 2026-05-07 | 39d |
| 108 | 1.2.1.1.1.6 | Inserir rota acessível e acessibilidade (banheiros e rampa) | 1d? | 2026-05-07 | 2026-05-07 | 39d |
| 109 | 1.2.1.1.1.7 | Compatibilizaçao com disciplinas de engenharia | 1d? | 2026-05-07 | 2026-05-07 | 39d |
| 110 | 1.2.1.1.1.8 | Inserir ambientes faltando ou requisitados por outra disciplina | 1d? | 2026-05-07 | 2026-05-07 | 39d |
| 111 | 1.2.1.1.1.9 | Ajustes passeios, acessos, estacionamentos | 1d? | 2026-05-07 | 2026-05-07 | 39d |
| 112 | 1.2.1.1.1.10 | Inserir ETE | 1d? | 2026-05-07 | 2026-05-07 | 39d |
| 113 | 1.2.1.1.1.11 | Inserir PCI | 1d? | 2026-05-07 | 2026-05-07 | 39d |
| 114 | 1.2.1.1.1.12 | Inserir caixa d'água | 1d? | 2026-05-07 | 2026-05-07 | 39d |
| 115 | 1.2.1.1.2 | **Situação** | 1d? | 2026-05-07 | 2026-05-07 | 39d |
| 116 | 1.2.1.1.2.1 | Indicar simbologias de representação gráfica, conforme NBR 6492:2021; | 1d? | 2026-05-07 | 2026-05-07 | 39d |
| 117 | 1.2.1.1.2.2 | Indicação Norte | 1d? | 2026-05-07 | 2026-05-07 | 39d |
| 118 | 1.2.1.1.2.3 | Indicação de Escala; | 1d? | 2026-05-07 | 2026-05-07 | 39d |
| 119 | 1.2.1.1.2.4 | Curvas de nível existentes e projetadas | 1d? | 2026-05-07 | 2026-05-07 | 39d |
| 120 | 1.2.1.1.2.5 | Vias de acesso ao conjunto, arruamento, logradouros adjacentes e calçadas com os respectivos equipamentos urbanos; | 1d? | 2026-05-07 | 2026-05-07 | 39d |
| 121 | 1.2.1.1.2.6 | Platôs e taludes principais; | 1d? | 2026-05-07 | 2026-05-07 | 39d |
| 122 | 1.2.1.1.2.7 | Perímetro do terreno, recuos e afastamentos; | 1d? | 2026-05-07 | 2026-05-07 | 39d |
| 123 | 1.2.1.1.2.8 | Indicação das áreas a serem edificadas com o contorno da cobertura das edificações, estacionamentos e áreas permeáveis/impermeáveis; | 1d? | 2026-05-07 | 2026-05-07 | 39d |
| 124 | 1.2.1.1.2.9 | Denominação das edificações, blocos ou espaços; | 1d? | 2026-05-07 | 2026-05-07 | 39d |
| 125 | 1.2.1.1.2.10 | Cotas | 1d? | 2026-05-07 | 2026-05-07 | 39d |
| 126 | 1.2.1.1.2.11 | Cotas de nível principal. | 1d? | 2026-05-07 | 2026-05-07 | 39d |
| 127 | 1.2.1.1.2.12 | Quadros de áreas | 1d? | 2026-05-07 | 2026-05-07 | 39d |
| 128 | 1.2.1.1.2.13 | Relatório | 1d? | 2026-05-07 | 2026-05-07 | 39d |

| ID | WBS | Task | Duration | Start | Finish | Total slack |
| --- | --- | --- | --- | --- | --- | --- |
| 129 | 1.2.1.1.3 | **Implantação** | 1d? | 2026-05-07 | 2026-05-07 | 39d |
| 130 | 1.2.1.1.3.1 | Indicar simbologias de representação gráfica, conforme NBR 6492:2021; | 1d? | 2026-05-07 | 2026-05-07 | 39d |
| 131 | 1.2.1.1.3.2 | Indicação de Norte; | 1d? | 2026-05-07 | 2026-05-07 | 39d |
| 132 | 1.2.1.1.3.3 | Indicação de Escala; | 1d? | 2026-05-07 | 2026-05-07 | 39d |
| 133 | 1.2.1.1.3.4 | Vias de acesso; | 1d? | 2026-05-07 | 2026-05-07 | 39d |
| 134 | 1.2.1.1.3.5 | Definição dos Percursos e caminhos | 1d? | 2026-05-07 | 2026-05-07 | 39d |
| 135 | 1.2.1.1.3.6 | Definição de desenhos de canteiros | 1d? | 2026-05-07 | 2026-05-07 | 39d |
| 136 | 1.2.1.1.3.7 | Localização de Mobiliário | 1d? | 2026-05-07 | 2026-05-07 | 39d |
| 137 | 1.2.1.1.3.8 | Acesso principal do objeto arquitetônico; | 1d? | 2026-05-07 | 2026-05-07 | 39d |
| 138 | 1.2.1.1.3.9 | Definição de localização de rampas e escadarias | 1d? | 2026-05-07 | 2026-05-07 | 39d |
| 139 | 1.2.1.1.3.10 | Platôs e taludes; | 1d? | 2026-05-07 | 2026-05-07 | 39d |
| 140 | 1.2.1.1.3.11 | Perímetro do terreno, recuos, afastamentos e calçadas; | 1d? | 2026-05-07 | 2026-05-07 | 39d |
| 141 | 1.2.1.1.3.12 | Eixos do projeto com respectivo ponto de referência; | 1d? | 2026-05-07 | 2026-05-07 | 39d |
| 142 | 1.2.1.1.3.13 | Denominação das edificações, ambientes e espaços; | 1d? | 2026-05-07 | 2026-05-07 | 39d |
| 143 | 1.2.1.1.3.14 | Indicação de áreas cobertas e estacionamentos; | 1d? | 2026-05-07 | 2026-05-07 | 39d |
| 144 | 1.2.1.1.3.15 | Cotas gerais. | 1d? | 2026-05-07 | 2026-05-07 | 39d |
| 145 | 1.2.1.1.3.16 | Cotas de nível principais. | 1d? | 2026-05-07 | 2026-05-07 | 39d |
| 146 | 1.2.1.1.3.17 | Quadro de áreas | 1d? | 2026-05-07 | 2026-05-07 | 39d |
| 147 | 1.2.1.1.3.18 | Tabelas quantitativos/tipo de paredes, pisos, esquadrias e plantas | 1d? | 2026-05-07 | 2026-05-07 | 39d |
| 148 | 1.2.1.1.3.19 | Relatório | 1d? | 2026-05-07 | 2026-05-07 | 39d |
| 149 | 1.2.1.1.4 | **Diretrizes de terraplenagem** | 1d? | 2026-05-07 | 2026-05-07 | 39d |
| 150 | 1.2.1.1.4.1 | Planta com as cotas de nível projetadas e existentes | 1d? | 2026-05-07 | 2026-05-07 | 39d |
| 151 | 1.2.1.1.4.2 | Cortes com as cotas de nível projetadas e existentes | 1d? | 2026-05-07 | 2026-05-07 | 39d |
| 152 | 1.2.1.1.5 | **Plantas baixas (igual ou superior a 1:100)** | 1d? | 2026-05-07 | 2026-05-07 | 39d |
| 153 | 1.2.1.1.5.1 | Indicar simbologias de representação gráfica, conforme NBR 6492:2021; | 1d? | 2026-05-07 | 2026-05-07 | 39d |
| 154 | 1.2.1.1.5.2 | Indicação de Norte; | 1d? | 2026-05-07 | 2026-05-07 | 39d |
| 155 | 1.2.1.1.5.3 | Indicação de Escala; | 1d? | 2026-05-07 | 2026-05-07 | 39d |
| 156 | 1.2.1.1.5.4 | Indicação de Acessos; | 1d? | 2026-05-07 | 2026-05-07 | 39d |
| 157 | 1.2.1.1.5.5 | Elementos de vedação internos e externos; | 1d? | 2026-05-07 | 2026-05-07 | 39d |
| 158 | 1.2.1.1.5.6 | Esquadrias; | 1d? | 2026-05-07 | 2026-05-07 | 39d |
| 159 | 1.2.1.1.5.7 | Divisórias | 1d? | 2026-05-07 | 2026-05-07 | 39d |
| 160 | 1.2.1.1.5.8 | Elementos estruturais principais; | 1d? | 2026-05-07 | 2026-05-07 | 39d |
| 161 | 1.2.1.1.5.9 | Identificação dos ambientes; | 1d? | 2026-05-07 | 2026-05-07 | 39d |
| 162 | 1.2.1.1.5.10 | Espaços de circulação; | 1d? | 2026-05-07 | 2026-05-07 | 39d |
| 163 | 1.2.1.1.5.11 | Áreas de serviço, funcionais e técnicas; | 1d? | 2026-05-07 | 2026-05-07 | 39d |
| 164 | 1.2.1.1.5.12 | Projeções de níveis superiores; | 1d? | 2026-05-07 | 2026-05-07 | 39d |
| 165 | 1.2.1.1.5.13 | Cotas gerais | 1d? | 2026-05-07 | 2026-05-07 | 39d |
| 166 | 1.2.1.1.5.14 | Cotas de nível principal; | 1d? | 2026-05-07 | 2026-05-07 | 39d |
| 167 | 1.2.1.1.5.15 | Inserção de caixas d’água com barrilete; | 1d? | 2026-05-07 | 2026-05-07 | 39d |
| 168 | 1.2.1.1.5.16 | Inserção de casas de gás; | 1d? | 2026-05-07 | 2026-05-07 | 39d |
| 169 | 1.2.1.1.5.17 | Verificar com as outras diciplinas se é necessário algum equipamento ou espaço; | 1d? | 2026-05-07 | 2026-05-07 | 39d |
| 170 | 1.2.1.1.5.18 | Quadro de áreas | 1d? | 2026-05-07 | 2026-05-07 | 39d |
| 171 | 1.2.1.1.5.19 | Tabelas quantitativos/tipo de paredes, pisos, esquadrias e plantas | 1d? | 2026-05-07 | 2026-05-07 | 39d |

| ID | WBS | Task | Duration | Start | Finish | Total slack |
| --- | --- | --- | --- | --- | --- | --- |
| 172 | 1.2.1.1.6 | **Plantas de layouts** | 1d? | 2026-05-07 | 2026-05-07 | 39d |
| 173 | 1.2.1.1.6.1 | Indicar simbologias de representação gráfica, conforme NBR 6492:2021; | 1d? | 2026-05-07 | 2026-05-07 | 39d |
| 174 | 1.2.1.1.6.2 | Indicação de Norte; | 1d? | 2026-05-07 | 2026-05-07 | 39d |
| 175 | 1.2.1.1.6.3 | Indicação de Escala; | 1d? | 2026-05-07 | 2026-05-07 | 39d |
| 176 | 1.2.1.1.6.4 | Inserção de layout; | 1d? | 2026-05-07 | 2026-05-07 | 39d |
| 177 | 1.2.1.1.6.5 | Inserção de bacias sanitárias, mictórios, cubas, bancadas, torneiras; | 1d? | 2026-05-07 | 2026-05-07 | 39d |
| 178 | 1.2.1.1.6.6 | Inserção de espelhos, papeleiras, dispensers de papel e saboneteiras; | 1d? | 2026-05-07 | 2026-05-07 | 39d |
| 179 | 1.2.1.1.6.7 | Inserção de equipamentos de cozinha. | 1d? | 2026-05-07 | 2026-05-07 | 39d |
| 180 | 1.2.1.1.6.8 | Quadro de áreas | 1d? | 2026-05-07 | 2026-05-07 | 39d |
| 181 | 1.2.1.1.7 | **Plantas das coberturas** | 1d? | 2026-05-07 | 2026-05-07 | 39d |
| 182 | 1.2.1.1.7.1 | Indicar simbologias de representação gráfica, conforme NBR 6492:2021; | 1d? | 2026-05-07 | 2026-05-07 | 39d |
| 183 | 1.2.1.1.7.2 | Indicação de Norte; | 1d? | 2026-05-07 | 2026-05-07 | 39d |
| 184 | 1.2.1.1.7.3 | Indicação de Escala; | 1d? | 2026-05-07 | 2026-05-07 | 39d |
| 185 | 1.2.1.1.7.4 | Curvas de nível; | 1d? | 2026-05-07 | 2026-05-07 | 39d |
| 186 | 1.2.1.1.7.5 | Acessos, estacionamento e áreas cobertas; | 1d? | 2026-05-07 | 2026-05-07 | 39d |
| 187 | 1.2.1.1.7.6 | Cobertura das edificações; | 1d? | 2026-05-07 | 2026-05-07 | 39d |
| 188 | 1.2.1.1.7.7 | Sentido de escoamento das águas pluviais e inclinação; | 1d? | 2026-05-07 | 2026-05-07 | 39d |
| 189 | 1.2.1.1.7.8 | Caixa dágua; | 1d? | 2026-05-07 | 2026-05-07 | 39d |
| 190 | 1.2.1.1.7.9 | Verificar com as outras diciplinas se é necessário algum equipamento ou espaço; | 1d? | 2026-05-07 | 2026-05-07 | 39d |
| 191 | 1.2.1.1.7.10 | Confirmar se terá elementos de Energia Solar; | 1d? | 2026-05-07 | 2026-05-07 | 39d |
| 192 | 1.2.1.1.7.11 | Confirmar se os condensadores de ar condicionado ficarão na coberta | 1d? | 2026-05-07 | 2026-05-07 | 39d |
| 193 | 1.2.1.1.7.12 | Inserção de calhas, rufos e chapins; | 1d? | 2026-05-07 | 2026-05-07 | 39d |
| 194 | 1.2.1.1.7.13 | Cotas gerais | 1d? | 2026-05-07 | 2026-05-07 | 39d |
| 195 | 1.2.1.1.7.14 | Cotas de nível principais. | 1d? | 2026-05-07 | 2026-05-07 | 39d |
| 196 | 1.2.1.1.7.15 | Quadro de áreas | 1d? | 2026-05-07 | 2026-05-07 | 39d |

| ID | WBS | Task | Duration | Start | Finish | Total slack |
| --- | --- | --- | --- | --- | --- | --- |
| 197 | 1.2.1.1.8 | **Plantas de forro** | 1d? | 2026-05-07 | 2026-05-07 | 39d |
| 198 | 1.2.1.1.8.1 | Indicar simbologias de representação gráfica, conforme NBR 6492:2021; | 1d? | 2026-05-07 | 2026-05-07 | 39d |
| 199 | 1.2.1.1.8.2 | Indicação de Escala; | 1d? | 2026-05-07 | 2026-05-07 | 39d |
| 200 | 1.2.1.1.8.3 | Indicação de Norte; | 1d? | 2026-05-07 | 2026-05-07 | 39d |
| 201 | 1.2.1.1.8.4 | Inserção de forros. | 1d? | 2026-05-07 | 2026-05-07 | 39d |
| 202 | 1.2.1.1.8.5 | Indicação de paginação de forro (dependendo do tipo) | 1d? | 2026-05-07 | 2026-05-07 | 39d |
| 203 | 1.2.1.1.8.6 | Indicação da localização das luminárias (se necessário) | 1d? | 2026-05-07 | 2026-05-07 | 39d |
| 204 | 1.2.1.1.8.7 | Cotas Gerais | 1d? | 2026-05-07 | 2026-05-07 | 39d |
| 205 | 1.2.1.1.8.8 | Identificação dos ambientes | 1d? | 2026-05-07 | 2026-05-07 | 39d |
| 206 | 1.2.1.1.8.9 | Quadro de áreas e indicação do tipo de material | 1d? | 2026-05-07 | 2026-05-07 | 39d |
| 207 | 1.2.1.1.8.10 | Verificar com as outras diciplinas se é necessário algum equipamento ou espaço; | 1d? | 2026-05-07 | 2026-05-07 | 39d |
| 208 | 1.2.1.1.9 | **Plantas de paginação de piso** | 1d? | 2026-05-07 | 2026-05-07 | 39d |
| 209 | 1.2.1.1.9.1 | Indicar simbologias de representação gráfica, conforme NBR 6492:2021; | 1d? | 2026-05-07 | 2026-05-07 | 39d |
| 210 | 1.2.1.1.9.2 | Indicação de Escala; | 1d? | 2026-05-07 | 2026-05-07 | 39d |
| 211 | 1.2.1.1.9.3 | Indicação de Norte; | 1d? | 2026-05-07 | 2026-05-07 | 39d |
| 212 | 1.2.1.1.9.4 | Paginação de piso; | 1d? | 2026-05-07 | 2026-05-07 | 39d |
| 213 | 1.2.1.1.9.5 | Identificação do Piso tátil; | 1d? | 2026-05-07 | 2026-05-07 | 39d |
| 214 | 1.2.1.1.9.6 | Inserção de soleiras, peitoris e rodapés. | 1d? | 2026-05-07 | 2026-05-07 | 39d |
| 215 | 1.2.1.1.9.7 | Cotas Gerais | 1d? | 2026-05-07 | 2026-05-07 | 39d |
| 216 | 1.2.1.1.9.8 | Quadro de áreas e indicação do tipo de material | 1d? | 2026-05-07 | 2026-05-07 | 39d |
| 217 | 1.2.1.1.10 | **Plantas de luminotécnico** | 1d? | 2026-05-07 | 2026-05-07 | 39d |
| 218 | 1.2.1.1.10.1 | Indicar simbologias de representação gráfica, conforme NBR 6492:2021; | 1d? | 2026-05-07 | 2026-05-07 | 39d |
| 219 | 1.2.1.1.10.2 | Indicação de Escala; | 1d? | 2026-05-07 | 2026-05-07 | 39d |
| 220 | 1.2.1.1.10.3 | Indicação de Norte; | 1d? | 2026-05-07 | 2026-05-07 | 39d |
| 221 | 1.2.1.1.10.4 | Inserção de luminárias (internas e externas). | 1d? | 2026-05-07 | 2026-05-07 | 39d |
| 222 | 1.2.1.1.10.5 | Indicação da paginação de forro (caso necessário) | 1d? | 2026-05-07 | 2026-05-07 | 39d |
| 223 | 1.2.1.1.10.6 | Cotas Gerais | 1d? | 2026-05-07 | 2026-05-07 | 39d |
| 224 | 1.2.1.1.10.7 | Verificar com as outras diciplinas se é necessário algum equipamento ou espaço; | 1d? | 2026-05-07 | 2026-05-07 | 39d |

| ID | WBS | Task | Duration | Start | Finish | Total slack |
| --- | --- | --- | --- | --- | --- | --- |
| 225 | 1.2.1.1.11 | **Plantas de acessibilidade (NBR 9050 e NBR 16537)** | 1d? | 2026-05-07 | 2026-05-07 | 39d |
| 226 | 1.2.1.1.11.1 | Indicar simbologias de representação gráfica, conforme NBR 6492:2021; | 1d? | 2026-05-07 | 2026-05-07 | 39d |
| 227 | 1.2.1.1.11.2 | Indicação de Escala; | 1d? | 2026-05-07 | 2026-05-07 | 39d |
| 228 | 1.2.1.1.11.3 | Indicação de Norte; | 1d? | 2026-05-07 | 2026-05-07 | 39d |
| 229 | 1.2.1.1.11.4 | Inserir Rampas (na edificação e na urbanização) | 1d? | 2026-05-07 | 2026-05-07 | 39d |
| 230 | 1.2.1.1.11.5 | Inserir Rampas e/ou Faixas Elevadas | 1d? | 2026-05-07 | 2026-05-07 | 39d |
| 231 | 1.2.1.1.11.6 | Banheiros acessíveis | 1d? | 2026-05-07 | 2026-05-07 | 39d |
| 232 | 1.2.1.1.11.7 | Sinalização piso tátil (rota acessível) | 1d? | 2026-05-07 | 2026-05-07 | 39d |
| 233 | 1.2.1.1.11.8 | Corrimãos e guarda-corpos (com sinalização em braille) | 1d? | 2026-05-07 | 2026-05-07 | 39d |
| 234 | 1.2.1.1.11.9 | Plataforma elevatória | 1d? | 2026-05-07 | 2026-05-07 | 39d |
| 235 | 1.2.1.1.11.10 | Sinalização fotoluminescente nos degraus | 1d? | 2026-05-07 | 2026-05-07 | 39d |
| 236 | 1.2.1.1.11.11 | Localizar Mapa tátil | 1d? | 2026-05-07 | 2026-05-07 | 39d |
| 237 | 1.2.1.1.11.12 | Indicação da paginação de piso (caso necessário) | 1d? | 2026-05-07 | 2026-05-07 | 39d |
| 238 | 1.2.1.1.11.13 | Cotas Gerais | 1d? | 2026-05-07 | 2026-05-07 | 39d |
| 239 | 1.2.1.1.11.14 | Verificar com as outras diciplinas se é necessário algum equipamento ou espaço; | 1d? | 2026-05-07 | 2026-05-07 | 39d |
| 240 | 1.2.1.1.12 | **Plantas de paisagismo (talvez seja preciso uma planta para forrações e outra para árvores)** | 1d? | 2026-05-07 | 2026-05-07 | 39d |
| 241 | 1.2.1.1.12.1 | Indicar simbologias de representação gráfica, conforme NBR 6492:2021; | 1d? | 2026-05-07 | 2026-05-07 | 39d |
| 242 | 1.2.1.1.12.2 | Indicação de Escala; | 1d? | 2026-05-07 | 2026-05-07 | 39d |
| 243 | 1.2.1.1.12.3 | Indicação de Norte; | 1d? | 2026-05-07 | 2026-05-07 | 39d |
| 244 | 1.2.1.1.12.4 | Vias de acesso; | 1d? | 2026-05-07 | 2026-05-07 | 39d |
| 245 | 1.2.1.1.12.5 | Definição dos Percursos e caminhos | 1d? | 2026-05-07 | 2026-05-07 | 39d |
| 246 | 1.2.1.1.12.6 | Definição de desenhos de canteiros | 1d? | 2026-05-07 | 2026-05-07 | 39d |
| 247 | 1.2.1.1.12.7 | Localização de árvores grande/médio porte | 1d? | 2026-05-07 | 2026-05-07 | 39d |
| 248 | 1.2.1.1.12.8 | Localização de arbustos; | 1d? | 2026-05-07 | 2026-05-07 | 39d |
| 249 | 1.2.1.1.12.9 | Localização de forrações; | 1d? | 2026-05-07 | 2026-05-07 | 39d |
| 250 | 1.2.1.1.12.10 | Localização de Mobiliário; | 1d? | 2026-05-07 | 2026-05-07 | 39d |
| 251 | 1.2.1.1.12.11 | Platôs e taludes; | 1d? | 2026-05-07 | 2026-05-07 | 39d |
| 252 | 1.2.1.1.12.12 | Perímetro do terreno, recuos, afastamentos e calçadas; | 1d? | 2026-05-07 | 2026-05-07 | 39d |
| 253 | 1.2.1.1.12.13 | Denominação das edificações, ambientes e espaços; | 1d? | 2026-05-07 | 2026-05-07 | 39d |
| 254 | 1.2.1.1.12.14 | Cotas gerais. | 1d? | 2026-05-07 | 2026-05-07 | 39d |
| 255 | 1.2.1.1.12.15 | Cotas de nível principais. | 1d? | 2026-05-07 | 2026-05-07 | 39d |
| 256 | 1.2.1.1.12.16 | Quadro de áreas | 1d? | 2026-05-07 | 2026-05-07 | 39d |
| 257 | 1.2.1.1.12.17 | Tabelas quantitativos/tipo pisos e plantas | 1d? | 2026-05-07 | 2026-05-07 | 39d |

| ID | WBS | Task | Duration | Start | Finish | Total slack | Text3 |
| --- | --- | --- | --- | --- | --- | --- | --- |
| 258 | 1.2.1.1.13 | **Cortes (Longitudinais e Transversais)** | 1d? | 2026-05-07 | 2026-05-07 | 39d |  |
| 259 | 1.2.1.1.13.1 | Indicar simbologias de representação gráfica, conforme NBR 6492:2021; | 1d? | 2026-05-07 | 2026-05-07 | 39d |  |
| 260 | 1.2.1.1.13.2 | Indicação de Escala; | 1d? | 2026-05-07 | 2026-05-07 | 39d |  |
| 261 | 1.2.1.1.13.3 | Elementos estruturais principais; | 1d? | 2026-05-07 | 2026-05-07 | 39d |  |
| 262 | 1.2.1.1.13.4 | Elementos de vedação internos e externos; | 1d? | 2026-05-07 | 2026-05-07 | 39d |  |
| 263 | 1.2.1.1.13.5 | Esquadrias; | 1d? | 2026-05-07 | 2026-05-07 | 39d |  |
| 264 | 1.2.1.1.13.6 | Identificação dos ambientes; | 1d? | 2026-05-07 | 2026-05-07 | 39d |  |
| 265 | 1.2.1.1.13.7 | Cobertura com indicação da respectiva inclinação; | 1d? | 2026-05-07 | 2026-05-07 | 39d |  |
| 266 | 1.2.1.1.13.8 | Cotas gerais | 1d? | 2026-05-07 | 2026-05-07 | 39d |  |
| 267 | 1.2.1.1.13.9 | Cotas de nível principal; | 1d? | 2026-05-07 | 2026-05-07 | 39d |  |
| 268 | 1.2.1.1.13.10 | Eixos do projeto; | 1d? | 2026-05-07 | 2026-05-07 | 39d |  |
| 269 | 1.2.1.1.13.11 | Relevo construído; | 1d? | 2026-05-07 | 2026-05-07 | 39d |  |
| 270 | 1.2.1.1.13.12 | Projeção da topografia natural. | 1d? | 2026-05-07 | 2026-05-07 | 39d |  |
| 271 | 1.2.1.1.14 | **Elevações** | 1d? | 2026-05-07 | 2026-05-07 | 39d |  |
| 272 | 1.2.1.1.14.1 | Indicar simbologias de representação gráfica, conforme NBR 6492:2021; | 1d? | 2026-05-07 | 2026-05-07 | 39d |  |
| 273 | 1.2.1.1.14.2 | Indicação de Escala; | 1d? | 2026-05-07 | 2026-05-07 | 39d |  |
| 274 | 1.2.1.1.14.3 | Elementos de vedação internos e externos; | 1d? | 2026-05-07 | 2026-05-07 | 39d |  |
| 275 | 1.2.1.1.14.4 | Elementos estruturais (quando aparentes); | 1d? | 2026-05-07 | 2026-05-07 | 39d |  |
| 276 | 1.2.1.1.14.5 | Esquadrias; | 1d? | 2026-05-07 | 2026-05-07 | 39d |  |
| 277 | 1.2.1.1.14.6 | Relevo construído; | 1d? | 2026-05-07 | 2026-05-07 | 39d |  |
| 278 | 1.2.1.1.14.7 | Cotas de nível principais; | 1d? | 2026-05-07 | 2026-05-07 | 39d |  |
| 279 | 1.2.1.1.14.8 | Indicação dos ambientes | 1d? | 2026-05-07 | 2026-05-07 | 39d |  |
| 280 | 1.2.1.1.14.9 | Cobertura (quando aparente). | 1d? | 2026-05-07 | 2026-05-07 | 39d |  |
| 281 | 1.2.1.1.15 | **Memorial Descritivo** | 1d? | 2026-05-07 | 2026-05-07 | 39d |  |
| 282 | 1.2.1.1.15.1 | Descrição dos elementos da edificação | 1d? | 2026-05-07 | 2026-05-07 | 39d |  |
| 283 | 1.2.1.1.15.2 | Descrição dos componentes construtivos e materiais de construção | 1d? | 2026-05-07 | 2026-05-07 | 39d |  |
| 284 | 1.2.1.1.15.3 | Elaboração/Geração de imagens para relatório, se necessário | 1d? | 2026-05-07 | 2026-05-07 | 39d |  |
| 285 | 1.2.1.1.15.4 | Lista de pranchas anexas e documentos | 1d? | 2026-05-07 | 2026-05-07 | 39d |  |
| 286 | 1.2.2 | Aprovação de Conformidade | 1d? | 2026-05-07 | 2026-05-07 | 39d | ܁8 |
| 287 | 1.2.3 | Aprovação de Compatibilidade | 1d? | 2026-05-07 | 2026-05-07 | 39d | ܁* |
| 288 | 1.2.4 | Material para entrega ao contrato | 1d? | 2026-05-07 | 2026-05-07 | 39d | ܁8 |

| ID | WBS | Task | Duration | Start | Finish | Predecessors | Total slack | Free slack |
| --- | --- | --- | --- | --- | --- | --- | --- | --- |
| 289 | 1.2.5 | **Engenharia** | 38d? | 2026-05-07 | 2026-06-30 |  | 2d |  |
| 290 | 1.2.5.1 | **Estrutura** | 17d? | 2026-05-07 | 2026-05-29 |  | 23d |  |
| 291 | 1.2.5.1.1 | **LOD 100 — Premissas, diretrizes e interfaces** | 7d | 2026-05-07 | 2026-05-15 |  | 23d |  |
| 292 | 1.2.5.1.1.1 | Estudo de viabilidade técnica e construtiva. | 2d | 2026-05-07 | 2026-05-08 |  | 38d |  |
| 293 | 1.2.5.1.1.2 | Levantamento de tipos de cargas globais estimadas (permanentes, acidentais, vento e especiais). | 5d | 2026-05-07 | 2026-05-13 |  | 35d |  |
| 294 | 1.2.5.1.1.3 | Definição preliminar do sistema estrutural (concreto armado, metálica ou mista). | 2d | 2026-05-07 | 2026-05-08 |  | 23d | 0d |
| 295 | 1.2.5.1.1.4 | Estimativa preliminar de tipologias de fundações (sapatas, blocos, estacas). | 3d | 2026-05-11 | 2026-05-13 | 294 | 23d | 0d |
| 296 | 1.2.5.1.1.5 | Previsão de áreas técnicas, casas de máquinas, reservatórios elevados e estrutura de cobertura. | 3d | 2026-05-11 | 2026-05-13 | 294 | 35d |  |
| 297 | 1.2.5.1.1.6 | Estudo volumétrico com modulação inicial de pilares, vigas e lajes. | 2d | 2026-05-14 | 2026-05-15 | 295 | 33d |  |
| 298 | 1.2.5.1.1.7 | Localização aproximada de elementos estruturais principais. | 2d | 2026-05-14 | 2026-05-15 | 295 | 23d | 0d |
| 299 | 1.2.5.1.2 | **LOD 200 — Dimensionamento e definições técnicas iniciais** | 10d | 2026-05-18 | 2026-05-29 |  | 23d |  |
| 300 | 1.2.5.1.2.1 | Lista preliminar de cargas e ações para dimensionamento. | 5d | 2026-05-18 | 2026-05-22 | 298 | 23d | 0d |
| 301 | 1.2.5.1.2.2 | Definição preliminar de alturas de pavimentos e níveis de fundação. | 5d | 2026-05-18 | 2026-05-22 | 298 | 28d |  |
| 302 | 1.2.5.1.2.3 | Indicação aproximada do sistema de cobertura (tesouras, treliças, vigamento metálico ou concreto). | 5d | 2026-05-18 | 2026-05-22 | 298 | 28d |  |
| 303 | 1.2.5.1.2.4 | Traçado preliminar de elementos especiais (escadas, rampas estruturais, reservatórios). | 5d | 2026-05-25 | 2026-05-29 | 300 | 23d |  |
| 304 | 1.2.5.1.2.5 | Modelagem genérica de pilares, vigas, lajes e fundações. | 5d | 2026-05-25 | 2026-05-29 | 300 | 23d |  |
| 305 | 1.2.5.1.2.6 | Planta de forma sem cotas com marcação de elementos principais. | 5d | 2026-05-25 | 2026-05-29 | 300 | 23d |  |
| 306 | 1.2.5.1.3 | **LOD 300 — Modelagem, compatibilização técnica e quantitativos** | 7d? | 2026-05-07 | 2026-05-15 |  | 33d | 0d |
| 307 | 1.2.5.1.3.1 | Compatibilização final com arquitetura e instalações (aberturas, embutidos e passagens). | 7d | 2026-05-07 | 2026-05-15 |  | 33d |  |
| 308 | 1.2.5.1.3.2 | Definição final dos elementos da cobertura (treliças, vigas, chapas, purlins). | 7d | 2026-05-07 | 2026-05-15 |  | 33d |  |
| 309 | 1.2.5.1.3.3 | Dimensionamento final de fundações conforme sondagem e cálculo estrutural. | 7d | 2026-05-07 | 2026-05-15 |  | 33d |  |
| 310 | 1.2.5.1.3.4 | Indicação de níveis e cotas exatas. | 7d | 2026-05-07 | 2026-05-15 |  | 33d |  |
| 311 | 1.2.5.1.3.5 | Quadro de cargas atualizado. | 7d | 2026-05-07 | 2026-05-15 |  | 33d |  |
| 312 | 1.2.5.1.3.6 | Inserção de fundações com tipologia e dimensões preliminares. | 7d | 2026-05-07 | 2026-05-15 |  | 33d |  |
| 313 | 1.2.5.1.3.7 | Quadro preliminar de cargas por elemento. | 7d | 2026-05-07 | 2026-05-15 |  | 33d |  |
| 314 | 1.2.5.1.3.8 | Modelagem definitiva de pilares, vigas, lajes, blocos, sapatas e estacas. | 7d | 2026-05-07 | 2026-05-15 |  | 33d |  |
| 315 | 1.2.5.1.3.9 | Planta estrutural com todos os elementos identificados. | 7d | 2026-05-07 | 2026-05-15 |  | 33d |  |
| 316 | 1.2.5.1.3.10 | Modelagem assertiva de elementos principais com dimensões aproximadas (largura, altura, espessura). | 7d | 2026-05-07 | 2026-05-15 |  | 33d |  |
| 317 | 1.2.5.1.3.11 | Modelagem estimada de armaduras principais (em nível de concepção). | 1d? | 2026-05-07 | 2026-05-07 |  | 39d |  |
| 318 | 1.2.5.1.3.12 | Compatibilização inicial com arquitetura e demais disciplinas. | 1d? | 2026-05-07 | 2026-05-07 |  | 39d |  |
| 319 | 1.2.5.1.3.13 | Indicação de passagens de infraestrutura (shafts, aberturas em lajes e vigas). | 1d? | 2026-05-07 | 2026-05-07 |  | 39d |  |

| ID | WBS | Task | Duration | Start | Finish | Predecessors | Total slack | Free slack | Text3 |
| --- | --- | --- | --- | --- | --- | --- | --- | --- | --- |
| 320 | 1.2.5.1.4 | **LOD 350 — Consolidação e documentação de entrega** | 1d? | 2026-05-07 | 2026-05-07 |  | 39d |  |  |
| 321 | 1.2.5.1.4.1 | Detalhamentos de ligações metálicas e nós estruturais. | 1d? | 2026-05-07 | 2026-05-07 |  | 39d |  |  |
| 322 | 1.2.5.1.4.2 | Especificação de armaduras (quantidade, diâmetro, bitola e posicionamento). | 1d? | 2026-05-07 | 2026-05-07 |  | 39d |  |  |
| 323 | 1.2.5.1.4.3 | Modelo 3D isométrico da estrutura. | 1d? | 2026-05-07 | 2026-05-07 |  | 39d |  |  |
| 324 | 1.2.5.1.4.4 | Consolidar documentação de entrega e emissão formal da disciplina | 1d? | 2026-05-07 | 2026-05-07 |  | 39d |  |  |
| 325 | 1.2.5.1.4.5 | Lista de materiais rastreável em fluxo BIM (aço, concreto, formas). | 1d? | 2026-05-07 | 2026-05-07 |  | 39d |  |  |
| 326 | 1.2.5.1.4.6 | Memorial descritivo contendo: objetivos, justificativa, descrição do sistema, concepção de fundações/cobertura, especificações e quadro de cargas. | 1d? | 2026-05-07 | 2026-05-07 |  | 39d |  |  |
| 327 | 1.2.5.1.4.7 | Normas técnicas utilizadas (NBR 6118, 6120, 6122, 8800, etc.). | 1d? | 2026-05-07 | 2026-05-07 |  | 39d |  |  |
| 328 | 1.2.5.1.4.8 | Cortes e vistas com cotas e indicações construtivas. | 1d? | 2026-05-07 | 2026-05-07 |  | 39d |  |  |
| 329 | 1.2.5.1.5 | Aprovação de Conformidade | 3d | 2026-05-13 | 2026-05-15 | 306FF | 33d |  | ܁8 |
| 330 | 1.2.5.1.6 | Aprovação de Compatibilidade | 1d? | 2026-05-07 | 2026-05-07 |  | 39d |  | ܁* |
| 331 | 1.2.5.1.7 | Material para entrega ao contrato | 3d | 2026-05-13 | 2026-05-15 | 306FF | 33d |  | ܁8 |
| 332 | 1.2.5.2 | **Hidrossanitário** | 38d? | 2026-05-07 | 2026-06-30 |  | 2d |  |  |
| 333 | 1.2.5.2.1 | **LOD 100 — Premissas, diretrizes e interfaces** | 10d | 2026-05-07 | 2026-05-20 |  | 2d |  |  |
| 334 | 1.2.5.2.1.1 | Memorial preliminar | 10d | 2026-05-07 | 2026-05-20 |  | 30d |  |  |
| 335 | 1.2.5.2.1.2 | Indicação de áreas técnicas | 6d | 2026-05-07 | 2026-05-14 |  | 34d |  |  |
| 336 | 1.2.5.2.1.3 | Planta baixa com traçado conceitual | 6d | 2026-05-07 | 2026-05-14 |  | 34d |  |  |
| 337 | 1.2.5.2.1.4 | Pontos de consumo principais e coletas sanitárias | 6d | 2026-05-07 | 2026-05-14 |  | 6d | 4d |  |
| 338 | 1.2.5.2.1.5 | Classificação de uso | 10d | 2026-05-07 | 2026-05-20 | 337FF | 30d |  |  |
| 339 | 1.2.5.2.1.6 | Diretrizes de espaço | 10d | 2026-05-07 | 2026-05-20 | 337FF | 30d |  |  |
| 340 | 1.2.5.2.1.7 | Estimativa de demanda ou população de uso | 10d | 2026-05-07 | 2026-05-20 | 337FF | 30d |  |  |
| 341 | 1.2.5.2.1.8 | Levantamento de elementos especiais dentre outras disciplinas de Engenharia e Arquitetura | 10d | 2026-05-07 | 2026-05-20 | 337FF | 2d | 0d |  |
| 342 | 1.2.5.2.2 | **LOD 200 — Dimensionamento e definições técnicas iniciais** | 20d | 2026-05-21 | 2026-06-18 |  | 2d |  |  |
| 343 | 1.2.5.2.2.1 | Critérios normativos adotados (ABNT, concessionárias, etc.) | 20d | 2026-05-21 | 2026-06-18 | 341 | 10d | 0d |  |
| 344 | 1.2.5.2.2.2 | Informações de demanda na concessionária (DPE ou AVT Aviso de Viabilidade Técnica) | 20d | 2026-05-21 | 2026-06-18 | 343SS | 10d |  |  |
| 345 | 1.2.5.2.2.3 | Recebimento e Análise de Sondagem (permeabilidade ou percolação) | 20d | 2026-05-21 | 2026-06-18 | 343SS | 10d |  |  |
| 346 | 1.2.5.2.2.4 | Recebimento e Análise de Topografia | 20d | 2026-05-21 | 2026-06-18 | 343SS | 10d |  |  |
| 347 | 1.2.5.2.2.5 | Estudo de viabilidade técnica, econômica e ambiental | 20d | 2026-05-21 | 2026-06-18 | 343SS | 10d |  |  |
| 348 | 1.2.5.2.2.6 | Lista preliminar de sistemas envolvidos. | 20d | 2026-05-21 | 2026-06-18 | 341 | 10d |  |  |
| 349 | 1.2.5.2.2.7 | Planta baixa e cortes estimada contendo: - Traçado preliminar de barrilete, ramais, colunas - Diâmetros estimados - Localização aproximada das bombas e unidades de tratamento e reúso - Localização do ramal predial de água e esgoto - Localização aproximada | 20d | 2026-05-21 | 2026-06-18 | 341 | 2d | 0d |  |

| ID | WBS | Task | Duration | Start | Finish | Predecessors | Total slack | Free slack | Text3 |
| --- | --- | --- | --- | --- | --- | --- | --- | --- | --- |
| 350 | 1.2.5.2.3 | **LOD 300 — Modelagem, compatibilização técnica e quantitativos** | 8d | 2026-06-19 | 2026-06-30 |  | 2d | 0d |  |
| 351 | 1.2.5.2.3.1 | Planta, corte e detalhe isométrico contendo: - Modelagem detalhada com diâmetros, cotas e inclinações definitivas (barriletes, colunas, ramais) - Quantitativos e especificação técnica dos materiais (tubos, conexões, reservatórios, registros e válvulas com | 8d | 2026-06-19 | 2026-06-30 | 349 | 2d | 0d |  |
| 352 | 1.2.5.2.3.2 | Memorial descritivo | 3d | 2026-06-26 | 2026-06-30 | 351FF | 2d |  |  |
| 353 | 1.2.5.2.3.3 | Memória de cálculo (pressão, vazão, diâmetros, perda de carga). | 3d | 2026-06-26 | 2026-06-30 | 349, 351FF | 2d |  |  |
| 354 | 1.2.5.2.4 | **LOD 350 — Consolidação e documentação de entrega** | 1d? | 2026-05-07 | 2026-05-07 |  | 39d |  |  |
| 355 | 1.2.5.2.4.1 | Compatibilização técnica entre disciplinas | 1d? | 2026-05-07 | 2026-05-07 |  | 39d |  |  |
| 356 | 1.2.5.2.4.2 | Detalhes construtivos de passagem em estrutura | 1d? | 2026-05-07 | 2026-05-07 |  | 39d |  |  |
| 357 | 1.2.5.2.4.3 | Inclusão de suportes e pontos de ancoragem e conexões especiais | 1d? | 2026-05-07 | 2026-05-07 |  | 39d |  |  |
| 358 | 1.2.5.2.4.4 | Memorial de cálculo padronizado em pdf e doc contendo: - Normas Técnicas Utilizadas - Plantas que compõem o projeto - Cálculo do dimensionamento das tubulações, bombas, equipamentos e reservatórios - Especificação técnica dos materiais, ferramentas, equip | 1d? | 2026-05-07 | 2026-05-07 |  | 39d |  |  |
| 359 | 1.2.5.2.4.5 | Memorial descritivo padronizado em pdf e doc contendo: - Normas Técnicas Utilizadas - Objetivos do Projeto - Justificativa do Projeto - Descrição Geral das Instalações - Critérios de dimensionamento - Especificações técnicas de todos os elementos - Conclu | 1d? | 2026-05-07 | 2026-05-07 |  | 39d |  |  |
| 360 | 1.2.5.2.4.6 | Consolidar documentação de entrega e emissão formal da disciplina | 1d? | 2026-05-07 | 2026-05-07 |  | 39d |  |  |
| 361 | 1.2.5.2.5 | Aprovação de Conformidade | 3d | 2026-06-26 | 2026-06-30 | 350FF | 2d |  | ܁8 |
| 362 | 1.2.5.2.6 | Aprovação de Compatibilidade | 1d? | 2026-05-07 | 2026-05-07 |  | 39d |  | ܁* |
| 363 | 1.2.5.2.7 | Material para entrega ao contrato | 3d | 2026-06-26 | 2026-06-30 | 350FF | 2d |  | ܁8 |
| 364 | 1.2.5.3 | **AVAC** | 34d? | 2026-05-07 | 2026-06-24 |  | 4d |  |  |
| 365 | 1.2.5.3.1 | **LOD 100 — Premissas, diretrizes e interfaces** | 20d | 2026-05-07 | 2026-06-03 |  | 4d |  |  |
| 366 | 1.2.5.3.1.1 | Estimativa de carga térmica por ambiente. | 10d | 2026-05-07 | 2026-05-20 |  | 30d |  |  |
| 367 | 1.2.5.3.1.2 | Localização preliminar de unidades de tratamento de ar, condensadoras e exaustores. | 10d | 2026-05-07 | 2026-05-20 |  | 30d |  |  |
| 368 | 1.2.5.3.1.3 | Pontos locação para seus elementos no projeto arquitetônico. | 10d | 2026-05-07 | 2026-05-20 |  | 4d | 0d |  |
| 369 | 1.2.5.3.1.4 | Estudo de viabilidade e rotas principais de distribuição de ar. | 10d | 2026-05-07 | 2026-05-20 |  | 30d |  |  |
| 370 | 1.2.5.3.1.5 | Reserva de espaços técnicos e shafts. | 10d | 2026-05-07 | 2026-05-20 |  | 6d | 0d |  |
| 371 | 1.2.5.3.1.6 | Levantamento de cargas especiais provenientes de outras disciplinas. | 10d | 2026-05-21 | 2026-06-03 | 444, 467 | 20d |  |  |
| 372 | 1.2.5.3.2 | **LOD 200 — Dimensionamento e definições técnicas iniciais** | 24d | 2026-05-21 | 2026-06-24 |  | 6d | 0d |  |
| 373 | 1.2.5.3.2.1 | Lista preliminar de sistemas HVAC envolvidos (expansão direta, VRF, chillers, ventilação, exaustão). | 24d | 2026-05-21 | 2026-06-24 | 370 | 6d |  |  |
| 374 | 1.2.5.3.2.2 | Planta baixa estimada contendo: pontos de insuflamento e retorno. | 24d | 2026-05-21 | 2026-06-24 | 370 | 6d |  |  |
| 375 | 1.2.5.3.2.3 | Planta baixa estimada contendo: unidades internas e externas com posição preliminar. | 24d | 2026-05-21 | 2026-06-24 | 370 | 6d |  |  |

| ID | WBS | Task | Duration | Start | Finish | Predecessors | Total slack | Free slack | Text3 |
| --- | --- | --- | --- | --- | --- | --- | --- | --- | --- |
| 376 | 1.2.5.3.3 | **LOD 300 — Modelagem, compatibilização técnica e quantitativos** | 1d? | 2026-05-07 | 2026-05-07 |  | 39d |  |  |
| 377 | 1.2.5.3.3.1 | Rotas iniciais de dutos, tubulações e drenos. | 1d? | 2026-05-07 | 2026-05-07 |  | 39d |  |  |
| 378 | 1.2.5.3.4 | **LOD 350 — Consolidação e documentação de entrega** | 1d? | 2026-05-07 | 2026-05-07 |  | 39d |  |  |
| 379 | 1.2.5.3.4.1 | Dutos e tubulações com identificação de material, seção e isolamento. | 1d? | 2026-05-07 | 2026-05-07 |  | 39d |  |  |
| 380 | 1.2.5.3.4.2 | Indicação preliminar de passagens por shafts, lajes e paredes. | 1d? | 2026-05-07 | 2026-05-07 |  | 39d |  |  |
| 381 | 1.2.5.3.4.3 | Modelagem estimada de dutos com seções aproximadas e indicação de isolamento térmico/acústico. | 1d? | 2026-05-07 | 2026-05-07 |  | 39d |  |  |
| 382 | 1.2.5.3.4.4 | Memorial descritivo e cálculo detalhado com: normas, objetivos, descrição do sistema, critérios de conforto/qualidade do ar, especificações de componentes. | 1d? | 2026-05-07 | 2026-05-07 |  | 39d |  |  |
| 383 | 1.2.5.3.4.5 | Diagramas de automação e controle. | 1d? | 2026-05-07 | 2026-05-07 |  | 39d |  |  |
| 384 | 1.2.5.3.4.6 | Modelagem assertiva de pontos de insuflamento, retorno e exaustão. | 1d? | 2026-05-07 | 2026-05-07 |  | 39d |  |  |
| 385 | 1.2.5.3.4.7 | Quadro de cargas atualizado para integração elétrica. | 1d? | 2026-05-07 | 2026-05-07 |  | 39d |  |  |
| 386 | 1.2.5.3.4.8 | Quadro preliminar de cargas elétricas e hidráulicas do sistema. | 1d? | 2026-05-07 | 2026-05-07 |  | 39d |  |  |
| 387 | 1.2.5.3.4.9 | Cortes e detalhes típicos. | 1d? | 2026-05-07 | 2026-05-07 |  | 39d |  |  |
| 388 | 1.2.5.3.4.10 | Diagramas isométricos 3D. | 1d? | 2026-05-07 | 2026-05-07 |  | 39d |  |  |
| 389 | 1.2.5.3.4.11 | Lista completa de materiais e equipamentos com potência e voltagem. | 1d? | 2026-05-07 | 2026-05-07 |  | 39d |  |  |
| 390 | 1.2.5.3.4.12 | Plantas de todos os pavimentos com cotas e legendas. | 1d? | 2026-05-07 | 2026-05-07 |  | 39d |  |  |
| 391 | 1.2.5.3.4.13 | Plantas em formatos RVT, IFC, PDF e DWG. | 1d? | 2026-05-07 | 2026-05-07 |  | 39d |  |  |
| 392 | 1.2.5.3.5 | Aprovação de Conformidade | 3d | 2026-06-22 | 2026-06-24 | 372FF | 6d |  | ܁8 |
| 393 | 1.2.5.3.6 | Aprovação de Compatibilidade | 1d? | 2026-05-07 | 2026-05-07 |  | 39d |  | ܁* |
| 394 | 1.2.5.3.7 | Material para entrega ao contrato | 3d | 2026-06-22 | 2026-06-24 | 372FF | 6d |  | ܁8 |
| 395 | 1.2.5.4 | **PCI (Incêndio)** | 34d? | 2026-05-07 | 2026-06-24 |  | 4d |  |  |
| 396 | 1.2.5.4.1 | **LOD 100 — Premissas, diretrizes e interfaces** | 10d | 2026-05-07 | 2026-05-20 |  | 4d |  | ܁# |
| 397 | 1.2.5.4.1.1 | Estudo e avaliação da arquitetura atendendo as normas competentes de PCI | 10d | 2026-05-07 | 2026-05-20 |  | 30d |  |  |
| 398 | 1.2.5.4.1.2 | Avaliação do espaço para CMI e Central de Gás. | 10d | 2026-05-07 | 2026-05-20 |  | 30d |  |  |
| 399 | 1.2.5.4.1.3 | Pontos locação para seus elementos no projeto arquitetônico | 10d | 2026-05-07 | 2026-05-20 |  | 4d | 0d |  |

| ID | WBS | Task | Duration | Start | Finish | Predecessors | Total slack | Free slack | Text3 |
| --- | --- | --- | --- | --- | --- | --- | --- | --- | --- |
| 400 | 1.2.5.4.2 | **LOD 200 — Dimensionamento e definições técnicas iniciais** | 24d | 2026-05-21 | 2026-06-24 |  | 6d | 0d | ܁# |
| 401 | 1.2.5.4.2.1 | Definição da classificação da edificação e o risco de incêndio | 24d | 2026-05-21 | 2026-06-24 | 399 | 6d |  |  |
| 402 | 1.2.5.4.2.2 | Cálculos pré-dimensionados dos extintores, hidrantes e bomba. | 24d | 2026-05-21 | 2026-06-24 | 399 | 6d |  |  |
| 403 | 1.2.5.4.2.3 | Avaliação das rotas de fuga, ventilação de CMI e outros elementos de importância para as normas de PCI | 24d | 2026-05-21 | 2026-06-24 | 399 | 6d |  |  |
| 404 | 1.2.5.4.3 | **LOD 350 — Consolidação e documentação de entrega** | 1d? | 2026-05-07 | 2026-05-07 |  | 39d |  | ܁# |
| 405 | 1.2.5.4.3.1 | (mantive o teto de 5, mas aqui eu deixaria em 4 grupos mesmo, pra ficar limpo) | 1d? | 2026-05-07 | 2026-05-07 |  | 39d |  |  |
| 406 | 1.2.5.4.3.2 | (seu arquivo não traz uma linha explícita aqui no LOD 350 de PCI; se você quiser, a gente inclui como grupo “padrão” da EAP ou deixa só no LOD 400) | 1d? | 2026-05-07 | 2026-05-07 |  | 39d |  |  |
| 407 | 1.2.5.4.3.3 | Legenda completa com simbologia adotada (hidrante, extintor, iluminação, alarme etc.). | 1d? | 2026-05-07 | 2026-05-07 |  | 39d |  |  |
| 408 | 1.2.5.4.3.4 | Notas técnicas com base nas normas utilizadas (ex: NBR 13714, NBR 9077, NTs do CBMERJ) | 1d? | 2026-05-07 | 2026-05-07 |  | 39d |  |  |
| 409 | 1.2.5.4.3.5 | Quadro de áreas (área total, pavimentos, ocupação conforme IT) | 1d? | 2026-05-07 | 2026-05-07 |  | 39d |  |  |
| 410 | 1.2.5.4.3.6 | Alimentação dos cabos de alarme de incêndio | 1d? | 2026-05-07 | 2026-05-07 |  | 39d |  |  |
| 411 | 1.2.5.4.3.7 | Cálculo da central de Gás, tubulação e manômetros | 1d? | 2026-05-07 | 2026-05-07 |  | 39d |  |  |
| 412 | 1.2.5.4.3.8 | Cálculo do dimensionamento das tubulações, reservatório e bombas | 1d? | 2026-05-07 | 2026-05-07 |  | 39d |  |  |
| 413 | 1.2.5.4.3.9 | Lista de equipamentos | 1d? | 2026-05-07 | 2026-05-07 |  | 39d |  |  |
| 414 | 1.2.5.4.3.10 | Lista de materiais | 1d? | 2026-05-07 | 2026-05-07 |  | 39d |  |  |
| 415 | 1.2.5.4.3.11 | Corte esquemático da casa de bombas com bomba principal, jockey, reserva e sistema elétrico | 1d? | 2026-05-07 | 2026-05-07 |  | 39d |  |  |
| 416 | 1.2.5.4.3.12 | Planta Baixa do Sistema: - Extintores com tipo, capacidade e classe de fogo (ABC, CO2, etc.) - Hidrantes com localização exata, raio de alcance e cotas - Mangotinhos, sprinklers (quando houver), chuveiros automáticos - Rede de tubulação: traçado, diâmetro | 1d? | 2026-05-07 | 2026-05-07 |  | 39d |  |  |
| 417 | 1.2.5.4.3.13 | Planta baixa indicando tubulações, prumadas, reservatório, caixas de hidrante e/ou equipamentos | 1d? | 2026-05-07 | 2026-05-07 |  | 39d |  |  |
| 418 | 1.2.5.4.3.14 | Planta de Cobertura: - Indicação de barrilete de recalque e possíveis válvulas de retenção - Reservatório superior e sua divisão (incêndio x consumo) se for comum | 1d? | 2026-05-07 | 2026-05-07 |  | 39d |  |  |
| 419 | 1.2.5.5 | **Gás** | 34d? | 2026-05-07 | 2026-06-24 |  | 6d |  |  |
| 420 | 1.2.5.5.1 | **LOD 100 — Premissas, diretrizes e interfaces** | 1d? | 2026-05-07 | 2026-05-07 |  | 39d |  |  |
| 421 | 1.2.5.5.1.1 | Estudo e avaliação da arquitetura atendendo as normas competentes de PCI | 1d? | 2026-05-07 | 2026-05-07 |  | 39d |  |  |
| 422 | 1.2.5.5.1.2 | Avaliação do espaço para CMI e Central de Gás. | 1d? | 2026-05-07 | 2026-05-07 |  | 39d |  |  |
| 423 | 1.2.5.5.1.3 | Pontos locação para seus elementos no projeto arquitetônico | 1d? | 2026-05-07 | 2026-05-07 |  | 39d |  |  |

| ID | WBS | Task | Duration | Start | Finish | Predecessors | Total slack | Free slack | Text3 |
| --- | --- | --- | --- | --- | --- | --- | --- | --- | --- |
| 424 | 1.2.5.5.2 | **LOD 200 — Dimensionamento e definições técnicas iniciais** | 1d? | 2026-05-07 | 2026-05-07 |  | 39d |  |  |
| 425 | 1.2.5.5.2.1 | Definição da classificação da edificação e o risco de incêndio | 1d? | 2026-05-07 | 2026-05-07 |  | 39d |  |  |
| 426 | 1.2.5.5.2.2 | Cálculos pré-dimensionados dos extintores, hidrantes e bomba. | 1d? | 2026-05-07 | 2026-05-07 |  | 39d |  |  |
| 427 | 1.2.5.5.2.3 | Avaliação das rotas de fuga, ventilação de CMI e outros elementos de importância para as normas de PCI | 1d? | 2026-05-07 | 2026-05-07 |  | 39d |  |  |
| 428 | 1.2.5.5.3 | **LOD 350 — Consolidação e documentação de entrega** | 34d? | 2026-05-07 | 2026-06-24 |  | 6d |  |  |
| 429 | 1.2.5.5.3.1 | 4. Detalhes Técnicos: - Detalhe de regulador, medidor, válvula de bloqueio. | 1d? | 2026-05-07 | 2026-05-07 |  | 39d |  |  |
| 430 | 1.2.5.5.3.2 | Consolidar documentação de entrega e emissão formal da disciplina | 1d? | 2026-05-07 | 2026-05-07 |  | 39d |  |  |
| 431 | 1.2.5.5.3.3 | Legenda com simbologia (válvula, regulador, medidor, ponto de consumo etc.). | 1d? | 2026-05-07 | 2026-05-07 |  | 39d |  |  |
| 432 | 1.2.5.5.3.4 | Normas de referência (ex: NBR 15526 para GLP; NBR 13103 para instalações residenciais; NBR 13523). | 1d? | 2026-05-07 | 2026-05-07 |  | 39d |  |  |
| 433 | 1.2.5.5.3.5 | Cálculo da central de Gás, tubulação e manômetros | 1d? | 2026-05-07 | 2026-05-07 |  | 39d |  |  |
| 434 | 1.2.5.5.3.6 | Lista de equipamentos | 1d? | 2026-05-07 | 2026-05-07 |  | 39d |  |  |
| 435 | 1.2.5.5.3.7 | Lista de materiais | 1d? | 2026-05-07 | 2026-05-07 |  | 39d |  |  |
| 436 | 1.2.5.5.3.8 | 2. Planta Baixa da Rede de Gás: - Local do central de gás (GLP) ou ponto de entrada (GN). - Roteamento da tubulação (com diâmetros, conexões, declividades, suportes). - Indicação dos reguladores de pressão (1ª e 2ª etapa). - Identificação dos pontos de co | 1d? | 2026-05-07 | 2026-05-07 |  | 39d |  |  |
| 437 | 1.2.5.5.3.9 | 3. Planta da Central de Gás (GLP): - Capacidade dos cilindros e tipo de armazenamento (P45, P190 etc.). - Indicação de ventilação, cobertura, proteção mecânica. - Distâncias mínimas até edificações, janelas, portas, ralos. - Extintor próximo à central. | 1d? | 2026-05-07 | 2026-05-07 |  | 39d |  |  |
| 438 | 1.2.5.5.3.10 | Aprovação de Conformidade | 3d | 2026-06-22 | 2026-06-24 | 400FF | 6d |  | ܁8 |
| 439 | 1.2.5.5.3.11 | Aprovação de Compatibilidade | 1d? | 2026-05-07 | 2026-05-07 |  | 39d |  | ܁* |
| 440 | 1.2.5.5.3.12 | Material para entrega ao contrato | 3d | 2026-06-22 | 2026-06-24 | 400FF | 6d |  | ܁8 |
| 441 | 1.2.5.6 | **Elétrica Baixa Tensão** | 36d? | 2026-05-07 | 2026-06-26 |  | 4d |  |  |
| 442 | 1.2.5.6.1 | **LOD 100 — Concepção** | 16d | 2026-05-07 | 2026-05-28 |  | 10d |  |  |
| 443 | 1.2.5.6.1.1 | Avaliação e Diretrizes Técnicas para Arquitetura | 6d | 2026-05-07 | 2026-05-14 |  | 34d |  |  |
| 444 | 1.2.5.6.1.2 | Estimativa de Cargas e Demanda | 10d | 2026-05-07 | 2026-05-20 |  | 10d | 0d |  |
| 445 | 1.2.5.6.1.3 | Levantamento de Equipamentos de Outras Disciplinas | 6d | 2026-05-21 | 2026-05-28 | 368, 399 | 4d | 0d |  |
| 446 | 1.2.5.6.2 | **LOD 200 — Anteprojeto** | 19d | 2026-05-29 | 2026-06-25 |  | 4d | 0d |  |
| 447 | 1.2.5.6.2.1 | TUGs Estimados | 19d | 2026-05-29 | 2026-06-25 | 444, 445 | 4d |  |  |
| 448 | 1.2.5.6.2.2 | Pontos de Luz Estimados | 19d | 2026-05-29 | 2026-06-25 | 444, 445 | 4d |  |  |
| 449 | 1.2.5.6.2.3 | TUEs e Quadros Estimados | 19d | 2026-05-29 | 2026-06-25 | 444, 445 | 4d |  |  |

| ID | WBS | Task | Duration | Start | Finish | Predecessors | Total slack | Free slack | Text3 |
| --- | --- | --- | --- | --- | --- | --- | --- | --- | --- |
| 450 | 1.2.5.6.3 | **LOD 300 - Entrega Fase 2** | 1d? | 2026-06-26 | 2026-06-26 | 446 | 4d |  |  |
| 451 | 1.2.5.6.3.1 | TUGs / TUE / Pontos de Luz - Calculados | 1d? | 2026-06-26 | 2026-06-26 |  | 4d |  |  |
| 452 | 1.2.5.6.3.2 | Condutos - Posição Assertiva e Dimensionados | 1d? | 2026-06-26 | 2026-06-26 |  | 4d |  |  |
| 453 | 1.2.5.6.3.3 | Condutores Dimensionados | 1d? | 2026-06-26 | 2026-06-26 |  | 4d |  |  |
| 454 | 1.2.5.6.3.4 | Calculo de Demanda Finalizado | 1d? | 2026-06-26 | 2026-06-26 |  | 4d |  |  |
| 455 | 1.2.5.6.4 | **LOD 350 - Projeto Básico** | 3d? | 2026-05-07 | 2026-05-11 |  | 37d |  |  |
| 456 | 1.2.5.6.4.1 | Planta Baixa | 1d? | 2026-05-07 | 2026-05-07 |  | 39d |  |  |
| 457 | 1.2.5.6.4.2 | Tabelas de Painéis, Diagrama Unifilar, Multifilar, Legendas de Projeto, Anotações de Prancha | 1d? | 2026-05-07 | 2026-05-07 |  | 39d |  |  |
| 458 | 1.2.5.6.4.3 | Lista de Materiais (Componentes, Eletrodutos, Cabos) | 1d? | 2026-05-07 | 2026-05-07 |  | 39d |  |  |
| 459 | 1.2.5.6.4.4 | Documentação - Memorial de Cálculo, Memorial Descritivo e Especificações Técnicas | 1d? | 2026-05-07 | 2026-05-07 |  | 39d |  |  |
| 460 | 1.2.5.6.4.5 | Planta Isométrica Completa | 1d? | 2026-05-07 | 2026-05-07 |  | 39d |  |  |
| 461 | 1.2.5.6.4.6 | Aprovação de Conformidade | 3d | 2026-05-07 | 2026-05-11 |  | 37d |  | ܁8 |
| 462 | 1.2.5.6.4.7 | Aprovação de Compatibilidade | 1d? | 2026-05-07 | 2026-05-07 |  | 39d |  | ܁* |
| 463 | 1.2.5.6.4.8 | Material para entrega ao contrato | 3d | 2026-05-07 | 2026-05-11 |  | 37d |  | ܁8 |
| 464 | 1.2.5.7 | **Telecom** | 31d? | 2026-05-07 | 2026-06-19 |  | 9d |  |  |
| 465 | 1.2.5.7.1 | **LOD 100 — Concepção** | 10d | 2026-05-07 | 2026-05-20 |  | 9d |  |  |
| 466 | 1.2.5.7.1.1 | Avaliação e Diretrizes Técnicas para Arquitetura | 10d | 2026-05-07 | 2026-05-20 |  | 30d |  |  |
| 467 | 1.2.5.7.1.2 | Estimativa de Demanda de Telecomunicações | 10d | 2026-05-07 | 2026-05-20 |  | 20d | 0d |  |
| 468 | 1.2.5.7.1.3 | Levantamento de Equipamentos e Interfaces com Outras Disciplinas | 10d | 2026-05-07 | 2026-05-20 |  | 9d | 0d |  |
| 469 | 1.2.5.7.2 | **LOD 200 — Anteprojeto** | 20d | 2026-05-21 | 2026-06-18 |  | 9d | 0d |  |
| 470 | 1.2.5.7.2.1 | Pontos de Telecomunicações Estimados (Rede, Voz, CFTV e Demais Sistemas) | 10d | 2026-05-21 | 2026-06-03 | 468 | 9d | 0d |  |
| 471 | 1.2.5.7.2.2 | Racks Estimados | 10d | 2026-05-21 | 2026-06-03 | 468 | 9d | 0d |  |
| 472 | 1.2.5.7.2.3 | Infraestrutura de Telecomunicações Preliminar | 10d | 2026-06-05 | 2026-06-18 | 470, 471 | 9d |  |  |
| 473 | 1.2.5.7.3 | **LOD 300 — Modelagem, compatibilização técnica e quantitativos** | 1d? | 2026-06-19 | 2026-06-19 | 469 | 9d |  |  |
| 474 | 1.2.5.7.3.1 | Pontos de Rede / Voz / CFTV - Equipamentos Determinados | 1d? | 2026-06-19 | 2026-06-19 |  | 9d |  |  |
| 475 | 1.2.5.7.3.2 | Condutos - Posição Assertiva e Dimensionados | 1d? | 2026-06-19 | 2026-06-19 |  | 9d |  |  |
| 476 | 1.2.5.7.3.3 | Condutores Dimensionados e Modelados | 1d? | 2026-06-19 | 2026-06-19 |  | 9d |  |  |
| 477 | 1.2.5.7.3.4 | Ocupação de Rack Determinada | 1d? | 2026-06-19 | 2026-06-19 |  | 9d |  |  |
| 478 | 1.2.5.7.3.5 | Dispositivos de Telecomunicações do Rack Dimensionados e Modelados | 1d? | 2026-06-19 | 2026-06-19 |  | 9d |  |  |

| ID | WBS | Task | Duration | Start | Finish | Predecessors | Total slack | Free slack | Text3 |
| --- | --- | --- | --- | --- | --- | --- | --- | --- | --- |
| 479 | 1.2.5.7.4 | **LOD 350 - Projeto Básico** | 3d? | 2026-05-07 | 2026-05-11 |  | 37d |  |  |
| 480 | 1.2.5.7.4.1 | Planta Baixa | 1d? | 2026-05-07 | 2026-05-07 |  | 39d |  |  |
| 481 | 1.2.5.7.4.2 | Tabelas de Painéis, Diagramas de Bloco, Legendas de Projeto, Anotações de Prancha | 1d? | 2026-05-07 | 2026-05-07 |  | 39d |  |  |
| 482 | 1.2.5.7.4.3 | Lista de Materiais Rastreável em BIM | 1d? | 2026-05-07 | 2026-05-07 |  | 39d |  |  |
| 483 | 1.2.5.7.4.4 | Documentação - Memorial de Cálculo, Memorial Descritivo e Especificações Técnicas | 1d? | 2026-05-07 | 2026-05-07 |  | 39d |  |  |
| 484 | 1.2.5.7.4.5 | Planta Isométrica Completa | 1d? | 2026-05-07 | 2026-05-07 |  | 39d | 2d |  |
| 485 | 1.2.5.7.4.6 | Aprovação de Conformidade | 3d | 2026-05-07 | 2026-05-11 | 484FF | 37d |  | ܁8 |
| 486 | 1.2.5.7.4.7 | Aprovação de Compatibilidade | 1d? | 2026-05-07 | 2026-05-07 |  | 39d |  | ܁* |
| 487 | 1.2.5.7.4.8 | Material para entrega ao contrato | 3d | 2026-05-07 | 2026-05-11 |  | 37d |  | ܁8 |
| 488 | 1.2.5.8 | **Subestação** | 31d? | 2026-05-07 | 2026-06-19 |  | 9d |  |  |
| 489 | 1.2.5.8.1 | **LOD 100 — Concepção** | 10d | 2026-05-07 | 2026-05-20 |  | 9d |  |  |
| 490 | 1.2.5.8.1.1 | Avaliação e Diretrizes Técnicas para Arquitetura | 10d | 2026-05-07 | 2026-05-20 |  | 30d |  |  |
| 491 | 1.2.5.8.1.2 | Levantamento de Demanda, Perfil de Consumo e Ponto de Entrega | 10d | 2026-05-07 | 2026-05-20 |  | 30d |  |  |
| 492 | 1.2.5.8.1.3 | Estudo de Viabilidade Técnica e Atendimento ao Padrão da Concessionária | 10d | 2026-05-07 | 2026-05-20 |  | 9d | 0d |  |
| 493 | 1.2.5.8.2 | **LOD 200 — Anteprojeto** | 20d | 2026-05-21 | 2026-06-18 |  | 9d | 0d |  |
| 494 | 1.2.5.8.2.1 | Definição do Tipo de Subestação e Arranjo Físico Preliminar | 10d | 2026-05-21 | 2026-06-03 | 492 | 9d | 0d |  |
| 495 | 1.2.5.8.2.2 | Dimensionamento Preliminar do Transformador e Equipamentos Principais | 10d | 2026-06-05 | 2026-06-18 | 494 | 9d |  |  |
| 496 | 1.2.5.8.2.3 | Diretrizes Preliminares de Aterramento | 10d | 2026-06-05 | 2026-06-18 | 494 | 9d |  |  |
| 497 | 1.2.5.8.3 | **LOD 300 — Modelagem, compatibilização técnica e quantitativos** | 1d? | 2026-06-19 | 2026-06-19 | 493 | 9d | 0d |  |
| 498 | 1.2.5.8.3.1 | Dimensionamento Definitivo do Transformador, Equipamentos e Proteções | 1d? | 2026-06-19 | 2026-06-19 |  | 9d |  |  |
| 499 | 1.2.5.8.3.2 | Traçados Definitivos de Cabos, Barramentos e Malha de Aterramento | 1d? | 2026-06-19 | 2026-06-19 |  | 9d |  |  |
| 500 | 1.2.5.8.3.3 | Diagramas Unifilar e Multifilar Completos | 1d? | 2026-06-19 | 2026-06-19 |  | 9d |  |  |
| 501 | 1.2.5.8.3.4 | Compatibilização com Demais Disciplinas | 1d? | 2026-06-19 | 2026-06-19 |  | 9d |  |  |
| 502 | 1.2.5.8.4 | **LOD 350 — Consolidação e documentação de entrega** | 1d? | 2026-05-07 | 2026-05-07 |  | 39d |  |  |
| 503 | 1.2.5.8.4.1 | Planta Baixa | 1d? | 2026-05-07 | 2026-05-07 |  | 39d |  |  |
| 504 | 1.2.5.8.4.2 | Tabelas de Painéis, Diagrama Unifilar, Multifilar, Legendas de Projeto, Anotações de Prancha | 1d? | 2026-05-07 | 2026-05-07 |  | 39d |  |  |
| 505 | 1.2.5.8.4.3 | Documentação Técnica (Memorial de Cálculo, Memorial Descritivo e Especificações) | 1d? | 2026-05-07 | 2026-05-07 |  | 39d |  |  |
| 506 | 1.2.5.8.4.4 | Planta Isométrica Completa | 1d? | 2026-05-07 | 2026-05-07 |  | 39d |  |  |
| 507 | 1.2.5.8.5 | Aprovação de Conformidade | 3d | 2026-06-17 | 2026-06-19 | 497FF | 9d |  | ܁8 |
| 508 | 1.2.5.8.6 | Aprovação de Compatibilidade | 1d? | 2026-05-07 | 2026-05-07 |  | 39d |  | ܁* |
| 509 | 1.2.5.8.7 | Material para entrega ao contrato | 3d | 2026-06-17 | 2026-06-19 | 497FF | 9d |  | ܁8 |

| ID | WBS | Task | Duration | Start | Finish | Predecessors | Total slack | Free slack | Text3 |
| --- | --- | --- | --- | --- | --- | --- | --- | --- | --- |
| 510 | 1.2.5.9 | **SPDA** | 31d? | 2026-05-07 | 2026-06-19 |  | 9d |  |  |
| 511 | 1.2.5.9.1 | **LOD 100 — Concepção** | 10d | 2026-05-07 | 2026-05-20 |  | 9d |  |  |
| 512 | 1.2.5.9.1.1 | Avaliação e Diretrizes Técnicas para Arquitetura | 10d | 2026-05-07 | 2026-05-20 |  | 30d |  |  |
| 513 | 1.2.5.9.1.2 | Coleta de Informações da Edificação e Análise de Risco (ABNT NBR 5419-2) | 10d | 2026-05-07 | 2026-05-20 |  | 30d |  |  |
| 514 | 1.2.5.9.1.3 | Estudo Preliminar de Necessidade e Nível de Proteção do SPDA | 10d | 2026-05-07 | 2026-05-20 |  | 9d | 0d |  |
| 515 | 1.2.5.9.2 | **LOD 200 — Anteprojeto** | 20d | 2026-05-21 | 2026-06-18 |  | 9d |  |  |
| 516 | 1.2.5.9.2.1 | Definição da Estratégia de Proteção e Soluções Técnicas | 10d | 2026-05-21 | 2026-06-03 | 514 | 9d | 0d |  |
| 517 | 1.2.5.9.2.2 | Zoneamento de Captação, Descida e Traçados Preliminares | 10d | 2026-06-05 | 2026-06-18 | 516 | 10d |  |  |
| 518 | 1.2.5.9.2.3 | Estudo de Interferências, Compatibilização e Métodos Construtivos | 10d | 2026-06-05 | 2026-06-18 | 516 | 9d | 0d |  |
| 519 | 1.2.5.9.3 | **LOD 300 — Modelagem, compatibilização técnica e quantitativos** | 1d? | 2026-06-19 | 2026-06-19 | 518 | 9d |  |  |
| 520 | 1.2.5.9.3.1 | Dimensionamento do SPDA Externo e Interno (ABNT NBR 5419-3 e 5419-4) | 1d? | 2026-06-19 | 2026-06-19 |  | 9d |  |  |
| 521 | 1.2.5.9.3.2 | Integração com Instalações Elétricas e Demais Sistemas | 1d? | 2026-06-19 | 2026-06-19 |  | 9d |  |  |
| 522 | 1.2.5.9.3.3 | Traçados Definitivos, Diagramas e Compatibilização Interdisciplinar | 1d? | 2026-06-19 | 2026-06-19 |  | 9d |  |  |
| 523 | 1.2.5.9.3.4 | Especificação Detalhada dos Componentes do SPDA | 1d? | 2026-06-19 | 2026-06-19 |  | 9d |  |  |
| 524 | 1.2.5.9.4 | **LOD 350 - Projeto Básico** | 3d? | 2026-05-07 | 2026-05-11 |  | 37d |  |  |
| 525 | 1.2.5.9.4.1 | Plantas, Diagramas e Documentação Gráfica | 1d? | 2026-05-07 | 2026-05-07 |  | 39d |  |  |
| 526 | 1.2.5.9.4.2 | Lista de Materiais | 1d? | 2026-05-07 | 2026-05-07 |  | 39d |  |  |
| 527 | 1.2.5.9.4.3 | Documentação Técnica (Memorial de Cálculo, Memorial Descritivo e Especificações) | 1d? | 2026-05-07 | 2026-05-07 |  | 39d |  |  |
| 528 | 1.2.5.9.4.4 | Detalhamentos Técnico-Construtivos | 1d? | 2026-05-07 | 2026-05-07 |  | 39d |  |  |
| 529 | 1.2.5.9.4.5 | Aprovação de Conformidade | 3d | 2026-05-07 | 2026-05-11 |  | 37d |  | ܁8 |
| 530 | 1.2.5.9.4.6 | Aprovação de Compatibilização | 1d? | 2026-05-07 | 2026-05-07 |  | 39d |  | ܁* |
| 531 | 1.2.5.9.4.7 | Material para entrega ao contrato | 3d | 2026-05-07 | 2026-05-11 |  | 37d |  | ܁8 |
| 532 | 1.2.5.10 | **Energia Renovável** | 31d? | 2026-05-07 | 2026-06-19 |  | 9d |  |  |
| 533 | 1.2.5.10.1 | **LOD 100 — Concepção** | 10d | 2026-05-07 | 2026-05-20 |  | 9d |  |  |
| 534 | 1.2.5.10.1.1 | Viabilidade e Premissas de Geração | 10d | 2026-05-07 | 2026-05-20 |  | 30d |  |  |
| 535 | 1.2.5.10.1.2 | Levantamento Preliminar de Áreas e Sombreamento | 10d | 2026-05-07 | 2026-05-20 |  | 9d | 0d |  |
| 536 | 1.2.5.10.1.3 | Avaliação e Diretrizes Técnicas para Arquitetônico | 10d | 2026-05-07 | 2026-05-20 |  | 30d |  |  |

| ID | WBS | Task | Type | Duration | Start | Finish | Predecessors | Total slack | Free slack | Text3 |
| --- | --- | --- | --- | --- | --- | --- | --- | --- | --- | --- |
| 537 | 1.2.5.10.2 | **LOD 200 — Anteprojeto** |  | 20d | 2026-05-21 | 2026-06-18 |  | 9d | 0d |  |
| 538 | 1.2.5.10.2.1 | Layout Preliminar de Módulos, Inversores e String Boxes |  | 20d | 2026-05-21 | 2026-06-18 | 535 | 9d |  |  |
| 539 | 1.2.5.10.2.2 | Infraestrutura e Rotas Técnicas Preliminares (DC/AC e Aterramento) |  | 20d | 2026-05-21 | 2026-06-18 | 535 | 9d |  |  |
| 540 | 1.2.5.10.2.3 | Critérios Preliminares de Proteção e Estimativa de Quantitativos |  | 20d | 2026-05-21 | 2026-06-18 | 535 | 9d |  |  |
| 541 | 1.2.5.10.3 | **LOD 300 - Modelagem e quantitativos para orçamento** |  | 1d? | 2026-06-19 | 2026-06-19 | 537 | 9d | 0d |  |
| 542 | 1.2.5.10.3.1 | Sistema Fotovoltaico Dimensionado (Strings, Inversores, Cabos e Proteções) |  | 1d? | 2026-06-19 | 2026-06-19 |  | 9d |  |  |
| 543 | 1.2.5.10.3.2 | Diagramas Elétricos, Estudos de Geração e Memorial de Cálculo |  | 1d? | 2026-06-19 | 2026-06-19 |  | 9d |  |  |
| 544 | 1.2.5.10.3.3 | Detalhamentos de Fixação, Interfaces com Cobertura/Estrutura e Quantitativos |  | 1d? | 2026-06-19 | 2026-06-19 |  | 9d |  |  |
| 545 | 1.2.5.10.4 | **LOD 350 - Projeto Básico** |  | 31d? | 2026-05-07 | 2026-06-19 |  | 9d |  |  |
| 546 | 1.2.5.10.4.1 | Plantas, Diagramas e Documentação Gráfica |  | 1d? | 2026-05-07 | 2026-05-07 |  | 39d |  |  |
| 547 | 1.2.5.10.4.2 | Lista de Materiais |  | 1d? | 2026-05-07 | 2026-05-07 |  | 39d |  |  |
| 548 | 1.2.5.10.4.3 | Documentação Técnica (Memorial de Cálculo, Memorial Descritivo e Especificações) |  | 1d? | 2026-05-07 | 2026-05-07 |  | 39d |  |  |
| 549 | 1.2.5.10.4.4 | Detalhamentos Técnico-Construtivos |  | 1d? | 2026-05-07 | 2026-05-07 |  | 39d |  |  |
| 550 | 1.2.5.10.4.5 | Aprovação de Conformidade |  | 3d | 2026-06-17 | 2026-06-19 | 541FF | 9d |  | ܁8 |
| 551 | 1.2.5.10.4.6 | Aprovação de Compatibilidade |  | 1d? | 2026-05-07 | 2026-05-07 |  | 39d |  | ܁* |
| 552 | 1.2.5.10.4.7 | Material para entrega ao contrato |  | 3d | 2026-06-17 | 2026-06-19 | 541FF | 9d |  | ܁8 |
| 553 | 2 | P2 - Orçamento/Cronograma |  | 20d | 2026-07-03 | 2026-07-30 | 1 | 0d |  |  |
| 554 | 3 | P3 - Modelagem Econômico Financeira |  | 10d | 2026-07-17 | 2026-07-30 | 553FF | 0d |  |  |
| 555 | 4 | P4 - Modelagem Jurídica |  | 10d | 2026-07-17 | 2026-07-30 | 553FF | 0d |  |  |
| 557 | 5 | Periodo de revisão se necessário | milestone | 0d | 2026-05-07 | 2026-05-07 |  | 60d |  |  |
