# OS XXX - Anteprojeto

Schedule from MS Project, 2026-05-07 to 2026-07-31, status date 2026-06-08.

## Calendars

- Calendário 1: Mon-Fri 09:00-12:00, 13:00-18:00; Sat-Sun off. Exceptions (off unless hours are given): 2026-06-04 (Feriado Corpus Christi).

## Resources

| Resource | Group |
| --- | --- |
| SMI Engenharia | SMI |
| Rui Raoli BIM |  |
| Tecra Engenharia | Tecra |
| Dorothea Heirichs | Dorothea |
| Yuka Ogawa | Yuka |
| Jurídico Quanta |  |
| Priscila Abreu EST |  |
| Leomar Delgado | Leomar |
| Limonge de Almeida | Limonge |
| AeB Engenharia | AeB engenharia |
| Fernanda Garruti EST |  |
| Rodrigo Goes EST |  |
| Nous Engenharia (Wanessa) | Nous Engenharia |
| Abel Lopes HID |  |
| Matheus Ferreira HID |  |
| Kayke Cheli PROJ |  |
| João Gabriel PROJ |  |
| Alan Albuquerque ELE |  |
| Leo Ferrari ELE |  |
| Marcelo Ricardo ELE |  |
| Gabriel Caurim | Gcaurin |
| MOB Eng | MOB |
| Heitor Rubio ELE |  |
| Paulo G. ELE |  |
| Thaíza Rodrig. ELE |  |
| Rafael Menna ENE |  |
| Lucas Pacheco ENE |  |
| Lucas Silva ENE Estag |  |
| Amanda W. HID |  |
| Neemias PCI/GAS |  |
| Anderson F. HVAC |  |
| Alexandre Blumel |  |
| Vanessa Maia ORC |  |
| Bruno Souza ORC |  |
| Romulo Santos ORC |  |
| Diego Bieger | Diego Bieger |
| Tiago Carlos TER |  |
| Raquel Morano |  |
| Guilherme ECO |  |
| Setor Jurídico |  |
| Vinicius Delgado |  |
| Morena Braga |  |
| P/ TERCEIRIZAR |  |
| MAFRA | MAFRA |
| BLR | BLR |
| COTRAL | COTRAL |
| Prime | PRIME |
| CODEMAR | Cliente |
| SEMED | Cliente |
| Carlos Alberto (Casoba) |  |
| Cezar Augusto ELE |  |
| Carlos Santos TER |  |
| Maíra Rocha |  |
| Jairo Diniz |  |
| Eloá Honaiser |  |
| Erick Lima |  |
| Tarcísio Marques CPT |  |
| Igor Freire DADOS |  |
| Hagata Oliveira DADOS |  |
| Marcel Silva CNF |  |
| Gustavo Oliveira CNF |  |
| Letícia Gonç. CNF |  |
| Equipe Energia |  |
| Petras |  |
| Pilotis |  |
| Rodofer |  |
| TMSilva |  |
| STCGEO |  |
| Vitor Sales GEO |  |
| Prossema | Prossema |
| Proseng | Prosseng |
| Pamplona | Pamplona |
| PeX | PeX |
| Eoliver | Eoliver |
| Aleff Moura |  |
| S&A Engenharia |  |
| Matheus Barboza MOBILIDADE |  |
| Neemias Eloy PCI/GAS |  |
| TecTON |  |
| Anderson F. HVAC |  |
| Gabriela Gama ARQ |  |
| Bruno Almeida ARQ |  |
| Richard Marx ARQ |  |
| Lorena ARQ |  |
| Camila ARQ |  |
| Mariana ARQ |  |
| Érica ARQ |  |
| Maria Lis ARQ |  |
| Antônio Alves ARQ |  |
| Juliana ARQ |  |
| Caio Ary ARQ |  |
| Roberto Mattos ARQ |  |
| Camilla Bessa CNF |  |
| Alex Matoso SUP |  |
| Aline Bonsanto CPT |  |
| Pavanello |  |
| AKKERMAN |  |
| RiO RAMP |  |

## Schedule

| ID | WBS | Task | Type | Duration | Start | Finish | Predecessors | Total slack | Free slack |
| --- | --- | --- | --- | --- | --- | --- | --- | --- | --- |
| 1 | 1 | **P0 - Estudos Iniciais/Plano de Trabalho** |  | 37d | 2026-05-07 | 2026-06-29 |  | 24d |  |
| 2 | 1.1 | Marco de Abertura de OS |  | 1d | 2026-05-07 | 2026-05-07 |  | 24d | 0d |
| 3 | 1.2 | Recebimento de dados da contratante |  | 1d | 2026-05-07 | 2026-05-07 |  | 60d |  |
| 4 | 1.3 | Recebimento de dados do projeto |  | 1d | 2026-05-07 | 2026-05-07 |  | 60d |  |
| 5 | 1.4 | **Definições do projeto** |  | 0d | 2026-05-07 | 2026-05-07 |  | 61d |  |
| 6 | 1.4.1 | Definição de escopo | milestone | 0d | 2026-05-07 | 2026-05-07 |  | 61d |  |
| 7 | 1.4.2 | Aprovação do escopo (contrato) | milestone | 0d | 2026-05-07 | 2026-05-07 |  | 61d |  |
| 8 | 1.4.3 | Definição de responsabilidades | milestone | 0d | 2026-05-07 | 2026-05-07 |  | 61d |  |
| 9 | 1.4.4 | Definição de comunicação | milestone | 0d | 2026-05-07 | 2026-05-07 |  | 61d |  |
| 10 | 1.4.5 | Forma de gerenciamento do escopo | milestone | 0d | 2026-05-07 | 2026-05-07 |  | 61d |  |
| 11 | 1.4.6 | Requisitos de qualidade | milestone | 0d | 2026-05-07 | 2026-05-07 |  | 61d |  |
| 12 | 1.4.7 | Forma de gerenciamento da qualidade | milestone | 0d | 2026-05-07 | 2026-05-07 |  | 61d |  |
| 13 | 1.5 | **Definição de Subcontratadas necessárias** |  | 8d | 2026-05-07 | 2026-05-18 |  | 53d |  |
| 14 | 1.5.1 | Definir quais diciplinas e edificações devem ser cotadas externamente |  | 2d | 2026-05-07 | 2026-05-08 |  | 53d | 0d |
| 15 | 1.5.2 | Envio e Resposta dos fornecedores |  | 2d | 2026-05-11 | 2026-05-12 | 14 | 53d | 0d |
| 16 | 1.5.3 | Seleção das subcontratações |  | 2d | 2026-05-13 | 2026-05-14 | 15 | 53d | 0d |
| 17 | 1.5.4 | Reunião Kickoff - Subcontratadas |  | 2d | 2026-05-15 | 2026-05-18 | 16 | 53d |  |
| 18 | 1.6 | **Elaborar/Ajustar Cronograma - compatível com o escopo do projeto** |  | 14d | 2026-06-10 | 2026-06-29 |  | 24d |  |
| 19 | 1.6.1 | Estruturação da EAP |  | 4d | 2026-06-10 | 2026-06-15 | 2SS+23d | 24d | 0d |
| 20 | 1.6.2 | Ajuste de prazos |  | 5d | 2026-06-16 | 2026-06-22 | 19 | 24d | 0d |
| 21 | 1.6.3 | Inclusão de recursos |  | 5d | 2026-06-23 | 2026-06-29 | 20 | 24d |  |
| 22 | 2 | **P0 - Serviços de campo** |  | 20d | 2026-05-07 | 2026-06-03 |  | 41d |  |
| 23 | 2.1 | Sondagem |  | 20d | 2026-05-07 | 2026-06-03 |  | 41d |  |
| 24 | 2.2 | **Topografia** |  | 17d | 2026-05-07 | 2026-05-29 |  | 44d |  |
| 25 | 2.2.1 | Levantamento topográfico |  | 2d | 2026-05-07 | 2026-05-08 |  | 44d | 0d |
| 26 | 2.2.2 | Processamento |  | 5d | 2026-05-11 | 2026-05-15 | 25 | 44d | 0d |
| 27 | 2.2.3 | Finalização do projeto topográfico |  | 5d | 2026-05-18 | 2026-05-22 | 26 | 44d | 0d |
| 28 | 2.2.4 | Levantamento de Dados e Visita de Campo (arquitetônico, scanner, legislação, entrevistas...) |  | 5d | 2026-05-25 | 2026-05-29 | 27 | 44d |  |
| 29 | 2.3 | Estudos/Laudo Ambiental | milestone | 0d | 2026-05-07 | 2026-05-07 |  | 61d |  |

| ID | WBS | Task | Duration | Start | Finish | Predecessors | Total slack | Free slack |
| --- | --- | --- | --- | --- | --- | --- | --- | --- |
| 30 | 3 | **P1 - Anteprojeto** | 41d? | 2026-05-07 | 2026-07-03 |  | 0d |  |
| 31 | 3.1 | **Implantação** | 40d | 2026-05-07 | 2026-07-02 |  | 1d |  |
| 32 | 3.1.1 | **LOD 300 - ANTEPROJETO** | 20d | 2026-05-07 | 2026-06-03 |  | 21d |  |
| 33 | 3.1.1.1 | Indicar simbologias de representação gráfica, conforme NBR 6492:2021; | 20d | 2026-05-07 | 2026-06-03 |  | 21d |  |
| 34 | 3.1.1.2 | Compatibilização (verificar se está tudo conforme as normas e alinhar com o restante das disciplinas de engenharia) | 20d | 2026-05-07 | 2026-06-03 |  | 21d |  |
| 35 | 3.1.1.3 | Compatibilização (deixar tudo conforme padrão Quanta) | 20d | 2026-05-07 | 2026-06-03 |  | 21d |  |
| 36 | 3.1.1.4 | Indicação de Norte; | 20d | 2026-05-07 | 2026-06-03 |  | 21d |  |
| 37 | 3.1.1.5 | Indicação de Escala; | 20d | 2026-05-07 | 2026-06-03 |  | 21d |  |
| 38 | 3.1.1.6 | Vias de acesso e calçadas; | 20d | 2026-05-07 | 2026-06-03 |  | 21d |  |
| 39 | 3.1.1.7 | Definição dos Percursos e caminhos | 20d | 2026-05-07 | 2026-06-03 |  | 21d |  |
| 40 | 3.1.1.8 | Definição de desenhos de canteiros | 20d | 2026-05-07 | 2026-06-03 |  | 21d |  |
| 41 | 3.1.1.9 | Localização de Mobiliário | 20d | 2026-05-07 | 2026-06-03 |  | 21d |  |
| 42 | 3.1.1.10 | Acesso principal do objeto arquitetônico; | 20d | 2026-05-07 | 2026-06-03 |  | 21d |  |
| 43 | 3.1.1.11 | Definição de localização de rampas e escadarias | 20d | 2026-05-07 | 2026-06-03 |  | 21d |  |
| 44 | 3.1.1.12 | Platôs e taludes; | 20d | 2026-05-07 | 2026-06-03 |  | 21d |  |
| 45 | 3.1.1.13 | Perímetro do terreno, recuos e afastamentos; | 20d | 2026-05-07 | 2026-06-03 |  | 21d |  |
| 46 | 3.1.1.14 | Eixos do projeto com respectivo ponto de referência; | 20d | 2026-05-07 | 2026-06-03 |  | 21d |  |
| 47 | 3.1.1.15 | Denominação das edificações, blocos ou espaços; | 20d | 2026-05-07 | 2026-06-03 |  | 21d |  |
| 48 | 3.1.1.16 | Indicação de áreas cobertas e estacionamentos; | 20d | 2026-05-07 | 2026-06-03 |  | 21d |  |
| 49 | 3.1.1.17 | Cotas gerais | 20d | 2026-05-07 | 2026-06-03 |  | 21d |  |
| 50 | 3.1.1.18 | Cotas de nível principais | 20d | 2026-05-07 | 2026-06-03 |  | 21d |  |
| 51 | 3.1.1.19 | Quadro de áreas | 20d | 2026-05-07 | 2026-06-03 |  | 21d | 0d |
| 52 | 3.1.1.20 | Relatório | 5d | 2026-05-28 | 2026-06-03 | 51FF | 21d | 0d |
| 53 | 3.1.1.21 | Aprovação de Conformidade | 3d | 2026-06-01 | 2026-06-03 | 52FF | 21d |  |
| 54 | 3.1.1.22 | Material para entrega ao contrato | 3d | 2026-06-01 | 2026-06-03 | 52FF | 21d |  |

| ID | WBS | Task | Duration | Start | Finish | Predecessors | Total slack | Free slack | Text3 |
| --- | --- | --- | --- | --- | --- | --- | --- | --- | --- |
| 55 | 3.1.2 | **Terraplanagem / Pavimentação** | 40d | 2026-05-07 | 2026-07-02 |  | 1d |  |  |
| 56 | 3.1.2.1 | **LOD 100 — Premissas, diretrizes e interfaces** | 10d | 2026-05-07 | 2026-05-20 |  | 1d |  | ܁$ |
| 57 | 3.1.2.1.1 | Avaliação geral de interferências e topografia local. | 5d | 2026-05-07 | 2026-05-13 |  | 1d | 0d |  |
| 58 | 3.1.2.1.2 | Curvas de nível preliminares (quando disponíveis). | 5d | 2026-05-07 | 2026-05-13 | 57SS | 31d | 0d |  |
| 59 | 3.1.2.1.3 | Levantamento topográfico inicial com representação genérica da área. | 5d | 2026-05-07 | 2026-05-13 | 57SS | 1d | 0d |  |
| 60 | 3.1.2.1.4 | Análise estimativa de movimentação de terra. | 5d | 2026-05-14 | 2026-05-20 | 58 | 31d |  |  |
| 61 | 3.1.2.1.5 | Estudos de viabilidade | 5d | 2026-05-14 | 2026-05-20 | 58 | 31d |  |  |
| 62 | 3.1.2.1.6 | Elementos representados de forma simbólica sem georreferenciamento preciso. | 5d | 2026-05-14 | 2026-05-20 | 59 | 31d |  |  |
| 63 | 3.1.2.1.7 | Superfície genérica do terreno. | 5d | 2026-05-14 | 2026-05-20 | 59 | 1d | 0d |  |
| 64 | 3.1.2.2 | **LOD 200 — Validação interdisciplinar e solução preliminar** | 20d | 2026-05-21 | 2026-06-18 |  | 1d |  | ܁$ |
| 65 | 3.1.2.2.1 | Avaliação técnica detalhada. | 20d | 2026-05-21 | 2026-06-18 | 63 | 11d |  |  |
| 66 | 3.1.2.2.2 | Compatibilização inicial com drenagem, fundações e geometria. | 20d | 2026-05-21 | 2026-06-18 | 63 | 11d |  |  |
| 67 | 3.1.2.2.3 | Indicação dos pontos de sondagem em planta georreferenciada. | 20d | 2026-05-21 | 2026-06-18 | 63 | 11d |  |  |
| 68 | 3.1.2.2.4 | Sondagens geotécnicas: Cronograma de execução com áreas e quantidade de perfurações; Boletins informativos com planta de localização dos furos, profundidades e descrição estratigráfica (solo). | 20d | 2026-05-21 | 2026-06-18 | 63 | 11d |  |  |
| 69 | 3.1.2.2.5 | Levantamento topográfico: Arquivo em formato.dwg, com coordenadas georreferenciadas (latitude/longitude), curvas de nível, ortofoto e base planimétrica. | 20d | 2026-05-21 | 2026-06-18 | 63 | 11d |  |  |
| 70 | 3.1.2.2.6 | Planta topográfica com triangulação real (MDT). | 20d | 2026-05-21 | 2026-06-18 | 63 | 1d | 0d |  |
| 71 | 3.1.2.3 | **LOD 300 - Consolidação e documentação de entrega** | 10d | 2026-06-19 | 2026-07-02 |  | 1d |  | ܁$ |
| 72 | 3.1.2.3.1 | Alinhamentos de estaqueamento longitudinal e transversal. | 5d | 2026-06-19 | 2026-06-25 | 70 | 6d |  |  |
| 73 | 3.1.2.3.2 | Análise integrada dos dados topográficos e de sondagem. | 5d | 2026-06-19 | 2026-06-25 | 70 | 6d |  |  |
| 74 | 3.1.2.3.3 | Planta baixa georreferenciada com projeção de cortes e aterros. | 10d | 2026-06-19 | 2026-07-02 | 70 | 1d | 0d |  |
| 75 | 3.1.2.3.4 | Perfis longitudinais e transversais do terreno na situação atual e projetada. | 5d | 2026-06-19 | 2026-06-25 | 70 | 6d |  |  |
| 76 | 3.1.2.3.5 | Tabelas com variações altimétricas de corte e aterro. | 5d | 2026-06-26 | 2026-07-02 | 74FF | 1d |  |  |
| 77 | 3.1.2.3.6 | Aprovação de Conformidade | 3d | 2026-06-30 | 2026-07-02 | 74FF | 1d |  | ܁8 |
| 78 | 3.1.2.3.7 | Material para entrega ao contrato | 3d | 2026-06-30 | 2026-07-02 | 74FF | 1d |  | ܁8 |

| ID | WBS | Task | Duration | Start | Finish | Predecessors | Total slack | Free slack | Text3 |
| --- | --- | --- | --- | --- | --- | --- | --- | --- | --- |
| 79 | 3.1.3 | **Drenagem** | 30d | 2026-05-21 | 2026-07-02 |  | 1d |  |  |
| 80 | 3.1.3.1 | **LOD 100 — Premissas, diretrizes e interfaces** | 5d | 2026-05-21 | 2026-05-27 |  | 1d |  |  |
| 81 | 3.1.3.1.1 | Diretrizes de espaço | 5d | 2026-05-21 | 2026-05-27 | 63 | 26d |  |  |
| 82 | 3.1.3.1.2 | Memorial preliminar | 5d | 2026-05-21 | 2026-05-27 | 63 | 26d |  |  |
| 83 | 3.1.3.1.3 | Análise climatológica | 5d | 2026-05-21 | 2026-05-27 | 63 | 26d |  |  |
| 84 | 3.1.3.1.4 | Delimitação de área de contribuição | 5d | 2026-05-21 | 2026-05-27 | 63 | 26d |  |  |
| 85 | 3.1.3.1.5 | Levantamento de elementos especiais dentre outras disciplinas de Engenharia e Arquitetura | 5d | 2026-05-21 | 2026-05-27 | 63 | 26d |  |  |
| 86 | 3.1.3.1.6 | Indicação de áreas técnicas | 5d | 2026-05-21 | 2026-05-27 | 63 | 26d |  |  |
| 87 | 3.1.3.1.7 | Planta baixa com traçado conceitual | 5d | 2026-05-21 | 2026-05-27 | 63 | 26d |  |  |
| 88 | 3.1.3.1.8 | Traçado geral de descidas pluviais | 5d | 2026-05-21 | 2026-05-27 | 63 | 1d | 0d |  |
| 89 | 3.1.3.2 | **LOD 200 — Validação interdisciplinar e solução preliminar** | 12d | 2026-05-28 | 2026-06-15 |  | 1d |  |  |
| 90 | 3.1.3.2.1 | Critérios normativos adotados (ABNT, concessionárias, etc.) | 6d | 2026-05-28 | 2026-06-05 | 88 | 1d | 0d |  |
| 91 | 3.1.3.2.2 | Lista preliminar de sistemas e interfaces envolvidos | 6d | 2026-05-28 | 2026-06-05 | 88 | 1d | 0d |  |
| 92 | 3.1.3.2.3 | Planta baixa e cortes estimada contendo: - Traçado preliminar de condutores verticais e horizontais - Dimensionamento inicial de calhas e condutores - Localização de elementos ou redes de drenagem existente - Indicação de áreas técnicas | 6d | 2026-05-28 | 2026-06-05 | 88 | 20d |  |  |
| 93 | 3.1.3.2.4 | Estudo de viabilidade técnica, econômica e ambiental | 6d | 2026-06-08 | 2026-06-15 | 90, 91 | 1d | 0d |  |
| 94 | 3.1.3.2.5 | Levantamento topográfico da área de contribuição e elementos existentes | 6d | 2026-06-08 | 2026-06-15 | 90, 91 | 1d | 0d |  |
| 95 | 3.1.3.2.6 | Sondagem (permeabilidade ou percolação) | 6d | 2026-06-08 | 2026-06-15 | 90, 91 | 14d |  |  |
| 96 | 3.1.3.3 | **LOD 300 - Consolidação e documentação de entrega** | 13d | 2026-06-16 | 2026-07-02 |  | 1d |  |  |
| 97 | 3.1.3.3.1 | Memorial descritivo | 3d | 2026-06-16 | 2026-06-18 | 94 | 3d | 2d |  |
| 98 | 3.1.3.3.2 | Memória de cálculo | 5d | 2026-06-16 | 2026-06-22 | 94, 93 | 1d | 0d |  |
| 99 | 3.1.3.3.3 | Planta, corte e detalhe isométrico contendo: - Detalhamento dos condutores com diâmetros, cotas e inclinações definitivas (condutores pluviais) - Calhas, bocas de lobo, dissipadores de energia e demais elementos/equipamentos definitivos | 5d | 2026-06-23 | 2026-06-29 | 97, 98 | 1d | 0d |  |
| 100 | 3.1.3.3.4 | Quantitativos e especificação técnica dos materiais | 3d | 2026-06-30 | 2026-07-02 | 99 | 1d | 0d |  |
| 101 | 3.1.3.3.5 | Aprovação de Conformidade | 3d | 2026-06-30 | 2026-07-02 | 100FF | 1d |  | ܁8 |
| 102 | 3.1.3.3.6 | Material para entrega ao contrato | 3d | 2026-06-30 | 2026-07-02 | 100FF | 1d |  | ܁8 |

| ID | WBS | Task | Duration | Start | Finish | Total slack |
| --- | --- | --- | --- | --- | --- | --- |
| 103 | 3.2 | **001 - Edificação principal** | 41d? | 2026-05-07 | 2026-07-03 | 0d |
| 104 | 3.2.1 | **Arquitetura** | 22d? | 2026-05-07 | 2026-06-08 | 19d |
| 105 | 3.2.1.1 | **Fase de Preparação** | 1d? | 2026-05-07 | 2026-05-07 | 40d |
| 106 | 3.2.1.1.1 | **Serviços de Campo** | 1d? | 2026-05-07 | 2026-05-07 | 40d |
| 107 | 3.2.1.1.1.1 | Recebimento da Topografia | 1d? | 2026-05-07 | 2026-05-07 | 40d |
| 108 | 3.2.1.1.1.2 | Recebimento da Sondagem | 1d? | 2026-05-07 | 2026-05-07 | 40d |
| 109 | 3.2.1.1.1.3 | Levantamento de Dados (ambientais locais, urbanísticos, legislativos, plantas cadastrais da vizinhança etc.) | 1d? | 2026-05-07 | 2026-05-07 | 40d |
| 110 | 3.2.1.1.2 | **Análise, Verificação e Revisão (adequação do projeto recebido)** | 1d? | 2026-05-07 | 2026-05-07 | 40d |
| 111 | 3.2.1.1.2.1 | Analisar topografia | 1d? | 2026-05-07 | 2026-05-07 | 40d |
| 112 | 3.2.1.1.2.2 | Criação e georreferenciamento e ajuste de norte nos arquivos federado, arquitetura, implantação, layout | 1d? | 2026-05-07 | 2026-05-07 | 40d |
| 113 | 3.2.1.1.2.3 | Analise geral do projeto | 1d? | 2026-05-07 | 2026-05-07 | 40d |
| 114 | 3.2.1.1.2.4 | Verificar acessibilidade dos espaços de acordo com a norma e sistematizar ajustes | 1d? | 2026-05-07 | 2026-05-07 | 40d |
| 115 | 3.2.1.1.2.5 | Conferir paredes | 1d? | 2026-05-07 | 2026-05-07 | 40d |
| 116 | 3.2.1.1.2.6 | Conferir Pisos | 1d? | 2026-05-07 | 2026-05-07 | 40d |
| 117 | 3.2.1.1.2.7 | Conferir Esquadrias | 1d? | 2026-05-07 | 2026-05-07 | 40d |
| 118 | 3.2.1.1.2.8 | Conferir Mobiliário | 1d? | 2026-05-07 | 2026-05-07 | 40d |
| 119 | 3.2.1.1.2.9 | Compatibilização disciplinas engenharia e sistematização incrementos e ajustes | 1d? | 2026-05-07 | 2026-05-07 | 40d |
| 120 | 3.2.1.1.2.10 | Compatibilização com normas técnicas | 1d? | 2026-05-07 | 2026-05-07 | 40d |
| 121 | 3.2.1.1.2.11 | Compatibilização padrão Quanta | 1d? | 2026-05-07 | 2026-05-07 | 40d |
| 122 | 3.2.1.1.2.12 | Verficar se elementos estão associados aos níveis corretos e sistematizar ajustes | 1d? | 2026-05-07 | 2026-05-07 | 40d |
| 123 | 3.2.1.1.2.13 | Revisão de perímetro do terreno, recuos, taxa de ocupação e afastamentos | 1d? | 2026-05-07 | 2026-05-07 | 40d |
| 124 | 3.2.1.1.2.14 | Relatório/Memorial de Compatibilização | 1d? | 2026-05-07 | 2026-05-07 | 40d |
| 125 | 3.2.1.2 | **Fase de Preparação** | 1d? | 2026-05-07 | 2026-05-07 | 40d |
| 126 | 3.2.1.2.1 | **Serviços de Campo** | 1d? | 2026-05-07 | 2026-05-07 | 40d |
| 127 | 3.2.1.2.1.1 | Recebimento da Topografia | 1d? | 2026-05-07 | 2026-05-07 | 40d |
| 128 | 3.2.1.2.1.2 | Recebimento da Sondagem | 1d? | 2026-05-07 | 2026-05-07 | 40d |
| 129 | 3.2.1.2.1.3 | Levantamento de Dados (ambientais locais, urbanísticos, legislativos, plantas cadastrais da vizinhança etc.) | 1d? | 2026-05-07 | 2026-05-07 | 40d |
| 130 | 3.2.1.2.1.4 | Visita de Campo | 1d? | 2026-05-07 | 2026-05-07 | 40d |
| 131 | 3.2.1.2.1.5 | Entrevistas | 1d? | 2026-05-07 | 2026-05-07 | 40d |
| 132 | 3.2.1.2.1.6 | Levantamento Arquitetônico | 1d? | 2026-05-07 | 2026-05-07 | 40d |
| 133 | 3.2.1.2.1.7 | Relatório de Visita de Campo | 1d? | 2026-05-07 | 2026-05-07 | 40d |
| 134 | 3.2.1.2.1.8 | Relatório de Entrevistas | 1d? | 2026-05-07 | 2026-05-07 | 40d |

| ID | WBS | Task | Duration | Start | Finish | Total slack | Free slack |
| --- | --- | --- | --- | --- | --- | --- | --- |
| 135 | 3.2.1.2.2 | **Produção de Subsídios ao Projeto** | 1d? | 2026-05-07 | 2026-05-07 | 40d |  |
| 136 | 3.2.1.2.2.1 | Elaboração do Programa de Necessidades (relação dos ambientes, áreas, mobiliários, fluxos pretendidos, organograma funcional, descrição dos usuários e atividades etc.) | 1d? | 2026-05-07 | 2026-05-07 | 40d |  |
| 137 | 3.2.1.2.2.2 | Estudo de Viabilidade (metodologia empregada, soluções alternativas - físicas e jurídico-legais -, conclusões e recomendações) | 1d? | 2026-05-07 | 2026-05-07 | 40d |  |
| 138 | 3.2.1.3 | **LOD 100 - PROJETO CONCEITUAL** | 1d? | 2026-05-07 | 2026-05-07 | 40d |  |
| 139 | 3.2.1.3.1 | Benchmarking (pesquisa e relatório de referências de tipologias semelhantes para entendimento de fluxos, implantação etc. e de outras tipologias para buscar referências estéticas e de materialidade) | 1d? | 2026-05-07 | 2026-05-07 | 40d |  |
| 140 | 3.2.1.3.2 | Processo de Criação e início modelagem (atelier, discussão, início de plantas, ideias de fachada) | 1d? | 2026-05-07 | 2026-05-07 | 40d |  |
| 141 | 3.2.1.3.3 | Plano de Massas (situação/implantação/zoneamento) | 1d? | 2026-05-07 | 2026-05-07 | 40d |  |
| 142 | 3.2.1.3.4 | Setorização e Fluxogramas | 1d? | 2026-05-07 | 2026-05-07 | 40d |  |
| 143 | 3.2.1.3.5 | Estudo da Forma | 1d? | 2026-05-07 | 2026-05-07 | 40d |  |
| 144 | 3.2.1.3.6 | Perspectivas | 1d? | 2026-05-07 | 2026-05-07 | 40d |  |
| 145 | 3.2.1.3.7 | Compatibilização (verificar se está tudo conforme as normas urbanísticas e com as disciplinas de engenharia) | 1d? | 2026-05-07 | 2026-05-07 | 40d |  |
| 146 | 3.2.1.3.8 | Relatório/Memorial Justificativo de Projeto Conceitual | 1d? | 2026-05-07 | 2026-05-07 | 40d |  |
| 147 | 3.2.1.4 | **LOD 200 - ESTUDO PRELIMINAR** | 2d? | 2026-05-07 | 2026-05-08 | 19d |  |
| 148 | 3.2.1.4.1 | **Modelagem** | 1d? | 2026-05-07 | 2026-05-07 | 19d | 0d |
| 149 | 3.2.1.4.1.1 | Criação e georreferenciamento e ajuste de norte nos arquivos federado, arquitetura, implantação, layout | 1d? | 2026-05-07 | 2026-05-07 | 19d |  |
| 150 | 3.2.1.4.1.2 | Definição e setagem níveis da edificação | 1d? | 2026-05-07 | 2026-05-07 | 19d |  |
| 151 | 3.2.1.4.1.3 | Modelagem pisos - duplicar linha por ambiente ou pavimento | 1d? | 2026-05-07 | 2026-05-07 | 19d |  |
| 152 | 3.2.1.4.1.4 | Modelagem paredes - duplicar linha por ambiente ou pavimento | 1d? | 2026-05-07 | 2026-05-07 | 19d |  |
| 153 | 3.2.1.4.1.5 | Modelagem simples cobertura | 1d? | 2026-05-07 | 2026-05-07 | 19d |  |
| 154 | 3.2.1.4.1.6 | Compabilização com disciplina de engenharia sobre terraplanagem | 1d? | 2026-05-07 | 2026-05-07 | 19d |  |
| 155 | 3.2.1.4.1.7 | Ajuste topografia (platos e taludes principais) | 1d? | 2026-05-07 | 2026-05-07 | 19d |  |
| 156 | 3.2.1.4.1.8 | Ajuste e setagem materiais pisos e paredes a partir do padrão Quanta | 1d? | 2026-05-07 | 2026-05-07 | 19d |  |
| 157 | 3.2.1.4.1.9 | Inserir Esquadrias | 1d? | 2026-05-07 | 2026-05-07 | 19d |  |
| 158 | 3.2.1.4.1.10 | Modelagem circulação vertical (escadas, rampas, elevadores) | 1d? | 2026-05-07 | 2026-05-07 | 19d |  |
| 159 | 3.2.1.4.1.11 | Modelagem acessos, estacionamentos e canteiros | 1d? | 2026-05-07 | 2026-05-07 | 19d |  |
| 160 | 3.2.1.4.1.12 | Inserir ambientes | 1d? | 2026-05-07 | 2026-05-07 | 19d |  |

| ID | WBS | Task | Duration | Start | Finish | Predecessors | Total slack | Free slack |
| --- | --- | --- | --- | --- | --- | --- | --- | --- |
| 161 | 3.2.1.4.2 | **Implantação** | 1d? | 2026-05-08 | 2026-05-08 | 148 | 19d | 0d |
| 162 | 3.2.1.4.2.1 | Indicação de Norte | 1d? | 2026-05-08 | 2026-05-08 |  | 19d |  |
| 163 | 3.2.1.4.2.2 | Indicação de escala | 1d? | 2026-05-08 | 2026-05-08 |  | 19d |  |
| 164 | 3.2.1.4.2.3 | Vias de acesso | 1d? | 2026-05-08 | 2026-05-08 |  | 19d |  |
| 165 | 3.2.1.4.2.4 | Acesso principal ao objeto arquitetônico | 1d? | 2026-05-08 | 2026-05-08 |  | 19d |  |
| 166 | 3.2.1.4.2.5 | Platôs e taludes principais | 1d? | 2026-05-08 | 2026-05-08 |  | 19d |  |
| 167 | 3.2.1.4.2.6 | Perímetro do terreno | 1d? | 2026-05-08 | 2026-05-08 |  | 19d |  |
| 168 | 3.2.1.4.2.7 | Recuos e afastamentos | 1d? | 2026-05-08 | 2026-05-08 |  | 19d |  |
| 169 | 3.2.1.4.2.8 | Denominação das edificações | 1d? | 2026-05-08 | 2026-05-08 |  | 19d |  |
| 170 | 3.2.1.4.2.9 | Indicação de áreas cobertas e estacionamentos | 1d? | 2026-05-08 | 2026-05-08 |  | 19d |  |
| 171 | 3.2.1.4.2.10 | Cotas gerais | 1d? | 2026-05-08 | 2026-05-08 |  | 19d |  |
| 172 | 3.2.1.4.2.11 | Cotas de nível principais | 1d? | 2026-05-08 | 2026-05-08 |  | 19d |  |
| 173 | 3.2.1.4.2.12 | Projeção das coberturas | 1d? | 2026-05-08 | 2026-05-08 |  | 19d |  |
| 174 | 3.2.1.4.2.13 | Áreas permeáveis e impermeáveis | 1d? | 2026-05-08 | 2026-05-08 |  | 19d |  |
| 175 | 3.2.1.4.2.14 | Relatório/Memorial Justificativo de Projeto Preliminar | 1d? | 2026-05-08 | 2026-05-08 |  | 19d |  |
| 176 | 3.2.1.4.3 | **Plantas baixas (igual ou superior a 1:100)** | 1d? | 2026-05-08 | 2026-05-08 | 148 | 39d |  |
| 177 | 3.2.1.4.3.1 | Indicação de Norte | 1d? | 2026-05-08 | 2026-05-08 |  | 39d |  |
| 178 | 3.2.1.4.3.2 | Indicação de escala | 1d? | 2026-05-08 | 2026-05-08 |  | 39d |  |
| 179 | 3.2.1.4.3.3 | Indicação dos acessos | 1d? | 2026-05-08 | 2026-05-08 |  | 39d |  |
| 180 | 3.2.1.4.3.4 | Vedações internas e externas | 1d? | 2026-05-08 | 2026-05-08 |  | 39d |  |
| 181 | 3.2.1.4.3.5 | Esquadrias (portas e janelas) | 1d? | 2026-05-08 | 2026-05-08 |  | 39d |  |
| 182 | 3.2.1.4.3.6 | Elementos estruturais principais | 1d? | 2026-05-08 | 2026-05-08 |  | 39d |  |
| 183 | 3.2.1.4.3.7 | Identificação dos ambientes | 1d? | 2026-05-08 | 2026-05-08 |  | 39d |  |
| 184 | 3.2.1.4.3.8 | Espaços de circulação | 1d? | 2026-05-08 | 2026-05-08 |  | 39d |  |
| 185 | 3.2.1.4.3.9 | Áreas de serviços, funcionais e técnicas | 1d? | 2026-05-08 | 2026-05-08 |  | 39d |  |
| 186 | 3.2.1.4.3.10 | Projeção de níveis superiores e da cobertura | 1d? | 2026-05-08 | 2026-05-08 |  | 39d |  |
| 187 | 3.2.1.4.3.11 | Cotas gerais | 1d? | 2026-05-08 | 2026-05-08 |  | 39d |  |
| 188 | 3.2.1.4.3.12 | Cotas de nível principais | 1d? | 2026-05-08 | 2026-05-08 |  | 39d |  |
| 189 | 3.2.1.4.3.13 | Relatório/Memorial de Projeto Preliminar | 1d? | 2026-05-08 | 2026-05-08 |  | 39d |  |

| ID | WBS | Task | Duration | Start | Finish | Predecessors | Total slack |
| --- | --- | --- | --- | --- | --- | --- | --- |
| 190 | 3.2.1.4.4 | **Cortes gerais (longitudinais e transversais)** | 1d? | 2026-05-08 | 2026-05-08 | 148 | 39d |
| 191 | 3.2.1.4.4.1 | Indicação de escala | 1d? | 2026-05-08 | 2026-05-08 |  | 39d |
| 192 | 3.2.1.4.4.2 | Elementos estruturais principais | 1d? | 2026-05-08 | 2026-05-08 |  | 39d |
| 193 | 3.2.1.4.4.3 | Vedações internas e externas | 1d? | 2026-05-08 | 2026-05-08 |  | 39d |
| 194 | 3.2.1.4.4.4 | Esquadrias (portas e janelas) | 1d? | 2026-05-08 | 2026-05-08 |  | 39d |
| 195 | 3.2.1.4.4.5 | Identificação dos ambientes | 1d? | 2026-05-08 | 2026-05-08 |  | 39d |
| 196 | 3.2.1.4.4.6 | Cobertura(s) com indicação da(s) respectiva(s) inclinação(ões) | 1d? | 2026-05-08 | 2026-05-08 |  | 39d |
| 197 | 3.2.1.4.4.7 | Cotas gerais | 1d? | 2026-05-08 | 2026-05-08 |  | 39d |
| 198 | 3.2.1.4.4.8 | Cotas de nível principais | 1d? | 2026-05-08 | 2026-05-08 |  | 39d |
| 199 | 3.2.1.4.4.9 | Eixos do projeto | 1d? | 2026-05-08 | 2026-05-08 |  | 39d |
| 200 | 3.2.1.4.4.10 | Relevo construído | 1d? | 2026-05-08 | 2026-05-08 |  | 39d |
| 201 | 3.2.1.4.4.11 | Projeção da topografia natural | 1d? | 2026-05-08 | 2026-05-08 |  | 39d |
| 202 | 3.2.1.4.4.12 | Relatório/Memorial de Projeto Preliminar | 1d? | 2026-05-08 | 2026-05-08 |  | 39d |
| 203 | 3.2.1.4.5 | **Elevações** | 1d? | 2026-05-07 | 2026-05-07 |  | 40d |
| 204 | 3.2.1.4.5.1 | Indicação de escala | 1d? | 2026-05-07 | 2026-05-07 |  | 40d |
| 205 | 3.2.1.4.5.2 | Elementos estruturais principais (quando aparentes) | 1d? | 2026-05-07 | 2026-05-07 |  | 40d |
| 206 | 3.2.1.4.5.3 | Vedações internas e externas | 1d? | 2026-05-07 | 2026-05-07 |  | 40d |
| 207 | 3.2.1.4.5.4 | Esquadrias (portas e janelas) | 1d? | 2026-05-07 | 2026-05-07 |  | 40d |
| 208 | 3.2.1.4.5.5 | Relevo | 1d? | 2026-05-07 | 2026-05-07 |  | 40d |
| 209 | 3.2.1.4.5.6 | Cotas de nível principais | 1d? | 2026-05-07 | 2026-05-07 |  | 40d |
| 210 | 3.2.1.4.5.7 | Cobertura (quando aparente) | 1d? | 2026-05-07 | 2026-05-07 |  | 40d |
| 211 | 3.2.1.4.5.8 | Relatório/Memorial de Projeto Preliminar | 1d? | 2026-05-07 | 2026-05-07 |  | 40d |
| 212 | 3.2.1.4.6 | **Memorial Justificativo (opcional - pactuar com o gestor)** | 1d? | 2026-05-08 | 2026-05-08 | 148 | 39d |
| 213 | 3.2.1.4.6.1 | Partido Arquitetônico para o projeto | 1d? | 2026-05-08 | 2026-05-08 |  | 39d |
| 214 | 3.2.1.4.6.2 | Elaboração/Geração de imagens para relatório (se necessário) | 1d? | 2026-05-08 | 2026-05-08 |  | 39d |
| 215 | 3.2.1.4.6.3 | Decisões de projeto tomadas e suas respectivas justificativas | 1d? | 2026-05-08 | 2026-05-08 |  | 39d |

| ID | WBS | Task | Duration | Start | Finish | Predecessors | Total slack | Free slack |
| --- | --- | --- | --- | --- | --- | --- | --- | --- |
| 216 | 3.2.1.5 | **LOD 300 - ANTEPROJETO** | 20d | 2026-05-11 | 2026-06-08 |  | 19d |  |
| 217 | 3.2.1.5.1 | **Modelagem e compatibilização** | 10d | 2026-05-11 | 2026-05-22 |  | 19d |  |
| 218 | 3.2.1.5.1.1 | Ajustar o navegador de projeto conforme o padrão da Quanta - verificar se todas as vistas estão dentro da disciplina correta - alinahr com o líder da OS | 10d | 2026-05-11 | 2026-05-22 | 161 | 29d |  |
| 219 | 3.2.1.5.1.2 | Limpar o arquivo e transferir os padões de projeto da Quanta | 10d | 2026-05-11 | 2026-05-22 | 161 | 29d |  |
| 220 | 3.2.1.5.1.3 | Criar Worksets (em caso de arquivos colaborados) | 10d | 2026-05-11 | 2026-05-22 | 161 | 29d |  |
| 221 | 3.2.1.5.1.4 | Colocar todas as elementos em seus devidos Worksets | 10d | 2026-05-11 | 2026-05-22 | 161 | 29d |  |
| 222 | 3.2.1.5.1.5 | Fazer ajustes dos modelos para Colaboração | 10d | 2026-05-11 | 2026-05-22 | 161 | 29d |  |
| 223 | 3.2.1.5.1.6 | Mudar os pisos para o padrão da quanta (1º pavimento) | 10d | 2026-05-11 | 2026-05-22 | 161 | 29d |  |
| 224 | 3.2.1.5.1.7 | Mudar as parades para o padão da quanta (1º pavimento) | 10d | 2026-05-11 | 2026-05-22 | 161 | 29d |  |
| 225 | 3.2.1.5.1.8 | Mudar as portas para o padão da quanta (1º pavimento) | 10d | 2026-05-11 | 2026-05-22 | 161 | 29d |  |
| 226 | 3.2.1.5.1.9 | Mudar as soleiras para o padão da quanta | 10d | 2026-05-11 | 2026-05-22 | 161 | 29d |  |
| 227 | 3.2.1.5.1.10 | Mudar as bancadas para o padão da Quanta (1º pavimento) | 10d | 2026-05-11 | 2026-05-22 | 161 | 29d |  |
| 228 | 3.2.1.5.1.11 | Mudar metais para padrão da Quanta (1º pavimento) | 10d | 2026-05-11 | 2026-05-22 | 161 | 29d |  |
| 229 | 3.2.1.5.1.12 | Mudar demais acabamentos para padrão o padrão da Quanta | 10d | 2026-05-11 | 2026-05-22 | 161 | 29d |  |
| 230 | 3.2.1.5.1.13 | Ajustar ralos das áreas molhadas (1º pavimento) | 10d | 2026-05-11 | 2026-05-22 | 161 | 29d |  |
| 231 | 3.2.1.5.1.14 | Se vier as tomadas - excluir (1º Pavimento) | 10d | 2026-05-11 | 2026-05-22 | 161 | 29d |  |
| 232 | 3.2.1.5.1.15 | Se vier as luminárias - excluir (1° pavimento) | 10d | 2026-05-11 | 2026-05-22 | 161 | 29d |  |
| 233 | 3.2.1.5.1.16 | Inserir caixa d'água - Conferir pré dimensionamento com a engenharia | 10d | 2026-05-11 | 2026-05-22 | 161 | 29d |  |
| 234 | 3.2.1.5.1.17 | Separar camadas dos pisos - leje 10cm (1° camada), contrapiso 3cm+argamassa 2cm+rev 1cm, (2°camada) | 10d | 2026-05-11 | 2026-05-22 | 161 | 29d |  |
| 235 | 3.2.1.5.1.18 | Descrição dos elementos da edificação | 10d | 2026-05-11 | 2026-05-22 | 161 | 29d |  |
| 236 | 3.2.1.5.1.19 | Descrição dos componentes construtivos e materiais de construção | 10d | 2026-05-11 | 2026-05-22 | 161 | 29d |  |
| 237 | 3.2.1.5.1.20 | Lista de pranchas anexas e documentos | 10d | 2026-05-11 | 2026-05-22 | 161 | 29d |  |
| 238 | 3.2.1.5.1.21 | Vias de acesso ao conjunto, arruamento, logradouros adjacentes e calçadas com os respectivos equipamentos urbanos; | 10d | 2026-05-11 | 2026-05-22 | 161 | 29d |  |
| 239 | 3.2.1.5.1.22 | Platôs e taludes principais; | 10d | 2026-05-11 | 2026-05-22 | 161 | 29d |  |
| 240 | 3.2.1.5.1.23 | Perímetro do terreno, recuos e afastamentos; | 10d | 2026-05-11 | 2026-05-22 | 161 | 29d |  |
| 241 | 3.2.1.5.1.24 | Indicação das áreas a serem edificadas com o contorno da cobertura das edificações, estacionamentos e áreas permeáveis/impermeáveis; | 10d | 2026-05-11 | 2026-05-22 | 161 | 29d |  |
| 242 | 3.2.1.5.1.25 | Denominação das edificações, blocos ou espaços; | 10d | 2026-05-11 | 2026-05-22 | 161 | 29d |  |
| 243 | 3.2.1.5.1.26 | Cotas gerais | 10d | 2026-05-11 | 2026-05-22 | 161 | 29d |  |
| 244 | 3.2.1.5.1.27 | Cotas de nível principal. | 10d | 2026-05-11 | 2026-05-22 | 161 | 29d |  |
| 245 | 3.2.1.5.1.28 | Quadros de áreas | 10d | 2026-05-11 | 2026-05-22 | 161 | 19d | 0d |
| 246 | 3.2.1.5.2 | Planta com as cotas de nível projetadas e existentes | 1d | 2026-05-25 | 2026-05-25 | 245 | 19d | 0d |

| ID | WBS | Task | Duration | Start | Finish | Predecessors | Total slack | Free slack |
| --- | --- | --- | --- | --- | --- | --- | --- | --- |
| 247 | 3.2.1.5.3 | **Plantas baixas (se tiver mais de um pavimento, duplicar bloco)** | 1d | 2026-05-26 | 2026-05-26 |  | 19d |  |
| 248 | 3.2.1.5.3.1 | Indicar simbologias de representação gráfica, conforme NBR 6492:2021; | 1d | 2026-05-26 | 2026-05-26 | 246 | 27d |  |
| 249 | 3.2.1.5.3.2 | Compatibilização (verificar se está tudo conforme as normas e alinhar com o restante das disciplinas de engenharia) | 1d | 2026-05-26 | 2026-05-26 | 246 | 27d |  |
| 250 | 3.2.1.5.3.3 | Compatibilização (deixar tudo conforme padrão Quanta) | 1d | 2026-05-26 | 2026-05-26 | 246 | 27d |  |
| 251 | 3.2.1.5.3.4 | Indicação de Norte; | 1d | 2026-05-26 | 2026-05-26 | 246 | 27d |  |
| 252 | 3.2.1.5.3.5 | Indicação de Escala; | 1d | 2026-05-26 | 2026-05-26 | 246 | 27d |  |
| 253 | 3.2.1.5.3.6 | Indicação de Acessos; | 1d | 2026-05-26 | 2026-05-26 | 246 | 27d |  |
| 254 | 3.2.1.5.3.7 | Elementos de vedação internos e externos; | 1d | 2026-05-26 | 2026-05-26 | 246 | 27d |  |
| 255 | 3.2.1.5.3.8 | Esquadrias (sem código e sem quadro); | 1d | 2026-05-26 | 2026-05-26 | 246 | 27d |  |
| 256 | 3.2.1.5.3.9 | Elementos estruturais principais; | 1d | 2026-05-26 | 2026-05-26 | 246 | 27d |  |
| 257 | 3.2.1.5.3.10 | Identificação dos ambientes e espaços (internos e externos); | 1d | 2026-05-26 | 2026-05-26 | 246 | 27d |  |
| 258 | 3.2.1.5.3.11 | Espaços de circulação internos e externos; | 1d | 2026-05-26 | 2026-05-26 | 246 | 27d |  |
| 259 | 3.2.1.5.3.12 | Áreas de serviço, funcionais e técnicas (internos e externos); | 1d | 2026-05-26 | 2026-05-26 | 246 | 27d |  |
| 260 | 3.2.1.5.3.13 | Projeções de níveis superiores; | 1d | 2026-05-26 | 2026-05-26 | 246 | 27d |  |
| 261 | 3.2.1.5.3.14 | Cotas gerais | 1d | 2026-05-26 | 2026-05-26 | 246 | 27d |  |
| 262 | 3.2.1.5.3.15 | Cotas de nível principal. | 1d | 2026-05-26 | 2026-05-26 | 246 | 27d |  |
| 263 | 3.2.1.5.3.16 | Quadro de áreas | 1d | 2026-05-26 | 2026-05-26 | 246 | 19d | 0d |
| 264 | 3.2.1.5.4 | **Planta das coberturas** | 1d | 2026-05-27 | 2026-05-27 |  | 19d |  |
| 265 | 3.2.1.5.4.1 | Indicação do Norte | 1d | 2026-05-27 | 2026-05-27 | 263 | 26d |  |
| 266 | 3.2.1.5.4.2 | Indicação de escala | 1d | 2026-05-27 | 2026-05-27 | 263 | 26d |  |
| 267 | 3.2.1.5.4.3 | Curvas de nível | 1d | 2026-05-27 | 2026-05-27 | 263 | 26d |  |
| 268 | 3.2.1.5.4.4 | Indicação de Acessos; | 1d | 2026-05-27 | 2026-05-27 | 263 | 26d |  |
| 269 | 3.2.1.5.4.5 | Estacionamento e áreas cobertas | 1d | 2026-05-27 | 2026-05-27 | 263 | 26d |  |
| 270 | 3.2.1.5.4.6 | Cobertura das edificações | 1d | 2026-05-27 | 2026-05-27 | 263 | 26d |  |
| 271 | 3.2.1.5.4.7 | Sentido de escoamento das águas pluviais e inclinação | 1d | 2026-05-27 | 2026-05-27 | 263 | 26d |  |
| 272 | 3.2.1.5.4.8 | Cotas gerais | 1d | 2026-05-27 | 2026-05-27 | 263 | 26d |  |
| 273 | 3.2.1.5.4.9 | Cotas de nível principal | 1d | 2026-05-27 | 2026-05-27 | 263 | 19d | 0d |

| ID | WBS | Task | Duration | Start | Finish | Predecessors | Total slack | Free slack |
| --- | --- | --- | --- | --- | --- | --- | --- | --- |
| 274 | 3.2.1.5.5 | **Cortes longitudinais** | 1d | 2026-05-28 | 2026-05-28 |  | 19d |  |
| 275 | 3.2.1.5.5.1 | Indicar simbologias de representação gráfica, conforme NBR 6492:2021; | 1d | 2026-05-28 | 2026-05-28 | 273 | 25d |  |
| 276 | 3.2.1.5.5.2 | Indicação de Escala; | 1d | 2026-05-28 | 2026-05-28 | 273 | 25d |  |
| 277 | 3.2.1.5.5.3 | Elementos estruturais principais; | 1d | 2026-05-28 | 2026-05-28 | 273 | 25d |  |
| 278 | 3.2.1.5.5.4 | Elementos de vedação internos e externos; | 1d | 2026-05-28 | 2026-05-28 | 273 | 25d |  |
| 279 | 3.2.1.5.5.5 | Esquadrias; | 1d | 2026-05-28 | 2026-05-28 | 273 | 25d |  |
| 280 | 3.2.1.5.5.6 | Identificação dos ambientes; | 1d | 2026-05-28 | 2026-05-28 | 273 | 25d |  |
| 281 | 3.2.1.5.5.7 | Cobertura com indicação da respectiva inclinação; | 1d | 2026-05-28 | 2026-05-28 | 273 | 25d |  |
| 282 | 3.2.1.5.5.8 | Cotas gerais; | 1d | 2026-05-28 | 2026-05-28 | 273 | 25d |  |
| 283 | 3.2.1.5.5.9 | Cotas de nível principal; | 1d | 2026-05-28 | 2026-05-28 | 273 | 25d |  |
| 284 | 3.2.1.5.5.10 | Eixos do projeto; | 1d | 2026-05-28 | 2026-05-28 | 273 | 25d |  |
| 285 | 3.2.1.5.5.11 | Relevo construído; | 1d | 2026-05-28 | 2026-05-28 | 273 | 25d |  |
| 286 | 3.2.1.5.5.12 | Projeção da topografia natural. | 1d | 2026-05-28 | 2026-05-28 | 273 | 19d | 0d |
| 287 | 3.2.1.5.6 | **Cortes transversais** | 1d | 2026-05-29 | 2026-05-29 |  | 19d |  |
| 288 | 3.2.1.5.6.1 | Indicar simbologias de representação gráfica, conforme NBR 6492:2021; | 1d | 2026-05-29 | 2026-05-29 | 286 | 24d |  |
| 289 | 3.2.1.5.6.2 | Indicação de Escala; | 1d | 2026-05-29 | 2026-05-29 | 286 | 24d |  |
| 290 | 3.2.1.5.6.3 | Elementos estruturais principais; | 1d | 2026-05-29 | 2026-05-29 | 286 | 24d |  |
| 291 | 3.2.1.5.6.4 | Elementos de vedação internos e externos; | 1d | 2026-05-29 | 2026-05-29 | 286 | 24d |  |
| 292 | 3.2.1.5.6.5 | Esquadrias; | 1d | 2026-05-29 | 2026-05-29 | 286 | 24d |  |
| 293 | 3.2.1.5.6.6 | Identificação dos ambientes; | 1d | 2026-05-29 | 2026-05-29 | 286 | 24d |  |
| 294 | 3.2.1.5.6.7 | Cobertura com indicação da respectiva inclinação; | 1d | 2026-05-29 | 2026-05-29 | 286 | 24d |  |
| 295 | 3.2.1.5.6.8 | Cotas gerais; | 1d | 2026-05-29 | 2026-05-29 | 286 | 24d |  |
| 296 | 3.2.1.5.6.9 | Cotas de nível principal; | 1d | 2026-05-29 | 2026-05-29 | 286 | 24d |  |
| 297 | 3.2.1.5.6.10 | Eixos do projeto; | 1d | 2026-05-29 | 2026-05-29 | 286 | 24d |  |
| 298 | 3.2.1.5.6.11 | Relevo construído; | 1d | 2026-05-29 | 2026-05-29 | 286 | 24d |  |
| 299 | 3.2.1.5.6.12 | Projeção da topografia natural | 1d | 2026-05-29 | 2026-05-29 | 286 | 19d | 0d |

| ID | WBS | Task | Duration | Start | Finish | Predecessors | Total slack | Free slack | Text3 |
| --- | --- | --- | --- | --- | --- | --- | --- | --- | --- |
| 300 | 3.2.1.5.7 | **Elevações** | 1d | 2026-06-01 | 2026-06-01 |  | 19d | 0d |  |
| 301 | 3.2.1.5.7.1 | Indicar simbologias de representação gráfica, conforme NBR 6492:2021; | 1d | 2026-06-01 | 2026-06-01 | 299 | 19d |  |  |
| 302 | 3.2.1.5.7.2 | Indicação de Escala; | 1d | 2026-06-01 | 2026-06-01 | 299 | 19d |  |  |
| 303 | 3.2.1.5.7.3 | Elementos estruturais principais; | 1d | 2026-06-01 | 2026-06-01 | 299 | 19d |  |  |
| 304 | 3.2.1.5.7.4 | Elementos de vedação internos e externos; | 1d | 2026-06-01 | 2026-06-01 | 299 | 19d |  |  |
| 305 | 3.2.1.5.7.5 | Esquadrias (sem código e sem quadro); | 1d | 2026-06-01 | 2026-06-01 | 299 | 19d |  |  |
| 306 | 3.2.1.5.7.6 | Relevo construído; | 1d | 2026-06-01 | 2026-06-01 | 299 | 19d |  |  |
| 307 | 3.2.1.5.7.7 | Cotas gerais; | 1d | 2026-06-01 | 2026-06-01 | 299 | 19d |  |  |
| 308 | 3.2.1.5.7.8 | Cotas de nível principais; | 1d | 2026-06-01 | 2026-06-01 | 299 | 19d |  |  |
| 309 | 3.2.1.5.7.9 | Cobertura (quando aparente). | 1d | 2026-06-01 | 2026-06-01 | 299 | 19d |  |  |
| 310 | 3.2.1.5.8 | Memorial Descritivo | 4d | 2026-06-02 | 2026-06-08 | 300 | 19d | 0d |  |
| 311 | 3.2.2 | Aprovação de Conformidade | 3d | 2026-06-03 | 2026-06-08 | 310FF | 19d |  | ܁8 |
| 312 | 3.2.3 | Material para entrega ao contrato | 3d | 2026-06-03 | 2026-06-08 | 310FF | 19d |  | ܁8 |
| 313 | 3.2.4 | **Engenharia** | 41d? | 2026-05-07 | 2026-07-03 |  | 0d |  |  |
| 314 | 3.2.4.1 | **Estrutura** | 34d | 2026-05-08 | 2026-06-25 |  | 6d |  |  |
| 315 | 3.2.4.1.1 | **LOD 100 — Premissas, diretrizes e interfaces** | 7d | 2026-05-08 | 2026-05-18 |  | 6d |  |  |
| 316 | 3.2.4.1.1.1 | Levantamento de tipos de cargas globais estimadas (permanentes, acidentais, vento e especiais). | 2d | 2026-05-08 | 2026-05-11 | 161SS | 38d |  |  |
| 317 | 3.2.4.1.1.2 | Estudo volumétrico com modulação inicial de pilares, vigas e lajes. Entendendo vãos e desafios | 5d | 2026-05-08 | 2026-05-14 | 161SS | 35d |  |  |
| 318 | 3.2.4.1.1.3 | Localização aproximada de elementos estruturais principais. Avaliando vãos e estudando posições | 2d | 2026-05-08 | 2026-05-11 | 161SS | 6d | 0d |  |
| 319 | 3.2.4.1.1.4 | Estudo de viabilidade técnica e construtiva. | 3d | 2026-05-12 | 2026-05-14 | 318 | 6d | 0d |  |
| 320 | 3.2.4.1.1.5 | Definição preliminar do sistema estrutural (concreto armado, metálica ou mista). | 3d | 2026-05-12 | 2026-05-14 | 318 | 35d |  |  |
| 321 | 3.2.4.1.1.6 | Estimativa preliminar de tipologias de fundações (sapatas, blocos, estacas). | 2d | 2026-05-15 | 2026-05-18 | 319 | 33d |  |  |
| 322 | 3.2.4.1.1.7 | Previsão de áreas técnicas, casas de máquinas, reservatórios elevados e estrutura de cobertura. | 2d | 2026-05-15 | 2026-05-18 | 319 | 6d | 0d |  |
| 323 | 3.2.4.1.2 | **LOD 200 — Validação interdisciplinar e solução preliminar** | 20d | 2026-05-19 | 2026-06-16 |  | 6d |  |  |
| 324 | 3.2.4.1.2.1 | Lista preliminar de cargas e ações para dimensionamento. | 5d | 2026-05-19 | 2026-05-25 | 322 | 6d | 0d |  |
| 325 | 3.2.4.1.2.2 | Definição preliminar de alturas de pavimentos e níveis de fundação. | 5d | 2026-05-19 | 2026-05-25 | 322 | 28d |  |  |
| 326 | 3.2.4.1.2.3 | Indicação aproximada do sistema de cobertura (tesouras, treliças, vigamento metálico ou concreto). | 5d | 2026-05-19 | 2026-05-25 | 322 | 28d |  |  |
| 327 | 3.2.4.1.2.4 | Modelagem genérica de pilares, vigas, lajes e fundações. | 5d | 2026-05-26 | 2026-06-01 | 324 | 23d |  |  |
| 328 | 3.2.4.1.2.5 | Traçado preliminar de elementos especiais (escadas, rampas estruturais, reservatórios). | 5d | 2026-05-26 | 2026-06-01 | 324 | 18d | 0d |  |
| 329 | 3.2.4.1.2.6 | Arquivo IFC, plantas de forma e planta de locação | 5d | 2026-05-26 | 2026-06-01 | 324 | 6d | 0d |  |
| 330 | 3.2.4.1.2.7 | Inserção de fundações com tipologia e dimensões preliminares. | 5d | 2026-06-02 | 2026-06-09 | 328 | 18d |  |  |
| 331 | 3.2.4.1.2.8 | Compatibilização inicial com arquitetura e demais disciplinas. | 5d | 2026-06-02 | 2026-06-09 | 329 | 18d |  |  |
| 332 | 3.2.4.1.2.9 | Indicação de passagens de infraestrutura (shafts, aberturas em lajes e vigas). | 5d | 2026-06-02 | 2026-06-09 | 329 | 18d |  |  |
| 333 | 3.2.4.1.2.10 | Modelagem assertiva de elementos principais com dimensões aproximadas (largura, altura, espessura). | 10d | 2026-06-02 | 2026-06-16 | 329 | 6d | 0d |  |
| 334 | 3.2.4.1.2.11 | Modelagem estimada de armaduras principais (em nível de concepção). | 5d | 2026-06-10 | 2026-06-16 | 333FF | 6d | 0d |  |

| ID | WBS | Task | Duration | Start | Finish | Predecessors | Total slack | Free slack | Text3 |
| --- | --- | --- | --- | --- | --- | --- | --- | --- | --- |
| 335 | 3.2.4.1.3 | **LOD 300 - Consolidação e documentação de entrega** | 7d | 2026-06-17 | 2026-06-25 |  | 6d | 0d |  |
| 336 | 3.2.4.1.3.1 | Indicação de níveis e cotas exatas. | 7d | 2026-06-17 | 2026-06-25 | 333, 334 | 6d |  |  |
| 337 | 3.2.4.1.3.2 | Quadro de cargas atualizado. | 7d | 2026-06-17 | 2026-06-25 | 333, 334 | 6d |  |  |
| 338 | 3.2.4.1.3.3 | Dimensionamento final de fundações conforme sondagem e cálculo estrutural. | 7d | 2026-06-17 | 2026-06-25 | 333, 334 | 6d |  |  |
| 339 | 3.2.4.1.3.4 | Definição final dos elementos da cobertura (treliças, vigas, chapas, purlins). | 7d | 2026-06-17 | 2026-06-25 | 333, 334 | 6d |  |  |
| 340 | 3.2.4.1.3.5 | Compatibilização final com arquitetura e instalações (aberturas, embutidos e passagens). | 7d | 2026-06-17 | 2026-06-25 | 333, 334 | 6d |  |  |
| 341 | 3.2.4.1.3.6 | Modelagem definitiva de pilares, vigas, lajes, blocos, sapatas e estacas. | 7d | 2026-06-17 | 2026-06-25 | 333, 334 | 6d |  |  |
| 342 | 3.2.4.1.3.7 | Planta estrutural com todos os elementos identificados. | 7d | 2026-06-17 | 2026-06-25 | 333, 334 | 6d |  |  |
| 343 | 3.2.4.1.3.8 | Memorial descritivo contendo: objetivos, justificativa, descrição do sistema, concepção de fundações/cobertura, especificações e quadro de cargas. | 7d | 2026-06-17 | 2026-06-25 | 333, 334 | 6d |  |  |
| 344 | 3.2.4.1.3.9 | Normas técnicas utilizadas (NBR 6118, 6120, 6122, 8800, etc.). | 7d | 2026-06-17 | 2026-06-25 | 333, 334 | 6d |  |  |
| 345 | 3.2.4.1.3.10 | Consolidar documentação de entrega e emissão formal da disciplina | 7d | 2026-06-17 | 2026-06-25 | 333, 334 | 6d |  |  |
| 346 | 3.2.4.1.4 | Aprovação de Conformidade | 3d | 2026-06-23 | 2026-06-25 | 335FF | 6d |  | ܁8 |
| 347 | 3.2.4.1.5 | Material para entrega ao contrato | 3d | 2026-06-23 | 2026-06-25 | 335FF | 6d |  | ܁8 |
| 348 | 3.2.4.2 | **Hidrossanitário** | 38d | 2026-05-07 | 2026-06-30 |  | 3d |  |  |
| 349 | 3.2.4.2.1 | **LOD 100 — Premissas, diretrizes e interfaces** | 11d | 2026-05-07 | 2026-05-21 |  | 3d |  |  |
| 350 | 3.2.4.2.1.1 | Memorial preliminar | 10d | 2026-05-08 | 2026-05-21 | 161SS | 30d |  |  |
| 351 | 3.2.4.2.1.2 | Indicação de áreas técnicas | 6d | 2026-05-08 | 2026-05-15 | 161SS | 34d |  |  |
| 352 | 3.2.4.2.1.3 | Planta baixa com traçado conceitual | 6d | 2026-05-08 | 2026-05-15 | 161SS | 34d |  |  |
| 353 | 3.2.4.2.1.4 | Pontos de consumo principais e coletas sanitárias | 6d | 2026-05-08 | 2026-05-15 | 161SS | 6d | 3d |  |
| 354 | 3.2.4.2.1.5 | Classificação de uso | 10d | 2026-05-07 | 2026-05-20 | 353FF | 31d |  |  |
| 355 | 3.2.4.2.1.6 | Diretrizes de espaço | 10d | 2026-05-07 | 2026-05-20 | 353FF | 31d |  |  |
| 356 | 3.2.4.2.1.7 | Estimativa de demanda ou população de uso | 10d | 2026-05-07 | 2026-05-20 | 353FF | 31d |  |  |
| 357 | 3.2.4.2.1.8 | Levantamento de elementos especiais dentre outras disciplinas de Engenharia e Arquitetura | 10d | 2026-05-07 | 2026-05-20 | 353FF | 3d | 0d |  |
| 358 | 3.2.4.2.2 | **LOD 200 — Validação interdisciplinar e solução preliminar** | 20d | 2026-05-21 | 2026-06-18 |  | 3d |  |  |
| 359 | 3.2.4.2.2.1 | Critérios normativos adotados (ABNT, concessionárias, etc.) | 20d | 2026-05-21 | 2026-06-18 | 357 | 11d | 0d |  |
| 360 | 3.2.4.2.2.2 | Informações de demanda na concessionária (DPE ou AVT Aviso de Viabilidade Técnica) | 20d | 2026-05-21 | 2026-06-18 | 359SS | 11d |  |  |
| 361 | 3.2.4.2.2.3 | Recebimento e Análise de Sondagem (permeabilidade ou percolação) | 20d | 2026-05-21 | 2026-06-18 | 359SS | 11d |  |  |
| 362 | 3.2.4.2.2.4 | Recebimento e Análise de Topografia | 20d | 2026-05-21 | 2026-06-18 | 359SS | 11d |  |  |
| 363 | 3.2.4.2.2.5 | Estudo de viabilidade técnica, econômica e ambiental | 20d | 2026-05-21 | 2026-06-18 | 359SS | 11d |  |  |
| 364 | 3.2.4.2.2.6 | Lista preliminar de sistemas envolvidos. | 20d | 2026-05-21 | 2026-06-18 | 357 | 11d |  |  |
| 365 | 3.2.4.2.2.7 | Planta baixa e cortes estimada contendo: - Traçado preliminar de barrilete, ramais, colunas - Diâmetros estimados - Localização aproximada das bombas e unidades de tratamento e reúso - Localização do ramal predial de água e esgoto - Localização aproximada | 20d | 2026-05-21 | 2026-06-18 | 357 | 3d | 0d |  |

| ID | WBS | Task | Duration | Start | Finish | Predecessors | Total slack | Free slack | Text3 |
| --- | --- | --- | --- | --- | --- | --- | --- | --- | --- |
| 366 | 3.2.4.2.3 | **LOD 300 - Consolidação e documentação de entrega** | 8d | 2026-06-19 | 2026-06-30 |  | 3d | 0d |  |
| 367 | 3.2.4.2.3.1 | Planta, corte e detalhe isométrico contendo: - Modelagem detalhada com diâmetros, cotas e inclinações definitivas (barriletes, colunas, ramais) - Quantitativos e especificação técnica dos materiais (tubos, conexões, reservatórios, registros e válvulas com | 8d | 2026-06-19 | 2026-06-30 | 365 | 3d | 0d |  |
| 368 | 3.2.4.2.3.2 | Memorial descritivo | 3d | 2026-06-26 | 2026-06-30 | 367FF | 3d |  |  |
| 369 | 3.2.4.2.3.3 | Memória de cálculo (pressão, vazão, diâmetros, perda de carga). | 3d | 2026-06-26 | 2026-06-30 | 365, 367FF | 3d |  |  |
| 370 | 3.2.4.2.4 | Aprovação de Conformidade | 3d | 2026-06-26 | 2026-06-30 | 366FF | 3d |  | ܁8 |
| 371 | 3.2.4.2.5 | Material para entrega ao contrato | 3d | 2026-06-26 | 2026-06-30 | 366FF | 3d |  | ܁8 |
| 372 | 3.2.4.3 | **AVAC** | 34d | 2026-05-08 | 2026-06-25 |  | 0d |  |  |
| 373 | 3.2.4.3.1 | **LOD 100 — Premissas, diretrizes e interfaces** | 20d | 2026-05-08 | 2026-06-05 |  | 0d |  |  |
| 374 | 3.2.4.3.1.1 | Estimativa de carga térmica por ambiente. | 10d | 2026-05-08 | 2026-05-21 | 161SS | 30d |  |  |
| 375 | 3.2.4.3.1.2 | Localização preliminar de unidades de tratamento de ar, condensadoras e exaustores. | 10d | 2026-05-08 | 2026-05-21 | 161SS | 30d |  |  |
| 376 | 3.2.4.3.1.3 | Pontos locação para seus elementos no projeto arquitetônico. | 10d | 2026-05-08 | 2026-05-21 | 161SS | 0d |  |  |
| 377 | 3.2.4.3.1.4 | Estudo de viabilidade e rotas principais de distribuição de ar. | 10d | 2026-05-08 | 2026-05-21 | 161SS | 30d |  |  |
| 378 | 3.2.4.3.1.5 | Reserva de espaços técnicos e shafts. | 10d | 2026-05-08 | 2026-05-21 | 161SS | 6d | 0d |  |
| 379 | 3.2.4.3.1.6 | Levantamento de cargas especiais provenientes de outras disciplinas. | 10d | 2026-05-22 | 2026-06-05 | 410, 422 | 20d |  |  |
| 380 | 3.2.4.3.2 | **LOD 200 — Validação interdisciplinar e solução preliminar** | 24d | 2026-05-22 | 2026-06-25 |  | 6d | 0d |  |
| 381 | 3.2.4.3.2.1 | Lista preliminar de sistemas HVAC envolvidos (expansão direta, VRF, chillers, ventilação, exaustão). | 24d | 2026-05-22 | 2026-06-25 | 378 | 6d |  |  |
| 382 | 3.2.4.3.2.2 | Planta baixa estimada contendo: pontos de insuflamento e retorno. | 24d | 2026-05-22 | 2026-06-25 | 378 | 6d |  |  |
| 383 | 3.2.4.3.2.3 | Rotas iniciais de dutos, tubulações e drenos. | 24d | 2026-05-22 | 2026-06-25 | 378 | 6d |  |  |
| 384 | 3.2.4.3.2.4 | Planta baixa estimada contendo: unidades internas e externas com posição preliminar. | 24d | 2026-05-22 | 2026-06-25 | 378 | 6d |  |  |
| 385 | 3.2.4.3.3 | Aprovação de Conformidade | 3d | 2026-06-23 | 2026-06-25 | 380FF | 6d |  | ܁8 |
| 386 | 3.2.4.3.4 | Material para entrega ao contrato | 3d | 2026-06-23 | 2026-06-25 | 380FF | 6d |  | ܁8 |
| 387 | 3.2.4.4 | **PCI (Incêndio)** | 34d | 2026-05-08 | 2026-06-25 |  | 0d |  |  |
| 388 | 3.2.4.4.1 | **LOD 100 — Premissas, diretrizes e interfaces** | 10d | 2026-05-08 | 2026-05-21 |  | 0d |  | ܁# |
| 389 | 3.2.4.4.1.1 | Estudo e avaliação da arquitetura atendendo as normas competentes de PCI | 10d | 2026-05-08 | 2026-05-21 | 161SS | 30d |  |  |
| 390 | 3.2.4.4.1.2 | Avaliação do espaço para CMI e Central de Gás. | 10d | 2026-05-08 | 2026-05-21 | 161SS | 30d |  |  |
| 391 | 3.2.4.4.1.3 | Pontos locação para seus elementos no projeto arquitetônico | 10d | 2026-05-08 | 2026-05-21 | 161SS | 0d |  |  |

| ID | WBS | Task | Duration | Start | Finish | Predecessors | Total slack | Free slack | Text3 |
| --- | --- | --- | --- | --- | --- | --- | --- | --- | --- |
| 392 | 3.2.4.4.2 | **LOD 200 — Validação interdisciplinar e solução preliminar** | 24d | 2026-05-22 | 2026-06-25 |  | 6d | 0d | ܁# |
| 393 | 3.2.4.4.2.1 | Definição da classificação da edificação e o risco de incêndio | 24d | 2026-05-22 | 2026-06-25 | 391 | 6d |  |  |
| 394 | 3.2.4.4.2.2 | Cálculos pré-dimensionados dos extintores, hidrantes e bomba. | 24d | 2026-05-22 | 2026-06-25 | 391 | 6d |  |  |
| 395 | 3.2.4.4.2.3 | Avaliação das rotas de fuga, ventilação de CMI e outros elementos de importância para as normas de PCI | 24d | 2026-05-22 | 2026-06-25 | 391 | 6d |  |  |
| 396 | 3.2.4.5 | **Gás** | 35d? | 2026-05-07 | 2026-06-25 |  | 6d |  |  |
| 397 | 3.2.4.5.1 | **LOD 100 — Premissas, diretrizes e interfaces** | 1d? | 2026-05-07 | 2026-05-07 |  | 40d |  |  |
| 398 | 3.2.4.5.1.1 | Estudo e avaliação da arquitetura atendendo as normas competentes de PCI | 1d? | 2026-05-07 | 2026-05-07 |  | 40d |  |  |
| 399 | 3.2.4.5.1.2 | Avaliação do espaço para CMI e Central de Gás. | 1d? | 2026-05-07 | 2026-05-07 |  | 40d |  |  |
| 400 | 3.2.4.5.1.3 | Pontos locação para seus elementos no projeto arquitetônico | 1d? | 2026-05-07 | 2026-05-07 |  | 40d |  |  |
| 401 | 3.2.4.5.2 | **LOD 200 — Validação interdisciplinar e solução preliminar** | 35d? | 2026-05-07 | 2026-06-25 |  | 6d |  |  |
| 402 | 3.2.4.5.2.1 | Definição da classificação da edificação e o risco de incêndio | 1d? | 2026-05-07 | 2026-05-07 |  | 40d |  |  |
| 403 | 3.2.4.5.2.2 | Cálculos pré-dimensionados dos extintores, hidrantes e bomba. | 1d? | 2026-05-07 | 2026-05-07 |  | 40d |  |  |
| 404 | 3.2.4.5.2.3 | Avaliação das rotas de fuga, ventilação de CMI e outros elementos de importância para as normas de PCI | 1d? | 2026-05-07 | 2026-05-07 |  | 40d |  |  |
| 405 | 3.2.4.5.2.4 | Aprovação de Conformidade | 3d | 2026-06-23 | 2026-06-25 | 392FF | 6d |  | ܁8 |
| 406 | 3.2.4.5.2.5 | Material para entrega ao contrato | 3d | 2026-06-23 | 2026-06-25 | 392FF | 6d |  | ܁8 |
| 407 | 3.2.4.6 | **Elétrica Baixa Tensão** | 40d | 2026-05-08 | 2026-07-03 |  | 0d |  |  |
| 408 | 3.2.4.6.1 | **LOD 100 — Concepção** | 16d | 2026-05-08 | 2026-05-29 |  | 6d |  |  |
| 409 | 3.2.4.6.1.1 | Avaliação e Diretrizes Técnicas para Arquitetura | 6d | 2026-05-08 | 2026-05-15 | 161SS | 34d |  |  |
| 410 | 3.2.4.6.1.2 | Estimativa de Cargas e Demanda | 10d | 2026-05-08 | 2026-05-21 | 161SS | 6d | 0d |  |
| 411 | 3.2.4.6.1.3 | Levantamento de Equipamentos de Outras Disciplinas | 6d | 2026-05-22 | 2026-05-29 | 376, 391 | 0d |  |  |
| 412 | 3.2.4.6.2 | **LOD 200 — Anteprojeto** | 19d | 2026-06-01 | 2026-06-26 |  | 0d |  |  |
| 413 | 3.2.4.6.2.1 | TUGs Estimados | 19d | 2026-06-01 | 2026-06-26 | 410, 411 | 0d |  |  |
| 414 | 3.2.4.6.2.2 | Pontos de Luz Estimados | 19d | 2026-06-01 | 2026-06-26 | 410, 411 | 0d |  |  |
| 415 | 3.2.4.6.2.3 | TUEs e Quadros Estimados | 19d | 2026-06-01 | 2026-06-26 | 410, 411 | 0d |  |  |
| 416 | 3.2.4.6.3 | LOD 300 - Consolidação e documentação de entrega | 5d | 2026-06-29 | 2026-07-03 | 412 | 0d |  |  |
| 417 | 3.2.4.6.4 | Aprovação de Conformidade | 3d | 2026-07-01 | 2026-07-03 | 416FF | 0d |  | ܁8 |
| 418 | 3.2.4.6.5 | Material para entrega ao contrato | 3d | 2026-07-01 | 2026-07-03 | 416FF | 0d |  | ܁8 |

| ID | WBS | Task | Duration | Start | Finish | Predecessors | Total slack | Free slack | Text3 |
| --- | --- | --- | --- | --- | --- | --- | --- | --- | --- |
| 419 | 3.2.4.7 | **Telecom** | 34d | 2026-05-08 | 2026-06-25 |  | 6d |  |  |
| 420 | 3.2.4.7.1 | **LOD 100 — Concepção** | 10d | 2026-05-08 | 2026-05-21 |  | 6d |  |  |
| 421 | 3.2.4.7.1.1 | Avaliação e Diretrizes Técnicas para Arquitetura | 10d | 2026-05-08 | 2026-05-21 | 161SS | 30d |  |  |
| 422 | 3.2.4.7.1.2 | Estimativa de Demanda de Telecomunicações | 10d | 2026-05-08 | 2026-05-21 | 161SS | 20d | 0d |  |
| 423 | 3.2.4.7.1.3 | Levantamento de Equipamentos e Interfaces com Outras Disciplinas | 10d | 2026-05-08 | 2026-05-21 | 161SS | 6d | 0d |  |
| 424 | 3.2.4.7.2 | **LOD 200 — Anteprojeto** | 20d | 2026-05-22 | 2026-06-19 |  | 6d | 0d |  |
| 425 | 3.2.4.7.2.1 | Pontos de Telecomunicações Estimados (Rede, Voz, CFTV e Demais Sistemas) | 10d | 2026-05-22 | 2026-06-05 | 423 | 6d | 0d |  |
| 426 | 3.2.4.7.2.2 | Racks Estimados | 10d | 2026-05-22 | 2026-06-05 | 423 | 6d | 0d |  |
| 427 | 3.2.4.7.2.3 | Infraestrutura de Telecomunicações Preliminar | 10d | 2026-06-08 | 2026-06-19 | 425, 426 | 6d |  |  |
| 428 | 3.2.4.7.3 | LOD 300 - Consolidação e documentação de entrega | 4d | 2026-06-22 | 2026-06-25 | 424 | 6d | 0d |  |
| 429 | 3.2.4.7.4 | Aprovação de Conformidade | 3d | 2026-06-23 | 2026-06-25 | 428FF | 6d |  | ܁8 |
| 430 | 3.2.4.7.5 | Material para entrega ao contrato | 3d | 2026-06-23 | 2026-06-25 | 428FF | 6d |  | ܁8 |
| 431 | 3.2.4.8 | **Subestação** | 34d | 2026-05-08 | 2026-06-25 |  | 6d |  |  |
| 432 | 3.2.4.8.1 | **LOD 100 — Concepção** | 10d | 2026-05-08 | 2026-05-21 |  | 6d |  |  |
| 433 | 3.2.4.8.1.1 | Avaliação e Diretrizes Técnicas para Arquitetura | 10d | 2026-05-08 | 2026-05-21 | 161SS | 30d |  |  |
| 434 | 3.2.4.8.1.2 | Levantamento de Demanda, Perfil de Consumo e Ponto de Entrega | 10d | 2026-05-08 | 2026-05-21 | 161SS | 30d |  |  |
| 435 | 3.2.4.8.1.3 | Estudo de Viabilidade Técnica e Atendimento ao Padrão da Concessionária | 10d | 2026-05-08 | 2026-05-21 | 161SS | 6d | 0d |  |
| 436 | 3.2.4.8.2 | **LOD 200 — Anteprojeto** | 20d | 2026-05-22 | 2026-06-19 |  | 6d | 0d |  |
| 437 | 3.2.4.8.2.1 | Definição do Tipo de Subestação e Arranjo Físico Preliminar | 10d | 2026-05-22 | 2026-06-05 | 435 | 6d | 0d |  |
| 438 | 3.2.4.8.2.2 | Dimensionamento Preliminar do Transformador e Equipamentos Principais | 10d | 2026-06-08 | 2026-06-19 | 437 | 6d |  |  |
| 439 | 3.2.4.8.2.3 | Diretrizes Preliminares de Aterramento | 10d | 2026-06-08 | 2026-06-19 | 437 | 6d |  |  |
| 440 | 3.2.4.8.3 | LOD 300 - Consolidação e documentação de entrega | 4d | 2026-06-22 | 2026-06-25 | 436 | 6d | 0d |  |
| 441 | 3.2.4.8.4 | Aprovação de Conformidade | 3d | 2026-06-23 | 2026-06-25 | 440FF | 6d |  | ܁8 |
| 442 | 3.2.4.8.5 | Material para entrega ao contrato | 3d | 2026-06-23 | 2026-06-25 | 440FF | 6d |  | ܁8 |

| ID | WBS | Task | Type | Duration | Start | Finish | Predecessors | Total slack | Free slack | Text3 |
| --- | --- | --- | --- | --- | --- | --- | --- | --- | --- | --- |
| 443 | 3.2.4.9 | **SPDA** |  | 34d | 2026-05-08 | 2026-06-25 |  | 6d |  |  |
| 444 | 3.2.4.9.1 | **LOD 100 — Concepção** |  | 10d | 2026-05-08 | 2026-05-21 |  | 6d |  |  |
| 445 | 3.2.4.9.1.1 | Avaliação e Diretrizes Técnicas para Arquitetura |  | 10d | 2026-05-08 | 2026-05-21 | 161SS | 30d |  |  |
| 446 | 3.2.4.9.1.2 | Coleta de Informações da Edificação e Análise de Risco (ABNT NBR 5419-2) |  | 10d | 2026-05-08 | 2026-05-21 | 161SS | 30d |  |  |
| 447 | 3.2.4.9.1.3 | Estudo Preliminar de Necessidade e Nível de Proteção do SPDA |  | 10d | 2026-05-08 | 2026-05-21 | 161SS | 6d | 0d |  |
| 448 | 3.2.4.9.2 | **LOD 200 — Anteprojeto** |  | 20d | 2026-05-22 | 2026-06-19 |  | 6d |  |  |
| 449 | 3.2.4.9.2.1 | Definição da Estratégia de Proteção e Soluções Técnicas |  | 10d | 2026-05-22 | 2026-06-05 | 447 | 6d | 0d |  |
| 450 | 3.2.4.9.2.2 | Zoneamento de Captação, Descida e Traçados Preliminares |  | 10d | 2026-06-08 | 2026-06-19 | 449 | 10d |  |  |
| 451 | 3.2.4.9.2.3 | Estudo de Interferências, Compatibilização e Métodos Construtivos |  | 10d | 2026-06-08 | 2026-06-19 | 449 | 6d | 0d |  |
| 452 | 3.2.4.9.3 | LOD 300 - Consolidação e documentação de entrega |  | 4d | 2026-06-22 | 2026-06-25 | 451 | 6d | 0d |  |
| 453 | 3.2.4.9.4 | Aprovação de Conformidade |  | 3d | 2026-06-23 | 2026-06-25 | 452FF | 6d |  | ܁8 |
| 454 | 3.2.4.9.5 | Material para entrega ao contrato |  | 3d | 2026-06-23 | 2026-06-25 | 452FF | 6d |  | ܁8 |
| 455 | 3.2.4.10 | **Energia Renovável** |  | 34d | 2026-05-08 | 2026-06-25 |  | 6d |  |  |
| 456 | 3.2.4.10.1 | **LOD 100 — Concepção** |  | 10d | 2026-05-08 | 2026-05-21 |  | 6d |  |  |
| 457 | 3.2.4.10.1.1 | Viabilidade e Premissas de Geração |  | 10d | 2026-05-08 | 2026-05-21 | 161SS | 30d |  |  |
| 458 | 3.2.4.10.1.2 | Levantamento Preliminar de Áreas e Sombreamento |  | 10d | 2026-05-08 | 2026-05-21 | 161SS | 6d | 0d |  |
| 459 | 3.2.4.10.1.3 | Avaliação e Diretrizes Técnicas para Arquitetônico |  | 10d | 2026-05-08 | 2026-05-21 | 161SS | 30d |  |  |
| 460 | 3.2.4.10.2 | **LOD 200 — Anteprojeto** |  | 20d | 2026-05-22 | 2026-06-19 |  | 6d | 0d |  |
| 461 | 3.2.4.10.2.1 | Layout Preliminar de Módulos, Inversores e String Boxes |  | 20d | 2026-05-22 | 2026-06-19 | 458 | 6d |  |  |
| 462 | 3.2.4.10.2.2 | Infraestrutura e Rotas Técnicas Preliminares (DC/AC e Aterramento) |  | 20d | 2026-05-22 | 2026-06-19 | 458 | 6d |  |  |
| 463 | 3.2.4.10.2.3 | Critérios Preliminares de Proteção e Estimativa de Quantitativos |  | 20d | 2026-05-22 | 2026-06-19 | 458 | 6d |  |  |
| 464 | 3.2.4.10.3 | LOD 300 - Consolidação e documentação de entrega |  | 4d | 2026-06-22 | 2026-06-25 | 460 | 6d | 0d |  |
| 465 | 3.2.4.10.4 | Aprovação de Conformidade |  | 3d | 2026-06-23 | 2026-06-25 | 464FF | 6d |  | ܁8 |
| 466 | 3.2.4.10.5 | Material para entrega ao contrato |  | 3d | 2026-06-23 | 2026-06-25 | 464FF | 6d |  | ܁8 |
| 467 | 4 | P2 - Orçamento/Cronograma |  | 20d | 2026-07-06 | 2026-07-31 | 30 | 0d |  |  |
| 468 | 5 | P3 - Modelagem Econômico Financeira |  | 10d | 2026-07-20 | 2026-07-31 | 467FF | 0d |  |  |
| 469 | 6 | P4 - Modelagem Jurídica |  | 10d | 2026-07-20 | 2026-07-31 | 467FF | 0d |  |  |
| 471 | 7 | Periodo de revisão se necessário | milestone | 0d | 2026-05-07 | 2026-05-07 |  | 61d |  |  |
