# OS 069 - IMPLANTAÇÃO CEPT MUMBUCA

Schedule from MS Project, 2026-07-10 to 2026-08-28, status date 2026-06-08.

## Calendars

- Calendário 1: Mon-Fri 09:00-12:00, 13:00-18:00; Sat-Sun off.

## Resources

| Resource | Group |
| --- | --- |
| SMI Engenharia | SMI |
| Rui Raoli BIM |  |
| Tecra Engenharia | Tecra |
| Dorothea Heirichs | Dorothea |
| Yuka Ogawa | Yuka |
| Jurídico Quanta |  |
| Priscila Abreu EST |  |
| Leomar Delgado | Leomar |
| Limonge de Almeida | Limonge |
| AeB Engenharia | AeB engenharia |
| Fernanda Garruti EST |  |
| Rodrigo Goes EST |  |
| Nous Engenharia (Wanessa) | Nous Engenharia |
| Abel Lopes HID |  |
| Matheus Ferreira HID |  |
| Kayke Cheli PROJ |  |
| João Gabriel PROJ |  |
| Alan Albuquerque ELE |  |
| Leo Ferrari ELE |  |
| Marcelo Ricardo ELE |  |
| Gabriel Caurim | Gcaurin |
| MOB Eng | MOB |
| Heitor Rubio ELE |  |
| Paulo G. ELE |  |
| Thaíza Rodrig. ELE |  |
| Rafael Menna ENE |  |
| Lucas Pacheco ENE |  |
| Lucas Silva ENE Estag |  |
| Amanda W. HID |  |
| Neemias PCI/GAS |  |
| Anderson F. HVAC |  |
| Alexandre Blumel |  |
| Vanessa Maia ORC |  |
| Bruno Souza ORC |  |
| Romulo Santos ORC |  |
| Diego Bieger | Diego Bieger |
| Tiago Carlos TER |  |
| Raquel Morano |  |
| Guilherme ECO |  |
| Setor Jurídico |  |
| Vinicius Delgado |  |
| Morena Braga |  |
| P/ TERCEIRIZAR |  |
| MAFRA | MAFRA |
| BLR | BLR |
| COTRAL | COTRAL |
| Prime | PRIME |
| CODEMAR | Cliente |
| SEMED | Cliente |
| Carlos Alberto (Casoba) |  |
| Cezar Augusto ELE |  |
| Carlos Santos TER |  |
| Maíra Rocha |  |
| Jairo Diniz |  |
| Eloá Honaiser |  |
| Erick Lima |  |
| Tarcísio Marques CPT |  |
| Igor Freire DADOS |  |
| Hagata Oliveira DADOS |  |
| Marcel Silva CNF |  |
| Gustavo Oliveira CNF |  |
| Letícia Gonç. CNF |  |
| Equipe Energia |  |
| Petras |  |
| Pilotis |  |
| Rodofer |  |
| TMSilva |  |
| STCGEO |  |
| Vitor Sales GEO |  |
| Prossema | Prossema |
| Proseng | Prosseng |
| Pamplona | Pamplona |
| PeX | PeX |
| Eoliver | Eoliver |
| Aleff Moura |  |
| S&A Engenharia |  |
| Matheus Barboza MOBILIDADE |  |
| Neemias Eloy PCI/GAS |  |
| TecTON |  |
| Anderson F. HVAC |  |
| Gabriela Gama ARQ |  |
| Bruno Almeida ARQ |  |
| Richard Marx ARQ |  |
| Lorena ARQ |  |
| Camila ARQ |  |
| Mariana ARQ |  |
| Érica ARQ |  |
| Maria Lis ARQ |  |
| Antônio Alves ARQ |  |
| Juliana ARQ |  |
| Caio Ary ARQ |  |
| Roberto Mattos ARQ |  |
| Camilla Bessa CNF |  |
| Alex Matoso SUP |  |
| Aline Bonsanto CPT |  |
| Pavanello |  |
| AKKERMAN |  |
| RiO RAMP |  |

## Schedule

| ID | WBS | Task | Duration | Start | Finish | Predecessors | Total slack | Free slack |
| --- | --- | --- | --- | --- | --- | --- | --- | --- |
| 1 | 1 | **P1 - Serviços de campo** | 16d | 2026-07-10 | 2026-07-31 |  | 20d |  |
| 2 | 1.1 | **Topografia** | 16d | 2026-07-10 | 2026-07-31 |  | 20d |  |
| 3 | 1.1.1 | Levantamento topográfico | 1d | 2026-07-10 | 2026-07-10 |  | 20d | 0d |
| 4 | 1.1.2 | Processamento | 2d | 2026-07-13 | 2026-07-14 | 3 | 20d | 0d |
| 5 | 1.1.3 | Finalização do projeto topográfico | 2d | 2026-07-13 | 2026-07-14 | 4FF | 20d | 0d |
| 6 | 1.1.4 | **Revisão de voo** | 3d | 2026-07-29 | 2026-07-31 |  | 20d |  |
| 7 | 1.1.4.1 | Realizar voo com aumento da área do voo | 1d | 2026-07-29 | 2026-07-29 | 5FS+10d | 20d | 0d |
| 8 | 1.1.4.2 | Nova ortofoto | 1d | 2026-07-29 | 2026-07-29 | 5FS+10d | 20d | 0d |
| 9 | 1.1.4.3 | Processamento | 2d | 2026-07-30 | 2026-07-31 | 7, 8 | 20d |  |
| 10 | 1.1.4.4 | Finalização do projeto topográfico | 2d | 2026-07-30 | 2026-07-31 | 7, 8 | 20d |  |
| 11 | 2 | **P2 - Implantação** | 36d | 2026-07-10 | 2026-08-28 |  | 0d |  |
| 12 | 2.1 | Estudos inicias da implantação | 16d | 2026-07-10 | 2026-07-31 |  | 20d |  |
| 13 | 2.2 | Descrição dos blocos | 16d | 2026-07-10 | 2026-07-31 |  | 20d |  |
| 14 | 2.3 | Estudo de desaceleração | 16d | 2026-07-10 | 2026-07-31 |  | 0d |  |
| 15 | 2.4 | Estudo da via de acesso (Aeroporto) - Próxima entrega | 20d | 2026-08-03 | 2026-08-28 | 14 | 0d |  |
| 16 | 2.5 | Desenvolvimento do Masterplan com diretrizes aprovadas do projeto - Próxima entrega | 20d | 2026-08-03 | 2026-08-28 | 14 | 0d |  |
| 17 | 2.6 | Diretrizes do projeto? - Próxima entrega | 20d | 2026-08-03 | 2026-08-28 | 14 | 0d |  |
| 18 | 2.7 | Sondagem? - Próxima entrega? | 20d | 2026-08-03 | 2026-08-28 | 14 | 0d |  |
